task_id,proj_id,wbs_id,clndr_id,phys_complete_pct,rev_fdbk_flag,lock_plan_flag,auto_compute_act_flag,complete_pct_type,task_type,duration_type,status_code,task_code,task_name,rsrc_id,total_float_hr_cnt,free_float_hr_cnt,remain_drtn_hr_cnt,act_work_qty,remain_work_qty,target_work_qty,target_drtn_hr_cnt,target_equip_qty,act_equip_qty,remain_equip_qty,cstr_date,act_start_date,act_end_date,late_start_date,late_end_date,expect_end_date,early_start_date,early_end_date,restart_date,reend_date,target_start_date,target_end_date,rem_late_start_date,rem_late_end_date,cstr_type,priority_type,suspend_date,resume_date,float_path,float_path_order,guid,tmpl_guid,cstr_date2,cstr_type2,driving_path_flag,act_this_per_work_qty,act_this_per_equip_qty,external_early_start_date,external_late_end_date,create_date,update_date,create_user,update_user
499287,6359,124256,13662,0,N,N,N,CP_Drtn,TT_Task,DT_FixedDUR2,TK_NotStart,DUKHHANP03GNACTC9000,"Submission  & Clearance of Punch list,Final Testing & Commissioning of AC Works",8178,0,0,240,0,1800,1800,240,0,0,0,,,,2014-08-16 08:00,2014-09-18 17:00,,2014-08-16 08:00,2014-09-18 17:00,2014-08-16 08:00,2014-09-18 17:00,2014-08-16 08:00,2014-09-18 17:00,2014-08-16 08:00,2014-09-18 17:00,,PT_Normal,,,,,2u4XDsnBS+KqRni2Wvb/vg,,,,N,0,0,,,2013-02-16 15:51,2013-02-21 12:04,admin,admin
499288,6359,124256,13662,0,N,N,N,CP_Drtn,TT_Task,DT_FixedDUR2,TK_NotStart,DUKHHANP03GNELTC9010,"Submission  & Clearance Punch list,Final Testing & Commissioning of Electrical  Works",8178,0,0,240,0,3600,3600,240,0,0,0,,,,2014-08-16 08:00,2014-09-18 17:00,,2014-08-16 08:00,2014-09-18 17:00,2014-08-16 08:00,2014-09-18 17:00,2014-08-16 08:00,2014-09-18 17:00,2014-08-16 08:00,2014-09-18 17:00,,PT_Normal,,,,,s2ElMOAyTjifQRHGgVQpAg,,,,N,0,0,,,2013-02-16 15:51,2013-02-21 12:07,admin,admin
499289,6359,124256,13662,0,N,N,N,CP_Drtn,TT_Task,DT_FixedDUR2,TK_NotStart,DUKHHANP03GNAB009015,Submission & Approval of As-Built Drawings & O&M Manuals,8176,0,0,160,0,320,320,160,0,0,0,,,,2014-09-08 08:00,2014-09-30 17:00,,2014-09-08 08:00,2014-09-30 17:00,2014-09-08 08:00,2014-09-30 17:00,2014-09-08 08:00,2014-09-30 17:00,2014-09-08 08:00,2014-09-30 17:00,,PT_Normal,,,,,QNW26tBXSIO/L+hOEoFDoA,,,,N,0,0,,,2013-02-16 15:51,2013-02-21 12:11,admin,admin
499290,6359,124256,13662,0,N,N,N,CP_Drtn,TT_Task,DT_FixedDUR2,TK_NotStart,DUKHHANP03GNDM009020,Demobilization &  Handing Over,8178,0,0,480,0,19440,19440,480,0,0,0,,,,2014-09-20 08:00,2014-11-30 17:00,,2014-09-20 08:00,2014-11-30 17:00,2014-09-20 08:00,2014-11-30 17:00,2014-09-20 08:00,2014-11-30 17:00,2014-09-20 08:00,2014-11-30 17:00,,PT_Normal,,,,,jV3cA4nYTAGA2eek61O7pw,,,,N,0,0,,,2013-02-16 15:51,2013-02-16 16:35,admin,admin
499291,6359,124256,13662,0,N,N,N,CP_Drtn,TT_Task,DT_FixedDUR2,TK_NotStart,DUKHHANP03GNPLTC9005,"Submission  & Clearance of Punch list, Final Testing &Commissioning of Plumbing/Drainage",8178,0,0,240,0,3600,3600,240,0,0,0,,,,2014-08-16 08:00,2014-09-18 17:00,,2014-08-16 08:00,2014-09-18 17:00,2014-08-16 08:00,2014-09-18 17:00,2014-08-16 08:00,2014-09-18 17:00,2014-08-16 08:00,2014-09-18 17:00,,PT_Normal,,,,,qIt0gbX0RWyrzriWK/md4w,,,,N,0,0,,,2013-02-16 15:51,2013-02-21 11:49,admin,admin
499292,6359,124257,13662,0,N,N,N,CP_Drtn,TT_Task,DT_FixedDUR2,TK_NotStart,DUKHHANP1BGNACTC9000,"Submission  & Clearance of Punch list,Final Testing & Commissioning of AC Works",8178,0,0,240,0,1800,1800,240,0,0,0,,,,2014-12-15 08:00,2015-01-19 17:00,,2014-12-15 08:00,2015-01-19 17:00,2014-12-15 08:00,2015-01-19 17:00,2014-12-15 08:00,2015-01-19 17:00,2014-12-15 08:00,2015-01-19 17:00,,PT_Normal,,,,,7bPrvPGVTCibzP7lL+j3pg,,,,Y,0,0,,,2013-02-16 15:51,2013-02-21 12:04,admin,admin
499293,6359,124257,13662,0,N,N,N,CP_Drtn,TT_Task,DT_FixedDUR2,TK_NotStart,DUKHHANP1BGNELTC9010,"Submission  & Clearance Punch list,Final Testing & Commissioning of Electrical  Works",8178,0,0,240,0,3600,3600,240,0,0,0,,,,2014-12-15 08:00,2015-01-19 17:00,,2014-12-15 08:00,2015-01-19 17:00,2014-12-15 08:00,2015-01-19 17:00,2014-12-15 08:00,2015-01-19 17:00,2014-12-15 08:00,2015-01-19 17:00,,PT_Normal,,,,,VCnnZyfTRaqdeN+WTKpyBw,,,,Y,0,0,,,2013-02-16 15:51,2013-02-21 12:07,admin,admin
499294,6359,124257,13662,0,N,N,N,CP_Drtn,TT_Task,DT_FixedDUR2,TK_NotStart,DUKHHANP1BGNPLTC9005,"Submission  & Clearance of Punch list, Final Testing &Commissioning of Plumbing/Drainage",8178,0,0,240,0,3600,3600,240,0,0,0,,,,2014-12-15 08:00,2015-01-19 17:00,,2014-12-15 08:00,2015-01-19 17:00,2014-12-15 08:00,2015-01-19 17:00,2014-12-15 08:00,2015-01-19 17:00,2014-12-15 08:00,2015-01-19 17:00,,PT_Normal,,,,,h+hE9gIDTGa0SPWgvDMMBw,,,,Y,0,0,,,2013-02-16 15:51,2013-02-21 11:49,admin,admin
499295,6359,124257,13662,0,N,N,N,CP_Drtn,TT_Task,DT_FixedDUR2,TK_NotStart,DUKHHANP1BGNAB009015,Submission & Approval of As-Built Drawings & O&M Manuals,8176,0,0,160,0,320,320,160,0,0,0,,,,2015-01-08 08:00,2015-01-31 17:00,,2015-01-08 08:00,2015-01-31 17:00,2015-01-08 08:00,2015-01-31 17:00,2015-01-08 08:00,2015-01-31 17:00,2015-01-08 08:00,2015-01-31 17:00,,PT_Normal,,,,,XZkGXLwaQKqRnJk31JZr5Q,,,,Y,0,0,,,2013-02-16 15:51,2013-02-21 12:11,admin,admin
499296,6359,124257,13662,0,N,N,N,CP_Drtn,TT_Task,DT_FixedDUR2,TK_NotStart,DUKHHANP1BGNDM009020,Demobilization &  Handing Over,8178,0,0,480,0,18500,18500,480,0,0,0,,,,2015-01-20 08:00,2015-03-31 17:00,,2015-01-20 08:00,2015-03-31 17:00,2015-01-20 08:00,2015-03-31 17:00,2015-01-20 08:00,2015-03-31 17:00,2015-01-20 08:00,2015-03-31 17:00,,PT_Normal,,,,,TeJ8LnOnSkyqJtUhHLBasA,,,,Y,0,0,,,2013-02-16 15:51,2013-02-16 15:56,admin,admin
499297,6359,124258,13662,0,N,N,N,CP_Drtn,TT_Task,DT_FixedDUR2,TK_NotStart,DUKHHANP2AGNAB009015,Submission & Approval of As-Built Drawings & O&M Manuals,8176,0,0,160,0,320,320,160,0,0,0,,,,2014-07-08 08:00,2014-07-30 17:00,,2014-07-08 08:00,2014-07-30 17:00,2014-07-08 08:00,2014-07-30 17:00,2014-07-08 08:00,2014-07-30 17:00,2014-07-08 08:00,2014-07-30 17:00,,PT_Normal,,,,,R/e3eIg5QjeZwO0G6j1N9Q,,,,N,0,0,,,2013-02-16 15:51,2013-02-21 12:11,admin,admin
499298,6359,124258,13662,0,N,N,N,CP_Drtn,TT_Task,DT_FixedDUR2,TK_NotStart,DUKHHANP2AGNDM009020,Demobilization &  Handing Over,8178,0,0,480,0,23280,23280,480,0,0,0,,,,2014-07-20 08:00,2014-09-30 17:00,,2014-07-20 08:00,2014-09-30 17:00,2014-07-20 08:00,2014-09-30 17:00,2014-07-20 08:00,2014-09-30 17:00,2014-07-20 08:00,2014-09-30 17:00,,PT_Normal,,,,,lKIW5RA9TlCCYEm9T+6VgA,,,,N,0,0,,,2013-02-16 15:51,2013-02-16 16:35,admin,admin
499299,6359,124258,13662,0,N,N,N,CP_Drtn,TT_Task,DT_FixedDUR2,TK_NotStart,DUKHHANP2AGNACTC9000,"Submission  & Clearance of Punch list,Final Testing & Commissioning of AC Works",8178,0,0,240,0,1800,1800,240,0,0,0,,,,2014-06-15 08:00,2014-07-19 17:00,,2014-06-15 08:00,2014-07-19 17:00,2014-06-15 08:00,2014-07-19 17:00,2014-06-15 08:00,2014-07-19 17:00,2014-06-15 08:00,2014-07-19 17:00,,PT_Normal,,,,,MD7u8W8mSmaq1z6UxhELEA,,,,N,0,0,,,2013-02-16 15:51,2013-02-21 12:04,admin,admin
499300,6359,124258,13662,0,N,N,N,CP_Drtn,TT_Task,DT_FixedDUR2,TK_NotStart,DUKHHANP2AGNELTC9010,"Submission  & Clearance Punch list,Final Testing & Commissioning of Electrical  Works",8178,0,0,240,0,3600,3600,240,0,0,0,,,,2014-06-15 08:00,2014-07-19 17:00,,2014-06-15 08:00,2014-07-19 17:00,2014-06-15 08:00,2014-07-19 17:00,2014-06-15 08:00,2014-07-19 17:00,2014-06-15 08:00,2014-07-19 17:00,,PT_Normal,,,,,bSWKsWpZQCuZoe16ELCVQQ,,,,N,0,0,,,2013-02-16 15:51,2013-02-21 12:07,admin,admin
499301,6359,124258,13662,0,N,N,N,CP_Drtn,TT_Task,DT_FixedDUR2,TK_NotStart,DUKHHANP2AGNPLTC9005,"Submission  & Clearance of Punch list, Final Testing &Commissioning of Plumbing/Drainage",8178,0,0,240,0,3600,3600,240,0,0,0,,,,2014-06-15 08:00,2014-07-19 17:00,,2014-06-15 08:00,2014-07-19 17:00,2014-06-15 08:00,2014-07-19 17:00,2014-06-15 08:00,2014-07-19 17:00,2014-06-15 08:00,2014-07-19 17:00,,PT_Normal,,,,,ArGoIniNSD+oOHOSP/rMZA,,,,N,0,0,,,2013-02-16 15:51,2013-02-21 11:49,admin,admin
499302,6359,124259,13662,0,N,N,N,CP_Drtn,TT_Task,DT_FixedDUR2,TK_NotStart,DUKHHANP1AGNPLTC9005,"Submission  & Clearance of Punch list, Final Testing &Commissioning of Plumbing/Drainage",8178,0,0,240,0,3600,3600,240,0,0,0,,,,2014-12-15 08:00,2015-01-19 17:00,,2014-12-15 08:00,2015-01-19 17:00,2014-12-15 08:00,2015-01-19 17:00,2014-12-15 08:00,2015-01-19 17:00,2014-12-15 08:00,2015-01-19 17:00,,PT_Normal,,,,,hxCSlnp9QQ6h8ifN9VHI0A,,,,Y,0,0,,,2013-02-16 15:51,2013-02-21 11:49,admin,admin
499303,6359,124259,13662,0,N,N,N,CP_Drtn,TT_Task,DT_FixedDUR2,TK_NotStart,DUKHHANP1AGNACTC9000,"Submission  & Clearance of Punch list,Final Testing & Commissioning of AC Works",8178,0,0,240,0,1800,1800,240,0,0,0,,,,2014-12-15 08:00,2015-01-19 17:00,,2014-12-15 08:00,2015-01-19 17:00,2014-12-15 08:00,2015-01-19 17:00,2014-12-15 08:00,2015-01-19 17:00,2014-12-15 08:00,2015-01-19 17:00,,PT_Normal,,,,,hv3xza5ORUqOutXJrN075g,,,,Y,0,0,,,2013-02-16 15:51,2013-02-21 12:04,admin,admin
499304,6359,124259,13662,0,N,N,N,CP_Drtn,TT_Task,DT_FixedDUR2,TK_NotStart,DUKHHANP1AGNELTC9010,"Submission  & Clearance Punch list,Final Testing & Commissioning of Electrical  Works",8178,0,0,240,0,3600,3600,240,0,0,0,,,,2014-12-15 08:00,2015-01-19 17:00,,2014-12-15 08:00,2015-01-19 17:00,2014-12-15 08:00,2015-01-19 17:00,2014-12-15 08:00,2015-01-19 17:00,2014-12-15 08:00,2015-01-19 17:00,,PT_Normal,,,,,m8FaUSU9T9+53nwXD5sIJQ,,,,Y,0,0,,,2013-02-16 15:51,2013-02-21 12:07,admin,admin
499305,6359,124259,13662,0,N,N,N,CP_Drtn,TT_Task,DT_FixedDUR2,TK_NotStart,DUKHHANP1AGNAB009015,Submission & Approval of As-Built Drawings & O&M Manuals,8176,0,0,160,0,320,320,160,0,0,0,,,,2015-01-08 08:00,2015-01-31 17:00,,2015-01-08 08:00,2015-01-31 17:00,2015-01-08 08:00,2015-01-31 17:00,2015-01-08 08:00,2015-01-31 17:00,2015-01-08 08:00,2015-01-31 17:00,,PT_Normal,,,,,I0RR+ALxQF6LAHTFoyND4A,,,,Y,0,0,,,2013-02-16 15:51,2013-02-21 12:11,admin,admin
499306,6359,124259,13662,0,N,N,N,CP_Drtn,TT_Task,DT_FixedDUR2,TK_NotStart,DUKHHANP1AGNDM009020,Demobilization &  Handing Over,8178,0,0,480,0,18500,18500,480,0,0,0,,,,2015-01-20 08:00,2015-03-31 17:00,,2015-01-20 08:00,2015-03-31 17:00,2015-01-20 08:00,2015-03-31 17:00,2015-01-20 08:00,2015-03-31 17:00,2015-01-20 08:00,2015-03-31 17:00,,PT_Normal,,,,,BzefXAONQY2NXNSOAVUWlw,,,,Y,0,0,,,2013-02-16 15:51,2013-02-16 15:56,admin,admin
499307,6359,124260,13662,0,N,N,N,CP_Drtn,TT_Task,DT_FixedDUR2,TK_NotStart,DUKHHANP2BGNAB009015,Submission & Approval of As-Built Drawings & O&M Manuals,8176,0,0,160,0,320,320,160,0,0,0,,,,2014-07-08 08:00,2014-07-30 17:00,,2014-07-08 08:00,2014-07-30 17:00,2014-07-08 08:00,2014-07-30 17:00,2014-07-08 08:00,2014-07-30 17:00,2014-07-08 08:00,2014-07-30 17:00,,PT_Normal,,,,,JT+8+t0jSxqlre4nigGngg,,,,N,0,0,,,2013-02-16 15:51,2013-02-21 12:11,admin,admin
499308,6359,124260,13662,0,N,N,N,CP_Drtn,TT_Task,DT_FixedDUR2,TK_NotStart,DUKHHANP2BGNDM009020,Demobilization &  Handing Over,8178,0,0,480,0,23280,23280,480,0,0,0,,,,2014-07-20 08:00,2014-09-30 17:00,,2014-07-20 08:00,2014-09-30 17:00,2014-07-20 08:00,2014-09-30 17:00,2014-07-20 08:00,2014-09-30 17:00,2014-07-20 08:00,2014-09-30 17:00,,PT_Normal,,,,,ptLyWXX7RbKun7I0RXCJRg,,,,N,0,0,,,2013-02-16 15:51,2013-02-16 16:35,admin,admin
499309,6359,124260,13662,0,N,N,N,CP_Drtn,TT_Task,DT_FixedDUR2,TK_NotStart,DUKHHANP2BGNELTC9010,"Submission  & Clearance Punch list,Final Testing & Commissioning of Electrical  Works",8178,0,0,240,0,3600,3600,240,0,0,0,,,,2014-06-15 08:00,2014-07-19 17:00,,2014-06-15 08:00,2014-07-19 17:00,2014-06-15 08:00,2014-07-19 17:00,2014-06-15 08:00,2014-07-19 17:00,2014-06-15 08:00,2014-07-19 17:00,,PT_Normal,,,,,oowqqIYxT26L4iAql9maXg,,,,N,0,0,,,2013-02-16 15:51,2013-02-21 12:07,admin,admin
499310,6359,124260,13662,0,N,N,N,CP_Drtn,TT_Task,DT_FixedDUR2,TK_NotStart,DUKHHANP2BGNPLTC9005,"Submission  & Clearance of Punch list, Final Testing &Commissioning of Plumbing/Drainage",8178,0,0,240,0,3600,3600,240,0,0,0,,,,2014-06-15 08:00,2014-07-19 17:00,,2014-06-15 08:00,2014-07-19 17:00,2014-06-15 08:00,2014-07-19 17:00,2014-06-15 08:00,2014-07-19 17:00,2014-06-15 08:00,2014-07-19 17:00,,PT_Normal,,,,,xpYVx3SKShuIQCVdtHhqCw,,,,N,0,0,,,2013-02-16 15:51,2013-02-21 11:49,admin,admin
499311,6359,124260,13662,0,N,N,N,CP_Drtn,TT_Task,DT_FixedDUR2,TK_NotStart,DUKHHANP2BGNACTC9000,"Submission  & Clearance of Punch list,Final Testing & Commissioning of AC Works",8178,0,0,240,0,1800,1800,240,0,0,0,,,,2014-06-15 08:00,2014-07-19 17:00,,2014-06-15 08:00,2014-07-19 17:00,2014-06-15 08:00,2014-07-19 17:00,2014-06-15 08:00,2014-07-19 17:00,2014-06-15 08:00,2014-07-19 17:00,,PT_Normal,,,,,A9JhNNqCSOedvl0yvB0LVg,,,,N,0,0,,,2013-02-16 15:51,2013-02-21 12:04,admin,admin
499312,6359,124262,13662,0,N,N,N,CP_Drtn,TT_FinMile,DT_FixedDUR2,TK_NotStart,DUKHKYDP020000002000,Package -2 (Milestone-2) -23 Months,,0,1216,0,0,0,0,0,0,0,0,2014-09-30 17:00,,,2014-09-30 17:00,2014-09-30 17:00,,2014-09-30 17:00,2014-09-30 17:00,2014-09-30 17:00,2014-09-30 17:00,2014-09-30 17:00,2014-09-30 17:00,2014-09-30 17:00,2014-09-30 17:00,CS_MEOB,PT_Normal,,,,,ZC6cvhjDQySEKXDWj7wGCA,,,,N,0,0,,,2013-02-16 15:51,2013-02-16 16:35,admin,admin
499313,6359,124263,13662,0,N,N,N,CP_Drtn,TT_FinMile,DT_FixedDUR2,TK_NotStart,DUKHKYDP030000003000,Package -3 (Milestone -3) -25 Months,,0,816,0,0,0,0,0,0,0,0,2014-11-30 17:00,,,2014-11-30 17:00,2014-11-30 17:00,,2014-11-30 17:00,2014-11-30 17:00,2014-11-30 17:00,2014-11-30 17:00,2014-11-30 17:00,2014-11-30 17:00,2014-11-30 17:00,2014-11-30 17:00,CS_MEOB,PT_Normal,,,,,IP4iNwGeTe2p2ShTaJvdiA,,,,N,0,0,,,2013-02-16 15:51,2013-02-16 16:35,admin,admin
499314,6359,124264,13663,0,N,N,N,CP_Drtn,TT_Mile,DT_FixedDUR2,TK_NotStart,DUKHKYDGEN0000001000,Project Commencement,,0,0,0,0,0,0,0,0,0,0,,,,2012-11-01 08:00,2012-11-01 08:00,,2012-11-01 08:00,2012-11-01 08:00,2012-11-01 08:00,2012-11-01 08:00,2012-11-01 08:00,2012-11-01 08:00,2012-11-01 08:00,2012-11-01 08:00,,PT_Normal,,,,,K2sEZS8NTwW7Vg58GTYpfw,,,,Y,0,0,,,2013-02-16 15:51,2013-02-16 16:35,admin,admin
499315,6359,124264,13662,0,N,N,N,CP_Drtn,TT_FinMile,DT_FixedDrtn,TK_NotStart,DUKHKYDGEN0000002000,Project Completion Date,,0,0,0,0,0,0,0,0,0,0,,,,2015-03-31 17:00,2015-03-31 17:00,,2015-03-31 17:00,2015-03-31 17:00,2015-03-31 17:00,2015-03-31 17:00,2015-03-31 17:00,2015-03-31 17:00,2015-03-31 17:00,2015-03-31 17:00,,PT_Normal,,,,,Dtu5DUBzSbirUCdANWIQOQ,,,,Y,0,0,,,2013-02-16 15:51,2013-02-16 15:56,admin,admin
499316,6359,124265,13662,0,N,N,N,CP_Drtn,TT_FinMile,DT_FixedDUR2,TK_NotStart,DUKHKYDP010000001000,Package -1 (Milestone -1) -29 Months,,0,0,0,0,0,0,0,0,0,0,,,,2015-03-31 17:00,2015-03-31 17:00,,2015-03-31 17:00,2015-03-31 17:00,2015-03-31 17:00,2015-03-31 17:00,2015-03-31 17:00,2015-03-31 17:00,2015-03-31 17:00,2015-03-31 17:00,,PT_Normal,,,,,A/hPO32DTTirjRb3NJAMew,,,,Y,0,0,,,2013-02-16 15:51,2013-02-16 15:56,admin,admin
499317,6359,124270,13662,0,N,N,N,CP_Drtn,TT_Task,DT_FixedDUR2,TK_NotStart,DUKHENGP2ADWARAP4930,Doors & Window Drawings-App,,488,280,240,0,0,0,240,0,0,0,,,,2013-06-17 08:00,2013-07-21 17:00,,2013-04-07 08:00,2013-05-11 17:00,2013-04-07 08:00,2013-05-11 17:00,2013-04-07 08:00,2013-05-11 17:00,2013-06-17 08:00,2013-07-21 17:00,,PT_Normal,,,,,or2k3ktZRb+UMSNQQ7uXcw,,,,N,0,0,,,2013-02-16 15:51,2013-02-16 15:56,admin,admin
499318,6359,124270,13662,0,N,N,N,CP_Drtn,TT_Task,DT_FixedDUR2,TK_NotStart,DUKHENGP2ADWARAP4940,Carpentry & Joinery Drawings-App,,664,320,240,0,0,0,240,0,0,0,,,,2013-07-30 08:00,2013-09-05 17:00,,2013-04-24 08:00,2013-05-28 17:00,2013-04-24 08:00,2013-05-28 17:00,2013-04-24 08:00,2013-05-28 17:00,2013-07-30 08:00,2013-09-05 17:00,,PT_Normal,,,,,zi14dbEBTJG8D9sbutAyyA,,,,N,0,0,,,2013-02-16 15:51,2013-02-16 15:56,admin,admin
499319,6359,124270,13662,0,N,N,N,CP_Drtn,TT_Task,DT_FixedDUR2,TK_NotStart,DUKHENGP2ADWARAP4850,Ground Floor Plan-App,,888,232,240,0,0,0,240,0,0,0,,,,2013-06-04 08:00,2013-07-08 17:00,,2013-01-24 08:00,2013-02-28 17:00,2013-01-24 08:00,2013-02-28 17:00,2013-01-24 08:00,2013-02-28 17:00,2013-06-04 08:00,2013-07-08 17:00,,PT_Normal,,,,,sBtue8ZnSW2p/d8OfRNldw,,,,N,0,0,,,2013-02-16 15:51,2013-02-16 15:56,admin,admin
499320,6359,124270,13662,0,N,N,N,CP_Drtn,TT_Task,DT_FixedDUR2,TK_NotStart,DUKHENGP2ADWARAP4870,Roof Floor Plan-App,,680,192,240,0,0,0,240,0,0,0,,,,2013-05-13 08:00,2013-06-16 17:00,,2013-02-02 08:00,2013-03-09 17:00,2013-02-02 08:00,2013-03-09 17:00,2013-02-02 08:00,2013-03-09 17:00,2013-05-13 08:00,2013-06-16 17:00,,PT_Normal,,,,,eZ1mnA39QD2chha4W+wz5Q,,,,N,0,0,,,2013-02-16 15:51,2013-02-16 15:56,admin,admin
499321,6359,124270,13662,0,N,N,N,CP_Drtn,TT_Task,DT_FixedDUR2,TK_NotStart,DUKHENGP2ADWARAP4880,Ceramic Flooring & Wall Drawings-App,,624,288,240,0,0,0,240,0,0,0,,,,2013-05-14 08:00,2013-06-17 17:00,,2013-02-11 08:00,2013-03-18 17:00,2013-02-11 08:00,2013-03-18 17:00,2013-02-11 08:00,2013-03-18 17:00,2013-05-14 08:00,2013-06-17 17:00,,PT_Normal,,,,,2Kzj8xfZQF+MeFpgKpPQqg,,,,N,0,0,,,2013-02-16 15:51,2013-02-16 15:56,admin,admin
499322,6359,124270,13662,0,N,N,N,CP_Drtn,TT_Task,DT_FixedDUR2,TK_NotStart,DUKHENGP2ADWARAP4890,Porcelain Floor Drawings-App,,696,288,240,0,0,0,240,0,0,0,,,,2013-05-25 08:00,2013-06-27 17:00,,2013-02-11 08:00,2013-03-18 17:00,2013-02-11 08:00,2013-03-18 17:00,2013-02-11 08:00,2013-03-18 17:00,2013-05-25 08:00,2013-06-27 17:00,,PT_Normal,,,,,4jwa14WERrW/qhvwYh94pw,,,,N,0,0,,,2013-02-16 15:51,2013-02-16 15:56,admin,admin
499323,6359,124270,13662,0,N,N,N,CP_Drtn,TT_Task,DT_FixedDUR2,TK_NotStart,DUKHENGP2ADWARAP4900,Cobble & Slate Flooring Drawings-App,,944,288,240,0,0,0,240,0,0,0,,,,2013-06-30 08:00,2013-08-03 17:00,,2013-02-11 08:00,2013-03-18 17:00,2013-02-11 08:00,2013-03-18 17:00,2013-02-11 08:00,2013-03-18 17:00,2013-06-30 08:00,2013-08-03 17:00,,PT_Normal,,,,,3A1+CjrtStuBND5GcV5s7Q,,,,N,0,0,,,2013-02-16 15:51,2013-02-16 15:56,admin,admin
499324,6359,124270,13662,0,N,N,N,CP_Drtn,TT_Task,DT_FixedDUR2,TK_NotStart,DUKHENGP2ADWARAP4910,Gypsum False Ceiling Drawings-App,,536,280,240,0,0,0,240,0,0,0,,,,2013-06-18 08:00,2013-07-22 17:00,,2013-04-01 08:00,2013-05-05 17:00,2013-04-01 08:00,2013-05-05 17:00,2013-04-01 08:00,2013-05-05 17:00,2013-06-18 08:00,2013-07-22 17:00,,PT_Normal,,,,,qdp9JQkiQ7WhabKhV+/Yiw,,,,N,0,0,,,2013-02-16 15:51,2013-02-16 15:56,admin,admin
499325,6359,124271,13662,0,N,N,N,CP_Drtn,TT_Task,DT_FixedDUR2,TK_NotStart,DUKHENGP2ADWARSM4850,Ground Floor Plan-Sub,,624,0,120,0,30,30,120,0,0,0,,,,2013-04-09 08:00,2013-04-25 17:00,,2013-01-07 08:00,2013-01-23 17:00,2013-01-07 08:00,2013-01-23 17:00,2013-01-07 08:00,2013-01-23 17:00,2013-04-09 08:00,2013-04-25 17:00,,PT_Normal,,,,,e1yLr1UZQiGnQYwbvCo3ZA,,,,N,0,0,,,2013-02-16 15:51,2013-02-16 15:56,admin,admin
499326,6359,124271,13662,0,N,N,N,CP_Drtn,TT_Task,DT_FixedDUR2,TK_NotStart,DUKHENGP2ADWARSM4870,Roof Floor Plan-Sub,,664,0,120,0,30,30,120,0,0,0,,,,2013-04-23 08:00,2013-05-09 17:00,,2013-01-15 08:00,2013-01-31 17:00,2013-01-15 08:00,2013-01-31 17:00,2013-01-15 08:00,2013-01-31 17:00,2013-04-23 08:00,2013-05-09 17:00,,PT_Normal,,,,,YugQjbaaSPefIIocDLtWXA,,,,N,0,0,,,2013-02-16 15:51,2013-02-16 15:56,admin,admin
499327,6359,124271,13662,0,N,N,N,CP_Drtn,TT_Task,DT_FixedDUR2,TK_NotStart,DUKHENGP2ADWARSM4880,Ceramic Flooring & Wall Drawings-Sub,,624,0,120,0,30,30,120,0,0,0,,,,2013-04-27 08:00,2013-05-13 17:00,,2013-01-24 08:00,2013-02-10 17:00,2013-01-24 08:00,2013-02-10 17:00,2013-01-24 08:00,2013-02-10 17:00,2013-04-27 08:00,2013-05-13 17:00,,PT_Normal,,,,,hUVRbipMRTC1jpVWUHHHZg,,,,N,0,0,,,2013-02-16 15:51,2013-02-16 15:56,admin,admin
499328,6359,124271,13662,0,N,N,N,CP_Drtn,TT_Task,DT_FixedDUR2,TK_NotStart,DUKHENGP2ADWARSM4890,Porcelain Floor Drawings-Sub,,696,0,120,0,30,30,120,0,0,0,,,,2013-05-07 08:00,2013-05-23 17:00,,2013-01-24 08:00,2013-02-10 17:00,2013-01-24 08:00,2013-02-10 17:00,2013-01-24 08:00,2013-02-10 17:00,2013-05-07 08:00,2013-05-23 17:00,,PT_Normal,,,,,kcd/psEKTKuaJC2vATMy0Q,,,,N,0,0,,,2013-02-16 15:51,2013-02-16 15:56,admin,admin
499329,6359,124271,13662,0,N,N,N,CP_Drtn,TT_Task,DT_FixedDUR2,TK_NotStart,DUKHENGP2ADWARSM4900,Cobble & Slate Flooring Drawings-Sub,,944,0,120,0,30,30,120,0,0,0,,,,2013-06-12 08:00,2013-06-29 17:00,,2013-01-24 08:00,2013-02-10 17:00,2013-01-24 08:00,2013-02-10 17:00,2013-01-24 08:00,2013-02-10 17:00,2013-06-12 08:00,2013-06-29 17:00,,PT_Normal,,,,,b3im1nf0SEOGZilWM2h+ew,,,,N,0,0,,,2013-02-16 15:51,2013-02-16 15:56,admin,admin
499330,6359,124271,13662,0,N,N,N,CP_Drtn,TT_Task,DT_FixedDUR2,TK_NotStart,DUKHENGP2ADWARSM4910,Gypsum False Ceiling Drawings-Sub,,536,0,120,0,20,20,120,0,0,0,,,,2013-06-01 08:00,2013-06-17 17:00,,2013-03-14 08:00,2013-03-31 17:00,2013-03-14 08:00,2013-03-31 17:00,2013-03-14 08:00,2013-03-31 17:00,2013-06-01 08:00,2013-06-17 17:00,,PT_Normal,,,,,PcEAbJJLTPWlpTcwrfpmXg,,,,N,0,0,,,2013-02-16 15:51,2013-02-16 15:56,admin,admin
499331,6359,124271,13662,0,N,N,N,CP_Drtn,TT_Task,DT_FixedDUR2,TK_NotStart,DUKHENGP2ADWARSM4930,Doors & window Drawings-Sub,,488,0,120,0,20,20,120,0,0,0,,,,2013-05-30 08:00,2013-06-16 17:00,,2013-03-20 08:00,2013-04-06 17:00,2013-03-20 08:00,2013-04-06 17:00,2013-03-20 08:00,2013-04-06 17:00,2013-05-30 08:00,2013-06-16 17:00,,PT_Normal,,,,,0caG/hnMTl+iQATB4nni6A,,,,N,0,0,,,2013-02-16 15:51,2013-02-16 15:56,admin,admin
499332,6359,124271,13662,0,N,N,N,CP_Drtn,TT_Task,DT_FixedDUR2,TK_NotStart,DUKHENGP2ADWARSM4940,Carpentry & Joinery Drawings-Sub,,664,0,120,0,30,30,120,0,0,0,,,,2013-07-13 08:00,2013-07-29 17:00,,2013-04-07 08:00,2013-04-23 17:00,2013-04-07 08:00,2013-04-23 17:00,2013-04-07 08:00,2013-04-23 17:00,2013-07-13 08:00,2013-07-29 17:00,,PT_Normal,,,,,lJLX+UdCToGVUSJq7ovIjA,,,,N,0,0,,,2013-02-16 15:51,2013-02-16 15:56,admin,admin
499333,6359,124273,13662,0,N,N,N,CP_Drtn,TT_Task,DT_FixedDUR2,TK_NotStart,DUKHENGP2ADWMESM5010,Plumbing Layout & Details Drawings-Sub,,424,0,120,0,20,20,120,0,0,0,,,,2013-04-24 08:00,2013-05-11 17:00,,2013-02-21 08:00,2013-03-10 17:00,2013-02-21 08:00,2013-03-10 17:00,2013-02-21 08:00,2013-03-10 17:00,2013-04-24 08:00,2013-05-11 17:00,,PT_Normal,,,,,GSwww5lpR3i5fX4eo6hKFQ,,,,N,0,0,,,2013-02-16 15:51,2013-02-16 15:56,admin,admin
499334,6359,124273,13662,0,N,N,N,CP_Drtn,TT_Task,DT_FixedDUR2,TK_NotStart,DUKHENGP2ADWMESM5020,Drainage Layout & Details Drawings-Sub,,360,0,120,0,20,20,120,0,0,0,,,,2013-04-15 08:00,2013-05-01 17:00,,2013-02-21 08:00,2013-03-10 17:00,2013-02-21 08:00,2013-03-10 17:00,2013-02-21 08:00,2013-03-10 17:00,2013-04-15 08:00,2013-05-01 17:00,,PT_Normal,,,,,iOWpKr3pT2GaI/F69d1icg,,,,N,0,0,,,2013-02-16 15:51,2013-02-16 16:17,admin,admin
499335,6359,124273,13662,0,N,N,N,CP_Drtn,TT_Task,DT_FixedDUR2,TK_NotStart,DUKHENGP2ADWMESM5030,Fire Fighting Layout & Details Drawings-Sub,,360,0,120,0,20,20,120,0,0,0,,,,2013-05-02 08:00,2013-05-19 17:00,,2013-03-11 08:00,2013-03-27 17:00,2013-03-11 08:00,2013-03-27 17:00,2013-03-11 08:00,2013-03-27 17:00,2013-05-02 08:00,2013-05-19 17:00,,PT_Normal,,,,,ZwOvqOf3TkSlAIfYD/iTMA,,,,N,0,0,,,2013-02-16 15:51,2013-02-16 16:17,admin,admin
499336,6359,124273,13662,0,N,N,N,CP_Drtn,TT_Task,DT_FixedDUR2,TK_NotStart,DUKHENGP2ADWMESM5040,AC Layout & Details Drawings-Sub,,360,0,120,0,30,30,120,0,0,0,,,,2013-05-20 08:00,2013-06-05 17:00,,2013-03-28 08:00,2013-04-14 17:00,2013-03-28 08:00,2013-04-14 17:00,2013-03-28 08:00,2013-04-14 17:00,2013-05-20 08:00,2013-06-05 17:00,,PT_Normal,,,,,EwjV9dXkS8uuNl8U6kvEYw,,,,N,0,0,,,2013-02-16 15:51,2013-02-16 16:17,admin,admin
499337,6359,124274,13662,0,N,N,N,CP_Drtn,TT_Task,DT_FixedDUR2,TK_NotStart,DUKHENGP2ADWMEAP5010,Plumbing Layout & Details Drawings-App,,424,0,240,0,0,0,240,0,0,0,,,,2013-05-12 08:00,2013-06-15 17:00,,2013-03-11 08:00,2013-04-14 17:00,2013-03-11 08:00,2013-04-14 17:00,2013-03-11 08:00,2013-04-14 17:00,2013-05-12 08:00,2013-06-15 17:00,,PT_Normal,,,,,H4/MvUOXSAqjaVtA896VbA,,,,N,0,0,,,2013-02-16 15:51,2013-02-16 15:56,admin,admin
499338,6359,124274,13662,0,N,N,N,CP_Drtn,TT_Task,DT_FixedDUR2,TK_NotStart,DUKHENGP2ADWMEAP5020,Drainage Layout & Details Drawings-App,,424,0,240,0,0,0,240,0,0,0,,,,2013-05-12 08:00,2013-06-15 17:00,,2013-03-11 08:00,2013-04-14 17:00,2013-03-11 08:00,2013-04-14 17:00,2013-03-11 08:00,2013-04-14 17:00,2013-05-12 08:00,2013-06-15 17:00,,PT_Normal,,,,,sVnxP+QIQFKd/Q6rACTLQQ,,,,N,0,0,,,2013-02-16 15:51,2013-02-16 15:56,admin,admin
499339,6359,124274,13662,0,N,N,N,CP_Drtn,TT_Task,DT_FixedDUR2,TK_NotStart,DUKHENGP2ADWMEAP5030,Fire Fighting Layout & Details Drawings-App,,1160,440,240,0,0,0,240,0,0,0,,,,2013-09-17 08:00,2013-10-23 17:00,,2013-03-28 08:00,2013-05-01 17:00,2013-03-28 08:00,2013-05-01 17:00,2013-03-28 08:00,2013-05-01 17:00,2013-09-17 08:00,2013-10-23 17:00,,PT_Normal,,,,,mJY/le8TSAamQ0rjpqBiog,,,,N,0,0,,,2013-02-16 15:51,2013-02-16 15:56,admin,admin
499340,6359,124274,13662,0,N,N,N,CP_Drtn,TT_Task,DT_FixedDUR2,TK_NotStart,DUKHENGP2ADWMEAP5040,AC Layout & Details Drawings-App,,512,80,240,0,0,0,240,0,0,0,,,,2013-06-29 08:00,2013-08-01 17:00,,2013-04-15 08:00,2013-05-19 17:00,2013-04-15 08:00,2013-05-19 17:00,2013-04-15 08:00,2013-05-19 17:00,2013-06-29 08:00,2013-08-01 17:00,,PT_Normal,,,,,p0tmacThQialiW0MfVRhIQ,,,,N,0,0,,,2013-02-16 15:51,2013-02-16 15:56,admin,admin
499341,6359,124276,13662,0,N,N,N,CP_Drtn,TT_Task,DT_FixedDUR2,TK_NotStart,DUKHENGP2ADWSTAP4800,Footing Drawings-App,,432,432,200,0,0,0,200,0,0,0,,,,2013-02-10 08:00,2013-03-11 17:00,,2012-12-08 08:00,2013-01-06 17:00,2012-12-08 08:00,2013-01-06 17:00,2012-12-08 08:00,2013-01-06 17:00,2013-02-10 08:00,2013-03-11 17:00,,PT_Normal,,,,,5AEXPyk1TVaVtMxCbyO7Fg,,,,N,0,0,,,2013-02-16 15:51,2013-02-16 15:56,admin,admin
499342,6359,124276,13662,0,N,N,N,CP_Drtn,TT_Task,DT_FixedDUR2,TK_NotStart,DUKHENGP2ADWSTAP4810,Grade Beam & Slab Drawings-App,,680,680,240,0,0,0,240,0,0,0,,,,2013-03-31 08:00,2013-05-04 17:00,,2012-12-20 08:00,2013-01-23 17:00,2012-12-20 08:00,2013-01-23 17:00,2012-12-20 08:00,2013-01-23 17:00,2013-03-31 08:00,2013-05-04 17:00,,PT_Normal,,,,,6nsqNayET/KsWOAmXWZVcg,,,,N,0,0,,,2013-02-16 15:51,2013-02-16 15:56,admin,admin
499343,6359,124276,13662,0,N,N,N,CP_Drtn,TT_Task,DT_FixedDUR2,TK_NotStart,DUKHENGP2ADWSTAP4820,Column Drawings-App,,952,952,240,0,0,0,240,0,0,0,,,,2013-05-15 08:00,2013-06-18 17:00,,2012-12-26 08:00,2013-01-29 17:00,2012-12-26 08:00,2013-01-29 17:00,2012-12-26 08:00,2013-01-29 17:00,2013-05-15 08:00,2013-06-18 17:00,,PT_Normal,,,,,MTr9g7SBT1u6zlznS0uOQg,,,,N,0,0,,,2013-02-16 15:51,2013-02-16 15:56,admin,admin
499344,6359,124276,13662,0,N,N,N,CP_Drtn,TT_Task,DT_FixedDUR2,TK_NotStart,DUKHENGP2ADWSTAP4830,GF Beams & Slabs Drawings-App,,1000,1000,240,0,0,0,240,0,0,0,,,,2013-06-03 08:00,2013-07-07 17:00,,2013-01-07 08:00,2013-02-10 17:00,2013-01-07 08:00,2013-02-10 17:00,2013-01-07 08:00,2013-02-10 17:00,2013-06-03 08:00,2013-07-07 17:00,,PT_Normal,,,,,fFeYAii9QuagLrHBPl0y9g,,,,N,0,0,,,2013-02-16 15:51,2013-02-16 15:56,admin,admin
499345,6359,124277,13662,0,N,N,N,CP_Drtn,TT_Task,DT_FixedDUR2,TK_NotStart,DUKHENGP2ADWSTSM4800,Footing Drawings-Sub,,432,0,80,0,20,20,80,0,0,0,,,,2013-01-29 08:00,2013-02-09 17:00,,2012-11-26 08:00,2012-12-06 17:00,2012-11-26 08:00,2012-12-06 17:00,2012-11-26 08:00,2012-12-06 17:00,2013-01-29 08:00,2013-02-09 17:00,,PT_Normal,,,,,wVHSjPZbRHOQ/cbi7e/yjA,,,,N,0,0,,,2013-02-16 15:51,2013-02-16 15:56,admin,admin
499346,6359,124277,13662,0,N,N,N,CP_Drtn,TT_Task,DT_FixedDUR2,TK_NotStart,DUKHENGP2ADWSTSM4810,Grade Beam & Slab Drawings-Sub,,624,0,120,0,30,30,120,0,0,0,,,,2013-03-05 08:00,2013-03-21 17:00,,2012-12-02 08:00,2012-12-19 17:00,2012-12-02 08:00,2012-12-19 17:00,2012-12-02 08:00,2012-12-19 17:00,2013-03-05 08:00,2013-03-21 17:00,,PT_Normal,,,,,U1QMSn0lQ42dTipngdILyQ,,,,N,0,0,,,2013-02-16 15:51,2013-02-16 15:56,admin,admin
499347,6359,124277,13662,0,N,N,N,CP_Drtn,TT_Task,DT_FixedDUR2,TK_NotStart,DUKHENGP2ADWSTSM4820,Column Drawings-Sub,,624,0,120,0,30,30,120,0,0,0,,,,2013-03-11 08:00,2013-03-27 17:00,,2012-12-08 08:00,2012-12-25 17:00,2012-12-08 08:00,2012-12-25 17:00,2012-12-08 08:00,2012-12-25 17:00,2013-03-11 08:00,2013-03-27 17:00,,PT_Normal,,,,,JvuWqu/nQLyijTB2Tv7Pjg,,,,N,0,0,,,2013-02-16 15:51,2013-02-16 15:56,admin,admin
499348,6359,124277,13662,0,N,N,N,CP_Drtn,TT_Task,DT_FixedDUR2,TK_NotStart,DUKHENGP2ADWSTSM4830,GF Beams & Slabs Drawings-Sub,,624,0,120,0,30,30,120,0,0,0,,,,2013-03-23 08:00,2013-04-08 17:00,,2012-12-20 08:00,2013-01-06 17:00,2012-12-20 08:00,2013-01-06 17:00,2012-12-20 08:00,2013-01-06 17:00,2013-03-23 08:00,2013-04-08 17:00,,PT_Normal,,,,,0SBwHn3ZR9+FwCsEe0rkiQ,,,,N,0,0,,,2013-02-16 15:51,2013-02-16 15:56,admin,admin
499349,6359,124279,13662,0,N,N,N,CP_Drtn,TT_Task,DT_FixedDUR2,TK_NotStart,DUKHENGP2ADWELAP5000,Telephone & TV System Drawings-App,,600,48,240,0,0,0,240,0,0,0,,,,2013-08-04 08:00,2013-09-10 17:00,,2013-05-08 08:00,2013-06-11 17:00,2013-05-08 08:00,2013-06-11 17:00,2013-05-08 08:00,2013-06-11 17:00,2013-08-04 08:00,2013-09-10 17:00,,PT_Normal,,,,,n3PdlMyOT1u3HLhW8JjVfg,,,,N,0,0,,,2013-02-16 15:51,2013-02-16 15:56,admin,admin
499350,6359,124279,13662,0,N,N,N,CP_Drtn,TT_Task,DT_FixedDUR2,TK_NotStart,DUKHENGP2ADWELAP4950,Single Line Diagram-App,,920,320,240,0,0,0,240,0,0,0,,,,2013-07-23 08:00,2013-08-29 17:00,,2013-03-11 08:00,2013-04-14 17:00,2013-03-11 08:00,2013-04-14 17:00,2013-03-11 08:00,2013-04-14 17:00,2013-07-23 08:00,2013-08-29 17:00,,PT_Normal,,,,,d7VIRyRCQyu0jpQPIFTppQ,,,,N,0,0,,,2013-02-16 15:51,2013-02-16 15:56,admin,admin
499351,6359,124279,13662,0,N,N,N,CP_Drtn,TT_Task,DT_FixedDUR2,TK_NotStart,DUKHENGP2ADWELAP4960,Lighting Layout Drawings-App,,472,0,240,0,0,0,240,0,0,0,,,,2013-05-25 08:00,2013-06-27 17:00,,2013-03-17 08:00,2013-04-20 17:00,2013-03-17 08:00,2013-04-20 17:00,2013-03-17 08:00,2013-04-20 17:00,2013-05-25 08:00,2013-06-27 17:00,,PT_Normal,,,,,bqswCp3NR3uPj6EWT/INrw,,,,N,0,0,,,2013-02-16 15:51,2013-02-16 15:56,admin,admin
499352,6359,124279,13662,0,N,N,N,CP_Drtn,TT_Task,DT_FixedDUR2,TK_NotStart,DUKHENGP2ADWELAP4970,Power Layout Drawings-App,,880,280,240,0,0,0,240,0,0,0,,,,2013-07-23 08:00,2013-08-29 17:00,,2013-03-17 08:00,2013-04-20 17:00,2013-03-17 08:00,2013-04-20 17:00,2013-03-17 08:00,2013-04-20 17:00,2013-07-23 08:00,2013-08-29 17:00,,PT_Normal,,,,,QwCb7WjLRaebGnCNL4Mvbg,,,,N,0,0,,,2013-02-16 15:51,2013-02-16 15:56,admin,admin
499353,6359,124279,13662,0,N,N,N,CP_Drtn,TT_Task,DT_FixedDUR2,TK_NotStart,DUKHENGP2ADWELAP4980,Central Alarm Monitoring System Drawings-App,,792,160,240,0,0,0,240,0,0,0,,,,2013-07-28 08:00,2013-09-03 17:00,,2013-04-03 08:00,2013-05-07 17:00,2013-04-03 08:00,2013-05-07 17:00,2013-04-03 08:00,2013-05-07 17:00,2013-07-28 08:00,2013-09-03 17:00,,PT_Normal,,,,,46JSVg9QQ0yDjOfRuweryg,,,,N,0,0,,,2013-02-16 15:51,2013-02-16 15:56,admin,admin
499354,6359,124279,13662,0,N,N,N,CP_Drtn,TT_Task,DT_FixedDUR2,TK_NotStart,DUKHENGP2ADWELAP4990,Audio Video Intercom System Drawings-App,,720,160,240,0,0,0,240,0,0,0,,,,2013-08-04 08:00,2013-09-10 17:00,,2013-04-21 08:00,2013-05-25 17:00,2013-04-21 08:00,2013-05-25 17:00,2013-04-21 08:00,2013-05-25 17:00,2013-08-04 08:00,2013-09-10 17:00,,PT_Normal,,,,,H0kIM6ViSQqgzmT1SgYDXw,,,,N,0,0,,,2013-02-16 15:51,2013-02-16 15:56,admin,admin
499355,6359,124280,13662,0,N,N,N,CP_Drtn,TT_Task,DT_FixedDUR2,TK_NotStart,DUKHENGP2ADWELSM4950,Single Line Diagram-Sub,,472,0,120,0,20,20,120,0,0,0,,,,2013-05-01 08:00,2013-05-18 17:00,,2013-02-21 08:00,2013-03-10 17:00,2013-02-21 08:00,2013-03-10 17:00,2013-02-21 08:00,2013-03-10 17:00,2013-05-01 08:00,2013-05-18 17:00,,PT_Normal,,,,,jGJ4ZE5ZRgSmG/Ar6nJhww,,,,N,0,0,,,2013-02-16 15:51,2013-02-16 15:56,admin,admin
499356,6359,124280,13662,0,N,N,N,CP_Drtn,TT_Task,DT_FixedDUR2,TK_NotStart,DUKHENGP2ADWELSM4960,Lighting Layout Drawings-Sub,,472,0,120,0,20,20,120,0,0,0,,,,2013-05-07 08:00,2013-05-23 17:00,,2013-02-27 08:00,2013-03-16 17:00,2013-02-27 08:00,2013-03-16 17:00,2013-02-27 08:00,2013-03-16 17:00,2013-05-07 08:00,2013-05-23 17:00,,PT_Normal,,,,,KugGQO43TWeuBcbAtc1FIQ,,,,N,0,0,,,2013-02-16 15:51,2013-02-16 15:56,admin,admin
499357,6359,124280,13662,0,N,N,N,CP_Drtn,TT_Task,DT_FixedDUR2,TK_NotStart,DUKHENGP2ADWELSM4970,Power Layout Drawings-Sub,,600,0,120,0,20,20,120,0,0,0,,,,2013-05-26 08:00,2013-06-11 17:00,,2013-02-27 08:00,2013-03-16 17:00,2013-02-27 08:00,2013-03-16 17:00,2013-02-27 08:00,2013-03-16 17:00,2013-05-26 08:00,2013-06-11 17:00,,PT_Normal,,,,,SQn+XHkzTTy0EPkjC4anTg,,,,N,0,0,,,2013-02-16 15:51,2013-02-16 15:56,admin,admin
499358,6359,124280,13662,0,N,N,N,CP_Drtn,TT_Task,DT_FixedDUR2,TK_NotStart,DUKHENGP2ADWELSM4980,Central Alarm Monitoring System Drawings-Sub,,600,0,120,0,20,20,120,0,0,0,,,,2013-06-12 08:00,2013-06-29 17:00,,2013-03-17 08:00,2013-04-02 17:00,2013-03-17 08:00,2013-04-02 17:00,2013-03-17 08:00,2013-04-02 17:00,2013-06-12 08:00,2013-06-29 17:00,,PT_Normal,,,,,tktwkdZVTZ+Kxph9DFK2sw,,,,N,0,0,,,2013-02-16 15:51,2013-02-16 15:56,admin,admin
499359,6359,124280,13662,0,N,N,N,CP_Drtn,TT_Task,DT_FixedDUR2,TK_NotStart,DUKHENGP2ADWELSM4990,Audio Video Intercom System Drawings-Sub,,600,0,120,0,30,30,120,0,0,0,,,,2013-06-30 08:00,2013-07-16 17:00,,2013-04-03 08:00,2013-04-20 17:00,2013-04-03 08:00,2013-04-20 17:00,2013-04-03 08:00,2013-04-20 17:00,2013-06-30 08:00,2013-07-16 17:00,,PT_Normal,,,,,2xJL/6exQHiEaZGlOuRoaw,,,,N,0,0,,,2013-02-16 15:51,2013-02-16 15:56,admin,admin
499360,6359,124280,13662,0,N,N,N,CP_Drtn,TT_Task,DT_FixedDUR2,TK_NotStart,DUKHENGP2ADWELSM5000,Telephone & TV System Drawings-Sub,,600,0,120,0,30,30,120,0,0,0,,,,2013-07-17 08:00,2013-08-03 17:00,,2013-04-21 08:00,2013-05-07 17:00,2013-04-21 08:00,2013-05-07 17:00,2013-04-21 08:00,2013-05-07 17:00,2013-07-17 08:00,2013-08-03 17:00,,PT_Normal,,,,,YwSs02/rTcy2/ML4G6gFxA,,,,N,0,0,,,2013-02-16 15:51,2013-02-16 15:56,admin,admin
499361,6359,124282,13662,0,N,N,N,CP_Drtn,TT_Task,DT_FixedDUR2,TK_NotStart,DUKHENGI2ADWELSM5080,Electrical Line Layout & Details-Sub,,392,0,120,0,30,30,120,0,0,0,,,,2013-06-29 08:00,2013-07-15 17:00,,2013-05-02 08:00,2013-05-19 17:00,2013-05-02 08:00,2013-05-19 17:00,2013-05-02 08:00,2013-05-19 17:00,2013-06-29 08:00,2013-07-15 17:00,,PT_Normal,,,,,F3nOQlCAQLC70oleRcP+pA,,,,N,0,0,,,2013-02-16 15:51,2013-02-16 15:56,admin,admin
499362,6359,124282,13662,0,N,N,N,CP_Drtn,TT_Task,DT_FixedDUR2,TK_NotStart,DUKHENGI2ADWSTSM5090,Street Lighting Layout & details -Sub,,392,0,120,0,30,30,120,0,0,0,,,,2013-06-29 08:00,2013-07-15 17:00,,2013-05-02 08:00,2013-05-19 17:00,2013-05-02 08:00,2013-05-19 17:00,2013-05-02 08:00,2013-05-19 17:00,2013-06-29 08:00,2013-07-15 17:00,,PT_Normal,,,,,gsOUjjwMSaqucjMhbfaxVg,,,,N,0,0,,,2013-02-16 15:51,2013-02-16 15:56,admin,admin
499363,6359,124282,13662,0,N,N,N,CP_Drtn,TT_Task,DT_FixedDUR2,TK_NotStart,DUKHENGI2ADWDRSM5050,Drainage Line Layout & Details-Sub,,360,0,120,0,30,30,120,0,0,0,,,,2013-06-06 08:00,2013-06-23 17:00,,2013-04-15 08:00,2013-05-01 17:00,2013-04-15 08:00,2013-05-01 17:00,2013-04-15 08:00,2013-05-01 17:00,2013-06-06 08:00,2013-06-23 17:00,,PT_Normal,,,,,r29oD1IDSzqTBMfDosFDdw,,,,N,0,0,,,2013-02-16 15:51,2013-02-16 16:17,admin,admin
499364,6359,124282,13662,0,N,N,N,CP_Drtn,TT_Task,DT_FixedDUR2,TK_NotStart,DUKHENGI2ADWFFSM5060,Fire Fighting Line Layout & Details-Sub,,360,0,120,0,30,30,120,0,0,0,,,,2013-06-06 08:00,2013-06-23 17:00,,2013-04-15 08:00,2013-05-01 17:00,2013-04-15 08:00,2013-05-01 17:00,2013-04-15 08:00,2013-05-01 17:00,2013-06-06 08:00,2013-06-23 17:00,,PT_Normal,,,,,WVNZGeiTTh+DUkaXvltPJg,,,,N,0,0,,,2013-02-16 15:51,2013-02-16 16:17,admin,admin
499365,6359,124282,13662,0,N,N,N,CP_Drtn,TT_Task,DT_FixedDUR2,TK_NotStart,DUKHENGI2ADWWSSM5070,Water Supply Line Layout & Details-Sub,,360,0,120,0,30,30,120,0,0,0,,,,2013-06-06 08:00,2013-06-23 17:00,,2013-04-15 08:00,2013-05-01 17:00,2013-04-15 08:00,2013-05-01 17:00,2013-04-15 08:00,2013-05-01 17:00,2013-06-06 08:00,2013-06-23 17:00,,PT_Normal,,,,,0NhJtWCNRDSoib8qDoy5rg,,,,N,0,0,,,2013-02-16 15:51,2013-02-16 16:17,admin,admin
499366,6359,124282,13662,0,N,N,N,CP_Drtn,TT_Task,DT_FixedDUR2,TK_NotStart,DUKHENGI2ADWIRSM5110,Irrigation Layout & Details-Sub,,392,0,120,0,30,30,120,0,0,0,,,,2013-07-16 08:00,2013-08-01 17:00,,2013-05-20 08:00,2013-06-05 17:00,2013-05-20 08:00,2013-06-05 17:00,2013-05-20 08:00,2013-06-05 17:00,2013-07-16 08:00,2013-08-01 17:00,,PT_Normal,,,,,VkIicYQQQ/y3ce/sf5z17w,,,,N,0,0,,,2013-02-16 15:51,2013-02-16 15:56,admin,admin
499367,6359,124282,13662,0,N,N,N,CP_Drtn,TT_Task,DT_FixedDUR2,TK_NotStart,DUKHENGI2ADWTCSM5100,Telecommunication Line Layout & Details-Sub,,392,0,120,0,30,30,120,0,0,0,,,,2013-06-29 08:00,2013-07-15 17:00,,2013-05-02 08:00,2013-05-19 17:00,2013-05-02 08:00,2013-05-19 17:00,2013-05-02 08:00,2013-05-19 17:00,2013-06-29 08:00,2013-07-15 17:00,,PT_Normal,,,,,wZzZSl4FQbmnbSR+WrEOvQ,,,,N,0,0,,,2013-02-16 15:51,2013-02-16 15:56,admin,admin
499368,6359,124282,13662,0,N,N,N,CP_Drtn,TT_Task,DT_FixedDUR2,TK_NotStart,DUKHENGI2ADWPSSM5140,Parking Shed Layout & Details Drawings-Sub,,392,0,120,0,30,30,120,0,0,0,,,,2013-07-24 08:00,2013-08-13 17:00,,2013-05-28 08:00,2013-06-13 17:00,2013-05-28 08:00,2013-06-13 17:00,2013-05-28 08:00,2013-06-13 17:00,2013-07-24 08:00,2013-08-13 17:00,,PT_Normal,,,,,P+iu5plwSYiS3HKb0PL3TA,,,,N,0,0,,,2013-02-16 15:51,2013-02-16 15:56,admin,admin
499369,6359,124282,13662,0,N,N,N,CP_Drtn,TT_Task,DT_FixedDUR2,TK_NotStart,DUKHENGI2ADWSLSM5120,Soft & HardLandscaping Layout & Detail-Sub,,392,0,120,0,30,30,120,0,0,0,,,,2013-07-16 08:00,2013-08-01 17:00,,2013-05-20 08:00,2013-06-05 17:00,2013-05-20 08:00,2013-06-05 17:00,2013-05-20 08:00,2013-06-05 17:00,2013-07-16 08:00,2013-08-01 17:00,,PT_Normal,,,,,rAvU3Vv+TQ+QoC8mdvXyDA,,,,N,0,0,,,2013-02-16 15:51,2013-02-16 15:56,admin,admin
499370,6359,124282,13662,0,N,N,N,CP_Drtn,TT_Task,DT_FixedDUR2,TK_NotStart,DUKHENGI2ADWBWSM5130,Boundary Wall Layout & Details-Sub,,392,0,120,0,30,30,120,0,0,0,,,,2013-07-16 08:00,2013-08-01 17:00,,2013-05-20 08:00,2013-06-05 17:00,2013-05-20 08:00,2013-06-05 17:00,2013-05-20 08:00,2013-06-05 17:00,2013-07-16 08:00,2013-08-01 17:00,,PT_Normal,,,,,Ouc53IwzSzOr5M+IWsUyzQ,,,,N,0,0,,,2013-02-16 15:51,2013-02-16 15:56,admin,admin
499371,6359,124282,13662,0,N,N,N,CP_Drtn,TT_Task,DT_FixedDUR2,TK_NotStart,DUKHENGI2ADWRWSM5150,Road Layout & Details-Sub,,392,0,120,0,30,30,120,0,0,0,,,,2013-07-24 08:00,2013-08-13 17:00,,2013-05-28 08:00,2013-06-13 17:00,2013-05-28 08:00,2013-06-13 17:00,2013-05-28 08:00,2013-06-13 17:00,2013-07-24 08:00,2013-08-13 17:00,,PT_Normal,,,,,/zFkS7AKTdmIZ+0CTdiIvg,,,,N,0,0,,,2013-02-16 15:51,2013-02-16 15:56,admin,admin
499372,6359,124282,13662,0,N,N,N,CP_Drtn,TT_Task,DT_FixedDUR2,TK_NotStart,DUKHENGI2ADWIWSM5160,Irrigation Water Tank & Pump Room Details- Sub,,392,0,120,0,30,30,120,0,0,0,,,,2013-07-24 08:00,2013-08-13 17:00,,2013-05-28 08:00,2013-06-13 17:00,2013-05-28 08:00,2013-06-13 17:00,2013-05-28 08:00,2013-06-13 17:00,2013-07-24 08:00,2013-08-13 17:00,,PT_Normal,,,,,gpUFxlkZTQCpC296b3O5zQ,,,,N,0,0,,,2013-02-16 15:51,2013-02-16 15:56,admin,admin
499373,6359,124282,13662,0,N,N,N,CP_Drtn,TT_Task,DT_FixedDUR2,TK_NotStart,DUKHENGI2ADWGZSM5170,Gazebo Plan & Details-Sub,,720,0,120,0,30,30,120,0,0,0,,,,2013-10-01 08:00,2013-10-20 17:00,,2013-06-15 08:00,2013-07-01 17:00,2013-06-15 08:00,2013-07-01 17:00,2013-06-15 08:00,2013-07-01 17:00,2013-10-01 08:00,2013-10-20 17:00,,PT_Normal,,,,,sCM1d49fRk2lRK7tFP11dg,,,,N,0,0,,,2013-02-16 15:51,2013-02-16 15:56,admin,admin
499374,6359,124283,13662,0,N,N,N,CP_Drtn,TT_Task,DT_FixedDUR2,TK_NotStart,DUKHENGI2ADWELAP5080,Electrical Line Layout & Details-App,,960,240,240,0,0,0,240,0,0,0,,,,2013-10-10 08:00,2013-11-16 17:00,,2013-05-20 08:00,2013-06-23 17:00,2013-05-20 08:00,2013-06-23 17:00,2013-05-20 08:00,2013-06-23 17:00,2013-10-10 08:00,2013-11-16 17:00,,PT_Normal,,,,,i3ElXCarTfSC295Km6/L4A,,,,N,0,0,,,2013-02-16 15:51,2013-02-16 15:56,admin,admin
499375,6359,124283,13662,0,N,N,N,CP_Drtn,TT_Task,DT_FixedDUR2,TK_NotStart,DUKHENGI2ADWSTAP5090,Street Lighting Layout & details -App,,960,240,240,0,0,0,240,0,0,0,,,,2013-10-10 08:00,2013-11-16 17:00,,2013-05-20 08:00,2013-06-23 17:00,2013-05-20 08:00,2013-06-23 17:00,2013-05-20 08:00,2013-06-23 17:00,2013-10-10 08:00,2013-11-16 17:00,,PT_Normal,,,,,ng9jRKTJQtOCM9RHmRR8Dg,,,,N,0,0,,,2013-02-16 15:51,2013-02-16 15:56,admin,admin
499376,6359,124283,13662,0,N,N,N,CP_Drtn,TT_Task,DT_FixedDUR2,TK_NotStart,DUKHENGI2ADWDRAP5050,Drainage Line Layout & Details-App,,544,296,240,0,0,0,240,0,0,0,,,,2013-07-21 08:00,2013-08-27 17:00,,2013-05-02 08:00,2013-06-05 17:00,2013-05-02 08:00,2013-06-05 17:00,2013-05-02 08:00,2013-06-05 17:00,2013-07-21 08:00,2013-08-27 17:00,,PT_Normal,,,,,CEMjgFWyRzetNVgOOP6voA,,,,N,0,0,,,2013-02-16 15:51,2013-02-16 15:56,admin,admin
499377,6359,124283,13662,0,N,N,N,CP_Drtn,TT_Task,DT_FixedDUR2,TK_NotStart,DUKHENGI2ADWFFAP5060,Fire Fighting Line Layout & Details-App,,360,320,240,0,0,0,240,0,0,0,,,,2013-06-24 08:00,2013-07-28 17:00,,2013-05-02 08:00,2013-06-05 17:00,2013-05-02 08:00,2013-06-05 17:00,2013-05-02 08:00,2013-06-05 17:00,2013-06-24 08:00,2013-07-28 17:00,,PT_Normal,,,,,Ds5qSVnbSYWmX9AHYn9RGg,,,,N,0,0,,,2013-02-16 15:51,2013-02-16 16:17,admin,admin
499378,6359,124283,13662,0,N,N,N,CP_Drtn,TT_Task,DT_FixedDUR2,TK_NotStart,DUKHENGI2ADWWSAP5070,Water Supply Line Layout & Details-App,,688,296,240,0,0,0,240,0,0,0,,,,2013-08-14 08:00,2013-09-17 17:00,,2013-05-02 08:00,2013-06-05 17:00,2013-05-02 08:00,2013-06-05 17:00,2013-05-02 08:00,2013-06-05 17:00,2013-08-14 08:00,2013-09-17 17:00,,PT_Normal,,,,,akgVJshbQxi1m6lYZ/ZHWw,,,,N,0,0,,,2013-02-16 15:51,2013-02-16 15:56,admin,admin
499379,6359,124283,13662,0,N,N,N,CP_Drtn,TT_Task,DT_FixedDUR2,TK_NotStart,DUKHENGI2ADWIRAP5110,Irrigation Layout & Details-App,,728,120,240,0,0,0,240,0,0,0,,,,2013-09-24 08:00,2013-10-30 17:00,,2013-06-06 08:00,2013-07-10 17:00,2013-06-06 08:00,2013-07-10 17:00,2013-06-06 08:00,2013-07-10 17:00,2013-09-24 08:00,2013-10-30 17:00,,PT_Normal,,,,,Ns0Tr11mR/6U1LlVG3PjGA,,,,N,0,0,,,2013-02-16 15:51,2013-02-16 15:56,admin,admin
499380,6359,124283,13662,0,N,N,N,CP_Drtn,TT_Task,DT_FixedDUR2,TK_NotStart,DUKHENGI2ADWTCAP5100,Telecommunication Line Layout & Details-App,,960,480,240,0,0,0,240,0,0,0,,,,2013-10-10 08:00,2013-11-16 17:00,,2013-05-20 08:00,2013-06-23 17:00,2013-05-20 08:00,2013-06-23 17:00,2013-05-20 08:00,2013-06-23 17:00,2013-10-10 08:00,2013-11-16 17:00,,PT_Normal,,,,,tHJckZhfQACzdXOA56nlug,,,,N,0,0,,,2013-02-16 15:51,2013-02-16 15:56,admin,admin
499381,6359,124283,13662,0,N,N,N,CP_Drtn,TT_Task,DT_FixedDUR2,TK_NotStart,DUKHENGI2ADWPSAP5140,Parking Shed Layout & Details Drawings-App,,1200,184,240,0,0,0,240,0,0,0,,,,2013-12-12 08:00,2014-01-16 17:00,,2013-06-15 08:00,2013-07-18 17:00,2013-06-15 08:00,2013-07-18 17:00,2013-06-15 08:00,2013-07-18 17:00,2013-12-12 08:00,2014-01-16 17:00,,PT_Normal,,,,,zgqgYEZ1SSu8Md2QTcGtPg,,,,N,0,0,,,2013-02-16 15:51,2013-02-16 15:56,admin,admin
499382,6359,124283,13662,0,N,N,N,CP_Drtn,TT_Task,DT_FixedDUR2,TK_NotStart,DUKHENGI2ADWSLAP5120,Soft & HardLandscaping Layout & Detail-App,,536,360,240,0,0,0,240,0,0,0,,,,2013-08-27 08:00,2013-09-30 17:00,,2013-06-06 08:00,2013-07-10 17:00,2013-06-06 08:00,2013-07-10 17:00,2013-06-06 08:00,2013-07-10 17:00,2013-08-27 08:00,2013-09-30 17:00,,PT_Normal,,,,,CMkQ4qB/QQag/5iGIWqsXA,,,,N,0,0,,,2013-02-16 15:51,2013-02-16 15:56,admin,admin
499383,6359,124283,13662,0,N,N,N,CP_Drtn,TT_Task,DT_FixedDUR2,TK_NotStart,DUKHENGI2ADWBWAP5130,Boundary Wall Layout & Details-App,,680,360,240,0,0,0,240,0,0,0,,,,2013-09-17 08:00,2013-10-23 17:00,,2013-06-06 08:00,2013-07-10 17:00,2013-06-06 08:00,2013-07-10 17:00,2013-06-06 08:00,2013-07-10 17:00,2013-09-17 08:00,2013-10-23 17:00,,PT_Normal,,,,,66PQkafjSDeN1051nuAbQA,,,,N,0,0,,,2013-02-16 15:51,2013-02-16 16:45,admin,admin
499384,6359,124283,13662,0,N,N,N,CP_Drtn,TT_Task,DT_FixedDUR2,TK_NotStart,DUKHENGI2ADWRWAP5150,Road Layout & Details-App,,1192,184,240,0,0,0,240,0,0,0,,,,2013-12-11 08:00,2014-01-15 17:00,,2013-06-15 08:00,2013-07-18 17:00,2013-06-15 08:00,2013-07-18 17:00,2013-06-15 08:00,2013-07-18 17:00,2013-12-11 08:00,2014-01-15 17:00,,PT_Normal,,,,,YVtJansNTMOT2Qh3NbkYbQ,,,,N,0,0,,,2013-02-16 15:51,2013-02-16 15:56,admin,admin
499385,6359,124283,13662,0,N,N,N,CP_Drtn,TT_Task,DT_FixedDUR2,TK_NotStart,DUKHENGI2ADWIWAP5160,Irrigation Water Tank & Pump Room Details-App,,392,0,240,0,0,0,240,0,0,0,,,,2013-08-14 08:00,2013-09-17 17:00,,2013-06-15 08:00,2013-07-18 17:00,2013-06-15 08:00,2013-07-18 17:00,2013-06-15 08:00,2013-07-18 17:00,2013-08-14 08:00,2013-09-17 17:00,,PT_Normal,,,,,uKNY6kvlTfmsIK4x1kS8Fg,,,,N,0,0,,,2013-02-16 15:51,2013-02-16 15:56,admin,admin
499386,6359,124283,13662,0,N,N,N,CP_Drtn,TT_Task,DT_FixedDUR2,TK_NotStart,DUKHENGI2ADWGZAP5170,Gazebo Plan & Details-App,,720,240,240,0,0,0,240,0,0,0,,,,2013-10-21 08:00,2013-11-24 17:00,,2013-07-02 08:00,2013-08-05 17:00,2013-07-02 08:00,2013-08-05 17:00,2013-07-02 08:00,2013-08-05 17:00,2013-10-21 08:00,2013-11-24 17:00,,PT_Normal,,,,,yMcbfOIqQ6+ME2y99Nhc/A,,,,N,0,0,,,2013-02-16 15:51,2013-02-16 15:56,admin,admin
499387,6359,124287,13662,0,N,N,N,CP_Drtn,TT_Task,DT_FixedDUR2,TK_NotStart,DUKHENGP1ADWMESM4210,Plumbing Layout & Details Drawings-Sub,,424,0,120,0,20,20,120,0,0,0,,,,2013-04-24 08:00,2013-05-11 17:00,,2013-02-21 08:00,2013-03-10 17:00,2013-02-21 08:00,2013-03-10 17:00,2013-02-21 08:00,2013-03-10 17:00,2013-04-24 08:00,2013-05-11 17:00,,PT_Normal,,,,,OTyjmycQRkKCDV72atC+1g,,,,N,0,0,,,2013-02-16 15:51,2013-02-16 15:56,admin,admin
499388,6359,124287,13662,0,N,N,N,CP_Drtn,TT_Task,DT_FixedDUR2,TK_NotStart,DUKHENGP1ADWMESM4220,Drainage Layout & Details Drawings-Sub,,360,0,120,0,20,20,120,0,0,0,,,,2013-04-15 08:00,2013-05-01 17:00,,2013-02-21 08:00,2013-03-10 17:00,2013-02-21 08:00,2013-03-10 17:00,2013-02-21 08:00,2013-03-10 17:00,2013-04-15 08:00,2013-05-01 17:00,,PT_Normal,,,,,eaErJ+3USbCxK9/x+ysWOg,,,,N,0,0,,,2013-02-16 15:51,2013-02-16 16:17,admin,admin
499389,6359,124287,13662,0,N,N,N,CP_Drtn,TT_Task,DT_FixedDUR2,TK_NotStart,DUKHENGP1ADWMESM4230,Fire Fighting Layout & Details Drawings-Sub,,360,0,120,0,20,20,120,0,0,0,,,,2013-05-02 08:00,2013-05-19 17:00,,2013-03-11 08:00,2013-03-27 17:00,2013-03-11 08:00,2013-03-27 17:00,2013-03-11 08:00,2013-03-27 17:00,2013-05-02 08:00,2013-05-19 17:00,,PT_Normal,,,,,NjjXSuWERXWmE+VVJanmAg,,,,N,0,0,,,2013-02-16 15:51,2013-02-16 16:17,admin,admin
499390,6359,124287,13662,0,N,N,N,CP_Drtn,TT_Task,DT_FixedDUR2,TK_NotStart,DUKHENGP1ADWMESM4240,AC Layout & Details Drawings-Sub,,360,0,120,0,30,30,120,0,0,0,,,,2013-05-20 08:00,2013-06-05 17:00,,2013-03-28 08:00,2013-04-14 17:00,2013-03-28 08:00,2013-04-14 17:00,2013-03-28 08:00,2013-04-14 17:00,2013-05-20 08:00,2013-06-05 17:00,,PT_Normal,,,,,P9OO+UrzSVGW7n7A3ZASxg,,,,N,0,0,,,2013-02-16 15:51,2013-02-16 16:17,admin,admin
499391,6359,124288,13662,0,N,N,N,CP_Drtn,TT_Task,DT_FixedDUR2,TK_NotStart,DUKHENGP1ADWMEAP4210,Plumbing Layout & Details Drawings-App,,424,0,240,0,0,0,240,0,0,0,,,,2013-05-12 08:00,2013-06-15 17:00,,2013-03-11 08:00,2013-04-14 17:00,2013-03-11 08:00,2013-04-14 17:00,2013-03-11 08:00,2013-04-14 17:00,2013-05-12 08:00,2013-06-15 17:00,,PT_Normal,,,,,fO9EXrMEQS+58YTFWUmqvA,,,,N,0,0,,,2013-02-16 15:51,2013-02-16 15:56,admin,admin
499392,6359,124288,13662,0,N,N,N,CP_Drtn,TT_Task,DT_FixedDUR2,TK_NotStart,DUKHENGP1ADWMEAP4220,Drainage Layout & Details Drawings-App,,424,0,240,0,0,0,240,0,0,0,,,,2013-05-12 08:00,2013-06-15 17:00,,2013-03-11 08:00,2013-04-14 17:00,2013-03-11 08:00,2013-04-14 17:00,2013-03-11 08:00,2013-04-14 17:00,2013-05-12 08:00,2013-06-15 17:00,,PT_Normal,,,,,8BNlv34GTRGNA1gLJq7WYg,,,,N,0,0,,,2013-02-16 15:51,2013-02-16 15:56,admin,admin
499393,6359,124288,13662,0,N,N,N,CP_Drtn,TT_Task,DT_FixedDUR2,TK_NotStart,DUKHENGP1ADWMEAP4230,Fire Fighting Layout & Details Drawings-App,,1160,440,240,0,0,0,240,0,0,0,,,,2013-09-17 08:00,2013-10-23 17:00,,2013-03-28 08:00,2013-05-01 17:00,2013-03-28 08:00,2013-05-01 17:00,2013-03-28 08:00,2013-05-01 17:00,2013-09-17 08:00,2013-10-23 17:00,,PT_Normal,,,,,DJ4hindFTVmN1p1Xy4yh2A,,,,N,0,0,,,2013-02-16 15:51,2013-02-16 15:56,admin,admin
499394,6359,124288,13662,0,N,N,N,CP_Drtn,TT_Task,DT_FixedDUR2,TK_NotStart,DUKHENGP1ADWMEAP4240,AC Layout & Details Drawings-App,,512,80,240,0,0,0,240,0,0,0,,,,2013-06-29 08:00,2013-08-01 17:00,,2013-04-15 08:00,2013-05-19 17:00,2013-04-15 08:00,2013-05-19 17:00,2013-04-15 08:00,2013-05-19 17:00,2013-06-29 08:00,2013-08-01 17:00,,PT_Normal,,,,,6OTUla9dTO6esDhc/94S5w,,,,N,0,0,,,2013-02-16 15:51,2013-02-16 15:56,admin,admin
499395,6359,124290,13662,0,N,N,N,CP_Drtn,TT_Task,DT_FixedDUR2,TK_NotStart,DUKHENGP1ADWELSM4150,Single Line Diagram-Sub,,512,0,120,0,20,20,120,0,0,0,,,,2013-05-07 08:00,2013-05-23 17:00,,2013-02-21 08:00,2013-03-10 17:00,2013-02-21 08:00,2013-03-10 17:00,2013-02-21 08:00,2013-03-10 17:00,2013-05-07 08:00,2013-05-23 17:00,,PT_Normal,,,,,8JnF1hSJR6iRrYwjO34yVg,,,,N,0,0,,,2013-02-16 15:51,2013-02-16 15:56,admin,admin
499396,6359,124290,13662,0,N,N,N,CP_Drtn,TT_Task,DT_FixedDUR2,TK_NotStart,DUKHENGP1ADWELSM4160,Lighting Layout Drawings-Sub,,512,0,120,0,20,20,120,0,0,0,,,,2013-05-07 08:00,2013-05-23 17:00,,2013-02-21 08:00,2013-03-10 17:00,2013-02-21 08:00,2013-03-10 17:00,2013-02-21 08:00,2013-03-10 17:00,2013-05-07 08:00,2013-05-23 17:00,,PT_Normal,,,,,kxOjQgVURxyxrBO+SUv6Ag,,,,N,0,0,,,2013-02-16 15:51,2013-02-16 15:56,admin,admin
499397,6359,124290,13662,0,N,N,N,CP_Drtn,TT_Task,DT_FixedDUR2,TK_NotStart,DUKHENGP1ADWELSM4170,Power Layout Drawings-Sub,,560,0,120,0,20,20,120,0,0,0,,,,2013-05-26 08:00,2013-06-11 17:00,,2013-03-05 08:00,2013-03-21 17:00,2013-03-05 08:00,2013-03-21 17:00,2013-03-05 08:00,2013-03-21 17:00,2013-05-26 08:00,2013-06-11 17:00,,PT_Normal,,,,,Cap+JeZrSM+FwubAmuLzog,,,,N,0,0,,,2013-02-16 15:51,2013-02-16 15:56,admin,admin
499398,6359,124290,13662,0,N,N,N,CP_Drtn,TT_Task,DT_FixedDUR2,TK_NotStart,DUKHENGP1ADWELSM4180,Central Alarm Monitoring System Drawings-Sub,,560,0,120,0,20,20,120,0,0,0,,,,2013-06-12 08:00,2013-06-29 17:00,,2013-03-23 08:00,2013-04-08 17:00,2013-03-23 08:00,2013-04-08 17:00,2013-03-23 08:00,2013-04-08 17:00,2013-06-12 08:00,2013-06-29 17:00,,PT_Normal,,,,,m6lxHSriRsuoO7m4fchSzQ,,,,N,0,0,,,2013-02-16 15:51,2013-02-16 15:56,admin,admin
499399,6359,124290,13662,0,N,N,N,CP_Drtn,TT_Task,DT_FixedDUR2,TK_NotStart,DUKHENGP1ADWELSM4190,Audio Video Intercom System Drawings-Sub,,560,0,120,0,30,30,120,0,0,0,,,,2013-06-30 08:00,2013-07-16 17:00,,2013-04-09 08:00,2013-04-25 17:00,2013-04-09 08:00,2013-04-25 17:00,2013-04-09 08:00,2013-04-25 17:00,2013-06-30 08:00,2013-07-16 17:00,,PT_Normal,,,,,S+Fcg+WDRBWPm/wkzqGBgA,,,,N,0,0,,,2013-02-16 15:51,2013-02-16 15:56,admin,admin
499400,6359,124290,13662,0,N,N,N,CP_Drtn,TT_Task,DT_FixedDUR2,TK_NotStart,DUKHENGP1ADWELSM4200,Telephone & TV System Drawings-Sub,,560,0,120,0,30,30,120,0,0,0,,,,2013-07-17 08:00,2013-08-03 17:00,,2013-04-27 08:00,2013-05-13 17:00,2013-04-27 08:00,2013-05-13 17:00,2013-04-27 08:00,2013-05-13 17:00,2013-07-17 08:00,2013-08-03 17:00,,PT_Normal,,,,,YlBzXEjBRUuHmpuHZG5X0w,,,,N,0,0,,,2013-02-16 15:51,2013-02-16 15:56,admin,admin
499401,6359,124291,13662,0,N,N,N,CP_Drtn,TT_Task,DT_FixedDUR2,TK_NotStart,DUKHENGP1ADWELAP4150,Single Line Diagram-App,,920,320,240,0,0,0,240,0,0,0,,,,2013-07-23 08:00,2013-08-29 17:00,,2013-03-11 08:00,2013-04-14 17:00,2013-03-11 08:00,2013-04-14 17:00,2013-03-11 08:00,2013-04-14 17:00,2013-07-23 08:00,2013-08-29 17:00,,PT_Normal,,,,,VjegkJLdSRadUczSdwZ7vw,,,,N,0,0,,,2013-02-16 15:51,2013-02-16 15:56,admin,admin
499402,6359,124291,13662,0,N,N,N,CP_Drtn,TT_Task,DT_FixedDUR2,TK_NotStart,DUKHENGP1ADWELAP4160,Lighting Layout Drawings-App,,512,40,240,0,0,0,240,0,0,0,,,,2013-05-25 08:00,2013-06-27 17:00,,2013-03-11 08:00,2013-04-14 17:00,2013-03-11 08:00,2013-04-14 17:00,2013-03-11 08:00,2013-04-14 17:00,2013-05-25 08:00,2013-06-27 17:00,,PT_Normal,,,,,6/PdXu4zRVykukyliBRgpA,,,,N,0,0,,,2013-02-16 15:51,2013-02-16 15:56,admin,admin
499403,6359,124291,13662,0,N,N,N,CP_Drtn,TT_Task,DT_FixedDUR2,TK_NotStart,DUKHENGP1ADWELAP4170,Power Layout Drawings-App,,840,240,240,0,0,0,240,0,0,0,,,,2013-07-23 08:00,2013-08-29 17:00,,2013-03-23 08:00,2013-04-25 17:00,2013-03-23 08:00,2013-04-25 17:00,2013-03-23 08:00,2013-04-25 17:00,2013-07-23 08:00,2013-08-29 17:00,,PT_Normal,,,,,VfjYk7NCQY2MvG2hFHjWUQ,,,,N,0,0,,,2013-02-16 15:51,2013-02-16 15:56,admin,admin
499404,6359,124291,13662,0,N,N,N,CP_Drtn,TT_Task,DT_FixedDUR2,TK_NotStart,DUKHENGP1ADWELAP4180,Central Alarm Monitoring System Drawings-App,,752,120,240,0,0,0,240,0,0,0,,,,2013-07-28 08:00,2013-09-03 17:00,,2013-04-09 08:00,2013-05-13 17:00,2013-04-09 08:00,2013-05-13 17:00,2013-04-09 08:00,2013-05-13 17:00,2013-07-28 08:00,2013-09-03 17:00,,PT_Normal,,,,,jWKBY99QTKaOrMC/HeiziA,,,,N,0,0,,,2013-02-16 15:51,2013-02-16 15:56,admin,admin
499405,6359,124291,13662,0,N,N,N,CP_Drtn,TT_Task,DT_FixedDUR2,TK_NotStart,DUKHENGP1ADWELAP4190,Audio Video Intercom System Drawings-App,,680,120,240,0,0,0,240,0,0,0,,,,2013-08-04 08:00,2013-09-10 17:00,,2013-04-27 08:00,2013-05-30 17:00,2013-04-27 08:00,2013-05-30 17:00,2013-04-27 08:00,2013-05-30 17:00,2013-08-04 08:00,2013-09-10 17:00,,PT_Normal,,,,,SubG2mCKTquV0Dp4x8s5xQ,,,,N,0,0,,,2013-02-16 15:51,2013-02-16 15:56,admin,admin
499406,6359,124291,13662,0,N,N,N,CP_Drtn,TT_Task,DT_FixedDUR2,TK_NotStart,DUKHENGP1ADWELAP4200,Telephone & TV System Drawings-App,,560,8,240,0,0,0,240,0,0,0,,,,2013-08-04 08:00,2013-09-10 17:00,,2013-05-14 08:00,2013-06-17 17:00,2013-05-14 08:00,2013-06-17 17:00,2013-05-14 08:00,2013-06-17 17:00,2013-08-04 08:00,2013-09-10 17:00,,PT_Normal,,,,,ameOUpBZR1e3A4+00SPiDg,,,,N,0,0,,,2013-02-16 15:51,2013-02-16 15:56,admin,admin
499407,6359,124293,13662,0,N,N,N,CP_Drtn,TT_Task,DT_FixedDUR2,TK_NotStart,DUKHENGI1ADWPSAP4340,Parking Shed Layout & Details Drawings-App,,1200,184,240,0,0,0,240,0,0,0,,,,2013-12-12 08:00,2014-01-16 17:00,,2013-06-15 08:00,2013-07-18 17:00,2013-06-15 08:00,2013-07-18 17:00,2013-06-15 08:00,2013-07-18 17:00,2013-12-12 08:00,2014-01-16 17:00,,PT_Normal,,,,,CFCGP4nETjuOcFid35gZpg,,,,N,0,0,,,2013-02-16 15:51,2013-02-16 15:56,admin,admin
499408,6359,124293,13662,0,N,N,N,CP_Drtn,TT_Task,DT_FixedDUR2,TK_NotStart,DUKHENGI1ADWSLAP4320,Soft & HardLandscaping Layout & Detail-App,,536,360,240,0,0,0,240,0,0,0,,,,2013-08-27 08:00,2013-09-30 17:00,,2013-06-06 08:00,2013-07-10 17:00,2013-06-06 08:00,2013-07-10 17:00,2013-06-06 08:00,2013-07-10 17:00,2013-08-27 08:00,2013-09-30 17:00,,PT_Normal,,,,,4d9Lzxm4TDG5whiyMnSLVg,,,,N,0,0,,,2013-02-16 15:51,2013-02-16 15:56,admin,admin
499409,6359,124293,13662,0,N,N,N,CP_Drtn,TT_Task,DT_FixedDUR2,TK_NotStart,DUKHENGI1ADWBWAP4330,Boundary Wall Layout & Details-App,,680,360,240,0,0,0,240,0,0,0,,,,2013-09-17 08:00,2013-10-23 17:00,,2013-06-06 08:00,2013-07-10 17:00,2013-06-06 08:00,2013-07-10 17:00,2013-06-06 08:00,2013-07-10 17:00,2013-09-17 08:00,2013-10-23 17:00,,PT_Normal,,,,,Fe7gZQy3RiKsJZiehcidAA,,,,N,0,0,,,2013-02-16 15:51,2013-02-16 16:45,admin,admin
499410,6359,124293,13662,0,N,N,N,CP_Drtn,TT_Task,DT_FixedDUR2,TK_NotStart,DUKHENGI1ADWRWAP4350,Road Layout & Details-App,,1192,184,240,0,0,0,240,0,0,0,,,,2013-12-11 08:00,2014-01-15 17:00,,2013-06-15 08:00,2013-07-18 17:00,2013-06-15 08:00,2013-07-18 17:00,2013-06-15 08:00,2013-07-18 17:00,2013-12-11 08:00,2014-01-15 17:00,,PT_Normal,,,,,3L8OVy5NTBG8EBogLdDcYQ,,,,N,0,0,,,2013-02-16 15:51,2013-02-16 15:56,admin,admin
499411,6359,124293,13662,0,N,N,N,CP_Drtn,TT_Task,DT_FixedDUR2,TK_NotStart,DUKHENGI1ADWIWAP4360,Irrigation Water Tank & Pump Room Details-App,,392,0,240,0,0,0,240,0,0,0,,,,2013-08-14 08:00,2013-09-17 17:00,,2013-06-15 08:00,2013-07-18 17:00,2013-06-15 08:00,2013-07-18 17:00,2013-06-15 08:00,2013-07-18 17:00,2013-08-14 08:00,2013-09-17 17:00,,PT_Normal,,,,,VjKBBduSRyuX8AdlPR8N0A,,,,N,0,0,,,2013-02-16 15:51,2013-02-16 15:56,admin,admin
499412,6359,124293,13662,0,N,N,N,CP_Drtn,TT_Task,DT_FixedDUR2,TK_NotStart,DUKHENGI1ADWTRAP4370,Telephone Room Details-App,,480,0,240,0,0,0,240,0,0,0,,,,2013-09-14 08:00,2013-10-20 17:00,,2013-07-02 08:00,2013-08-05 17:00,2013-07-02 08:00,2013-08-05 17:00,2013-07-02 08:00,2013-08-05 17:00,2013-09-14 08:00,2013-10-20 17:00,,PT_Normal,,,,,aUte4TU7RQe/pI9miuc5sg,,,,N,0,0,,,2013-02-16 15:51,2013-02-16 15:56,admin,admin
499413,6359,124293,13662,0,N,N,N,CP_Drtn,TT_Task,DT_FixedDUR2,TK_NotStart,DUKHENGI1ADWGZAP4380,Gazebo Plan & Details-App,,480,0,240,0,0,0,240,0,0,0,,,,2013-10-21 08:00,2013-11-24 17:00,,2013-08-06 08:00,2013-09-12 17:00,2013-08-06 08:00,2013-09-12 17:00,2013-08-06 08:00,2013-09-12 17:00,2013-10-21 08:00,2013-11-24 17:00,,PT_Normal,,,,,N9c/VfAvTE6qH4I600vlWg,,,,N,0,0,,,2013-02-16 15:51,2013-02-16 15:56,admin,admin
499414,6359,124293,13662,0,N,N,N,CP_Drtn,TT_Task,DT_FixedDUR2,TK_NotStart,DUKHENGI1ADWGHAP4390,Guard House Plan & Details-App,,2176,1936,240,0,0,0,240,0,0,0,,,,2014-06-28 08:00,2014-07-31 17:00,,2013-08-06 08:00,2013-09-12 17:00,2013-08-06 08:00,2013-09-12 17:00,2013-08-06 08:00,2013-09-12 17:00,2014-06-28 08:00,2014-07-31 17:00,,PT_Normal,,,,,GOH2/z7kSF+1IzXtiDXXFw,,,,N,0,0,,,2013-02-16 15:51,2013-02-16 15:56,admin,admin
499415,6359,124293,13662,0,N,N,N,CP_Drtn,TT_Task,DT_FixedDUR2,TK_NotStart,DUKHENGI1ADWELAP4280,Electrical Line Layout & Details-App,,480,0,240,0,0,0,240,0,0,0,,,,2013-07-29 08:00,2013-09-04 17:00,,2013-05-20 08:00,2013-06-23 17:00,2013-05-20 08:00,2013-06-23 17:00,2013-05-20 08:00,2013-06-23 17:00,2013-07-29 08:00,2013-09-04 17:00,,PT_Normal,,,,,xEhE39gGTJGKVSMKnh5eFw,,,,N,0,0,,,2013-02-16 15:51,2013-02-16 15:56,admin,admin
499416,6359,124293,13662,0,N,N,N,CP_Drtn,TT_Task,DT_FixedDUR2,TK_NotStart,DUKHENGI1ADWSTAP4290,Street Lighting Layout & details -App,,480,0,240,0,0,0,240,0,0,0,,,,2013-09-05 08:00,2013-10-09 17:00,,2013-06-24 08:00,2013-07-28 17:00,2013-06-24 08:00,2013-07-28 17:00,2013-06-24 08:00,2013-07-28 17:00,2013-09-05 08:00,2013-10-09 17:00,,PT_Normal,,,,,+LguQoLWTMKK8fHrA2jW7g,,,,N,0,0,,,2013-02-16 15:51,2013-02-16 15:56,admin,admin
499417,6359,124293,13662,0,N,N,N,CP_Drtn,TT_Task,DT_FixedDUR2,TK_NotStart,DUKHENGI1ADWDRAP4250,Drainage Line Layout & Details-App,,672,296,240,0,0,0,240,0,0,0,,,,2013-08-08 08:00,2013-09-15 17:00,,2013-05-02 08:00,2013-06-05 17:00,2013-05-02 08:00,2013-06-05 17:00,2013-05-02 08:00,2013-06-05 17:00,2013-08-08 08:00,2013-09-15 17:00,,PT_Normal,,,,,PBt8L0OTQgiQ/4txK/lJUg,,,,N,0,0,,,2013-02-16 15:51,2013-02-16 15:56,admin,admin
499418,6359,124293,13662,0,N,N,N,CP_Drtn,TT_Task,DT_FixedDUR2,TK_NotStart,DUKHENGI1ADWFFAP4260,Fire Fighting Line Layout & Details-App,,360,320,240,0,0,0,240,0,0,0,,,,2013-06-24 08:00,2013-07-28 17:00,,2013-05-02 08:00,2013-06-05 17:00,2013-05-02 08:00,2013-06-05 17:00,2013-05-02 08:00,2013-06-05 17:00,2013-06-24 08:00,2013-07-28 17:00,,PT_Normal,,,,,ZWhpHbUZR3a2jJD33VZ9QA,,,,N,0,0,,,2013-02-16 15:51,2013-02-16 16:17,admin,admin
499419,6359,124293,13662,0,N,N,N,CP_Drtn,TT_Task,DT_FixedDUR2,TK_NotStart,DUKHENGI1ADWWSAP4270,Water Supply Line Layout & Details-App,,688,296,240,0,0,0,240,0,0,0,,,,2013-08-14 08:00,2013-09-17 17:00,,2013-05-02 08:00,2013-06-05 17:00,2013-05-02 08:00,2013-06-05 17:00,2013-05-02 08:00,2013-06-05 17:00,2013-08-14 08:00,2013-09-17 17:00,,PT_Normal,,,,,BVsvX21UT6mIaWkjB8+ibA,,,,N,0,0,,,2013-02-16 15:51,2013-02-16 15:56,admin,admin
499420,6359,124293,13662,0,N,N,N,CP_Drtn,TT_Task,DT_FixedDUR2,TK_NotStart,DUKHENGI1ADWIRAP4310,Irrigation Layout & Details-App,,728,120,240,0,0,0,240,0,0,0,,,,2013-09-24 08:00,2013-10-30 17:00,,2013-06-06 08:00,2013-07-10 17:00,2013-06-06 08:00,2013-07-10 17:00,2013-06-06 08:00,2013-07-10 17:00,2013-09-24 08:00,2013-10-30 17:00,,PT_Normal,,,,,MNfqcwpBSpCe5qeQU+vbog,,,,N,0,0,,,2013-02-16 15:51,2013-02-16 15:56,admin,admin
499421,6359,124293,13662,0,N,N,N,CP_Drtn,TT_Task,DT_FixedDUR2,TK_NotStart,DUKHENGI1ADWTCAP4300,Telecommunication Line Layout & Details-App,,480,0,240,0,0,0,240,0,0,0,,,,2013-10-10 08:00,2013-11-16 17:00,,2013-07-29 08:00,2013-09-04 17:00,2013-07-29 08:00,2013-09-04 17:00,2013-07-29 08:00,2013-09-04 17:00,2013-10-10 08:00,2013-11-16 17:00,,PT_Normal,,,,,mxM53e3QSNK+yWdEKKYUyQ,,,,N,0,0,,,2013-02-16 15:51,2013-02-16 15:56,admin,admin
499422,6359,124294,13662,0,N,N,N,CP_Drtn,TT_Task,DT_FixedDUR2,TK_NotStart,DUKHENGI1ADWDRSM4250,Drainage Line Layout & Details-Sub,,360,0,120,0,30,30,120,0,0,0,,,,2013-06-06 08:00,2013-06-23 17:00,,2013-04-15 08:00,2013-05-01 17:00,2013-04-15 08:00,2013-05-01 17:00,2013-04-15 08:00,2013-05-01 17:00,2013-06-06 08:00,2013-06-23 17:00,,PT_Normal,,,,,idvBQanWQcacZxpc5tHk3w,,,,N,0,0,,,2013-02-16 15:51,2013-02-16 16:17,admin,admin
499423,6359,124294,13662,0,N,N,N,CP_Drtn,TT_Task,DT_FixedDUR2,TK_NotStart,DUKHENGI1ADWFFSM4260,Fire Fighting Line Layout & Details-Sub,,360,0,120,0,30,30,120,0,0,0,,,,2013-06-06 08:00,2013-06-23 17:00,,2013-04-15 08:00,2013-05-01 17:00,2013-04-15 08:00,2013-05-01 17:00,2013-04-15 08:00,2013-05-01 17:00,2013-06-06 08:00,2013-06-23 17:00,,PT_Normal,,,,,FlIpyt14T2qHTLICyFkGHA,,,,N,0,0,,,2013-02-16 15:51,2013-02-16 16:17,admin,admin
499424,6359,124294,13662,0,N,N,N,CP_Drtn,TT_Task,DT_FixedDUR2,TK_NotStart,DUKHENGI1ADWWSSM4270,Water Supply Line Layout & Details-Sub,,360,0,120,0,30,30,120,0,0,0,,,,2013-06-06 08:00,2013-06-23 17:00,,2013-04-15 08:00,2013-05-01 17:00,2013-04-15 08:00,2013-05-01 17:00,2013-04-15 08:00,2013-05-01 17:00,2013-06-06 08:00,2013-06-23 17:00,,PT_Normal,,,,,F8u/P5fpRAahf0xCkVJ/EQ,,,,N,0,0,,,2013-02-16 15:51,2013-02-16 16:17,admin,admin
499425,6359,124294,13662,0,N,N,N,CP_Drtn,TT_Task,DT_FixedDUR2,TK_NotStart,DUKHENGI1ADWIRSM4310,Irrigation Layout & Details-Sub,,392,0,120,0,30,30,120,0,0,0,,,,2013-07-16 08:00,2013-08-01 17:00,,2013-05-20 08:00,2013-06-05 17:00,2013-05-20 08:00,2013-06-05 17:00,2013-05-20 08:00,2013-06-05 17:00,2013-07-16 08:00,2013-08-01 17:00,,PT_Normal,,,,,z9XfydjAT3mhVajqR/TY5g,,,,N,0,0,,,2013-02-16 15:51,2013-02-16 15:56,admin,admin
499426,6359,124294,13662,0,N,N,N,CP_Drtn,TT_Task,DT_FixedDUR2,TK_NotStart,DUKHENGI1ADWTCSM4300,Telecommunication Line Layout & Details-Sub,,392,0,120,0,30,30,120,0,0,0,,,,2013-06-29 08:00,2013-07-15 17:00,,2013-05-02 08:00,2013-05-19 17:00,2013-05-02 08:00,2013-05-19 17:00,2013-05-02 08:00,2013-05-19 17:00,2013-06-29 08:00,2013-07-15 17:00,,PT_Normal,,,,,o2uoOKQhSyGIju41iQwZOA,,,,N,0,0,,,2013-02-16 15:51,2013-02-16 15:56,admin,admin
499427,6359,124294,13662,0,N,N,N,CP_Drtn,TT_Task,DT_FixedDUR2,TK_NotStart,DUKHENGI1ADWPSSM4340,Parking Shed Layout & Details Drawings-Sub,,392,0,120,0,30,30,120,0,0,0,,,,2013-07-24 08:00,2013-08-13 17:00,,2013-05-28 08:00,2013-06-13 17:00,2013-05-28 08:00,2013-06-13 17:00,2013-05-28 08:00,2013-06-13 17:00,2013-07-24 08:00,2013-08-13 17:00,,PT_Normal,,,,,O/zBSPlkTAK8y1QWk9EBZw,,,,N,0,0,,,2013-02-16 15:51,2013-02-16 15:56,admin,admin
499428,6359,124294,13662,0,N,N,N,CP_Drtn,TT_Task,DT_FixedDUR2,TK_NotStart,DUKHENGI1ADWSLSM4320,Soft & HardLandscaping Layout & Detail-Sub,,392,0,120,0,30,30,120,0,0,0,,,,2013-07-16 08:00,2013-08-01 17:00,,2013-05-20 08:00,2013-06-05 17:00,2013-05-20 08:00,2013-06-05 17:00,2013-05-20 08:00,2013-06-05 17:00,2013-07-16 08:00,2013-08-01 17:00,,PT_Normal,,,,,tx/FWdFYQ5O/wGKCX7mq3w,,,,N,0,0,,,2013-02-16 15:51,2013-02-16 15:56,admin,admin
499429,6359,124294,13662,0,N,N,N,CP_Drtn,TT_Task,DT_FixedDUR2,TK_NotStart,DUKHENGI1ADWBWSM4330,Boundary Wall Layout & Details-Sub,,392,0,120,0,30,30,120,0,0,0,,,,2013-07-16 08:00,2013-08-01 17:00,,2013-05-20 08:00,2013-06-05 17:00,2013-05-20 08:00,2013-06-05 17:00,2013-05-20 08:00,2013-06-05 17:00,2013-07-16 08:00,2013-08-01 17:00,,PT_Normal,,,,,F0awJ0g2TPmfaMPVnF+vNg,,,,N,0,0,,,2013-02-16 15:51,2013-02-16 15:56,admin,admin
499430,6359,124294,13662,0,N,N,N,CP_Drtn,TT_Task,DT_FixedDUR2,TK_NotStart,DUKHENGI1ADWRWSM4350,Road Layout & Details-Sub,,392,0,120,0,30,30,120,0,0,0,,,,2013-07-24 08:00,2013-08-13 17:00,,2013-05-28 08:00,2013-06-13 17:00,2013-05-28 08:00,2013-06-13 17:00,2013-05-28 08:00,2013-06-13 17:00,2013-07-24 08:00,2013-08-13 17:00,,PT_Normal,,,,,TC6rYf6mSmOauuJK4Oe3tQ,,,,N,0,0,,,2013-02-16 15:51,2013-02-16 15:56,admin,admin
499431,6359,124294,13662,0,N,N,N,CP_Drtn,TT_Task,DT_FixedDUR2,TK_NotStart,DUKHENGI1ADWIWSM4360,Irrigation Water Tank & Pump Room Details- Sub,,392,0,120,0,30,30,120,0,0,0,,,,2013-07-24 08:00,2013-08-13 17:00,,2013-05-28 08:00,2013-06-13 17:00,2013-05-28 08:00,2013-06-13 17:00,2013-05-28 08:00,2013-06-13 17:00,2013-07-24 08:00,2013-08-13 17:00,,PT_Normal,,,,,sT/5Yr8ES3GzAomCXtKWDg,,,,N,0,0,,,2013-02-16 15:51,2013-02-16 15:56,admin,admin
499432,6359,124294,13662,0,N,N,N,CP_Drtn,TT_Task,DT_FixedDUR2,TK_NotStart,DUKHENGI1ADWTRSM4370,Telephone Room Details-Sub,,480,0,120,0,30,30,120,0,0,0,,,,2013-08-27 08:00,2013-09-12 17:00,,2013-06-15 08:00,2013-07-01 17:00,2013-06-15 08:00,2013-07-01 17:00,2013-06-15 08:00,2013-07-01 17:00,2013-08-27 08:00,2013-09-12 17:00,,PT_Normal,,,,,iuRLrifWR1+mvX2W+x3+CQ,,,,N,0,0,,,2013-02-16 15:51,2013-02-16 15:56,admin,admin
499433,6359,124294,13662,0,N,N,N,CP_Drtn,TT_Task,DT_FixedDUR2,TK_NotStart,DUKHENGI1ADWGZSM4380,Gazebo Plan & Details-Sub,,600,120,120,0,30,30,120,0,0,0,,,,2013-10-01 08:00,2013-10-20 17:00,,2013-07-02 08:00,2013-07-18 17:00,2013-07-02 08:00,2013-07-18 17:00,2013-07-02 08:00,2013-07-18 17:00,2013-10-01 08:00,2013-10-20 17:00,,PT_Normal,,,,,Plr+2qpGQgmz4x771JlHhQ,,,,N,0,0,,,2013-02-16 15:51,2013-02-16 15:56,admin,admin
499434,6359,124294,13662,0,N,N,N,CP_Drtn,TT_Task,DT_FixedDUR2,TK_NotStart,DUKHENGI1ADWGHSM4390,Guard House Plan & Details-Sub,,2296,120,120,0,30,30,120,0,0,0,,,,2014-06-10 08:00,2014-06-26 17:00,,2013-07-02 08:00,2013-07-18 17:00,2013-07-02 08:00,2013-07-18 17:00,2013-07-02 08:00,2013-07-18 17:00,2014-06-10 08:00,2014-06-26 17:00,,PT_Normal,,,,,WtCvQ+5IRampTtCgTQwJrg,,,,N,0,0,,,2013-02-16 15:51,2013-02-16 15:56,admin,admin
499435,6359,124294,13662,0,N,N,N,CP_Drtn,TT_Task,DT_FixedDUR2,TK_NotStart,DUKHENGI1ADWELSM4280,Electrical Line Layout & Details-Sub,,392,0,120,0,30,30,120,0,0,0,,,,2013-06-29 08:00,2013-07-15 17:00,,2013-05-02 08:00,2013-05-19 17:00,2013-05-02 08:00,2013-05-19 17:00,2013-05-02 08:00,2013-05-19 17:00,2013-06-29 08:00,2013-07-15 17:00,,PT_Normal,,,,,tKAf/pLDSEW15ztHarnj5Q,,,,N,0,0,,,2013-02-16 15:51,2013-02-16 15:56,admin,admin
499436,6359,124294,13662,0,N,N,N,CP_Drtn,TT_Task,DT_FixedDUR2,TK_NotStart,DUKHENGI1ADWSTSM4290,Street Lighting Layout & details -Sub,,392,0,120,0,30,30,120,0,0,0,,,,2013-06-29 08:00,2013-07-15 17:00,,2013-05-02 08:00,2013-05-19 17:00,2013-05-02 08:00,2013-05-19 17:00,2013-05-02 08:00,2013-05-19 17:00,2013-06-29 08:00,2013-07-15 17:00,,PT_Normal,,,,,8zSG4Z3OTOCZK75QCu3s7A,,,,N,0,0,,,2013-02-16 15:51,2013-02-16 15:56,admin,admin
499437,6359,124296,13662,0,N,N,N,CP_Drtn,TT_Task,DT_FixedDUR2,TK_NotStart,DUKHENGP1ADWARAP4050,Ground Floor Plan-App,,736,80,240,0,0,0,240,0,0,0,,,,2013-06-04 08:00,2013-07-08 17:00,,2013-02-17 08:00,2013-03-23 17:00,2013-02-17 08:00,2013-03-23 17:00,2013-02-17 08:00,2013-03-23 17:00,2013-06-04 08:00,2013-07-08 17:00,,PT_Normal,,,,,WFib3bb8TUmQNm1swZKyEQ,,,,N,0,0,,,2013-02-16 15:51,2013-02-16 15:56,admin,admin
499438,6359,124296,13662,0,N,N,N,CP_Drtn,TT_Task,DT_FixedDUR2,TK_NotStart,DUKHENGP1ADWARAP4060,First Floor Plan-App,,496,48,240,0,0,0,240,0,0,0,,,,2013-05-13 08:00,2013-06-16 17:00,,2013-03-02 08:00,2013-04-04 17:00,2013-03-02 08:00,2013-04-04 17:00,2013-03-02 08:00,2013-04-04 17:00,2013-05-13 08:00,2013-06-16 17:00,,PT_Normal,,,,,S002S4lBQSSkEng0YltlCA,,,,N,0,0,,,2013-02-16 15:51,2013-02-16 15:56,admin,admin
499439,6359,124296,13662,0,N,N,N,CP_Drtn,TT_Task,DT_FixedDUR2,TK_NotStart,DUKHENGP1ADWARAP4070,Roof Floor Plan-App,,440,0,240,0,0,0,240,0,0,0,,,,2013-05-13 08:00,2013-06-16 17:00,,2013-03-10 08:00,2013-04-13 17:00,2013-03-10 08:00,2013-04-13 17:00,2013-03-10 08:00,2013-04-13 17:00,2013-05-13 08:00,2013-06-16 17:00,,PT_Normal,,,,,w4d6abiGTcmgpaLgz9rNlw,,,,N,0,0,,,2013-02-16 15:51,2013-02-16 15:56,admin,admin
499440,6359,124296,13662,0,N,N,N,CP_Drtn,TT_Task,DT_FixedDUR2,TK_NotStart,DUKHENGP1ADWARAP4080,Ceramic Flooring & Wall Drawings-App,,384,48,240,0,0,0,240,0,0,0,,,,2013-05-14 08:00,2013-06-17 17:00,,2013-03-19 08:00,2013-04-22 17:00,2013-03-19 08:00,2013-04-22 17:00,2013-03-19 08:00,2013-04-22 17:00,2013-05-14 08:00,2013-06-17 17:00,,PT_Normal,,,,,HXu6JoysTzmr3eiJpVWffA,,,,N,0,0,,,2013-02-16 15:51,2013-02-16 15:56,admin,admin
499441,6359,124296,13662,0,N,N,N,CP_Drtn,TT_Task,DT_FixedDUR2,TK_NotStart,DUKHENGP1ADWARAP4090,Porcelain Floor Drawings-App,,456,48,240,0,0,0,240,0,0,0,,,,2013-05-25 08:00,2013-06-27 17:00,,2013-03-19 08:00,2013-04-22 17:00,2013-03-19 08:00,2013-04-22 17:00,2013-03-19 08:00,2013-04-22 17:00,2013-05-25 08:00,2013-06-27 17:00,,PT_Normal,,,,,PyAmCQeiR7aKIY/VLSRRLA,,,,N,0,0,,,2013-02-16 15:51,2013-02-16 15:56,admin,admin
499442,6359,124296,13662,0,N,N,N,CP_Drtn,TT_Task,DT_FixedDUR2,TK_NotStart,DUKHENGP1ADWARAP4100,Cobble & Slate Flooring Drawings-App,,704,48,240,0,0,0,240,0,0,0,,,,2013-06-30 08:00,2013-08-03 17:00,,2013-03-19 08:00,2013-04-22 17:00,2013-03-19 08:00,2013-04-22 17:00,2013-03-19 08:00,2013-04-22 17:00,2013-06-30 08:00,2013-08-03 17:00,,PT_Normal,,,,,pTHpRuSyRjeotQNbTIGmsw,,,,N,0,0,,,2013-02-16 15:51,2013-02-16 15:56,admin,admin
499443,6359,124296,13662,0,N,N,N,CP_Drtn,TT_Task,DT_FixedDUR2,TK_NotStart,DUKHENGP1ADWARAP4110,Gypsum False Ceiling Drawings-App,,536,280,240,0,0,0,240,0,0,0,,,,2013-06-18 08:00,2013-07-22 17:00,,2013-04-01 08:00,2013-05-05 17:00,2013-04-01 08:00,2013-05-05 17:00,2013-04-01 08:00,2013-05-05 17:00,2013-06-18 08:00,2013-07-22 17:00,,PT_Normal,,,,,KAldFzA6SyGzA/dpLWtjVQ,,,,N,0,0,,,2013-02-16 15:51,2013-02-16 15:56,admin,admin
499444,6359,124296,13662,0,N,N,N,CP_Drtn,TT_Task,DT_FixedDUR2,TK_NotStart,DUKHENGP1ADWARAP4120,Aluminum False Ceiling Drawings-App,,656,320,240,0,0,0,240,0,0,0,,,,2013-07-06 08:00,2013-08-08 17:00,,2013-04-01 08:00,2013-05-05 17:00,2013-04-01 08:00,2013-05-05 17:00,2013-04-01 08:00,2013-05-05 17:00,2013-07-06 08:00,2013-08-08 17:00,,PT_Normal,,,,,FB6pRg0zRkmULcRdq+I9XA,,,,N,0,0,,,2013-02-16 15:51,2013-02-16 15:56,admin,admin
499445,6359,124296,13662,0,N,N,N,CP_Drtn,TT_Task,DT_FixedDUR2,TK_NotStart,DUKHENGP1ADWARAP4130,Doors & Window Drawings-App,,440,232,240,0,0,0,240,0,0,0,,,,2013-06-17 08:00,2013-07-21 17:00,,2013-04-14 08:00,2013-05-18 17:00,2013-04-14 08:00,2013-05-18 17:00,2013-04-14 08:00,2013-05-18 17:00,2013-06-17 08:00,2013-07-21 17:00,,PT_Normal,,,,,2uclEJFgSuqcgRTJBGZidg,,,,N,0,0,,,2013-02-16 15:51,2013-02-16 15:56,admin,admin
499446,6359,124296,13662,0,N,N,N,CP_Drtn,TT_Task,DT_FixedDUR2,TK_NotStart,DUKHENGP1ADWARAP4140,Carpentry & Joinery Drawings-App,,664,320,240,0,0,0,240,0,0,0,,,,2013-07-30 08:00,2013-09-05 17:00,,2013-04-24 08:00,2013-05-28 17:00,2013-04-24 08:00,2013-05-28 17:00,2013-04-24 08:00,2013-05-28 17:00,2013-07-30 08:00,2013-09-05 17:00,,PT_Normal,,,,,ikPnFo6gTD+SM7e+KkF3xw,,,,N,0,0,,,2013-02-16 15:51,2013-02-16 15:56,admin,admin
499447,6359,124297,13662,0,N,N,N,CP_Drtn,TT_Task,DT_FixedDUR2,TK_NotStart,DUKHENGP1ADWARSM4050,Ground Floor Plan-Sub,,384,0,120,0,30,30,120,0,0,0,,,,2013-03-27 08:00,2013-04-13 17:00,,2013-01-29 08:00,2013-02-16 17:00,2013-01-29 08:00,2013-02-16 17:00,2013-01-29 08:00,2013-02-16 17:00,2013-03-27 08:00,2013-04-13 17:00,,PT_Normal,,,,,nPnTgx3RRXuJsVSkcUrnmg,,,,N,0,0,,,2013-02-16 15:51,2013-02-16 15:56,admin,admin
499448,6359,124297,13662,0,N,N,N,CP_Drtn,TT_Task,DT_FixedDUR2,TK_NotStart,DUKHENGP1ADWARSM4060,First Floor Plan-Sub,,384,0,120,0,30,30,120,0,0,0,,,,2013-04-09 08:00,2013-04-25 17:00,,2013-02-11 08:00,2013-02-28 17:00,2013-02-11 08:00,2013-02-28 17:00,2013-02-11 08:00,2013-02-28 17:00,2013-04-09 08:00,2013-04-25 17:00,,PT_Normal,,,,,s1e9rX4iRYS/wpnXjIUGxA,,,,N,0,0,,,2013-02-16 15:51,2013-02-16 15:56,admin,admin
499449,6359,124297,13662,0,N,N,N,CP_Drtn,TT_Task,DT_FixedDUR2,TK_NotStart,DUKHENGP1ADWARSM4070,Roof Floor Plan-Sub,,424,0,120,0,30,30,120,0,0,0,,,,2013-04-23 08:00,2013-05-09 17:00,,2013-02-20 08:00,2013-03-09 17:00,2013-02-20 08:00,2013-03-09 17:00,2013-02-20 08:00,2013-03-09 17:00,2013-04-23 08:00,2013-05-09 17:00,,PT_Normal,,,,,lqeULUNCQUe0sj6m7i8jGA,,,,N,0,0,,,2013-02-16 15:51,2013-02-16 15:56,admin,admin
499450,6359,124297,13662,0,N,N,N,CP_Drtn,TT_Task,DT_FixedDUR2,TK_NotStart,DUKHENGP1ADWARSM4080,Ceramic Flooring & Wall Drawings-Sub,,384,0,120,0,20,20,120,0,0,0,,,,2013-04-27 08:00,2013-05-13 17:00,,2013-03-02 08:00,2013-03-18 17:00,2013-03-02 08:00,2013-03-18 17:00,2013-03-02 08:00,2013-03-18 17:00,2013-04-27 08:00,2013-05-13 17:00,,PT_Normal,,,,,n538m5/hRqyONYwgVD0tuA,,,,N,0,0,,,2013-02-16 15:51,2013-02-16 15:56,admin,admin
499451,6359,124297,13662,0,N,N,N,CP_Drtn,TT_Task,DT_FixedDUR2,TK_NotStart,DUKHENGP1ADWARSM4090,Porcelain Floor Drawings-Sub,,456,0,120,0,20,20,120,0,0,0,,,,2013-05-07 08:00,2013-05-23 17:00,,2013-03-02 08:00,2013-03-18 17:00,2013-03-02 08:00,2013-03-18 17:00,2013-03-02 08:00,2013-03-18 17:00,2013-05-07 08:00,2013-05-23 17:00,,PT_Normal,,,,,4Bz6hjLzRxy5vi3PLA8SVQ,,,,N,0,0,,,2013-02-16 15:51,2013-02-16 15:56,admin,admin
499452,6359,124297,13662,0,N,N,N,CP_Drtn,TT_Task,DT_FixedDUR2,TK_NotStart,DUKHENGP1ADWARSM4100,Cobble & Slate Flooring Drawings-Sub,,704,0,120,0,20,20,120,0,0,0,,,,2013-06-12 08:00,2013-06-29 17:00,,2013-03-02 08:00,2013-03-18 17:00,2013-03-02 08:00,2013-03-18 17:00,2013-03-02 08:00,2013-03-18 17:00,2013-06-12 08:00,2013-06-29 17:00,,PT_Normal,,,,,oCx3Os3rSy66UURms9TKAA,,,,N,0,0,,,2013-02-16 15:51,2013-02-16 15:56,admin,admin
499453,6359,124297,13662,0,N,N,N,CP_Drtn,TT_Task,DT_FixedDUR2,TK_NotStart,DUKHENGP1ADWARSM4110,Gypsum False Ceiling Drawings-Sub,,536,0,120,0,20,20,120,0,0,0,,,,2013-06-01 08:00,2013-06-17 17:00,,2013-03-14 08:00,2013-03-31 17:00,2013-03-14 08:00,2013-03-31 17:00,2013-03-14 08:00,2013-03-31 17:00,2013-06-01 08:00,2013-06-17 17:00,,PT_Normal,,,,,P/lwCJpzTSGny3wozbO6Yg,,,,N,0,0,,,2013-02-16 15:51,2013-02-16 15:56,admin,admin
499454,6359,124297,13662,0,N,N,N,CP_Drtn,TT_Task,DT_FixedDUR2,TK_NotStart,DUKHENGP1ADWARSM4120,Aluminum False Ceiling Drawings-Sub,,656,0,120,0,20,20,120,0,0,0,,,,2013-06-18 08:00,2013-07-04 17:00,,2013-03-14 08:00,2013-03-31 17:00,2013-03-14 08:00,2013-03-31 17:00,2013-03-14 08:00,2013-03-31 17:00,2013-06-18 08:00,2013-07-04 17:00,,PT_Normal,,,,,i3u5oHOSSruD11Bvf/V33w,,,,N,0,0,,,2013-02-16 15:51,2013-02-16 15:56,admin,admin
499455,6359,124297,13662,0,N,N,N,CP_Drtn,TT_Task,DT_FixedDUR2,TK_NotStart,DUKHENGP1ADWARSM4130,Doors & window Drawings-Sub,,488,48,120,0,20,20,120,0,0,0,,,,2013-05-30 08:00,2013-06-16 17:00,,2013-03-20 08:00,2013-04-06 17:00,2013-03-20 08:00,2013-04-06 17:00,2013-03-20 08:00,2013-04-06 17:00,2013-05-30 08:00,2013-06-16 17:00,,PT_Normal,,,,,qoyEbUwXQTaA94E7QxqgQQ,,,,N,0,0,,,2013-02-16 15:51,2013-02-16 15:56,admin,admin
499456,6359,124297,13662,0,N,N,N,CP_Drtn,TT_Task,DT_FixedDUR2,TK_NotStart,DUKHENGP1ADWARSM4140,Carpentry & Joinery Drawings-Sub,,664,0,120,0,30,30,120,0,0,0,,,,2013-07-13 08:00,2013-07-29 17:00,,2013-04-07 08:00,2013-04-23 17:00,2013-04-07 08:00,2013-04-23 17:00,2013-04-07 08:00,2013-04-23 17:00,2013-07-13 08:00,2013-07-29 17:00,,PT_Normal,,,,,8HDPnAJjTKGYjMxRf2r2Lg,,,,N,0,0,,,2013-02-16 15:51,2013-02-16 15:56,admin,admin
499457,6359,124299,13662,0,N,N,N,CP_Drtn,TT_Task,DT_FixedDUR2,TK_NotStart,DUKHENGP1ADWSTAP4020,Column Drawings-App,,984,984,240,0,0,0,240,0,0,0,,,,2013-05-25 08:00,2013-06-27 17:00,,2012-12-31 08:00,2013-02-03 17:00,2012-12-31 08:00,2013-02-03 17:00,2012-12-31 08:00,2013-02-03 17:00,2013-05-25 08:00,2013-06-27 17:00,,PT_Normal,,,,,eJxz10zKRtmIfm5F7hKh/w,,,,N,0,0,,,2013-02-16 15:51,2013-02-16 15:56,admin,admin
499458,6359,124299,13662,0,N,N,N,CP_Drtn,TT_Task,DT_FixedDUR2,TK_NotStart,DUKHENGP1ADWSTAP4030,GF Beams & Slabs Drawings-App,,1064,1064,240,0,0,0,240,0,0,0,,,,2013-06-17 08:00,2013-07-21 17:00,,2013-01-12 08:00,2013-02-16 17:00,2013-01-12 08:00,2013-02-16 17:00,2013-01-12 08:00,2013-02-16 17:00,2013-06-17 08:00,2013-07-21 17:00,,PT_Normal,,,,,T7kYDJwQRVybjbxJivF2YQ,,,,N,0,0,,,2013-02-16 15:51,2013-02-16 15:56,admin,admin
499459,6359,124299,13662,0,N,N,N,CP_Drtn,TT_Task,DT_FixedDUR2,TK_NotStart,DUKHENGP1ADWSTAP4040,FF Beams & Slabs Drawings-App,,1064,1064,240,0,0,0,240,0,0,0,,,,2013-07-04 08:00,2013-08-07 17:00,,2013-01-29 08:00,2013-03-05 17:00,2013-01-29 08:00,2013-03-05 17:00,2013-01-29 08:00,2013-03-05 17:00,2013-07-04 08:00,2013-08-07 17:00,,PT_Normal,,,,,oh5viV47Q1W7ktz4jJx+eA,,,,N,0,0,,,2013-02-16 15:51,2013-02-16 15:56,admin,admin
499460,6359,124299,13662,0,N,N,N,CP_Drtn,TT_Task,DT_FixedDUR2,TK_NotStart,DUKHENGP1ADWSTAP4000,Footing Drawings-App,,368,368,200,0,0,0,200,0,0,0,,,,2013-02-05 08:00,2013-03-06 17:00,,2012-12-12 08:00,2013-01-10 17:00,2012-12-12 08:00,2013-01-10 17:00,2012-12-12 08:00,2013-01-10 17:00,2013-02-05 08:00,2013-03-06 17:00,,PT_Normal,,,,,gVeR5oyySK6BM36MZMiqsA,,,,N,0,0,,,2013-02-16 15:51,2013-02-16 15:56,admin,admin
499461,6359,124299,13662,0,N,N,N,CP_Drtn,TT_Task,DT_FixedDUR2,TK_NotStart,DUKHENGP1ADWSTAP4010,Grade Beam & Slab Drawings-App,,688,688,240,0,0,0,240,0,0,0,,,,2013-04-06 08:00,2013-05-09 17:00,,2012-12-25 08:00,2013-01-28 17:00,2012-12-25 08:00,2013-01-28 17:00,2012-12-25 08:00,2013-01-28 17:00,2013-04-06 08:00,2013-05-09 17:00,,PT_Normal,,,,,DYA9m7TCQwWScnJYABotRg,,,,N,0,0,,,2013-02-16 15:51,2013-02-16 15:56,admin,admin
499462,6359,124300,13662,0,N,N,N,CP_Drtn,TT_Task,DT_FixedDUR2,TK_NotStart,DUKHENGP1ADWSTSM4000,Footing Drawings-Sub,8176,368,0,80,0,20,20,80,0,0,0,,,,2013-01-24 08:00,2013-02-04 17:00,,2012-12-01 08:00,2012-12-11 17:00,2012-12-01 08:00,2012-12-11 17:00,2012-12-01 08:00,2012-12-11 17:00,2013-01-24 08:00,2013-02-04 17:00,,PT_Normal,,,,,gaayB1yhSzqw71AioC0y9g,,,,N,0,0,,,2013-02-16 15:51,2013-02-16 15:56,admin,admin
499463,6359,124300,13662,0,N,N,N,CP_Drtn,TT_Task,DT_FixedDUR2,TK_NotStart,DUKHENGP1ADWSTSM4010,Grade Beam & Slab Drawings-Sub,,384,0,120,0,30,30,120,0,0,0,,,,2013-02-02 08:00,2013-02-19 17:00,,2012-12-06 08:00,2012-12-24 17:00,2012-12-06 08:00,2012-12-24 17:00,2012-12-06 08:00,2012-12-24 17:00,2013-02-02 08:00,2013-02-19 17:00,,PT_Normal,,,,,Crs60XobS5K37bo+e3m3bw,,,,N,0,0,,,2013-02-16 15:51,2013-02-16 15:56,admin,admin
499464,6359,124300,13662,0,N,N,N,CP_Drtn,TT_Task,DT_FixedDUR2,TK_NotStart,DUKHENGP1ADWSTSM4020,Column Drawings-Sub,,384,0,120,0,30,30,120,0,0,0,,,,2013-02-07 08:00,2013-02-25 17:00,,2012-12-12 08:00,2012-12-30 17:00,2012-12-12 08:00,2012-12-30 17:00,2012-12-12 08:00,2012-12-30 17:00,2013-02-07 08:00,2013-02-25 17:00,,PT_Normal,,,,,12iznbS2QwGcy694z/Ujnw,,,,N,0,0,,,2013-02-16 15:51,2013-02-16 15:56,admin,admin
499465,6359,124300,13662,0,N,N,N,CP_Drtn,TT_Task,DT_FixedDUR2,TK_NotStart,DUKHENGP1ADWSTSM4030,GF Beams & Slabs Drawings-Sub,,384,0,120,0,30,30,120,0,0,0,,,,2013-02-20 08:00,2013-03-09 17:00,,2012-12-25 08:00,2013-01-10 17:00,2012-12-25 08:00,2013-01-10 17:00,2012-12-25 08:00,2013-01-10 17:00,2013-02-20 08:00,2013-03-09 17:00,,PT_Normal,,,,,vfBfpB7bTZmJMXDJWQmwpg,,,,N,0,0,,,2013-02-16 15:51,2013-02-16 15:56,admin,admin
499466,6359,124300,13662,0,N,N,N,CP_Drtn,TT_Task,DT_FixedDUR2,TK_NotStart,DUKHENGP1ADWSTSM4040,FF Beams & Slabs Drawings-Sub,,384,0,120,0,30,30,120,0,0,0,,,,2013-03-10 08:00,2013-03-26 17:00,,2013-01-12 08:00,2013-01-28 17:00,2013-01-12 08:00,2013-01-28 17:00,2013-01-12 08:00,2013-01-28 17:00,2013-03-10 08:00,2013-03-26 17:00,,PT_Normal,,,,,i4GT2Oz+Q2SfAGhoXOD/yg,,,,N,0,0,,,2013-02-16 15:51,2013-02-16 15:56,admin,admin
499467,6359,124304,13662,0,N,N,N,CP_Drtn,TT_Task,DT_FixedDUR2,TK_NotStart,DUKHENGI1BDWGHSM4790,Guard House Plan & Details-Sub,,2416,120,120,0,30,30,120,0,0,0,,,,2014-06-10 08:00,2014-06-26 17:00,,2013-06-15 08:00,2013-07-01 17:00,2013-06-15 08:00,2013-07-01 17:00,2013-06-15 08:00,2013-07-01 17:00,2014-06-10 08:00,2014-06-26 17:00,,PT_Normal,,,,,5QWfoiq0RUuVoAabKbsV/g,,,,N,0,0,,,2013-02-16 15:51,2013-02-16 15:56,admin,admin
499468,6359,124304,13662,0,N,N,N,CP_Drtn,TT_Task,DT_FixedDUR2,TK_NotStart,DUKHENGI1BDWGZSM4780,Gazebo Plan & Details-Sub,,720,120,120,0,30,30,120,0,0,0,,,,2013-10-01 08:00,2013-10-20 17:00,,2013-06-15 08:00,2013-07-01 17:00,2013-06-15 08:00,2013-07-01 17:00,2013-06-15 08:00,2013-07-01 17:00,2013-10-01 08:00,2013-10-20 17:00,,PT_Normal,,,,,sHpNxFbDQ6GeyxUuc10CXg,,,,N,0,0,,,2013-02-16 15:51,2013-02-16 15:56,admin,admin
499469,6359,124304,13662,0,N,N,N,CP_Drtn,TT_Task,DT_FixedDUR2,TK_NotStart,DUKHENGI1BDWELSM4680,Electrical Line Layout & Details-Sub,,392,0,120,0,30,30,120,0,0,0,,,,2013-06-29 08:00,2013-07-15 17:00,,2013-05-02 08:00,2013-05-19 17:00,2013-05-02 08:00,2013-05-19 17:00,2013-05-02 08:00,2013-05-19 17:00,2013-06-29 08:00,2013-07-15 17:00,,PT_Normal,,,,,g/qhCi7BSFij6sE3gVrjQQ,,,,N,0,0,,,2013-02-16 15:51,2013-02-16 15:56,admin,admin
499470,6359,124304,13662,0,N,N,N,CP_Drtn,TT_Task,DT_FixedDUR2,TK_NotStart,DUKHENGI1BDWSTSM4690,Street Lighting Layout & details -Sub,,392,0,120,0,30,30,120,0,0,0,,,,2013-06-29 08:00,2013-07-15 17:00,,2013-05-02 08:00,2013-05-19 17:00,2013-05-02 08:00,2013-05-19 17:00,2013-05-02 08:00,2013-05-19 17:00,2013-06-29 08:00,2013-07-15 17:00,,PT_Normal,,,,,HwImXB84RHG5zQweEbxLtg,,,,N,0,0,,,2013-02-16 15:51,2013-02-16 15:56,admin,admin
499471,6359,124304,13662,0,N,N,N,CP_Drtn,TT_Task,DT_FixedDUR2,TK_NotStart,DUKHENGI1BDWDRSM4650,Drainage Line Layout & Details-Sub,,360,0,120,0,30,30,120,0,0,0,,,,2013-06-06 08:00,2013-06-23 17:00,,2013-04-15 08:00,2013-05-01 17:00,2013-04-15 08:00,2013-05-01 17:00,2013-04-15 08:00,2013-05-01 17:00,2013-06-06 08:00,2013-06-23 17:00,,PT_Normal,,,,,IhHnlBiWT+qEe62S+LjqjQ,,,,N,0,0,,,2013-02-16 15:51,2013-02-16 16:17,admin,admin
499472,6359,124304,13662,0,N,N,N,CP_Drtn,TT_Task,DT_FixedDUR2,TK_NotStart,DUKHENGI1BDWFFSM4660,Fire Fighting Line Layout & Details-Sub,,360,0,120,0,30,30,120,0,0,0,,,,2013-06-06 08:00,2013-06-23 17:00,,2013-04-15 08:00,2013-05-01 17:00,2013-04-15 08:00,2013-05-01 17:00,2013-04-15 08:00,2013-05-01 17:00,2013-06-06 08:00,2013-06-23 17:00,,PT_Normal,,,,,pgjYZYbuR/C95kznqjZV4w,,,,N,0,0,,,2013-02-16 15:51,2013-02-16 16:17,admin,admin
499473,6359,124304,13662,0,N,N,N,CP_Drtn,TT_Task,DT_FixedDUR2,TK_NotStart,DUKHENGI1BDWWSSM4670,Water Supply Line Layout & Details-Sub,,360,0,120,0,30,30,120,0,0,0,,,,2013-06-06 08:00,2013-06-23 17:00,,2013-04-15 08:00,2013-05-01 17:00,2013-04-15 08:00,2013-05-01 17:00,2013-04-15 08:00,2013-05-01 17:00,2013-06-06 08:00,2013-06-23 17:00,,PT_Normal,,,,,a2jQcZRvQxG1rd3THXDzvA,,,,N,0,0,,,2013-02-16 15:51,2013-02-16 16:17,admin,admin
499474,6359,124304,13662,0,N,N,N,CP_Drtn,TT_Task,DT_FixedDUR2,TK_NotStart,DUKHENGI1BDWIRSM4710,Irrigation Layout & Details-Sub,,392,0,120,0,30,30,120,0,0,0,,,,2013-07-16 08:00,2013-08-01 17:00,,2013-05-20 08:00,2013-06-05 17:00,2013-05-20 08:00,2013-06-05 17:00,2013-05-20 08:00,2013-06-05 17:00,2013-07-16 08:00,2013-08-01 17:00,,PT_Normal,,,,,6gcqk4FrT0KpzbzqiQ742A,,,,N,0,0,,,2013-02-16 15:51,2013-02-16 15:56,admin,admin
499475,6359,124304,13662,0,N,N,N,CP_Drtn,TT_Task,DT_FixedDUR2,TK_NotStart,DUKHENGI1BDWTCSM4700,Telecommunication Line Layout & Details-Sub,,392,0,120,0,30,30,120,0,0,0,,,,2013-06-29 08:00,2013-07-15 17:00,,2013-05-02 08:00,2013-05-19 17:00,2013-05-02 08:00,2013-05-19 17:00,2013-05-02 08:00,2013-05-19 17:00,2013-06-29 08:00,2013-07-15 17:00,,PT_Normal,,,,,qi/eJAUoSOyaEKP1PNI/MQ,,,,N,0,0,,,2013-02-16 15:51,2013-02-16 15:56,admin,admin
499476,6359,124304,13662,0,N,N,N,CP_Drtn,TT_Task,DT_FixedDUR2,TK_NotStart,DUKHENGI1BDWPSSM4740,Parking Shed Layout & Details Drawings-Sub,,392,0,120,0,30,30,120,0,0,0,,,,2013-07-24 08:00,2013-08-13 17:00,,2013-05-28 08:00,2013-06-13 17:00,2013-05-28 08:00,2013-06-13 17:00,2013-05-28 08:00,2013-06-13 17:00,2013-07-24 08:00,2013-08-13 17:00,,PT_Normal,,,,,+qCIphsIRHWBcDf/2FWRpg,,,,N,0,0,,,2013-02-16 15:51,2013-02-16 15:56,admin,admin
499477,6359,124304,13662,0,N,N,N,CP_Drtn,TT_Task,DT_FixedDUR2,TK_NotStart,DUKHENGI1BDWSLSM4720,Soft & HardLandscaping Layout & Detail-Sub,,392,0,120,0,30,30,120,0,0,0,,,,2013-07-16 08:00,2013-08-01 17:00,,2013-05-20 08:00,2013-06-05 17:00,2013-05-20 08:00,2013-06-05 17:00,2013-05-20 08:00,2013-06-05 17:00,2013-07-16 08:00,2013-08-01 17:00,,PT_Normal,,,,,ROGcu7ydRpeWsZyoiigUOQ,,,,N,0,0,,,2013-02-16 15:51,2013-02-16 15:56,admin,admin
499478,6359,124304,13662,0,N,N,N,CP_Drtn,TT_Task,DT_FixedDUR2,TK_NotStart,DUKHENGI1BDWBWSM4730,Boundary Wall Layout & Details-Sub,,392,0,120,0,30,30,120,0,0,0,,,,2013-07-16 08:00,2013-08-01 17:00,,2013-05-20 08:00,2013-06-05 17:00,2013-05-20 08:00,2013-06-05 17:00,2013-05-20 08:00,2013-06-05 17:00,2013-07-16 08:00,2013-08-01 17:00,,PT_Normal,,,,,jIjlRSQdTw6pp+ODcQkD3g,,,,N,0,0,,,2013-02-16 15:51,2013-02-16 15:56,admin,admin
499479,6359,124304,13662,0,N,N,N,CP_Drtn,TT_Task,DT_FixedDUR2,TK_NotStart,DUKHENGI1BDWRWSM4750,Road Layout & Details-Sub,,392,0,120,0,30,30,120,0,0,0,,,,2013-07-24 08:00,2013-08-13 17:00,,2013-05-28 08:00,2013-06-13 17:00,2013-05-28 08:00,2013-06-13 17:00,2013-05-28 08:00,2013-06-13 17:00,2013-07-24 08:00,2013-08-13 17:00,,PT_Normal,,,,,IRuo3Pi2QP2czqv9X3ZoTQ,,,,N,0,0,,,2013-02-16 15:51,2013-02-16 15:56,admin,admin
499480,6359,124304,13662,0,N,N,N,CP_Drtn,TT_Task,DT_FixedDUR2,TK_NotStart,DUKHENGI1BDWIWSM4760,Irrigation Water Tank & Pump Room Details- Sub,,392,0,120,0,30,30,120,0,0,0,,,,2013-07-24 08:00,2013-08-13 17:00,,2013-05-28 08:00,2013-06-13 17:00,2013-05-28 08:00,2013-06-13 17:00,2013-05-28 08:00,2013-06-13 17:00,2013-07-24 08:00,2013-08-13 17:00,,PT_Normal,,,,,XuJ4zCLKRqarQDC7R8RU8A,,,,N,0,0,,,2013-02-16 15:51,2013-02-16 15:56,admin,admin
499481,6359,124304,13662,0,N,N,N,CP_Drtn,TT_Task,DT_FixedDUR2,TK_NotStart,DUKHENGI1BDWTRSM4770,Telephone Room Details-Sub,,600,0,120,0,30,30,120,0,0,0,,,,2013-08-27 08:00,2013-09-12 17:00,,2013-05-28 08:00,2013-06-13 17:00,2013-05-28 08:00,2013-06-13 17:00,2013-05-28 08:00,2013-06-13 17:00,2013-08-27 08:00,2013-09-12 17:00,,PT_Normal,,,,,WtGeh2puTKqLx+RQUAjcpg,,,,N,0,0,,,2013-02-16 15:51,2013-02-16 15:56,admin,admin
499482,6359,124305,13662,0,N,N,N,CP_Drtn,TT_Task,DT_FixedDUR2,TK_NotStart,DUKHENGI1BDWELAP4680,Electrical Line Layout & Details-App,,480,0,240,0,0,0,240,0,0,0,,,,2013-07-29 08:00,2013-09-04 17:00,,2013-05-20 08:00,2013-06-23 17:00,2013-05-20 08:00,2013-06-23 17:00,2013-05-20 08:00,2013-06-23 17:00,2013-07-29 08:00,2013-09-04 17:00,,PT_Normal,,,,,6NmBclYJSmCuwBEhsJXCug,,,,N,0,0,,,2013-02-16 15:51,2013-02-16 15:56,admin,admin
499483,6359,124305,13662,0,N,N,N,CP_Drtn,TT_Task,DT_FixedDUR2,TK_NotStart,DUKHENGI1BDWSTAP4690,Street Lighting Layout & details -App,,480,0,240,0,0,0,240,0,0,0,,,,2013-09-05 08:00,2013-10-09 17:00,,2013-06-24 08:00,2013-07-28 17:00,2013-06-24 08:00,2013-07-28 17:00,2013-06-24 08:00,2013-07-28 17:00,2013-09-05 08:00,2013-10-09 17:00,,PT_Normal,,,,,3R5CTp6SSeCLlbHGPRmzBg,,,,N,0,0,,,2013-02-16 15:51,2013-02-16 15:56,admin,admin
499484,6359,124305,13662,0,N,N,N,CP_Drtn,TT_Task,DT_FixedDUR2,TK_NotStart,DUKHENGI1BDWDRAP4650,Drainage Line Layout & Details-App,,688,296,240,0,0,0,240,0,0,0,,,,2013-08-14 08:00,2013-09-17 17:00,,2013-05-02 08:00,2013-06-05 17:00,2013-05-02 08:00,2013-06-05 17:00,2013-05-02 08:00,2013-06-05 17:00,2013-08-14 08:00,2013-09-17 17:00,,PT_Normal,,,,,01uIUj+iTQGBVQCZ0x0+rQ,,,,N,0,0,,,2013-02-16 15:51,2013-02-16 15:56,admin,admin
499485,6359,124305,13662,0,N,N,N,CP_Drtn,TT_Task,DT_FixedDUR2,TK_NotStart,DUKHENGI1BDWFFAP4660,Fire Fighting Line Layout & Details-App,,360,320,240,0,0,0,240,0,0,0,,,,2013-06-24 08:00,2013-07-28 17:00,,2013-05-02 08:00,2013-06-05 17:00,2013-05-02 08:00,2013-06-05 17:00,2013-05-02 08:00,2013-06-05 17:00,2013-06-24 08:00,2013-07-28 17:00,,PT_Normal,,,,,jx3SwcYZRl2GolnLA/NsYQ,,,,N,0,0,,,2013-02-16 15:51,2013-02-16 16:17,admin,admin
499486,6359,124305,13662,0,N,N,N,CP_Drtn,TT_Task,DT_FixedDUR2,TK_NotStart,DUKHENGI1BDWWSAP4670,Water Supply Line Layout & Details-App,,688,296,240,0,0,0,240,0,0,0,,,,2013-08-14 08:00,2013-09-17 17:00,,2013-05-02 08:00,2013-06-05 17:00,2013-05-02 08:00,2013-06-05 17:00,2013-05-02 08:00,2013-06-05 17:00,2013-08-14 08:00,2013-09-17 17:00,,PT_Normal,,,,,3WLkd33kTNCWiis1cUSyug,,,,N,0,0,,,2013-02-16 15:51,2013-02-16 15:56,admin,admin
499487,6359,124305,13662,0,N,N,N,CP_Drtn,TT_Task,DT_FixedDUR2,TK_NotStart,DUKHENGI1BDWIRAP4710,Irrigation Layout & Details-App,,728,120,240,0,0,0,240,0,0,0,,,,2013-09-24 08:00,2013-10-30 17:00,,2013-06-06 08:00,2013-07-10 17:00,2013-06-06 08:00,2013-07-10 17:00,2013-06-06 08:00,2013-07-10 17:00,2013-09-24 08:00,2013-10-30 17:00,,PT_Normal,,,,,iwsOVo+ASv6DgTDJLZs/9w,,,,N,0,0,,,2013-02-16 15:51,2013-02-16 15:56,admin,admin
499488,6359,124305,13662,0,N,N,N,CP_Drtn,TT_Task,DT_FixedDUR2,TK_NotStart,DUKHENGI1BDWTCAP4700,Telecommunication Line Layout & Details-App,,480,0,240,0,0,0,240,0,0,0,,,,2013-10-10 08:00,2013-11-16 17:00,,2013-07-29 08:00,2013-09-04 17:00,2013-07-29 08:00,2013-09-04 17:00,2013-07-29 08:00,2013-09-04 17:00,2013-10-10 08:00,2013-11-16 17:00,,PT_Normal,,,,,ShijvBAqQiaMKwnuGOKcGg,,,,N,0,0,,,2013-02-16 15:51,2013-02-16 15:56,admin,admin
499489,6359,124305,13662,0,N,N,N,CP_Drtn,TT_Task,DT_FixedDUR2,TK_NotStart,DUKHENGI1BDWPSAP4740,Parking Shed Layout & Details Drawings-App,,1200,184,240,0,0,0,240,0,0,0,,,,2013-12-12 08:00,2014-01-16 17:00,,2013-06-15 08:00,2013-07-18 17:00,2013-06-15 08:00,2013-07-18 17:00,2013-06-15 08:00,2013-07-18 17:00,2013-12-12 08:00,2014-01-16 17:00,,PT_Normal,,,,,4cWUOOo1RGK4ZCvsu9aasg,,,,N,0,0,,,2013-02-16 15:51,2013-02-16 15:56,admin,admin
499490,6359,124305,13662,0,N,N,N,CP_Drtn,TT_Task,DT_FixedDUR2,TK_NotStart,DUKHENGI1BDWSLAP4720,Soft & HardLandscaping Layout & Detail-App,,536,360,240,0,0,0,240,0,0,0,,,,2013-08-27 08:00,2013-09-30 17:00,,2013-06-06 08:00,2013-07-10 17:00,2013-06-06 08:00,2013-07-10 17:00,2013-06-06 08:00,2013-07-10 17:00,2013-08-27 08:00,2013-09-30 17:00,,PT_Normal,,,,,4nYrZLP9QHak5QDc73FyBw,,,,N,0,0,,,2013-02-16 15:51,2013-02-16 15:56,admin,admin
499491,6359,124305,13662,0,N,N,N,CP_Drtn,TT_Task,DT_FixedDUR2,TK_NotStart,DUKHENGI1BDWBWAP4730,Boundary Wall Layout & Details-App,,680,360,240,0,0,0,240,0,0,0,,,,2013-09-17 08:00,2013-10-23 17:00,,2013-06-06 08:00,2013-07-10 17:00,2013-06-06 08:00,2013-07-10 17:00,2013-06-06 08:00,2013-07-10 17:00,2013-09-17 08:00,2013-10-23 17:00,,PT_Normal,,,,,Vx0hd4S6R/ioylMm566BCg,,,,N,0,0,,,2013-02-16 15:51,2013-02-16 16:45,admin,admin
499492,6359,124305,13662,0,N,N,N,CP_Drtn,TT_Task,DT_FixedDUR2,TK_NotStart,DUKHENGI1BDWRWAP4750,Road Layout & Details-App,,1192,184,240,0,0,0,240,0,0,0,,,,2013-12-11 08:00,2014-01-15 17:00,,2013-06-15 08:00,2013-07-18 17:00,2013-06-15 08:00,2013-07-18 17:00,2013-06-15 08:00,2013-07-18 17:00,2013-12-11 08:00,2014-01-15 17:00,,PT_Normal,,,,,1iZD0c6qRzGxH9QnPBLK6Q,,,,N,0,0,,,2013-02-16 15:51,2013-02-16 15:56,admin,admin
499493,6359,124305,13662,0,N,N,N,CP_Drtn,TT_Task,DT_FixedDUR2,TK_NotStart,DUKHENGI1BDWIWAP4760,Irrigation Water Tank & Pump Room Details-App,,392,0,240,0,0,0,240,0,0,0,,,,2013-08-14 08:00,2013-09-17 17:00,,2013-06-15 08:00,2013-07-18 17:00,2013-06-15 08:00,2013-07-18 17:00,2013-06-15 08:00,2013-07-18 17:00,2013-08-14 08:00,2013-09-17 17:00,,PT_Normal,,,,,kzy5CsqBQDmXlC9kSEelhQ,,,,N,0,0,,,2013-02-16 15:51,2013-02-16 15:56,admin,admin
499494,6359,124305,13662,0,N,N,N,CP_Drtn,TT_Task,DT_FixedDUR2,TK_NotStart,DUKHENGI1BDWTRAP4770,Telephone Room Details-App,,600,0,240,0,0,0,240,0,0,0,,,,2013-09-14 08:00,2013-10-20 17:00,,2013-06-15 08:00,2013-07-18 17:00,2013-06-15 08:00,2013-07-18 17:00,2013-06-15 08:00,2013-07-18 17:00,2013-09-14 08:00,2013-10-20 17:00,,PT_Normal,,,,,fcKCgnlqQeKO9ido5PoYrQ,,,,N,0,0,,,2013-02-16 15:51,2013-02-16 15:56,admin,admin
499495,6359,124305,13662,0,N,N,N,CP_Drtn,TT_Task,DT_FixedDUR2,TK_NotStart,DUKHENGI1BDWGZAP4780,Gazebo Plan & Details-App,,600,120,240,0,0,0,240,0,0,0,,,,2013-10-21 08:00,2013-11-24 17:00,,2013-07-20 08:00,2013-08-26 17:00,2013-07-20 08:00,2013-08-26 17:00,2013-07-20 08:00,2013-08-26 17:00,2013-10-21 08:00,2013-11-24 17:00,,PT_Normal,,,,,+yGRNT1ST0GvZSffeRY+nQ,,,,N,0,0,,,2013-02-16 15:51,2013-02-16 15:56,admin,admin
499496,6359,124305,13662,0,N,N,N,CP_Drtn,TT_Task,DT_FixedDUR2,TK_NotStart,DUKHENGI1BDWGHAP4790,Guard House Plan & Details-App,,2296,2192,240,0,0,0,240,0,0,0,,,,2014-06-28 08:00,2014-07-31 17:00,,2013-07-20 08:00,2013-08-26 17:00,2013-07-20 08:00,2013-08-26 17:00,2013-07-20 08:00,2013-08-26 17:00,2014-06-28 08:00,2014-07-31 17:00,,PT_Normal,,,,,mVZk+AsYRUG200NjhmO7Vw,,,,N,0,0,,,2013-02-16 15:51,2013-02-16 15:56,admin,admin
499497,6359,124307,13662,0,N,N,N,CP_Drtn,TT_Task,DT_FixedDUR2,TK_NotStart,DUKHENGP1BDWELAP4550,Single Line Diagram-App,,920,320,240,0,0,0,240,0,0,0,,,,2013-07-23 08:00,2013-08-29 17:00,,2013-03-11 08:00,2013-04-14 17:00,2013-03-11 08:00,2013-04-14 17:00,2013-03-11 08:00,2013-04-14 17:00,2013-07-23 08:00,2013-08-29 17:00,,PT_Normal,,,,,xA6se/DnQ7mXtRlLvqfo9g,,,,N,0,0,,,2013-02-16 15:51,2013-02-16 15:56,admin,admin
499498,6359,124307,13662,0,N,N,N,CP_Drtn,TT_Task,DT_FixedDUR2,TK_NotStart,DUKHENGP1BDWELAP4560,Lighting Layout Drawings-App,,1176,720,240,0,0,0,240,0,0,0,,,,2013-09-19 08:00,2013-10-26 17:00,,2013-03-28 08:00,2013-05-01 17:00,2013-03-28 08:00,2013-05-01 17:00,2013-03-28 08:00,2013-05-01 17:00,2013-09-19 08:00,2013-10-26 17:00,,PT_Normal,,,,,8CkAfgUsTTaSRwX2Z5zjfw,,,,N,0,0,,,2013-02-16 15:51,2013-02-16 15:56,admin,admin
499499,6359,124307,13662,0,N,N,N,CP_Drtn,TT_Task,DT_FixedDUR2,TK_NotStart,DUKHENGP1BDWELAP4570,Power Layout Drawings-App,,768,168,240,0,0,0,240,0,0,0,,,,2013-07-23 08:00,2013-08-29 17:00,,2013-04-02 08:00,2013-05-06 17:00,2013-04-02 08:00,2013-05-06 17:00,2013-04-02 08:00,2013-05-06 17:00,2013-07-23 08:00,2013-08-29 17:00,,PT_Normal,,,,,ceWRgZ2gRXGC6i01Mh2ucg,,,,N,0,0,,,2013-02-16 15:51,2013-02-16 15:56,admin,admin
499500,6359,124307,13662,0,N,N,N,CP_Drtn,TT_Task,DT_FixedDUR2,TK_NotStart,DUKHENGP1BDWELAP4580,Central Alarm Monitoring System Drawings-App,,1544,704,240,0,0,0,240,0,0,0,,,,2013-11-27 08:00,2014-01-01 17:00,,2013-04-10 08:00,2013-05-14 17:00,2013-04-10 08:00,2013-05-14 17:00,2013-04-10 08:00,2013-05-14 17:00,2013-11-27 08:00,2014-01-01 17:00,,PT_Normal,,,,,sQGTlWmET3GBD8NT52r4zw,,,,N,0,0,,,2013-02-16 15:51,2013-02-16 15:56,admin,admin
499501,6359,124307,13662,0,N,N,N,CP_Drtn,TT_Task,DT_FixedDUR2,TK_NotStart,DUKHENGP1BDWELAP4590,Audio Video Intercom System Drawings-App,,672,112,240,0,0,0,240,0,0,0,,,,2013-08-04 08:00,2013-09-10 17:00,,2013-04-28 08:00,2013-06-01 17:00,2013-04-28 08:00,2013-06-01 17:00,2013-04-28 08:00,2013-06-01 17:00,2013-08-04 08:00,2013-09-10 17:00,,PT_Normal,,,,,lKwkWXk6QCa5H8Sh3Ju6QQ,,,,N,0,0,,,2013-02-16 15:51,2013-02-16 15:56,admin,admin
499502,6359,124307,13662,0,N,N,N,CP_Drtn,TT_Task,DT_FixedDUR2,TK_NotStart,DUKHENGP1BDWELAP4600,Telephone & TV System Drawings-App,,552,0,240,0,0,0,240,0,0,0,,,,2013-08-04 08:00,2013-09-10 17:00,,2013-05-15 08:00,2013-06-18 17:00,2013-05-15 08:00,2013-06-18 17:00,2013-05-15 08:00,2013-06-18 17:00,2013-08-04 08:00,2013-09-10 17:00,,PT_Normal,,,,,o8fb8XV5SU6LKNoDxy44Yw,,,,N,0,0,,,2013-02-16 15:51,2013-02-16 15:56,admin,admin
499503,6359,124308,13662,0,N,N,N,CP_Drtn,TT_Task,DT_FixedDUR2,TK_NotStart,DUKHENGP1BDWELSM4550,Single Line Diagram-Sub,,552,0,120,0,20,20,120,0,0,0,,,,2013-05-13 08:00,2013-05-29 17:00,,2013-02-21 08:00,2013-03-10 17:00,2013-02-21 08:00,2013-03-10 17:00,2013-02-21 08:00,2013-03-10 17:00,2013-05-13 08:00,2013-05-29 17:00,,PT_Normal,,,,,hZ5S6xn7RvaKsmvs5cZDWQ,,,,N,0,0,,,2013-02-16 15:51,2013-02-16 15:56,admin,admin
499504,6359,124308,13662,0,N,N,N,CP_Drtn,TT_Task,DT_FixedDUR2,TK_NotStart,DUKHENGP1BDWELSM4560,Lighting Layout Drawings-Sub,,552,0,120,0,20,20,120,0,0,0,,,,2013-05-30 08:00,2013-06-16 17:00,,2013-03-11 08:00,2013-03-27 17:00,2013-03-11 08:00,2013-03-27 17:00,2013-03-11 08:00,2013-03-27 17:00,2013-05-30 08:00,2013-06-16 17:00,,PT_Normal,,,,,0fxYQCMDR2CpJxM1O0SqMw,,,,N,0,0,,,2013-02-16 15:51,2013-02-16 15:56,admin,admin
499505,6359,124308,13662,0,N,N,N,CP_Drtn,TT_Task,DT_FixedDUR2,TK_NotStart,DUKHENGP1BDWELSM4570,Power Layout Drawings-Sub,,552,0,120,0,20,20,120,0,0,0,,,,2013-06-04 08:00,2013-06-20 17:00,,2013-03-16 08:00,2013-04-01 17:00,2013-03-16 08:00,2013-04-01 17:00,2013-03-16 08:00,2013-04-01 17:00,2013-06-04 08:00,2013-06-20 17:00,,PT_Normal,,,,,NFnyFyWxSs+9GhkWQJ2ExA,,,,N,0,0,,,2013-02-16 15:51,2013-02-16 15:56,admin,admin
499506,6359,124308,13662,0,N,N,N,CP_Drtn,TT_Task,DT_FixedDUR2,TK_NotStart,DUKHENGP1BDWELSM4580,Central Alarm Monitoring System Drawings-Sub,,552,0,120,0,20,20,120,0,0,0,,,,2013-06-12 08:00,2013-06-29 17:00,,2013-03-24 08:00,2013-04-09 17:00,2013-03-24 08:00,2013-04-09 17:00,2013-03-24 08:00,2013-04-09 17:00,2013-06-12 08:00,2013-06-29 17:00,,PT_Normal,,,,,41kT3BH6TWmNZ3Kf1V0img,,,,N,0,0,,,2013-02-16 15:51,2013-02-16 15:56,admin,admin
499507,6359,124308,13662,0,N,N,N,CP_Drtn,TT_Task,DT_FixedDUR2,TK_NotStart,DUKHENGP1BDWELSM4590,Audio Video Intercom System Drawings-Sub,,552,0,120,0,30,30,120,0,0,0,,,,2013-06-30 08:00,2013-07-16 17:00,,2013-04-10 08:00,2013-04-27 17:00,2013-04-10 08:00,2013-04-27 17:00,2013-04-10 08:00,2013-04-27 17:00,2013-06-30 08:00,2013-07-16 17:00,,PT_Normal,,,,,XBYk3msXQaKIHOvLGB8TYQ,,,,N,0,0,,,2013-02-16 15:51,2013-02-16 15:56,admin,admin
499508,6359,124308,13662,0,N,N,N,CP_Drtn,TT_Task,DT_FixedDUR2,TK_NotStart,DUKHENGP1BDWELSM4600,Telephone & TV System Drawings-Sub,,552,0,120,0,30,30,120,0,0,0,,,,2013-07-17 08:00,2013-08-03 17:00,,2013-04-28 08:00,2013-05-14 17:00,2013-04-28 08:00,2013-05-14 17:00,2013-04-28 08:00,2013-05-14 17:00,2013-07-17 08:00,2013-08-03 17:00,,PT_Normal,,,,,W0ylOBqKQsiXaoPk/0vmYw,,,,N,0,0,,,2013-02-16 15:51,2013-02-16 15:56,admin,admin
499509,6359,124310,13662,0,N,N,N,CP_Drtn,TT_Task,DT_FixedDUR2,TK_NotStart,DUKHENGP1BDWMEAP4610,Plumbing Layout & Details Drawings-App,,424,0,240,0,0,0,240,0,0,0,,,,2013-05-12 08:00,2013-06-15 17:00,,2013-03-11 08:00,2013-04-14 17:00,2013-03-11 08:00,2013-04-14 17:00,2013-03-11 08:00,2013-04-14 17:00,2013-05-12 08:00,2013-06-15 17:00,,PT_Normal,,,,,WkMMx+ZfSm+elHPj90eY/Q,,,,N,0,0,,,2013-02-16 15:51,2013-02-16 15:56,admin,admin
499510,6359,124310,13662,0,N,N,N,CP_Drtn,TT_Task,DT_FixedDUR2,TK_NotStart,DUKHENGP1BDWMEAP4620,Drainage Layout & Details Drawings-App,,424,0,240,0,0,0,240,0,0,0,,,,2013-05-12 08:00,2013-06-15 17:00,,2013-03-11 08:00,2013-04-14 17:00,2013-03-11 08:00,2013-04-14 17:00,2013-03-11 08:00,2013-04-14 17:00,2013-05-12 08:00,2013-06-15 17:00,,PT_Normal,,,,,Qg6/Yu3KSVCI1eHG35ny/g,,,,N,0,0,,,2013-02-16 15:51,2013-02-16 15:56,admin,admin
499511,6359,124310,13662,0,N,N,N,CP_Drtn,TT_Task,DT_FixedDUR2,TK_NotStart,DUKHENGP1BDWMEAP4630,Fire Fighting Layout & Details Drawings-App,,1160,440,240,0,0,0,240,0,0,0,,,,2013-09-17 08:00,2013-10-23 17:00,,2013-03-28 08:00,2013-05-01 17:00,2013-03-28 08:00,2013-05-01 17:00,2013-03-28 08:00,2013-05-01 17:00,2013-09-17 08:00,2013-10-23 17:00,,PT_Normal,,,,,+DKSVoIOQ9erjn7mFHPYlA,,,,N,0,0,,,2013-02-16 15:51,2013-02-16 15:56,admin,admin
499512,6359,124310,13662,0,N,N,N,CP_Drtn,TT_Task,DT_FixedDUR2,TK_NotStart,DUKHENGP1BDWMEAP4640,AC Layout & Details Drawings-App,,512,80,240,0,0,0,240,0,0,0,,,,2013-06-29 08:00,2013-08-01 17:00,,2013-04-15 08:00,2013-05-19 17:00,2013-04-15 08:00,2013-05-19 17:00,2013-04-15 08:00,2013-05-19 17:00,2013-06-29 08:00,2013-08-01 17:00,,PT_Normal,,,,,/C62U+14QSGEgPDQS7eRTg,,,,N,0,0,,,2013-02-16 15:51,2013-02-16 15:56,admin,admin
499513,6359,124311,13662,0,N,N,N,CP_Drtn,TT_Task,DT_FixedDUR2,TK_NotStart,DUKHENGP1BDWMESM4610,Plumbing Layout & Details Drawings-Sub,,424,0,120,0,20,20,120,0,0,0,,,,2013-04-24 08:00,2013-05-11 17:00,,2013-02-21 08:00,2013-03-10 17:00,2013-02-21 08:00,2013-03-10 17:00,2013-02-21 08:00,2013-03-10 17:00,2013-04-24 08:00,2013-05-11 17:00,,PT_Normal,,,,,dt79AqwuT365e77xgO+avA,,,,N,0,0,,,2013-02-16 15:51,2013-02-16 15:56,admin,admin
499514,6359,124311,13662,0,N,N,N,CP_Drtn,TT_Task,DT_FixedDUR2,TK_NotStart,DUKHENGP1BDWMESM4620,Drainage Layout & Details Drawings-Sub,,360,0,120,0,20,20,120,0,0,0,,,,2013-04-15 08:00,2013-05-01 17:00,,2013-02-21 08:00,2013-03-10 17:00,2013-02-21 08:00,2013-03-10 17:00,2013-02-21 08:00,2013-03-10 17:00,2013-04-15 08:00,2013-05-01 17:00,,PT_Normal,,,,,gKvJ7AQBQlCzPLoWfKzWZQ,,,,N,0,0,,,2013-02-16 15:51,2013-02-16 16:17,admin,admin
499515,6359,124311,13662,0,N,N,N,CP_Drtn,TT_Task,DT_FixedDUR2,TK_NotStart,DUKHENGP1BDWMESM4630,Fire Fighting Layout & Details Drawings-Sub,,360,0,120,0,20,20,120,0,0,0,,,,2013-05-02 08:00,2013-05-19 17:00,,2013-03-11 08:00,2013-03-27 17:00,2013-03-11 08:00,2013-03-27 17:00,2013-03-11 08:00,2013-03-27 17:00,2013-05-02 08:00,2013-05-19 17:00,,PT_Normal,,,,,+Xei0c2jQPKn+3WHBTIvBg,,,,N,0,0,,,2013-02-16 15:51,2013-02-16 16:17,admin,admin
499516,6359,124311,13662,0,N,N,N,CP_Drtn,TT_Task,DT_FixedDUR2,TK_NotStart,DUKHENGP1BDWMESM4640,AC Layout & Details Drawings-Sub,,360,0,120,0,30,30,120,0,0,0,,,,2013-05-20 08:00,2013-06-05 17:00,,2013-03-28 08:00,2013-04-14 17:00,2013-03-28 08:00,2013-04-14 17:00,2013-03-28 08:00,2013-04-14 17:00,2013-05-20 08:00,2013-06-05 17:00,,PT_Normal,,,,,K9gM07YBTsKTjYCq+chehg,,,,N,0,0,,,2013-02-16 15:51,2013-02-16 16:17,admin,admin
499517,6359,124313,13662,0,N,N,N,CP_Drtn,TT_Task,DT_FixedDUR2,TK_NotStart,DUKHENGP1BDWSTAP4400,Footing Drawings-App,,464,464,240,0,0,0,240,0,0,0,,,,2013-03-10 08:00,2013-04-13 17:00,,2012-12-31 08:00,2013-02-03 17:00,2012-12-31 08:00,2013-02-03 17:00,2012-12-31 08:00,2013-02-03 17:00,2013-03-10 08:00,2013-04-13 17:00,,PT_Normal,,,,,0nprnVQ8TLy3pUtIHYFjZw,,,,N,0,0,,,2013-02-16 15:51,2013-02-16 15:56,admin,admin
499518,6359,124313,13662,0,N,N,N,CP_Drtn,TT_Task,DT_FixedDUR2,TK_NotStart,DUKHENGP1BDWSTAP4410,Grade Beam & Slab Drawings-App,,992,992,240,0,0,0,240,0,0,0,,,,2013-06-01 08:00,2013-07-04 17:00,,2013-01-06 08:00,2013-02-09 17:00,2013-01-06 08:00,2013-02-09 17:00,2013-01-06 08:00,2013-02-09 17:00,2013-06-01 08:00,2013-07-04 17:00,,PT_Normal,,,,,f2gWDmNsRn+0zzOhBqoh1Q,,,,N,0,0,,,2013-02-16 15:51,2013-02-16 15:56,admin,admin
499519,6359,124313,13662,0,N,N,N,CP_Drtn,TT_Task,DT_FixedDUR2,TK_NotStart,DUKHENGP1BDWSTAP4420,Column Drawings-App,,1248,1248,240,0,0,0,240,0,0,0,,,,2013-07-14 08:00,2013-08-20 17:00,,2013-01-12 08:00,2013-02-16 17:00,2013-01-12 08:00,2013-02-16 17:00,2013-01-12 08:00,2013-02-16 17:00,2013-07-14 08:00,2013-08-20 17:00,,PT_Normal,,,,,OQNEjdsFQVWUC0tDKEHPmA,,,,N,0,0,,,2013-02-16 15:51,2013-02-16 15:56,admin,admin
499520,6359,124313,13662,0,N,N,N,CP_Drtn,TT_Task,DT_FixedDUR2,TK_NotStart,DUKHENGP1BDWSTAP4430,GF Beams & Slabs Drawings-App,,1328,1328,240,0,0,0,240,0,0,0,,,,2013-08-06 08:00,2013-09-12 17:00,,2013-01-23 08:00,2013-02-27 17:00,2013-01-23 08:00,2013-02-27 17:00,2013-01-23 08:00,2013-02-27 17:00,2013-08-06 08:00,2013-09-12 17:00,,PT_Normal,,,,,D0XNeGZjRuW7ngZ5dRpjgg,,,,N,0,0,,,2013-02-16 15:51,2013-02-16 15:56,admin,admin
499521,6359,124313,13662,0,N,N,N,CP_Drtn,TT_Task,DT_FixedDUR2,TK_NotStart,DUKHENGP1BDWSTAP4440,FF Beams & Slabs Drawings-App,,1336,1336,240,0,0,0,240,0,0,0,,,,2013-08-28 08:00,2013-10-01 17:00,,2013-02-10 08:00,2013-03-17 17:00,2013-02-10 08:00,2013-03-17 17:00,2013-02-10 08:00,2013-03-17 17:00,2013-08-28 08:00,2013-10-01 17:00,,PT_Normal,,,,,tNhJ1fmzT2CIOXo801k/EA,,,,N,0,0,,,2013-02-16 15:51,2013-02-16 15:56,admin,admin
499522,6359,124314,13662,0,N,N,N,CP_Drtn,TT_Task,DT_FixedDUR2,TK_NotStart,DUKHENGP1BDWSTSM4400,Footing Drawings-Sub,,336,0,120,0,30,30,120,0,0,0,,,,2013-01-31 08:00,2013-02-18 17:00,,2012-12-12 08:00,2012-12-30 17:00,2012-12-12 08:00,2012-12-30 17:00,2012-12-12 08:00,2012-12-30 17:00,2013-01-31 08:00,2013-02-18 17:00,,PT_Normal,,,,,qockfVEHSPiHUXGwxrywuw,,,,N,0,0,,,2013-02-16 15:51,2013-02-16 15:56,admin,admin
499523,6359,124314,13662,0,N,N,N,CP_Drtn,TT_Task,DT_FixedDUR2,TK_NotStart,DUKHENGP1BDWSTSM4410,Grade Beam & Slab Drawings-Sub,,336,0,120,0,30,30,120,0,0,0,,,,2013-02-06 08:00,2013-02-24 17:00,,2012-12-19 08:00,2013-01-05 17:00,2012-12-19 08:00,2013-01-05 17:00,2012-12-19 08:00,2013-01-05 17:00,2013-02-06 08:00,2013-02-24 17:00,,PT_Normal,,,,,4w2daZ28SW6ktsaUHn11iA,,,,N,0,0,,,2013-02-16 15:51,2013-02-16 15:56,admin,admin
499524,6359,124314,13662,0,N,N,N,CP_Drtn,TT_Task,DT_FixedDUR2,TK_NotStart,DUKHENGP1BDWSTSM4420,Column Drawings-Sub,,336,0,120,0,30,30,120,0,0,0,,,,2013-02-13 08:00,2013-03-02 17:00,,2012-12-25 08:00,2013-01-10 17:00,2012-12-25 08:00,2013-01-10 17:00,2012-12-25 08:00,2013-01-10 17:00,2013-02-13 08:00,2013-03-02 17:00,,PT_Normal,,,,,YGbzGXA8RIiaIbe7SIcjHw,,,,N,0,0,,,2013-02-16 15:51,2013-02-16 15:56,admin,admin
499525,6359,124314,13662,0,N,N,N,CP_Drtn,TT_Task,DT_FixedDUR2,TK_NotStart,DUKHENGP1BDWSTSM4430,GF Beams & Slabs Drawings-Sub,,336,0,120,0,30,30,120,0,0,0,,,,2013-02-25 08:00,2013-03-13 17:00,,2013-01-06 08:00,2013-01-22 17:00,2013-01-06 08:00,2013-01-22 17:00,2013-01-06 08:00,2013-01-22 17:00,2013-02-25 08:00,2013-03-13 17:00,,PT_Normal,,,,,w7upkBRxTsi1cVzEidmcLQ,,,,N,0,0,,,2013-02-16 15:51,2013-02-16 15:56,admin,admin
499526,6359,124314,13662,0,N,N,N,CP_Drtn,TT_Task,DT_FixedDUR2,TK_NotStart,DUKHENGP1BDWSTSM4440,FF Beams & Slabs Drawings-Sub,,336,0,120,0,30,30,120,0,0,0,,,,2013-03-14 08:00,2013-03-31 17:00,,2013-01-23 08:00,2013-02-09 17:00,2013-01-23 08:00,2013-02-09 17:00,2013-01-23 08:00,2013-02-09 17:00,2013-03-14 08:00,2013-03-31 17:00,,PT_Normal,,,,,xC+DVwL5Q4aEokislLkDUA,,,,N,0,0,,,2013-02-16 15:51,2013-02-16 15:56,admin,admin
499527,6359,124316,13662,0,N,N,N,CP_Drtn,TT_Task,DT_FixedDUR2,TK_NotStart,DUKHENGP1BDWARAP4450,Ground Floor Plan-App,,656,0,240,0,0,0,240,0,0,0,,,,2013-06-04 08:00,2013-07-08 17:00,,2013-02-28 08:00,2013-04-03 17:00,2013-02-28 08:00,2013-04-03 17:00,2013-02-28 08:00,2013-04-03 17:00,2013-06-04 08:00,2013-07-08 17:00,,PT_Normal,,,,,YI0kQzVWQxaDdmGd+9GD3g,,,,N,0,0,,,2013-02-16 15:51,2013-02-16 15:56,admin,admin
499528,6359,124316,13662,0,N,N,N,CP_Drtn,TT_Task,DT_FixedDUR2,TK_NotStart,DUKHENGP1BDWARAP4460,First Floor Plan-App,,448,0,240,0,0,0,240,0,0,0,,,,2013-05-13 08:00,2013-06-16 17:00,,2013-03-09 08:00,2013-04-11 17:00,2013-03-09 08:00,2013-04-11 17:00,2013-03-09 08:00,2013-04-11 17:00,2013-05-13 08:00,2013-06-16 17:00,,PT_Normal,,,,,dcx9rNTySnST9GQsGyqOnQ,,,,N,0,0,,,2013-02-16 15:51,2013-02-16 15:56,admin,admin
499529,6359,124316,13662,0,N,N,N,CP_Drtn,TT_Task,DT_FixedDUR2,TK_NotStart,DUKHENGP1BDWARAP4470,Roof Floor Plan-App,,392,0,240,0,0,0,240,0,0,0,,,,2013-05-13 08:00,2013-06-16 17:00,,2013-03-17 08:00,2013-04-20 17:00,2013-03-17 08:00,2013-04-20 17:00,2013-03-17 08:00,2013-04-20 17:00,2013-05-13 08:00,2013-06-16 17:00,,PT_Normal,,,,,fcl+FesTSmmxanbZyYQrUw,,,,N,0,0,,,2013-02-16 15:51,2013-02-16 15:56,admin,admin
499530,6359,124316,13662,0,N,N,N,CP_Drtn,TT_Task,DT_FixedDUR2,TK_NotStart,DUKHENGP1BDWARAP4500,Ceramic Flooring & Wall Drawings-App,,336,0,240,0,0,0,240,0,0,0,,,,2013-05-14 08:00,2013-06-17 17:00,,2013-03-26 08:00,2013-04-29 17:00,2013-03-26 08:00,2013-04-29 17:00,2013-03-26 08:00,2013-04-29 17:00,2013-05-14 08:00,2013-06-17 17:00,,PT_Normal,,,,,IWpFw1FuQh6asWwxQuWm2g,,,,N,0,0,,,2013-02-16 15:51,2013-02-16 15:56,admin,admin
499531,6359,124316,13662,0,N,N,N,CP_Drtn,TT_Task,DT_FixedDUR2,TK_NotStart,DUKHENGP1BDWARAP4510,Porcelain Floor Drawings-App,,408,0,240,0,0,0,240,0,0,0,,,,2013-05-25 08:00,2013-06-27 17:00,,2013-03-26 08:00,2013-04-29 17:00,2013-03-26 08:00,2013-04-29 17:00,2013-03-26 08:00,2013-04-29 17:00,2013-05-25 08:00,2013-06-27 17:00,,PT_Normal,,,,,vv7vXs3QS7qEvivkAQlIww,,,,N,0,0,,,2013-02-16 15:51,2013-02-16 15:56,admin,admin
499532,6359,124316,13662,0,N,N,N,CP_Drtn,TT_Task,DT_FixedDUR2,TK_NotStart,DUKHENGP1BDWARAP4520,Cobble & Slate Flooring Drawings-App,,656,0,240,0,0,0,240,0,0,0,,,,2013-06-30 08:00,2013-08-03 17:00,,2013-03-26 08:00,2013-04-29 17:00,2013-03-26 08:00,2013-04-29 17:00,2013-03-26 08:00,2013-04-29 17:00,2013-06-30 08:00,2013-08-03 17:00,,PT_Normal,,,,,LsCP8ATiSPC0ZsUaT1+gSQ,,,,N,0,0,,,2013-02-16 15:51,2013-02-16 15:56,admin,admin
499533,6359,124316,13662,0,N,N,N,CP_Drtn,TT_Task,DT_FixedDUR2,TK_NotStart,DUKHENGP1BDWARAP4490,Aluminum False Ceiling Drawings-App,,656,320,240,0,0,0,240,0,0,0,,,,2013-07-06 08:00,2013-08-08 17:00,,2013-04-01 08:00,2013-05-05 17:00,2013-04-01 08:00,2013-05-05 17:00,2013-04-01 08:00,2013-05-05 17:00,2013-07-06 08:00,2013-08-08 17:00,,PT_Normal,,,,,444KF4zoR4GyaQd54cTAUQ,,,,N,0,0,,,2013-02-16 15:51,2013-02-16 15:56,admin,admin
499534,6359,124316,13662,0,N,N,N,CP_Drtn,TT_Task,DT_FixedDUR2,TK_NotStart,DUKHENGP1BDWARAP4530,Doors & Window Drawings-App,,392,184,240,0,0,0,240,0,0,0,,,,2013-06-17 08:00,2013-07-21 17:00,,2013-04-21 08:00,2013-05-25 17:00,2013-04-21 08:00,2013-05-25 17:00,2013-04-21 08:00,2013-05-25 17:00,2013-06-17 08:00,2013-07-21 17:00,,PT_Normal,,,,,FYsoknPATVaZYaK56dxL6Q,,,,N,0,0,,,2013-02-16 15:51,2013-02-16 15:56,admin,admin
499535,6359,124316,13662,0,N,N,N,CP_Drtn,TT_Task,DT_FixedDUR2,TK_NotStart,DUKHENGP1BDWARAP4540,Carpentry & Joinery Drawings-App,,664,320,240,0,0,0,240,0,0,0,,,,2013-07-30 08:00,2013-09-05 17:00,,2013-04-24 08:00,2013-05-28 17:00,2013-04-24 08:00,2013-05-28 17:00,2013-04-24 08:00,2013-05-28 17:00,2013-07-30 08:00,2013-09-05 17:00,,PT_Normal,,,,,P6O8Mft6QCm+qDW7b+9gwg,,,,N,0,0,,,2013-02-16 15:51,2013-02-16 15:56,admin,admin
499536,6359,124316,13662,0,N,N,N,CP_Drtn,TT_Task,DT_FixedDUR2,TK_NotStart,DUKHENGP1BDWARAP4480,Gypsum False Ceiling Drawings-App,,536,280,240,0,0,0,240,0,0,0,,,,2013-06-18 08:00,2013-07-22 17:00,,2013-04-01 08:00,2013-05-05 17:00,2013-04-01 08:00,2013-05-05 17:00,2013-04-01 08:00,2013-05-05 17:00,2013-06-18 08:00,2013-07-22 17:00,,PT_Normal,,,,,+F8Qxl5ORd2fIsBCHf1jIQ,,,,N,0,0,,,2013-02-16 15:51,2013-02-16 15:56,admin,admin
499537,6359,124317,13662,0,N,N,N,CP_Drtn,TT_Task,DT_FixedDUR2,TK_NotStart,DUKHENGP1BDWARSM4450,Ground Floor Plan-Sub,,336,0,120,0,30,30,120,0,0,0,,,,2013-04-01 08:00,2013-04-17 17:00,,2013-02-10 08:00,2013-02-27 17:00,2013-02-10 08:00,2013-02-27 17:00,2013-02-10 08:00,2013-02-27 17:00,2013-04-01 08:00,2013-04-17 17:00,,PT_Normal,,,,,JK4yPrnDRAS7kqAtvN3B1g,,,,N,0,0,,,2013-02-16 15:51,2013-02-16 15:56,admin,admin
499538,6359,124317,13662,0,N,N,N,CP_Drtn,TT_Task,DT_FixedDUR2,TK_NotStart,DUKHENGP1BDWARSM4460,First Floor Plan-Sub,,336,0,120,0,30,30,120,0,0,0,,,,2013-04-09 08:00,2013-04-25 17:00,,2013-02-19 08:00,2013-03-07 17:00,2013-02-19 08:00,2013-03-07 17:00,2013-02-19 08:00,2013-03-07 17:00,2013-04-09 08:00,2013-04-25 17:00,,PT_Normal,,,,,Nt5Ybjr7Qq6Jp3xB9EQIdw,,,,N,0,0,,,2013-02-16 15:51,2013-02-16 15:56,admin,admin
499539,6359,124317,13662,0,N,N,N,CP_Drtn,TT_Task,DT_FixedDUR2,TK_NotStart,DUKHENGP1BDWARSM4470,Roof Floor Plan-Sub,,376,0,120,0,20,20,120,0,0,0,,,,2013-04-23 08:00,2013-05-09 17:00,,2013-02-27 08:00,2013-03-16 17:00,2013-02-27 08:00,2013-03-16 17:00,2013-02-27 08:00,2013-03-16 17:00,2013-04-23 08:00,2013-05-09 17:00,,PT_Normal,,,,,dbW4JIqTQSmacs8j496UdA,,,,N,0,0,,,2013-02-16 15:51,2013-02-16 15:56,admin,admin
499540,6359,124317,13662,0,N,N,N,CP_Drtn,TT_Task,DT_FixedDUR2,TK_NotStart,DUKHENGP1BDWARSM4500,Ceramic Flooring & Wall Drawings-Sub,,336,0,120,0,20,20,120,0,0,0,,,,2013-04-27 08:00,2013-05-13 17:00,,2013-03-09 08:00,2013-03-25 17:00,2013-03-09 08:00,2013-03-25 17:00,2013-03-09 08:00,2013-03-25 17:00,2013-04-27 08:00,2013-05-13 17:00,,PT_Normal,,,,,U+24XX15TSGII6gL46x00g,,,,N,0,0,,,2013-02-16 15:51,2013-02-16 15:56,admin,admin
499541,6359,124317,13662,0,N,N,N,CP_Drtn,TT_Task,DT_FixedDUR2,TK_NotStart,DUKHENGP1BDWARSM4510,Porcelain Floor Drawings-Sub,,408,0,120,0,20,20,120,0,0,0,,,,2013-05-07 08:00,2013-05-23 17:00,,2013-03-09 08:00,2013-03-25 17:00,2013-03-09 08:00,2013-03-25 17:00,2013-03-09 08:00,2013-03-25 17:00,2013-05-07 08:00,2013-05-23 17:00,,PT_Normal,,,,,rbk2pjXgQZ2wj859lM4LaQ,,,,N,0,0,,,2013-02-16 15:51,2013-02-16 15:56,admin,admin
499542,6359,124317,13662,0,N,N,N,CP_Drtn,TT_Task,DT_FixedDUR2,TK_NotStart,DUKHENGP1BDWARSM4520,Cobble & Slate Flooring Drawings-Sub,,656,0,120,0,20,20,120,0,0,0,,,,2013-06-12 08:00,2013-06-29 17:00,,2013-03-09 08:00,2013-03-25 17:00,2013-03-09 08:00,2013-03-25 17:00,2013-03-09 08:00,2013-03-25 17:00,2013-06-12 08:00,2013-06-29 17:00,,PT_Normal,,,,,G4HQ+2+5RGG3DzKPkJkhDQ,,,,N,0,0,,,2013-02-16 15:51,2013-02-16 15:56,admin,admin
499543,6359,124317,13662,0,N,N,N,CP_Drtn,TT_Task,DT_FixedDUR2,TK_NotStart,DUKHENGP1BDWARSM4480,Gypsum False Ceiling Drawings-Sub,,536,0,120,0,20,20,120,0,0,0,,,,2013-06-01 08:00,2013-06-17 17:00,,2013-03-14 08:00,2013-03-31 17:00,2013-03-14 08:00,2013-03-31 17:00,2013-03-14 08:00,2013-03-31 17:00,2013-06-01 08:00,2013-06-17 17:00,,PT_Normal,,,,,dCmmZST/R2WTPLEQgPMdvg,,,,N,0,0,,,2013-02-16 15:51,2013-02-16 15:56,admin,admin
499544,6359,124317,13662,0,N,N,N,CP_Drtn,TT_Task,DT_FixedDUR2,TK_NotStart,DUKHENGP1BDWARSM4490,Aluminum False Ceiling Drawings-Sub,,656,0,120,0,20,20,120,0,0,0,,,,2013-06-18 08:00,2013-07-04 17:00,,2013-03-14 08:00,2013-03-31 17:00,2013-03-14 08:00,2013-03-31 17:00,2013-03-14 08:00,2013-03-31 17:00,2013-06-18 08:00,2013-07-04 17:00,,PT_Normal,,,,,I0kf8/ygRS2DISZkoLA4rA,,,,N,0,0,,,2013-02-16 15:51,2013-02-16 15:56,admin,admin
499545,6359,124317,13662,0,N,N,N,CP_Drtn,TT_Task,DT_FixedDUR2,TK_NotStart,DUKHENGP1BDWARSM4530,Doors & window Drawings-Sub,,488,96,120,0,20,20,120,0,0,0,,,,2013-05-30 08:00,2013-06-16 17:00,,2013-03-20 08:00,2013-04-06 17:00,2013-03-20 08:00,2013-04-06 17:00,2013-03-20 08:00,2013-04-06 17:00,2013-05-30 08:00,2013-06-16 17:00,,PT_Normal,,,,,4DW04uT0QYCpIJIJyl7doQ,,,,N,0,0,,,2013-02-16 15:51,2013-02-16 15:56,admin,admin
499546,6359,124317,13662,0,N,N,N,CP_Drtn,TT_Task,DT_FixedDUR2,TK_NotStart,DUKHENGP1BDWARSM4540,Carpentry & Joinery Drawings-Sub,,664,0,120,0,30,30,120,0,0,0,,,,2013-07-13 08:00,2013-07-29 17:00,,2013-04-07 08:00,2013-04-23 17:00,2013-04-07 08:00,2013-04-23 17:00,2013-04-07 08:00,2013-04-23 17:00,2013-07-13 08:00,2013-07-29 17:00,,PT_Normal,,,,,i7S6Ki4bRUa0jFCebnzwqQ,,,,N,0,0,,,2013-02-16 15:51,2013-02-16 15:56,admin,admin
499547,6359,124321,13662,0,N,N,N,CP_Drtn,TT_Task,DT_FixedDUR2,TK_NotStart,DUKHENGP2BDWSTAP5180,Footing Drawings-App,,560,560,200,0,0,0,200,0,0,0,,,,2013-03-02 08:00,2013-03-30 17:00,,2012-12-08 08:00,2013-01-06 17:00,2012-12-08 08:00,2013-01-06 17:00,2012-12-08 08:00,2013-01-06 17:00,2013-03-02 08:00,2013-03-30 17:00,,PT_Normal,,,,,XKbgn82hQHqWrP9GOqxTeg,,,,N,0,0,,,2013-02-16 15:51,2013-02-16 15:56,admin,admin
499548,6359,124321,13662,0,N,N,N,CP_Drtn,TT_Task,DT_FixedDUR2,TK_NotStart,DUKHENGP2BDWSTAP5190,Grade Beam & Slab Drawings-App,,792,792,240,0,0,0,240,0,0,0,,,,2013-04-16 08:00,2013-05-20 17:00,,2012-12-20 08:00,2013-01-23 17:00,2012-12-20 08:00,2013-01-23 17:00,2012-12-20 08:00,2013-01-23 17:00,2013-04-16 08:00,2013-05-20 17:00,,PT_Normal,,,,,asTRZTftQRCSTOR4Rdctxw,,,,N,0,0,,,2013-02-16 15:51,2013-02-16 15:56,admin,admin
499549,6359,124321,13662,0,N,N,N,CP_Drtn,TT_Task,DT_FixedDUR2,TK_NotStart,DUKHENGP2BDWSTAP5200,Column Drawings-App,,1040,1024,240,0,0,0,240,0,0,0,,,,2013-05-28 08:00,2013-07-01 17:00,,2012-12-26 08:00,2013-01-29 17:00,2012-12-26 08:00,2013-01-29 17:00,2012-12-26 08:00,2013-01-29 17:00,2013-05-28 08:00,2013-07-01 17:00,,PT_Normal,,,,,AjqLhrWzRPeXRWD2rprIPA,,,,N,0,0,,,2013-02-16 15:51,2013-02-16 15:56,admin,admin
499550,6359,124321,13662,0,N,N,N,CP_Drtn,TT_Task,DT_FixedDUR2,TK_NotStart,DUKHENGP2BDWSTAP5210,GF Beams & Slabs Drawings-App,,1088,1072,240,0,0,0,240,0,0,0,,,,2013-06-16 08:00,2013-07-20 17:00,,2013-01-07 08:00,2013-02-10 17:00,2013-01-07 08:00,2013-02-10 17:00,2013-01-07 08:00,2013-02-10 17:00,2013-06-16 08:00,2013-07-20 17:00,,PT_Normal,,,,,RBjX3J2hQga4gUTm97Pm1w,,,,N,0,0,,,2013-02-16 15:51,2013-02-16 15:56,admin,admin
499551,6359,124322,13662,0,N,N,N,CP_Drtn,TT_Task,DT_FixedDUR2,TK_NotStart,DUKHENGP2BDWSTSM5180,Footing Drawings-Sub,,560,0,80,0,20,20,80,0,0,0,,,,2013-02-18 08:00,2013-02-28 17:00,,2012-11-26 08:00,2012-12-06 17:00,2012-11-26 08:00,2012-12-06 17:00,2012-11-26 08:00,2012-12-06 17:00,2013-02-18 08:00,2013-02-28 17:00,,PT_Normal,,,,,O4KXvRTdSOylWNRjzQmMqQ,,,,N,0,0,,,2013-02-16 15:51,2013-02-16 15:56,admin,admin
499552,6359,124322,13662,0,N,N,N,CP_Drtn,TT_Task,DT_FixedDUR2,TK_NotStart,DUKHENGP2BDWSTSM5190,Grade Beam & Slab Drawings-Sub,,600,0,120,0,30,30,120,0,0,0,,,,2013-03-02 08:00,2013-03-18 17:00,,2012-12-02 08:00,2012-12-19 17:00,2012-12-02 08:00,2012-12-19 17:00,2012-12-02 08:00,2012-12-19 17:00,2013-03-02 08:00,2013-03-18 17:00,,PT_Normal,,,,,YUrqjKtrSMemQ01ebZGmlA,,,,N,0,0,,,2013-02-16 15:51,2013-02-16 15:56,admin,admin
499553,6359,124322,13662,0,N,N,N,CP_Drtn,TT_Task,DT_FixedDUR2,TK_NotStart,DUKHENGP2BDWSTSM5200,Column Drawings-Sub,,600,0,120,0,30,30,120,0,0,0,,,,2013-03-07 08:00,2013-03-24 17:00,,2012-12-08 08:00,2012-12-25 17:00,2012-12-08 08:00,2012-12-25 17:00,2012-12-08 08:00,2012-12-25 17:00,2013-03-07 08:00,2013-03-24 17:00,,PT_Normal,,,,,UkgJGdMPSjqigEBbmv8BUQ,,,,N,0,0,,,2013-02-16 15:51,2013-02-16 15:56,admin,admin
499554,6359,124322,13662,0,N,N,N,CP_Drtn,TT_Task,DT_FixedDUR2,TK_NotStart,DUKHENGP2BDWSTSM5210,GF Beams & Slabs Drawings-Sub,,600,0,120,0,30,30,120,0,0,0,,,,2013-03-19 08:00,2013-04-04 17:00,,2012-12-20 08:00,2013-01-06 17:00,2012-12-20 08:00,2013-01-06 17:00,2012-12-20 08:00,2013-01-06 17:00,2013-03-19 08:00,2013-04-04 17:00,,PT_Normal,,,,,a84KaenBR3W0StOUmukI8A,,,,N,0,0,,,2013-02-16 15:51,2013-02-16 15:56,admin,admin
499555,6359,124324,13662,0,N,N,N,CP_Drtn,TT_Task,DT_FixedDUR2,TK_NotStart,DUKHENGI2BDWELAP5460,Electrical Line Layout & Details-App,,960,240,240,0,0,0,240,0,0,0,,,,2013-10-10 08:00,2013-11-16 17:00,,2013-05-20 08:00,2013-06-23 17:00,2013-05-20 08:00,2013-06-23 17:00,2013-05-20 08:00,2013-06-23 17:00,2013-10-10 08:00,2013-11-16 17:00,,PT_Normal,,,,,70jj3V5CQCKbNPiVScNlSw,,,,N,0,0,,,2013-02-16 15:51,2013-02-16 15:56,admin,admin
499556,6359,124324,13662,0,N,N,N,CP_Drtn,TT_Task,DT_FixedDUR2,TK_NotStart,DUKHENGI2BDWSTAP5470,Street Lighting Layout & details -App,,960,240,240,0,0,0,240,0,0,0,,,,2013-10-10 08:00,2013-11-16 17:00,,2013-05-20 08:00,2013-06-23 17:00,2013-05-20 08:00,2013-06-23 17:00,2013-05-20 08:00,2013-06-23 17:00,2013-10-10 08:00,2013-11-16 17:00,,PT_Normal,,,,,nJ590dRUTR6BoM0qBTVDWw,,,,N,0,0,,,2013-02-16 15:51,2013-02-16 15:56,admin,admin
499557,6359,124324,13662,0,N,N,N,CP_Drtn,TT_Task,DT_FixedDUR2,TK_NotStart,DUKHENGI2BDWDRAP5430,Drainage Line Layout & Details-App,,512,296,240,0,0,0,240,0,0,0,,,,2013-07-16 08:00,2013-08-22 17:00,,2013-05-02 08:00,2013-06-05 17:00,2013-05-02 08:00,2013-06-05 17:00,2013-05-02 08:00,2013-06-05 17:00,2013-07-16 08:00,2013-08-22 17:00,,PT_Normal,,,,,Lqvx07zoTVOHw/yM34uluw,,,,N,0,0,,,2013-02-16 15:51,2013-02-16 15:56,admin,admin
499558,6359,124324,13662,0,N,N,N,CP_Drtn,TT_Task,DT_FixedDUR2,TK_NotStart,DUKHENGI2BDWFFAP5440,Fire Fighting Line Layout & Details-App,,360,320,240,0,0,0,240,0,0,0,,,,2013-06-24 08:00,2013-07-28 17:00,,2013-05-02 08:00,2013-06-05 17:00,2013-05-02 08:00,2013-06-05 17:00,2013-05-02 08:00,2013-06-05 17:00,2013-06-24 08:00,2013-07-28 17:00,,PT_Normal,,,,,cg8t62/vQ0+CnXnshy7ggw,,,,N,0,0,,,2013-02-16 15:51,2013-02-16 16:17,admin,admin
499559,6359,124324,13662,0,N,N,N,CP_Drtn,TT_Task,DT_FixedDUR2,TK_NotStart,DUKHENGI2BDWWSAP5450,Water Supply Line Layout & Details-App,,688,296,240,0,0,0,240,0,0,0,,,,2013-08-14 08:00,2013-09-17 17:00,,2013-05-02 08:00,2013-06-05 17:00,2013-05-02 08:00,2013-06-05 17:00,2013-05-02 08:00,2013-06-05 17:00,2013-08-14 08:00,2013-09-17 17:00,,PT_Normal,,,,,CmvIEwGeRt23bfolfm3nYQ,,,,N,0,0,,,2013-02-16 15:51,2013-02-16 15:56,admin,admin
499560,6359,124324,13662,0,N,N,N,CP_Drtn,TT_Task,DT_FixedDUR2,TK_NotStart,DUKHENGI2BDWIRAP5490,Irrigation Layout & Details-App,,728,120,240,0,0,0,240,0,0,0,,,,2013-09-24 08:00,2013-10-30 17:00,,2013-06-06 08:00,2013-07-10 17:00,2013-06-06 08:00,2013-07-10 17:00,2013-06-06 08:00,2013-07-10 17:00,2013-09-24 08:00,2013-10-30 17:00,,PT_Normal,,,,,KIaRLhLBSa68uaTcXCap0w,,,,N,0,0,,,2013-02-16 15:51,2013-02-16 15:56,admin,admin
499561,6359,124324,13662,0,N,N,N,CP_Drtn,TT_Task,DT_FixedDUR2,TK_NotStart,DUKHENGI2BDWTCAP5480,Telecommunication Line Layout & Details-App,,960,480,240,0,0,0,240,0,0,0,,,,2013-10-10 08:00,2013-11-16 17:00,,2013-05-20 08:00,2013-06-23 17:00,2013-05-20 08:00,2013-06-23 17:00,2013-05-20 08:00,2013-06-23 17:00,2013-10-10 08:00,2013-11-16 17:00,,PT_Normal,,,,,f/W3tQKoQ627k9qHxN1m5Q,,,,N,0,0,,,2013-02-16 15:51,2013-02-16 15:56,admin,admin
499562,6359,124324,13662,0,N,N,N,CP_Drtn,TT_Task,DT_FixedDUR2,TK_NotStart,DUKHENGI2BDWPSAP5520,Parking Shed Layout & Details Drawings-App,,1200,184,240,0,0,0,240,0,0,0,,,,2013-12-12 08:00,2014-01-16 17:00,,2013-06-15 08:00,2013-07-18 17:00,2013-06-15 08:00,2013-07-18 17:00,2013-06-15 08:00,2013-07-18 17:00,2013-12-12 08:00,2014-01-16 17:00,,PT_Normal,,,,,TlhOYPDPQgiCY7LjhAvT8w,,,,N,0,0,,,2013-02-16 15:51,2013-02-16 15:56,admin,admin
499563,6359,124324,13662,0,N,N,N,CP_Drtn,TT_Task,DT_FixedDUR2,TK_NotStart,DUKHENGI2BDWSLAP5500,Soft & HardLandscaping Layout & Detail-App,,536,360,240,0,0,0,240,0,0,0,,,,2013-08-27 08:00,2013-09-30 17:00,,2013-06-06 08:00,2013-07-10 17:00,2013-06-06 08:00,2013-07-10 17:00,2013-06-06 08:00,2013-07-10 17:00,2013-08-27 08:00,2013-09-30 17:00,,PT_Normal,,,,,T+LiIV8sRGyYBPlrmhxqAA,,,,N,0,0,,,2013-02-16 15:51,2013-02-16 15:56,admin,admin
499564,6359,124324,13662,0,N,N,N,CP_Drtn,TT_Task,DT_FixedDUR2,TK_NotStart,DUKHENGI2BDWBWAP5510,Boundary Wall Layout & Details-App,,680,360,240,0,0,0,240,0,0,0,,,,2013-09-17 08:00,2013-10-23 17:00,,2013-06-06 08:00,2013-07-10 17:00,2013-06-06 08:00,2013-07-10 17:00,2013-06-06 08:00,2013-07-10 17:00,2013-09-17 08:00,2013-10-23 17:00,,PT_Normal,,,,,hqGlQcVoSOakUIvFT2De5g,,,,N,0,0,,,2013-02-16 15:51,2013-02-16 16:45,admin,admin
499565,6359,124324,13662,0,N,N,N,CP_Drtn,TT_Task,DT_FixedDUR2,TK_NotStart,DUKHENGI2BDWRWAP5530,Road Layout & Details-App,,1192,184,240,0,0,0,240,0,0,0,,,,2013-12-11 08:00,2014-01-15 17:00,,2013-06-15 08:00,2013-07-18 17:00,2013-06-15 08:00,2013-07-18 17:00,2013-06-15 08:00,2013-07-18 17:00,2013-12-11 08:00,2014-01-15 17:00,,PT_Normal,,,,,6HHC0SoVTECwqsy4ZGUdVA,,,,N,0,0,,,2013-02-16 15:51,2013-02-16 15:56,admin,admin
499566,6359,124324,13662,0,N,N,N,CP_Drtn,TT_Task,DT_FixedDUR2,TK_NotStart,DUKHENGI2BDWIWAP5540,Irrigation Water Tank & Pump Room Details-App,,392,0,240,0,0,0,240,0,0,0,,,,2013-08-14 08:00,2013-09-17 17:00,,2013-06-15 08:00,2013-07-18 17:00,2013-06-15 08:00,2013-07-18 17:00,2013-06-15 08:00,2013-07-18 17:00,2013-08-14 08:00,2013-09-17 17:00,,PT_Normal,,,,,0EC4VczaSQu2TpuY+vce3w,,,,N,0,0,,,2013-02-16 15:51,2013-02-16 15:56,admin,admin
499567,6359,124324,13662,0,N,N,N,CP_Drtn,TT_Task,DT_FixedDUR2,TK_NotStart,DUKHENGI2BDWGZAP5550,Gazebo Plan & Details-App,,720,240,240,0,0,0,240,0,0,0,,,,2013-10-21 08:00,2013-11-24 17:00,,2013-07-02 08:00,2013-08-05 17:00,2013-07-02 08:00,2013-08-05 17:00,2013-07-02 08:00,2013-08-05 17:00,2013-10-21 08:00,2013-11-24 17:00,,PT_Normal,,,,,HRWBZk2cR9CGiOa3mUGTHA,,,,N,0,0,,,2013-02-16 15:51,2013-02-16 15:56,admin,admin
499568,6359,124325,13662,0,N,N,N,CP_Drtn,TT_Task,DT_FixedDUR2,TK_NotStart,DUKHENGI2BDWELSM5460,Electrical Line Layout & Details-Sub,,392,0,120,0,30,30,120,0,0,0,,,,2013-06-29 08:00,2013-07-15 17:00,,2013-05-02 08:00,2013-05-19 17:00,2013-05-02 08:00,2013-05-19 17:00,2013-05-02 08:00,2013-05-19 17:00,2013-06-29 08:00,2013-07-15 17:00,,PT_Normal,,,,,yqlmeltWRLK0fZyzn5r3ng,,,,N,0,0,,,2013-02-16 15:51,2013-02-16 15:56,admin,admin
499569,6359,124325,13662,0,N,N,N,CP_Drtn,TT_Task,DT_FixedDUR2,TK_NotStart,DUKHENGI2BDWSTSM5470,Street Lighting Layout & details -Sub,,392,0,120,0,30,30,120,0,0,0,,,,2013-06-29 08:00,2013-07-15 17:00,,2013-05-02 08:00,2013-05-19 17:00,2013-05-02 08:00,2013-05-19 17:00,2013-05-02 08:00,2013-05-19 17:00,2013-06-29 08:00,2013-07-15 17:00,,PT_Normal,,,,,aJZNU4NrRdeBCwd6zMeuQA,,,,N,0,0,,,2013-02-16 15:51,2013-02-16 15:56,admin,admin
499570,6359,124325,13662,0,N,N,N,CP_Drtn,TT_Task,DT_FixedDUR2,TK_NotStart,DUKHENGI2BDWDRSM5430,Drainage Line Layout & Details-Sub,,360,0,120,0,30,30,120,0,0,0,,,,2013-06-06 08:00,2013-06-23 17:00,,2013-04-15 08:00,2013-05-01 17:00,2013-04-15 08:00,2013-05-01 17:00,2013-04-15 08:00,2013-05-01 17:00,2013-06-06 08:00,2013-06-23 17:00,,PT_Normal,,,,,1nK9+NlrS1OYOvBa7Lmakw,,,,N,0,0,,,2013-02-16 15:51,2013-02-16 16:17,admin,admin
499571,6359,124325,13662,0,N,N,N,CP_Drtn,TT_Task,DT_FixedDUR2,TK_NotStart,DUKHENGI2BDWFFSM5440,Fire Fighting Line Layout & Details-Sub,,360,0,120,0,30,30,120,0,0,0,,,,2013-06-06 08:00,2013-06-23 17:00,,2013-04-15 08:00,2013-05-01 17:00,2013-04-15 08:00,2013-05-01 17:00,2013-04-15 08:00,2013-05-01 17:00,2013-06-06 08:00,2013-06-23 17:00,,PT_Normal,,,,,9Zh5FlbqS1upu+trbTqPlA,,,,N,0,0,,,2013-02-16 15:51,2013-02-16 16:17,admin,admin
499572,6359,124325,13662,0,N,N,N,CP_Drtn,TT_Task,DT_FixedDUR2,TK_NotStart,DUKHENGI2BDWWSSM5450,Water Supply Line Layout & Details-Sub,,360,0,120,0,30,30,120,0,0,0,,,,2013-06-06 08:00,2013-06-23 17:00,,2013-04-15 08:00,2013-05-01 17:00,2013-04-15 08:00,2013-05-01 17:00,2013-04-15 08:00,2013-05-01 17:00,2013-06-06 08:00,2013-06-23 17:00,,PT_Normal,,,,,BS0bcahNSkqZdAbHKnuJEA,,,,N,0,0,,,2013-02-16 15:51,2013-02-16 16:17,admin,admin
499573,6359,124325,13662,0,N,N,N,CP_Drtn,TT_Task,DT_FixedDUR2,TK_NotStart,DUKHENGI2BDWIRSM5490,Irrigation Layout & Details-Sub,,392,0,120,0,30,30,120,0,0,0,,,,2013-07-16 08:00,2013-08-01 17:00,,2013-05-20 08:00,2013-06-05 17:00,2013-05-20 08:00,2013-06-05 17:00,2013-05-20 08:00,2013-06-05 17:00,2013-07-16 08:00,2013-08-01 17:00,,PT_Normal,,,,,1u7UmYtoR0iN4yxjQxZ7Fw,,,,N,0,0,,,2013-02-16 15:51,2013-02-16 15:56,admin,admin
499574,6359,124325,13662,0,N,N,N,CP_Drtn,TT_Task,DT_FixedDUR2,TK_NotStart,DUKHENGI2BDWTCSM5480,Telecommunication Line Layout & Details-Sub,,392,0,120,0,30,30,120,0,0,0,,,,2013-06-29 08:00,2013-07-15 17:00,,2013-05-02 08:00,2013-05-19 17:00,2013-05-02 08:00,2013-05-19 17:00,2013-05-02 08:00,2013-05-19 17:00,2013-06-29 08:00,2013-07-15 17:00,,PT_Normal,,,,,P0ivcQZLRWOd+WgrUBzBPQ,,,,N,0,0,,,2013-02-16 15:51,2013-02-16 15:56,admin,admin
499575,6359,124325,13662,0,N,N,N,CP_Drtn,TT_Task,DT_FixedDUR2,TK_NotStart,DUKHENGI2BDWPSSM5520,Parking Shed Layout & Details Drawings-Sub,,392,0,120,0,30,30,120,0,0,0,,,,2013-07-24 08:00,2013-08-13 17:00,,2013-05-28 08:00,2013-06-13 17:00,2013-05-28 08:00,2013-06-13 17:00,2013-05-28 08:00,2013-06-13 17:00,2013-07-24 08:00,2013-08-13 17:00,,PT_Normal,,,,,AIv+WjTFQ3KOIHyFZ6KjBQ,,,,N,0,0,,,2013-02-16 15:51,2013-02-16 15:56,admin,admin
499576,6359,124325,13662,0,N,N,N,CP_Drtn,TT_Task,DT_FixedDUR2,TK_NotStart,DUKHENGI2BDWSLSM5500,Soft & HardLandscaping Layout & Detail-Sub,,392,0,120,0,30,30,120,0,0,0,,,,2013-07-16 08:00,2013-08-01 17:00,,2013-05-20 08:00,2013-06-05 17:00,2013-05-20 08:00,2013-06-05 17:00,2013-05-20 08:00,2013-06-05 17:00,2013-07-16 08:00,2013-08-01 17:00,,PT_Normal,,,,,DCox8G4KRIinpNuTnsrJhw,,,,N,0,0,,,2013-02-16 15:51,2013-02-16 15:56,admin,admin
499577,6359,124325,13662,0,N,N,N,CP_Drtn,TT_Task,DT_FixedDUR2,TK_NotStart,DUKHENGI2BDWBWSM5510,Boundary Wall Layout & Details-Sub,,392,0,120,0,30,30,120,0,0,0,,,,2013-07-16 08:00,2013-08-01 17:00,,2013-05-20 08:00,2013-06-05 17:00,2013-05-20 08:00,2013-06-05 17:00,2013-05-20 08:00,2013-06-05 17:00,2013-07-16 08:00,2013-08-01 17:00,,PT_Normal,,,,,yyQFbfcfS7+TSFY/iKFgkA,,,,N,0,0,,,2013-02-16 15:51,2013-02-16 15:56,admin,admin
499578,6359,124325,13662,0,N,N,N,CP_Drtn,TT_Task,DT_FixedDUR2,TK_NotStart,DUKHENGI2BDWRWSM5530,Road Layout & Details-Sub,,392,0,120,0,30,30,120,0,0,0,,,,2013-07-24 08:00,2013-08-13 17:00,,2013-05-28 08:00,2013-06-13 17:00,2013-05-28 08:00,2013-06-13 17:00,2013-05-28 08:00,2013-06-13 17:00,2013-07-24 08:00,2013-08-13 17:00,,PT_Normal,,,,,p1PtBv+RRFaBtEvX/cynag,,,,N,0,0,,,2013-02-16 15:51,2013-02-16 15:56,admin,admin
499579,6359,124325,13662,0,N,N,N,CP_Drtn,TT_Task,DT_FixedDUR2,TK_NotStart,DUKHENGI2BDWIWSM5540,Irrigation Water Tank & Pump Room Details- Sub,,392,0,120,0,30,30,120,0,0,0,,,,2013-07-24 08:00,2013-08-13 17:00,,2013-05-28 08:00,2013-06-13 17:00,2013-05-28 08:00,2013-06-13 17:00,2013-05-28 08:00,2013-06-13 17:00,2013-07-24 08:00,2013-08-13 17:00,,PT_Normal,,,,,4yIrfW3wRZSMCmmpy7xf/g,,,,N,0,0,,,2013-02-16 15:51,2013-02-16 15:56,admin,admin
499580,6359,124325,13662,0,N,N,N,CP_Drtn,TT_Task,DT_FixedDUR2,TK_NotStart,DUKHENGI2BDWGZSM5550,Gazebo Plan & Details-Sub,,720,0,120,0,30,30,120,0,0,0,,,,2013-10-01 08:00,2013-10-20 17:00,,2013-06-15 08:00,2013-07-01 17:00,2013-06-15 08:00,2013-07-01 17:00,2013-06-15 08:00,2013-07-01 17:00,2013-10-01 08:00,2013-10-20 17:00,,PT_Normal,,,,,IvzlKFQTRq6zGYaNRS1uyQ,,,,N,0,0,,,2013-02-16 15:51,2013-02-16 15:56,admin,admin
499581,6359,124327,13662,0,N,N,N,CP_Drtn,TT_Task,DT_FixedDUR2,TK_NotStart,DUKHENGP2BDWMEAP5390,Plumbing Layout & Details Drawings-App,,424,0,240,0,0,0,240,0,0,0,,,,2013-05-12 08:00,2013-06-15 17:00,,2013-03-11 08:00,2013-04-14 17:00,2013-03-11 08:00,2013-04-14 17:00,2013-03-11 08:00,2013-04-14 17:00,2013-05-12 08:00,2013-06-15 17:00,,PT_Normal,,,,,opw0b67ARtue6iX5nlriGg,,,,N,0,0,,,2013-02-16 15:51,2013-02-16 15:56,admin,admin
499582,6359,124327,13662,0,N,N,N,CP_Drtn,TT_Task,DT_FixedDUR2,TK_NotStart,DUKHENGP2BDWMEAP5400,Drainage Layout & Details Drawings-App,,424,0,240,0,0,0,240,0,0,0,,,,2013-05-12 08:00,2013-06-15 17:00,,2013-03-11 08:00,2013-04-14 17:00,2013-03-11 08:00,2013-04-14 17:00,2013-03-11 08:00,2013-04-14 17:00,2013-05-12 08:00,2013-06-15 17:00,,PT_Normal,,,,,HVa8RzG3SqOC9rxcHObyqA,,,,N,0,0,,,2013-02-16 15:51,2013-02-16 15:56,admin,admin
499583,6359,124327,13662,0,N,N,N,CP_Drtn,TT_Task,DT_FixedDUR2,TK_NotStart,DUKHENGP2BDWMEAP5410,Fire Fighting Layout & Details Drawings-App,,1160,440,240,0,0,0,240,0,0,0,,,,2013-09-17 08:00,2013-10-23 17:00,,2013-03-28 08:00,2013-05-01 17:00,2013-03-28 08:00,2013-05-01 17:00,2013-03-28 08:00,2013-05-01 17:00,2013-09-17 08:00,2013-10-23 17:00,,PT_Normal,,,,,9fiBitq9SbqtHNpO/dorVg,,,,N,0,0,,,2013-02-16 15:51,2013-02-16 15:56,admin,admin
499584,6359,124327,13662,0,N,N,N,CP_Drtn,TT_Task,DT_FixedDUR2,TK_NotStart,DUKHENGP2BDWMEAP5420,AC Layout & Details Drawings-App,,512,80,240,0,0,0,240,0,0,0,,,,2013-06-29 08:00,2013-08-01 17:00,,2013-04-15 08:00,2013-05-19 17:00,2013-04-15 08:00,2013-05-19 17:00,2013-04-15 08:00,2013-05-19 17:00,2013-06-29 08:00,2013-08-01 17:00,,PT_Normal,,,,,7a67ZEUTQiCvSQTZeJH+VQ,,,,N,0,0,,,2013-02-16 15:51,2013-02-16 15:56,admin,admin
499585,6359,124328,13662,0,N,N,N,CP_Drtn,TT_Task,DT_FixedDUR2,TK_NotStart,DUKHENGP2BDWMESM5390,Plumbing Layout & Details Drawings-Sub,,424,0,120,0,20,20,120,0,0,0,,,,2013-04-24 08:00,2013-05-11 17:00,,2013-02-21 08:00,2013-03-10 17:00,2013-02-21 08:00,2013-03-10 17:00,2013-02-21 08:00,2013-03-10 17:00,2013-04-24 08:00,2013-05-11 17:00,,PT_Normal,,,,,SS25S7ERRqO/PR1jPu3nIw,,,,N,0,0,,,2013-02-16 15:51,2013-02-16 15:56,admin,admin
499586,6359,124328,13662,0,N,N,N,CP_Drtn,TT_Task,DT_FixedDUR2,TK_NotStart,DUKHENGP2BDWMESM5400,Drainage Layout & Details Drawings-Sub,,360,0,120,0,20,20,120,0,0,0,,,,2013-04-15 08:00,2013-05-01 17:00,,2013-02-21 08:00,2013-03-10 17:00,2013-02-21 08:00,2013-03-10 17:00,2013-02-21 08:00,2013-03-10 17:00,2013-04-15 08:00,2013-05-01 17:00,,PT_Normal,,,,,XSxloOOGSIOkR4esKnkwQw,,,,N,0,0,,,2013-02-16 15:51,2013-02-16 16:17,admin,admin
499587,6359,124328,13662,0,N,N,N,CP_Drtn,TT_Task,DT_FixedDUR2,TK_NotStart,DUKHENGP2BDWMESM5410,Fire Fighting Layout & Details Drawings-Sub,,360,0,120,0,20,20,120,0,0,0,,,,2013-05-02 08:00,2013-05-19 17:00,,2013-03-11 08:00,2013-03-27 17:00,2013-03-11 08:00,2013-03-27 17:00,2013-03-11 08:00,2013-03-27 17:00,2013-05-02 08:00,2013-05-19 17:00,,PT_Normal,,,,,0rXWLa53R82k41SnByOIEw,,,,N,0,0,,,2013-02-16 15:51,2013-02-16 16:17,admin,admin
499588,6359,124328,13662,0,N,N,N,CP_Drtn,TT_Task,DT_FixedDUR2,TK_NotStart,DUKHENGP2BDWMESM5420,AC Layout & Details Drawings-Sub,,360,0,120,0,30,30,120,0,0,0,,,,2013-05-20 08:00,2013-06-05 17:00,,2013-03-28 08:00,2013-04-14 17:00,2013-03-28 08:00,2013-04-14 17:00,2013-03-28 08:00,2013-04-14 17:00,2013-05-20 08:00,2013-06-05 17:00,,PT_Normal,,,,,KsmRFEBJSBSMYMyUzoOQfQ,,,,N,0,0,,,2013-02-16 15:51,2013-02-16 16:17,admin,admin
499589,6359,124330,13662,0,N,N,N,CP_Drtn,TT_Task,DT_FixedDUR2,TK_NotStart,DUKHENGP2BDWELSM5330,Single Line Diagram-Sub,,472,0,120,0,20,20,120,0,0,0,,,,2013-05-01 08:00,2013-05-18 17:00,,2013-02-21 08:00,2013-03-10 17:00,2013-02-21 08:00,2013-03-10 17:00,2013-02-21 08:00,2013-03-10 17:00,2013-05-01 08:00,2013-05-18 17:00,,PT_Normal,,,,,ahaS1RBkRHyUEsCACa8e4A,,,,N,0,0,,,2013-02-16 15:51,2013-02-16 15:56,admin,admin
499590,6359,124330,13662,0,N,N,N,CP_Drtn,TT_Task,DT_FixedDUR2,TK_NotStart,DUKHENGP2BDWELSM5340,Lighting Layout Drawings-Sub,,472,0,120,0,20,20,120,0,0,0,,,,2013-05-07 08:00,2013-05-23 17:00,,2013-02-27 08:00,2013-03-16 17:00,2013-02-27 08:00,2013-03-16 17:00,2013-02-27 08:00,2013-03-16 17:00,2013-05-07 08:00,2013-05-23 17:00,,PT_Normal,,,,,/4P8dCNJSfGL+Y/VJu7zZQ,,,,N,0,0,,,2013-02-16 15:51,2013-02-16 15:56,admin,admin
499591,6359,124330,13662,0,N,N,N,CP_Drtn,TT_Task,DT_FixedDUR2,TK_NotStart,DUKHENGP2BDWELSM5350,Power Layout Drawings-Sub,,600,0,120,0,20,20,120,0,0,0,,,,2013-05-26 08:00,2013-06-11 17:00,,2013-02-27 08:00,2013-03-16 17:00,2013-02-27 08:00,2013-03-16 17:00,2013-02-27 08:00,2013-03-16 17:00,2013-05-26 08:00,2013-06-11 17:00,,PT_Normal,,,,,bFh+VyXtR0a+QBEFEKkpJw,,,,N,0,0,,,2013-02-16 15:51,2013-02-16 15:56,admin,admin
499592,6359,124330,13662,0,N,N,N,CP_Drtn,TT_Task,DT_FixedDUR2,TK_NotStart,DUKHENGP2BDWELSM5360,Central Alarm Monitoring System Drawings-Sub,,600,0,120,0,20,20,120,0,0,0,,,,2013-06-12 08:00,2013-06-29 17:00,,2013-03-17 08:00,2013-04-02 17:00,2013-03-17 08:00,2013-04-02 17:00,2013-03-17 08:00,2013-04-02 17:00,2013-06-12 08:00,2013-06-29 17:00,,PT_Normal,,,,,VwGdNAa0RPOxmr+Sv0rUaw,,,,N,0,0,,,2013-02-16 15:51,2013-02-16 15:56,admin,admin
499593,6359,124330,13662,0,N,N,N,CP_Drtn,TT_Task,DT_FixedDUR2,TK_NotStart,DUKHENGP2BDWELSM5370,Audio Video Intercom System Drawings-Sub,,600,0,120,0,30,30,120,0,0,0,,,,2013-06-30 08:00,2013-07-16 17:00,,2013-04-03 08:00,2013-04-20 17:00,2013-04-03 08:00,2013-04-20 17:00,2013-04-03 08:00,2013-04-20 17:00,2013-06-30 08:00,2013-07-16 17:00,,PT_Normal,,,,,UGZe2Bd6SbCRSvlqY8pEeg,,,,N,0,0,,,2013-02-16 15:51,2013-02-16 15:56,admin,admin
499594,6359,124330,13662,0,N,N,N,CP_Drtn,TT_Task,DT_FixedDUR2,TK_NotStart,DUKHENGP2BDWELSM5380,Telephone & TV System Drawings-Sub,,600,0,120,0,30,30,120,0,0,0,,,,2013-07-17 08:00,2013-08-03 17:00,,2013-04-21 08:00,2013-05-07 17:00,2013-04-21 08:00,2013-05-07 17:00,2013-04-21 08:00,2013-05-07 17:00,2013-07-17 08:00,2013-08-03 17:00,,PT_Normal,,,,,XCYYaiN8Qy+qTDW7UIziQQ,,,,N,0,0,,,2013-02-16 15:51,2013-02-16 15:56,admin,admin
499595,6359,124331,13662,0,N,N,N,CP_Drtn,TT_Task,DT_FixedDUR2,TK_NotStart,DUKHENGP2BDWELAP5330,Single Line Diagram-App,,920,320,240,0,0,0,240,0,0,0,,,,2013-07-23 08:00,2013-08-29 17:00,,2013-03-11 08:00,2013-04-14 17:00,2013-03-11 08:00,2013-04-14 17:00,2013-03-11 08:00,2013-04-14 17:00,2013-07-23 08:00,2013-08-29 17:00,,PT_Normal,,,,,M/t9f4W3TIWjdrXyIa5k7g,,,,N,0,0,,,2013-02-16 15:51,2013-02-16 15:56,admin,admin
499596,6359,124331,13662,0,N,N,N,CP_Drtn,TT_Task,DT_FixedDUR2,TK_NotStart,DUKHENGP2BDWELAP5340,Lighting Layout Drawings-App,,472,0,240,0,0,0,240,0,0,0,,,,2013-05-25 08:00,2013-06-27 17:00,,2013-03-17 08:00,2013-04-20 17:00,2013-03-17 08:00,2013-04-20 17:00,2013-03-17 08:00,2013-04-20 17:00,2013-05-25 08:00,2013-06-27 17:00,,PT_Normal,,,,,q6s3tuTITBKsuFsDwp4h2g,,,,N,0,0,,,2013-02-16 15:51,2013-02-16 15:56,admin,admin
499597,6359,124331,13662,0,N,N,N,CP_Drtn,TT_Task,DT_FixedDUR2,TK_NotStart,DUKHENGP2BDWELAP5350,Power Layout Drawings-App,,880,280,240,0,0,0,240,0,0,0,,,,2013-07-23 08:00,2013-08-29 17:00,,2013-03-17 08:00,2013-04-20 17:00,2013-03-17 08:00,2013-04-20 17:00,2013-03-17 08:00,2013-04-20 17:00,2013-07-23 08:00,2013-08-29 17:00,,PT_Normal,,,,,Sqh/JDFSQK6uwseWXmUe6Q,,,,N,0,0,,,2013-02-16 15:51,2013-02-16 15:56,admin,admin
499598,6359,124331,13662,0,N,N,N,CP_Drtn,TT_Task,DT_FixedDUR2,TK_NotStart,DUKHENGP2BDWELAP5360,Central Alarm Monitoring System Drawings-App,,792,160,240,0,0,0,240,0,0,0,,,,2013-07-28 08:00,2013-09-03 17:00,,2013-04-03 08:00,2013-05-07 17:00,2013-04-03 08:00,2013-05-07 17:00,2013-04-03 08:00,2013-05-07 17:00,2013-07-28 08:00,2013-09-03 17:00,,PT_Normal,,,,,PxrSlTNMRT+la+iP09Uw2w,,,,N,0,0,,,2013-02-16 15:51,2013-02-16 15:56,admin,admin
499599,6359,124331,13662,0,N,N,N,CP_Drtn,TT_Task,DT_FixedDUR2,TK_NotStart,DUKHENGP2BDWELAP5370,Audio Video Intercom System Drawings-App,,720,160,240,0,0,0,240,0,0,0,,,,2013-08-04 08:00,2013-09-10 17:00,,2013-04-21 08:00,2013-05-25 17:00,2013-04-21 08:00,2013-05-25 17:00,2013-04-21 08:00,2013-05-25 17:00,2013-08-04 08:00,2013-09-10 17:00,,PT_Normal,,,,,h7GNq7DyTne4FH9BS7oqog,,,,N,0,0,,,2013-02-16 15:51,2013-02-16 15:56,admin,admin
499600,6359,124331,13662,0,N,N,N,CP_Drtn,TT_Task,DT_FixedDUR2,TK_NotStart,DUKHENGP2BDWELAP5380,Telephone & TV System Drawings-App,,600,48,240,0,0,0,240,0,0,0,,,,2013-08-04 08:00,2013-09-10 17:00,,2013-05-08 08:00,2013-06-11 17:00,2013-05-08 08:00,2013-06-11 17:00,2013-05-08 08:00,2013-06-11 17:00,2013-08-04 08:00,2013-09-10 17:00,,PT_Normal,,,,,hSxFEBf+RP6Ca/OgqOEOEQ,,,,N,0,0,,,2013-02-16 15:51,2013-02-16 15:56,admin,admin
499601,6359,124333,13662,0,N,N,N,CP_Drtn,TT_Task,DT_FixedDUR2,TK_NotStart,DUKHENGP2BDWARAP5230,Ground Floor Plan-App,,888,232,240,0,0,0,240,0,0,0,,,,2013-06-04 08:00,2013-07-08 17:00,,2013-01-24 08:00,2013-02-28 17:00,2013-01-24 08:00,2013-02-28 17:00,2013-01-24 08:00,2013-02-28 17:00,2013-06-04 08:00,2013-07-08 17:00,,PT_Normal,,,,,vDLG5auhSMOU7ZYNfV906A,,,,N,0,0,,,2013-02-16 15:51,2013-02-16 15:56,admin,admin
499602,6359,124333,13662,0,N,N,N,CP_Drtn,TT_Task,DT_FixedDUR2,TK_NotStart,DUKHENGP2BDWARAP5250,Roof Floor Plan-App,,616,128,240,0,0,0,240,0,0,0,,,,2013-05-13 08:00,2013-06-16 17:00,,2013-02-11 08:00,2013-03-18 17:00,2013-02-11 08:00,2013-03-18 17:00,2013-02-11 08:00,2013-03-18 17:00,2013-05-13 08:00,2013-06-16 17:00,,PT_Normal,,,,,D2PZZKTlQ9OzRKERbMJcig,,,,N,0,0,,,2013-02-16 15:51,2013-02-16 15:56,admin,admin
499603,6359,124333,13662,0,N,N,N,CP_Drtn,TT_Task,DT_FixedDUR2,TK_NotStart,DUKHENGP2BDWARAP5260,Ceramic Flooring & Wall Drawings-App,,600,264,240,0,0,0,240,0,0,0,,,,2013-05-14 08:00,2013-06-17 17:00,,2013-02-16 08:00,2013-03-21 17:00,2013-02-16 08:00,2013-03-21 17:00,2013-02-16 08:00,2013-03-21 17:00,2013-05-14 08:00,2013-06-17 17:00,,PT_Normal,,,,,L77b2ZzfTj2KRcRKF3R7mQ,,,,N,0,0,,,2013-02-16 15:51,2013-02-16 15:56,admin,admin
499604,6359,124333,13662,0,N,N,N,CP_Drtn,TT_Task,DT_FixedDUR2,TK_NotStart,DUKHENGP2BDWARAP5270,Porcelain Floor Drawings-App,,672,264,240,0,0,0,240,0,0,0,,,,2013-05-25 08:00,2013-06-27 17:00,,2013-02-16 08:00,2013-03-21 17:00,2013-02-16 08:00,2013-03-21 17:00,2013-02-16 08:00,2013-03-21 17:00,2013-05-25 08:00,2013-06-27 17:00,,PT_Normal,,,,,XQ+XkwvCTUS7Wp+EB31xOA,,,,N,0,0,,,2013-02-16 15:51,2013-02-16 15:56,admin,admin
499605,6359,124333,13662,0,N,N,N,CP_Drtn,TT_Task,DT_FixedDUR2,TK_NotStart,DUKHENGP2BDWARAP5280,Cobble & Slate Flooring Drawings-App,,920,264,240,0,0,0,240,0,0,0,,,,2013-06-30 08:00,2013-08-03 17:00,,2013-02-16 08:00,2013-03-21 17:00,2013-02-16 08:00,2013-03-21 17:00,2013-02-16 08:00,2013-03-21 17:00,2013-06-30 08:00,2013-08-03 17:00,,PT_Normal,,,,,fW5c1ygFSTGWzAPlF+KBFg,,,,N,0,0,,,2013-02-16 15:51,2013-02-16 15:56,admin,admin
499606,6359,124333,13662,0,N,N,N,CP_Drtn,TT_Task,DT_FixedDUR2,TK_NotStart,DUKHENGP2BDWARAP5290,Gypsum False Ceiling Drawings-App,,536,280,240,0,0,0,240,0,0,0,,,,2013-06-18 08:00,2013-07-22 17:00,,2013-04-01 08:00,2013-05-05 17:00,2013-04-01 08:00,2013-05-05 17:00,2013-04-01 08:00,2013-05-05 17:00,2013-06-18 08:00,2013-07-22 17:00,,PT_Normal,,,,,prpXs9vUR4Guwf98eeBvmA,,,,N,0,0,,,2013-02-16 15:51,2013-02-16 15:56,admin,admin
499607,6359,124333,13662,0,N,N,N,CP_Drtn,TT_Task,DT_FixedDUR2,TK_NotStart,DUKHENGP2BDWARAP5310,Doors & Window Drawings-App,,488,280,240,0,0,0,240,0,0,0,,,,2013-06-17 08:00,2013-07-21 17:00,,2013-04-07 08:00,2013-05-11 17:00,2013-04-07 08:00,2013-05-11 17:00,2013-04-07 08:00,2013-05-11 17:00,2013-06-17 08:00,2013-07-21 17:00,,PT_Normal,,,,,efeQrSKjRKaw50wDVesxsQ,,,,N,0,0,,,2013-02-16 15:51,2013-02-16 15:56,admin,admin
499608,6359,124333,13662,0,N,N,N,CP_Drtn,TT_Task,DT_FixedDUR2,TK_NotStart,DUKHENGP2BDWARAP5320,Carpentry & Joinery Drawings-App,,664,320,240,0,0,0,240,0,0,0,,,,2013-07-30 08:00,2013-09-05 17:00,,2013-04-24 08:00,2013-05-28 17:00,2013-04-24 08:00,2013-05-28 17:00,2013-04-24 08:00,2013-05-28 17:00,2013-07-30 08:00,2013-09-05 17:00,,PT_Normal,,,,,t7r1Zzf2QmaOUOj++ShB3Q,,,,N,0,0,,,2013-02-16 15:51,2013-02-16 15:56,admin,admin
499609,6359,124334,13662,0,N,N,N,CP_Drtn,TT_Task,DT_FixedDUR2,TK_NotStart,DUKHENGP2BDWARSM5230,Ground Floor Plan-Sub,,600,0,120,0,30,30,120,0,0,0,,,,2013-04-06 08:00,2013-04-22 17:00,,2013-01-07 08:00,2013-01-23 17:00,2013-01-07 08:00,2013-01-23 17:00,2013-01-07 08:00,2013-01-23 17:00,2013-04-06 08:00,2013-04-22 17:00,,PT_Normal,,,,,VuO2VS9AQK67RBs7NrpdJQ,,,,N,0,0,,,2013-02-16 15:51,2013-02-16 15:56,admin,admin
499610,6359,124334,13662,0,N,N,N,CP_Drtn,TT_Task,DT_FixedDUR2,TK_NotStart,DUKHENGP2BDWARSM5250,Roof Floor Plan-Sub,,600,0,120,0,30,30,120,0,0,0,,,,2013-04-23 08:00,2013-05-09 17:00,,2013-01-24 08:00,2013-02-10 17:00,2013-01-24 08:00,2013-02-10 17:00,2013-01-24 08:00,2013-02-10 17:00,2013-04-23 08:00,2013-05-09 17:00,,PT_Normal,,,,,q1UYEaxbSsyKTEXvVdyR8Q,,,,N,0,0,,,2013-02-16 15:51,2013-02-16 15:56,admin,admin
499611,6359,124334,13662,0,N,N,N,CP_Drtn,TT_Task,DT_FixedDUR2,TK_NotStart,DUKHENGP2BDWARSM5260,Ceramic Flooring & Wall Drawings-Sub,,600,0,120,0,30,30,120,0,0,0,,,,2013-04-27 08:00,2013-05-13 17:00,,2013-01-28 08:00,2013-02-14 17:00,2013-01-28 08:00,2013-02-14 17:00,2013-01-28 08:00,2013-02-14 17:00,2013-04-27 08:00,2013-05-13 17:00,,PT_Normal,,,,,QPCUPhoAROKIWoH683Be4w,,,,N,0,0,,,2013-02-16 15:51,2013-02-16 15:56,admin,admin
499612,6359,124334,13662,0,N,N,N,CP_Drtn,TT_Task,DT_FixedDUR2,TK_NotStart,DUKHENGP2BDWARSM5270,Porcelain Floor Drawings-Sub,,672,0,120,0,30,30,120,0,0,0,,,,2013-05-07 08:00,2013-05-23 17:00,,2013-01-28 08:00,2013-02-14 17:00,2013-01-28 08:00,2013-02-14 17:00,2013-01-28 08:00,2013-02-14 17:00,2013-05-07 08:00,2013-05-23 17:00,,PT_Normal,,,,,PRcC1QtsTua6gumsU19DjA,,,,N,0,0,,,2013-02-16 15:51,2013-02-16 15:56,admin,admin
499613,6359,124334,13662,0,N,N,N,CP_Drtn,TT_Task,DT_FixedDUR2,TK_NotStart,DUKHENGP2BDWARSM5280,Cobble & Slate Flooring Drawings-Sub,,920,0,120,0,30,30,120,0,0,0,,,,2013-06-12 08:00,2013-06-29 17:00,,2013-01-28 08:00,2013-02-14 17:00,2013-01-28 08:00,2013-02-14 17:00,2013-01-28 08:00,2013-02-14 17:00,2013-06-12 08:00,2013-06-29 17:00,,PT_Normal,,,,,S9cIukAhRyuEQ03k6r1n0g,,,,N,0,0,,,2013-02-16 15:51,2013-02-16 15:56,admin,admin
499614,6359,124334,13662,0,N,N,N,CP_Drtn,TT_Task,DT_FixedDUR2,TK_NotStart,DUKHENGP2BDWARSM5290,Gypsum False Ceiling Drawings-Sub,,536,0,120,0,20,20,120,0,0,0,,,,2013-06-01 08:00,2013-06-17 17:00,,2013-03-14 08:00,2013-03-31 17:00,2013-03-14 08:00,2013-03-31 17:00,2013-03-14 08:00,2013-03-31 17:00,2013-06-01 08:00,2013-06-17 17:00,,PT_Normal,,,,,0fuM63gDS52lpo2ImLsyoQ,,,,N,0,0,,,2013-02-16 15:51,2013-02-16 15:56,admin,admin
499615,6359,124334,13662,0,N,N,N,CP_Drtn,TT_Task,DT_FixedDUR2,TK_NotStart,DUKHENGP2BDWARSM5310,Doors & window Drawings-Sub,,488,0,120,0,20,20,120,0,0,0,,,,2013-05-30 08:00,2013-06-16 17:00,,2013-03-20 08:00,2013-04-06 17:00,2013-03-20 08:00,2013-04-06 17:00,2013-03-20 08:00,2013-04-06 17:00,2013-05-30 08:00,2013-06-16 17:00,,PT_Normal,,,,,DBfEkCueSiOkPh+Np5lDNg,,,,N,0,0,,,2013-02-16 15:51,2013-02-16 15:56,admin,admin
499616,6359,124334,13662,0,N,N,N,CP_Drtn,TT_Task,DT_FixedDUR2,TK_NotStart,DUKHENGP2BDWARSM5320,Carpentry & Joinery Drawings-Sub,,664,0,120,0,30,30,120,0,0,0,,,,2013-07-13 08:00,2013-07-29 17:00,,2013-04-07 08:00,2013-04-23 17:00,2013-04-07 08:00,2013-04-23 17:00,2013-04-07 08:00,2013-04-23 17:00,2013-07-13 08:00,2013-07-29 17:00,,PT_Normal,,,,,WPryOFzLSASRHm8XpfZS+g,,,,N,0,0,,,2013-02-16 15:51,2013-02-16 15:56,admin,admin
499617,6359,124338,13662,0,N,N,N,CP_Drtn,TT_Task,DT_FixedDUR2,TK_NotStart,DUKHENGP03DWELSM5710,Single Line Diagram-Sub,,472,0,120,0,20,20,120,0,0,0,,,,2013-05-01 08:00,2013-05-18 17:00,,2013-02-21 08:00,2013-03-10 17:00,2013-02-21 08:00,2013-03-10 17:00,2013-02-21 08:00,2013-03-10 17:00,2013-05-01 08:00,2013-05-18 17:00,,PT_Normal,,,,,FI0IRYJjQLuci6DT4FX/0Q,,,,N,0,0,,,2013-02-16 15:51,2013-02-16 15:56,admin,admin
499618,6359,124338,13662,0,N,N,N,CP_Drtn,TT_Task,DT_FixedDUR2,TK_NotStart,DUKHENGP03DWELSM5720,Lighting Layout Drawings-Sub,,472,0,120,0,20,20,120,0,0,0,,,,2013-05-07 08:00,2013-05-23 17:00,,2013-02-27 08:00,2013-03-16 17:00,2013-02-27 08:00,2013-03-16 17:00,2013-02-27 08:00,2013-03-16 17:00,2013-05-07 08:00,2013-05-23 17:00,,PT_Normal,,,,,fP4ggIxNTomUoGgkECedZA,,,,N,0,0,,,2013-02-16 15:51,2013-02-16 15:56,admin,admin
499619,6359,124338,13662,0,N,N,N,CP_Drtn,TT_Task,DT_FixedDUR2,TK_NotStart,DUKHENGP03DWELSM5730,Power Layout Drawings-Sub,,600,0,120,0,20,20,120,0,0,0,,,,2013-05-26 08:00,2013-06-11 17:00,,2013-02-27 08:00,2013-03-16 17:00,2013-02-27 08:00,2013-03-16 17:00,2013-02-27 08:00,2013-03-16 17:00,2013-05-26 08:00,2013-06-11 17:00,,PT_Normal,,,,,pfZ4oV88Qf2Nz2q+ZBHx0g,,,,N,0,0,,,2013-02-16 15:51,2013-02-16 15:56,admin,admin
499620,6359,124338,13662,0,N,N,N,CP_Drtn,TT_Task,DT_FixedDUR2,TK_NotStart,DUKHENGP03DWELSM5740,Central Alarm Monitoring System Drawings-Sub,,600,0,120,0,20,20,120,0,0,0,,,,2013-06-12 08:00,2013-06-29 17:00,,2013-03-17 08:00,2013-04-02 17:00,2013-03-17 08:00,2013-04-02 17:00,2013-03-17 08:00,2013-04-02 17:00,2013-06-12 08:00,2013-06-29 17:00,,PT_Normal,,,,,QO+cWnxmTBezpJ2L6GomJA,,,,N,0,0,,,2013-02-16 15:51,2013-02-16 15:56,admin,admin
499621,6359,124338,13662,0,N,N,N,CP_Drtn,TT_Task,DT_FixedDUR2,TK_NotStart,DUKHENGP03DWELSM5750,Audio Video Intercom System Drawings-Sub,,600,0,120,0,30,30,120,0,0,0,,,,2013-06-30 08:00,2013-07-16 17:00,,2013-04-03 08:00,2013-04-20 17:00,2013-04-03 08:00,2013-04-20 17:00,2013-04-03 08:00,2013-04-20 17:00,2013-06-30 08:00,2013-07-16 17:00,,PT_Normal,,,,,C535w4SXR4qDEFsr5JSzUw,,,,N,0,0,,,2013-02-16 15:51,2013-02-16 15:56,admin,admin
499622,6359,124338,13662,0,N,N,N,CP_Drtn,TT_Task,DT_FixedDUR2,TK_NotStart,DUKHENGP03DWELSM5760,Telephone & TV System Drawings-Sub,,600,0,120,0,30,30,120,0,0,0,,,,2013-07-17 08:00,2013-08-03 17:00,,2013-04-21 08:00,2013-05-07 17:00,2013-04-21 08:00,2013-05-07 17:00,2013-04-21 08:00,2013-05-07 17:00,2013-07-17 08:00,2013-08-03 17:00,,PT_Normal,,,,,Bl30H9x9TxyPuQH5NBQ0lA,,,,N,0,0,,,2013-02-16 15:51,2013-02-16 15:56,admin,admin
499623,6359,124339,13662,0,N,N,N,CP_Drtn,TT_Task,DT_FixedDUR2,TK_NotStart,DUKHENGP03DWELAP5740,Central Alarm Monitoring System Drawings-App,,792,160,240,0,0,0,240,0,0,0,,,,2013-07-28 08:00,2013-09-03 17:00,,2013-04-03 08:00,2013-05-07 17:00,2013-04-03 08:00,2013-05-07 17:00,2013-04-03 08:00,2013-05-07 17:00,2013-07-28 08:00,2013-09-03 17:00,,PT_Normal,,,,,4PCfl7WhT3qtgHvxkYqOZg,,,,N,0,0,,,2013-02-16 15:51,2013-02-16 15:56,admin,admin
499624,6359,124339,13662,0,N,N,N,CP_Drtn,TT_Task,DT_FixedDUR2,TK_NotStart,DUKHENGP03DWELAP5750,Audio Video Intercom System Drawings-App,,720,160,240,0,0,0,240,0,0,0,,,,2013-08-04 08:00,2013-09-10 17:00,,2013-04-21 08:00,2013-05-25 17:00,2013-04-21 08:00,2013-05-25 17:00,2013-04-21 08:00,2013-05-25 17:00,2013-08-04 08:00,2013-09-10 17:00,,PT_Normal,,,,,7L2R+i41T8i7u0dxIVVwvw,,,,N,0,0,,,2013-02-16 15:51,2013-02-16 15:56,admin,admin
499625,6359,124339,13662,0,N,N,N,CP_Drtn,TT_Task,DT_FixedDUR2,TK_NotStart,DUKHENGP03DWELAP5760,Telephone & TV System Drawings-App,,600,48,240,0,0,0,240,0,0,0,,,,2013-08-04 08:00,2013-09-10 17:00,,2013-05-08 08:00,2013-06-11 17:00,2013-05-08 08:00,2013-06-11 17:00,2013-05-08 08:00,2013-06-11 17:00,2013-08-04 08:00,2013-09-10 17:00,,PT_Normal,,,,,wZ0f6D5BSdG4B+IkZzGwYg,,,,N,0,0,,,2013-02-16 15:51,2013-02-16 15:56,admin,admin
499626,6359,124339,13662,0,N,N,N,CP_Drtn,TT_Task,DT_FixedDUR2,TK_NotStart,DUKHENGP03DWELAP5710,Single Line Diagram-App,,920,320,240,0,0,0,240,0,0,0,,,,2013-07-23 08:00,2013-08-29 17:00,,2013-03-11 08:00,2013-04-14 17:00,2013-03-11 08:00,2013-04-14 17:00,2013-03-11 08:00,2013-04-14 17:00,2013-07-23 08:00,2013-08-29 17:00,,PT_Normal,,,,,UAlfL8EeSSihpzbspRsVdA,,,,N,0,0,,,2013-02-16 15:51,2013-02-16 15:56,admin,admin
499627,6359,124339,13662,0,N,N,N,CP_Drtn,TT_Task,DT_FixedDUR2,TK_NotStart,DUKHENGP03DWELAP5720,Lighting Layout Drawings-App,,472,0,240,0,0,0,240,0,0,0,,,,2013-05-25 08:00,2013-06-27 17:00,,2013-03-17 08:00,2013-04-20 17:00,2013-03-17 08:00,2013-04-20 17:00,2013-03-17 08:00,2013-04-20 17:00,2013-05-25 08:00,2013-06-27 17:00,,PT_Normal,,,,,m7emT1cfRIeX+XmwVzBWyA,,,,N,0,0,,,2013-02-16 15:51,2013-02-16 15:56,admin,admin
499628,6359,124339,13662,0,N,N,N,CP_Drtn,TT_Task,DT_FixedDUR2,TK_NotStart,DUKHENGP03DWELAP5730,Power Layout Drawings-App,,880,280,240,0,0,0,240,0,0,0,,,,2013-07-23 08:00,2013-08-29 17:00,,2013-03-17 08:00,2013-04-20 17:00,2013-03-17 08:00,2013-04-20 17:00,2013-03-17 08:00,2013-04-20 17:00,2013-07-23 08:00,2013-08-29 17:00,,PT_Normal,,,,,HnBHdcS3Txeu1zb9+8IgBw,,,,N,0,0,,,2013-02-16 15:51,2013-02-16 15:56,admin,admin
499629,6359,124341,13662,0,N,N,N,CP_Drtn,TT_Task,DT_FixedDUR2,TK_NotStart,DUKHENGI03DWELAP5840,Electrical Line Layout & Details-App,,480,0,240,0,0,0,240,0,0,0,,,,2013-07-29 08:00,2013-09-04 17:00,,2013-05-20 08:00,2013-06-23 17:00,2013-05-20 08:00,2013-06-23 17:00,2013-05-20 08:00,2013-06-23 17:00,2013-07-29 08:00,2013-09-04 17:00,,PT_Normal,,,,,REmcl/anTxKGftlMvSRVkA,,,,N,0,0,,,2013-02-16 15:51,2013-02-16 15:56,admin,admin
499630,6359,124341,13662,0,N,N,N,CP_Drtn,TT_Task,DT_FixedDUR2,TK_NotStart,DUKHENGI03DWSTAP5850,Street Lighting Layout & details -App,,480,0,240,0,0,0,240,0,0,0,,,,2013-09-05 08:00,2013-10-09 17:00,,2013-06-24 08:00,2013-07-28 17:00,2013-06-24 08:00,2013-07-28 17:00,2013-06-24 08:00,2013-07-28 17:00,2013-09-05 08:00,2013-10-09 17:00,,PT_Normal,,,,,SjZshSd0SWO4z5PiqO3ZlQ,,,,N,0,0,,,2013-02-16 15:51,2013-02-16 15:56,admin,admin
499631,6359,124341,13662,0,N,N,N,CP_Drtn,TT_Task,DT_FixedDUR2,TK_NotStart,DUKHENGI03DWDRAP5810,Drainage Line Layout & Details-App,,504,296,240,0,0,0,240,0,0,0,,,,2013-07-15 08:00,2013-08-21 17:00,,2013-05-02 08:00,2013-06-05 17:00,2013-05-02 08:00,2013-06-05 17:00,2013-05-02 08:00,2013-06-05 17:00,2013-07-15 08:00,2013-08-21 17:00,,PT_Normal,,,,,kScWj79tQHCIkZn7GeTS+w,,,,N,0,0,,,2013-02-16 15:51,2013-02-16 15:56,admin,admin
499632,6359,124341,13662,0,N,N,N,CP_Drtn,TT_Task,DT_FixedDUR2,TK_NotStart,DUKHENGI03DWFFAP5820,Fire Fighting Line Layout & Details-App,,360,320,240,0,0,0,240,0,0,0,,,,2013-06-24 08:00,2013-07-28 17:00,,2013-05-02 08:00,2013-06-05 17:00,2013-05-02 08:00,2013-06-05 17:00,2013-05-02 08:00,2013-06-05 17:00,2013-06-24 08:00,2013-07-28 17:00,,PT_Normal,,,,,aAVyqiJRTB6Nr6L/8pV0Ig,,,,N,0,0,,,2013-02-16 15:51,2013-02-16 16:17,admin,admin
499633,6359,124341,13662,0,N,N,N,CP_Drtn,TT_Task,DT_FixedDUR2,TK_NotStart,DUKHENGI03DWWSAP5830,Water Supply Line Layout & Details-App,,688,296,240,0,0,0,240,0,0,0,,,,2013-08-14 08:00,2013-09-17 17:00,,2013-05-02 08:00,2013-06-05 17:00,2013-05-02 08:00,2013-06-05 17:00,2013-05-02 08:00,2013-06-05 17:00,2013-08-14 08:00,2013-09-17 17:00,,PT_Normal,,,,,1XCAWB/EQaCiQfxFLciypg,,,,N,0,0,,,2013-02-16 15:51,2013-02-16 15:56,admin,admin
499634,6359,124341,13662,0,N,N,N,CP_Drtn,TT_Task,DT_FixedDUR2,TK_NotStart,DUKHENGI03DWIRAP5870,Irrigation Layout & Details-App,,728,120,240,0,0,0,240,0,0,0,,,,2013-09-24 08:00,2013-10-30 17:00,,2013-06-06 08:00,2013-07-10 17:00,2013-06-06 08:00,2013-07-10 17:00,2013-06-06 08:00,2013-07-10 17:00,2013-09-24 08:00,2013-10-30 17:00,,PT_Normal,,,,,dn730uDUQDCQNKZ/FJzyBg,,,,N,0,0,,,2013-02-16 15:51,2013-02-16 15:56,admin,admin
499635,6359,124341,13662,0,N,N,N,CP_Drtn,TT_Task,DT_FixedDUR2,TK_NotStart,DUKHENGI03DWTCAP5860,Telecommunication Line Layout & Details-App,,480,0,240,0,0,0,240,0,0,0,,,,2013-10-10 08:00,2013-11-16 17:00,,2013-07-29 08:00,2013-09-04 17:00,2013-07-29 08:00,2013-09-04 17:00,2013-07-29 08:00,2013-09-04 17:00,2013-10-10 08:00,2013-11-16 17:00,,PT_Normal,,,,,PChvhmtaRVKlCUu8hO4huw,,,,N,0,0,,,2013-02-16 15:51,2013-02-16 15:56,admin,admin
499636,6359,124341,13662,0,N,N,N,CP_Drtn,TT_Task,DT_FixedDUR2,TK_NotStart,DUKHENGI03DWPSAP5900,Parking Shed Layout & Details Drawings-App,,1200,184,240,0,0,0,240,0,0,0,,,,2013-12-12 08:00,2014-01-16 17:00,,2013-06-15 08:00,2013-07-18 17:00,2013-06-15 08:00,2013-07-18 17:00,2013-06-15 08:00,2013-07-18 17:00,2013-12-12 08:00,2014-01-16 17:00,,PT_Normal,,,,,0I8ArSFURxGaVwBu9A44fA,,,,N,0,0,,,2013-02-16 15:51,2013-02-16 15:56,admin,admin
499637,6359,124341,13662,0,N,N,N,CP_Drtn,TT_Task,DT_FixedDUR2,TK_NotStart,DUKHENGI03DWSLAP5880,Soft & HardLandscaping Layout & Detail-App,,536,360,240,0,0,0,240,0,0,0,,,,2013-08-27 08:00,2013-09-30 17:00,,2013-06-06 08:00,2013-07-10 17:00,2013-06-06 08:00,2013-07-10 17:00,2013-06-06 08:00,2013-07-10 17:00,2013-08-27 08:00,2013-09-30 17:00,,PT_Normal,,,,,ggWO+fZDRvG/guazruCeFA,,,,N,0,0,,,2013-02-16 15:51,2013-02-16 15:56,admin,admin
499638,6359,124341,13662,0,N,N,N,CP_Drtn,TT_Task,DT_FixedDUR2,TK_NotStart,DUKHENGI03DWBWAP5890,Boundary Wall Layout & Details-App,,680,360,240,0,0,0,240,0,0,0,,,,2013-09-17 08:00,2013-10-23 17:00,,2013-06-06 08:00,2013-07-10 17:00,2013-06-06 08:00,2013-07-10 17:00,2013-06-06 08:00,2013-07-10 17:00,2013-09-17 08:00,2013-10-23 17:00,,PT_Normal,,,,,N1VbFithTOqR6i6EPuV0CA,,,,N,0,0,,,2013-02-16 15:51,2013-02-16 16:45,admin,admin
499639,6359,124341,13662,0,N,N,N,CP_Drtn,TT_Task,DT_FixedDUR2,TK_NotStart,DUKHENGI03DWRWAP5910,Road Layout & Details-App,,1192,184,240,0,0,0,240,0,0,0,,,,2013-12-11 08:00,2014-01-15 17:00,,2013-06-15 08:00,2013-07-18 17:00,2013-06-15 08:00,2013-07-18 17:00,2013-06-15 08:00,2013-07-18 17:00,2013-12-11 08:00,2014-01-15 17:00,,PT_Normal,,,,,8HJNrYAoTBCNkJWuKGd4ZA,,,,N,0,0,,,2013-02-16 15:51,2013-02-16 15:56,admin,admin
499640,6359,124341,13662,0,N,N,N,CP_Drtn,TT_Task,DT_FixedDUR2,TK_NotStart,DUKHENGI03DWIWAP5920,Irrigation Water Tank & Pump Room Details-App,,392,0,240,0,0,0,240,0,0,0,,,,2013-08-14 08:00,2013-09-17 17:00,,2013-06-15 08:00,2013-07-18 17:00,2013-06-15 08:00,2013-07-18 17:00,2013-06-15 08:00,2013-07-18 17:00,2013-08-14 08:00,2013-09-17 17:00,,PT_Normal,,,,,QnuJ6JGWSDK3KYmz5XDk6A,,,,N,0,0,,,2013-02-16 15:51,2013-02-16 15:56,admin,admin
499641,6359,124341,13662,0,N,N,N,CP_Drtn,TT_Task,DT_FixedDUR2,TK_NotStart,DUKHENGI03DWTRAP5930,Telephone Room Details-App,,480,0,240,0,0,0,240,0,0,0,,,,2013-09-14 08:00,2013-10-20 17:00,,2013-07-02 08:00,2013-08-05 17:00,2013-07-02 08:00,2013-08-05 17:00,2013-07-02 08:00,2013-08-05 17:00,2013-09-14 08:00,2013-10-20 17:00,,PT_Normal,,,,,gOPpTVc3Ti2G2QO4zBhOUQ,,,,N,0,0,,,2013-02-16 15:51,2013-02-16 15:56,admin,admin
499642,6359,124341,13662,0,N,N,N,CP_Drtn,TT_Task,DT_FixedDUR2,TK_NotStart,DUKHENGI03DWGZAP5940,Gazebo Plan & Details-App,,480,0,240,0,0,0,240,0,0,0,,,,2013-10-21 08:00,2013-11-24 17:00,,2013-08-06 08:00,2013-09-12 17:00,2013-08-06 08:00,2013-09-12 17:00,2013-08-06 08:00,2013-09-12 17:00,2013-10-21 08:00,2013-11-24 17:00,,PT_Normal,,,,,rIhpyPqeRgqHHcvlAyxZAw,,,,N,0,0,,,2013-02-16 15:51,2013-02-16 15:56,admin,admin
499643,6359,124341,13662,0,N,N,N,CP_Drtn,TT_Task,DT_FixedDUR2,TK_NotStart,DUKHENGI03DWGHAP5950,Guard House Plan & Details-App,,1360,1160,240,0,0,0,240,0,0,0,,,,2014-03-01 08:00,2014-04-03 17:00,,2013-08-06 08:00,2013-09-12 17:00,2013-08-06 08:00,2013-09-12 17:00,2013-08-06 08:00,2013-09-12 17:00,2014-03-01 08:00,2014-04-03 17:00,,PT_Normal,,,,,5a5TonUiRCShU8OAhfA/wA,,,,N,0,0,,,2013-02-16 15:51,2013-02-16 15:56,admin,admin
499644,6359,124342,13662,0,N,N,N,CP_Drtn,TT_Task,DT_FixedDUR2,TK_NotStart,DUKHENGI03DWELSM5840,Electrical Line Layout & Details-Sub,,392,0,120,0,30,30,120,0,0,0,,,,2013-06-29 08:00,2013-07-15 17:00,,2013-05-02 08:00,2013-05-19 17:00,2013-05-02 08:00,2013-05-19 17:00,2013-05-02 08:00,2013-05-19 17:00,2013-06-29 08:00,2013-07-15 17:00,,PT_Normal,,,,,Yd5RWnGRRiabiTj+LVehBw,,,,N,0,0,,,2013-02-16 15:51,2013-02-16 15:56,admin,admin
499645,6359,124342,13662,0,N,N,N,CP_Drtn,TT_Task,DT_FixedDUR2,TK_NotStart,DUKHENGI03DWSTSM5850,Street Lighting Layout & details -Sub,,392,0,120,0,30,30,120,0,0,0,,,,2013-06-29 08:00,2013-07-15 17:00,,2013-05-02 08:00,2013-05-19 17:00,2013-05-02 08:00,2013-05-19 17:00,2013-05-02 08:00,2013-05-19 17:00,2013-06-29 08:00,2013-07-15 17:00,,PT_Normal,,,,,doTP6PYVRGKZbpgf/K5DEQ,,,,N,0,0,,,2013-02-16 15:51,2013-02-16 15:56,admin,admin
499646,6359,124342,13662,0,N,N,N,CP_Drtn,TT_Task,DT_FixedDUR2,TK_NotStart,DUKHENGI03DWDRSM5810,Drainage Line Layout & Details-Sub,,360,0,120,0,30,30,120,0,0,0,,,,2013-06-06 08:00,2013-06-23 17:00,,2013-04-15 08:00,2013-05-01 17:00,2013-04-15 08:00,2013-05-01 17:00,2013-04-15 08:00,2013-05-01 17:00,2013-06-06 08:00,2013-06-23 17:00,,PT_Normal,,,,,t/82UcnvRLqZDs44up2wSw,,,,N,0,0,,,2013-02-16 15:51,2013-02-16 16:17,admin,admin
499647,6359,124342,13662,0,N,N,N,CP_Drtn,TT_Task,DT_FixedDUR2,TK_NotStart,DUKHENGI03DWFFSM5820,Fire Fighting Line Layout & Details-Sub,,360,0,120,0,30,30,120,0,0,0,,,,2013-06-06 08:00,2013-06-23 17:00,,2013-04-15 08:00,2013-05-01 17:00,2013-04-15 08:00,2013-05-01 17:00,2013-04-15 08:00,2013-05-01 17:00,2013-06-06 08:00,2013-06-23 17:00,,PT_Normal,,,,,7sEhs5ZxQfuCu1RW2VnddQ,,,,N,0,0,,,2013-02-16 15:51,2013-02-16 16:17,admin,admin
499648,6359,124342,13662,0,N,N,N,CP_Drtn,TT_Task,DT_FixedDUR2,TK_NotStart,DUKHENGI03DWWSSM5830,Water Supply Line Layout & Details-Sub,,360,0,120,0,30,30,120,0,0,0,,,,2013-06-06 08:00,2013-06-23 17:00,,2013-04-15 08:00,2013-05-01 17:00,2013-04-15 08:00,2013-05-01 17:00,2013-04-15 08:00,2013-05-01 17:00,2013-06-06 08:00,2013-06-23 17:00,,PT_Normal,,,,,JVauB5JHT5SPVGJ/HN6fMg,,,,N,0,0,,,2013-02-16 15:51,2013-02-16 16:17,admin,admin
499649,6359,124342,13662,0,N,N,N,CP_Drtn,TT_Task,DT_FixedDUR2,TK_NotStart,DUKHENGI03DWIRSM5870,Irrigation Layout & Details-Sub,,392,0,120,0,30,30,120,0,0,0,,,,2013-07-16 08:00,2013-08-01 17:00,,2013-05-20 08:00,2013-06-05 17:00,2013-05-20 08:00,2013-06-05 17:00,2013-05-20 08:00,2013-06-05 17:00,2013-07-16 08:00,2013-08-01 17:00,,PT_Normal,,,,,EjmgPTNTSmKCQ7mjDmF/KA,,,,N,0,0,,,2013-02-16 15:51,2013-02-16 15:56,admin,admin
499650,6359,124342,13662,0,N,N,N,CP_Drtn,TT_Task,DT_FixedDUR2,TK_NotStart,DUKHENGI03DWTCSM5860,Telecommunication Line Layout & Details-Sub,,392,0,120,0,30,30,120,0,0,0,,,,2013-06-29 08:00,2013-07-15 17:00,,2013-05-02 08:00,2013-05-19 17:00,2013-05-02 08:00,2013-05-19 17:00,2013-05-02 08:00,2013-05-19 17:00,2013-06-29 08:00,2013-07-15 17:00,,PT_Normal,,,,,Dgi4Z55wSyGSJ0l0q57zvA,,,,N,0,0,,,2013-02-16 15:51,2013-02-16 15:56,admin,admin
499651,6359,124342,13662,0,N,N,N,CP_Drtn,TT_Task,DT_FixedDUR2,TK_NotStart,DUKHENGI03DWPSSM5900,Parking Shed Layout & Details Drawings-Sub,,392,0,120,0,30,30,120,0,0,0,,,,2013-07-24 08:00,2013-08-13 17:00,,2013-05-28 08:00,2013-06-13 17:00,2013-05-28 08:00,2013-06-13 17:00,2013-05-28 08:00,2013-06-13 17:00,2013-07-24 08:00,2013-08-13 17:00,,PT_Normal,,,,,M8sjJVM2QzGSJccr2cuizQ,,,,N,0,0,,,2013-02-16 15:51,2013-02-16 15:56,admin,admin
499652,6359,124342,13662,0,N,N,N,CP_Drtn,TT_Task,DT_FixedDUR2,TK_NotStart,DUKHENGI03DWSLSM5880,Soft & HardLandscaping Layout & Detail-Sub,,392,0,120,0,30,30,120,0,0,0,,,,2013-07-16 08:00,2013-08-01 17:00,,2013-05-20 08:00,2013-06-05 17:00,2013-05-20 08:00,2013-06-05 17:00,2013-05-20 08:00,2013-06-05 17:00,2013-07-16 08:00,2013-08-01 17:00,,PT_Normal,,,,,j4sPh7DDSzuwDpRHh0qRxg,,,,N,0,0,,,2013-02-16 15:51,2013-02-16 15:56,admin,admin
499653,6359,124342,13662,0,N,N,N,CP_Drtn,TT_Task,DT_FixedDUR2,TK_NotStart,DUKHENGI03DWBWSM5890,Boundary Wall Layout & Details-Sub,,392,0,120,0,30,30,120,0,0,0,,,,2013-07-16 08:00,2013-08-01 17:00,,2013-05-20 08:00,2013-06-05 17:00,2013-05-20 08:00,2013-06-05 17:00,2013-05-20 08:00,2013-06-05 17:00,2013-07-16 08:00,2013-08-01 17:00,,PT_Normal,,,,,ilfHnjJtQjGtFWtWPYN1Rg,,,,N,0,0,,,2013-02-16 15:51,2013-02-16 15:56,admin,admin
499654,6359,124342,13662,0,N,N,N,CP_Drtn,TT_Task,DT_FixedDUR2,TK_NotStart,DUKHENGI03DWRWSM5910,Road Layout & Details-Sub,,392,0,120,0,30,30,120,0,0,0,,,,2013-07-24 08:00,2013-08-13 17:00,,2013-05-28 08:00,2013-06-13 17:00,2013-05-28 08:00,2013-06-13 17:00,2013-05-28 08:00,2013-06-13 17:00,2013-07-24 08:00,2013-08-13 17:00,,PT_Normal,,,,,jxkW+fCzSsaAH1Sf3hky5g,,,,N,0,0,,,2013-02-16 15:51,2013-02-16 15:56,admin,admin
499655,6359,124342,13662,0,N,N,N,CP_Drtn,TT_Task,DT_FixedDUR2,TK_NotStart,DUKHENGI03DWIWSM5920,Irrigation Water Tank & Pump Room Details- Sub,,392,0,120,0,30,30,120,0,0,0,,,,2013-07-24 08:00,2013-08-13 17:00,,2013-05-28 08:00,2013-06-13 17:00,2013-05-28 08:00,2013-06-13 17:00,2013-05-28 08:00,2013-06-13 17:00,2013-07-24 08:00,2013-08-13 17:00,,PT_Normal,,,,,HczDrW2mTEmmKEJE5hvt4Q,,,,N,0,0,,,2013-02-16 15:51,2013-02-16 15:56,admin,admin
499656,6359,124342,13662,0,N,N,N,CP_Drtn,TT_Task,DT_FixedDUR2,TK_NotStart,DUKHENGI03DWTRSM5930,Telephone Room Details-Sub,,480,0,120,0,30,30,120,0,0,0,,,,2013-08-27 08:00,2013-09-12 17:00,,2013-06-15 08:00,2013-07-01 17:00,2013-06-15 08:00,2013-07-01 17:00,2013-06-15 08:00,2013-07-01 17:00,2013-08-27 08:00,2013-09-12 17:00,,PT_Normal,,,,,hjyXM46ySvqmCL11nAr+mg,,,,N,0,0,,,2013-02-16 15:51,2013-02-16 15:56,admin,admin
499657,6359,124342,13662,0,N,N,N,CP_Drtn,TT_Task,DT_FixedDUR2,TK_NotStart,DUKHENGI03DWGZSM5940,Gazebo Plan & Details-Sub,,600,120,120,0,30,30,120,0,0,0,,,,2013-10-01 08:00,2013-10-20 17:00,,2013-07-02 08:00,2013-07-18 17:00,2013-07-02 08:00,2013-07-18 17:00,2013-07-02 08:00,2013-07-18 17:00,2013-10-01 08:00,2013-10-20 17:00,,PT_Normal,,,,,DjY9JrphTNaQd3+/bKLJVw,,,,N,0,0,,,2013-02-16 15:51,2013-02-16 15:56,admin,admin
499658,6359,124342,13662,0,N,N,N,CP_Drtn,TT_Task,DT_FixedDUR2,TK_NotStart,DUKHENGI03DWGHSM5950,Guard House Plan & Details-Sub,,1480,120,120,0,30,30,120,0,0,0,,,,2014-02-10 08:00,2014-02-27 17:00,,2013-07-02 08:00,2013-07-18 17:00,2013-07-02 08:00,2013-07-18 17:00,2013-07-02 08:00,2013-07-18 17:00,2014-02-10 08:00,2014-02-27 17:00,,PT_Normal,,,,,X4h3P389RRit4tvQ2nHndA,,,,N,0,0,,,2013-02-16 15:51,2013-02-16 15:56,admin,admin
499659,6359,124344,13662,0,N,N,N,CP_Drtn,TT_Task,DT_FixedDUR2,TK_NotStart,DUKHENGP03DWMEAP5770,Plumbing Layout & Details Drawings-App,,424,0,240,0,0,0,240,0,0,0,,,,2013-05-12 08:00,2013-06-15 17:00,,2013-03-11 08:00,2013-04-14 17:00,2013-03-11 08:00,2013-04-14 17:00,2013-03-11 08:00,2013-04-14 17:00,2013-05-12 08:00,2013-06-15 17:00,,PT_Normal,,,,,/aJiALenTC2uSo2ykCbxsg,,,,N,0,0,,,2013-02-16 15:51,2013-02-16 15:56,admin,admin
499660,6359,124344,13662,0,N,N,N,CP_Drtn,TT_Task,DT_FixedDUR2,TK_NotStart,DUKHENGP03DWMEAP5780,Drainage Layout & Details Drawings-App,,424,0,240,0,0,0,240,0,0,0,,,,2013-05-12 08:00,2013-06-15 17:00,,2013-03-11 08:00,2013-04-14 17:00,2013-03-11 08:00,2013-04-14 17:00,2013-03-11 08:00,2013-04-14 17:00,2013-05-12 08:00,2013-06-15 17:00,,PT_Normal,,,,,hCEfeAEcSgmBMwcL36aS4Q,,,,N,0,0,,,2013-02-16 15:51,2013-02-16 15:56,admin,admin
499661,6359,124344,13662,0,N,N,N,CP_Drtn,TT_Task,DT_FixedDUR2,TK_NotStart,DUKHENGP03DWMEAP5790,Fire Fighting Layout & Details Drawings-App,,1160,440,240,0,0,0,240,0,0,0,,,,2013-09-17 08:00,2013-10-23 17:00,,2013-03-28 08:00,2013-05-01 17:00,2013-03-28 08:00,2013-05-01 17:00,2013-03-28 08:00,2013-05-01 17:00,2013-09-17 08:00,2013-10-23 17:00,,PT_Normal,,,,,8LPQxdUaQOSINyUM2PJNkw,,,,N,0,0,,,2013-02-16 15:51,2013-02-16 15:56,admin,admin
499662,6359,124344,13662,0,N,N,N,CP_Drtn,TT_Task,DT_FixedDUR2,TK_NotStart,DUKHENGP03DWMEAP5800,AC Layout & Details Drawings-App,,512,80,240,0,0,0,240,0,0,0,,,,2013-06-29 08:00,2013-08-01 17:00,,2013-04-15 08:00,2013-05-19 17:00,2013-04-15 08:00,2013-05-19 17:00,2013-04-15 08:00,2013-05-19 17:00,2013-06-29 08:00,2013-08-01 17:00,,PT_Normal,,,,,dW/mLzjESGOlJgaafRv66Q,,,,N,0,0,,,2013-02-16 15:51,2013-02-16 15:56,admin,admin
499663,6359,124345,13662,0,N,N,N,CP_Drtn,TT_Task,DT_FixedDUR2,TK_NotStart,DUKHENGP03DWMESM5770,Plumbing Layout & Details Drawings-Sub,,424,0,120,0,20,20,120,0,0,0,,,,2013-04-24 08:00,2013-05-11 17:00,,2013-02-21 08:00,2013-03-10 17:00,2013-02-21 08:00,2013-03-10 17:00,2013-02-21 08:00,2013-03-10 17:00,2013-04-24 08:00,2013-05-11 17:00,,PT_Normal,,,,,h6R0imndQemwWDOSn2UbOw,,,,N,0,0,,,2013-02-16 15:51,2013-02-16 15:56,admin,admin
499664,6359,124345,13662,0,N,N,N,CP_Drtn,TT_Task,DT_FixedDUR2,TK_NotStart,DUKHENGP03DWMESM5780,Drainage Layout & Details Drawings-Sub,,360,0,120,0,20,20,120,0,0,0,,,,2013-04-15 08:00,2013-05-01 17:00,,2013-02-21 08:00,2013-03-10 17:00,2013-02-21 08:00,2013-03-10 17:00,2013-02-21 08:00,2013-03-10 17:00,2013-04-15 08:00,2013-05-01 17:00,,PT_Normal,,,,,talGRau0SVWZQ+4v8m25ig,,,,N,0,0,,,2013-02-16 15:51,2013-02-16 16:17,admin,admin
499665,6359,124345,13662,0,N,N,N,CP_Drtn,TT_Task,DT_FixedDUR2,TK_NotStart,DUKHENGP03DWMESM5790,Fire Fighting Layout & Details Drawings-Sub,,360,0,120,0,20,20,120,0,0,0,,,,2013-05-02 08:00,2013-05-19 17:00,,2013-03-11 08:00,2013-03-27 17:00,2013-03-11 08:00,2013-03-27 17:00,2013-03-11 08:00,2013-03-27 17:00,2013-05-02 08:00,2013-05-19 17:00,,PT_Normal,,,,,YPOw/lASSu2Tz5AVvvXq4Q,,,,N,0,0,,,2013-02-16 15:51,2013-02-16 16:17,admin,admin
499666,6359,124345,13662,0,N,N,N,CP_Drtn,TT_Task,DT_FixedDUR2,TK_NotStart,DUKHENGP03DWMESM5800,AC Layout & Details Drawings-Sub,,360,0,120,0,30,30,120,0,0,0,,,,2013-05-20 08:00,2013-06-05 17:00,,2013-03-28 08:00,2013-04-14 17:00,2013-03-28 08:00,2013-04-14 17:00,2013-03-28 08:00,2013-04-14 17:00,2013-05-20 08:00,2013-06-05 17:00,,PT_Normal,,,,,rckJtdQzRsSykMTTp1YuwQ,,,,N,0,0,,,2013-02-16 15:51,2013-02-16 16:17,admin,admin
499667,6359,124347,13662,0,N,N,N,CP_Drtn,TT_Task,DT_FixedDUR2,TK_NotStart,DUKHENGP03DWARAP5610,Ground Floor Plan-App,,720,64,240,0,0,0,240,0,0,0,,,,2013-06-04 08:00,2013-07-08 17:00,,2013-02-19 08:00,2013-03-25 17:00,2013-02-19 08:00,2013-03-25 17:00,2013-02-19 08:00,2013-03-25 17:00,2013-06-04 08:00,2013-07-08 17:00,,PT_Normal,,,,,PCw6PIaSSI6lbpG21vAGHQ,,,,N,0,0,,,2013-02-16 15:51,2013-02-16 15:56,admin,admin
499668,6359,124347,13662,0,N,N,N,CP_Drtn,TT_Task,DT_FixedDUR2,TK_NotStart,DUKHENGP03DWARAP5620,First Floor Plan-App,,496,48,240,0,0,0,240,0,0,0,,,,2013-05-13 08:00,2013-06-16 17:00,,2013-03-02 08:00,2013-04-04 17:00,2013-03-02 08:00,2013-04-04 17:00,2013-03-02 08:00,2013-04-04 17:00,2013-05-13 08:00,2013-06-16 17:00,,PT_Normal,,,,,ZHoTaE13TU6G7xzIT5RxPA,,,,N,0,0,,,2013-02-16 15:51,2013-02-16 15:56,admin,admin
499669,6359,124347,13662,0,N,N,N,CP_Drtn,TT_Task,DT_FixedDUR2,TK_NotStart,DUKHENGP03DWARAP5630,Roof Floor Plan-App,,440,0,240,0,0,0,240,0,0,0,,,,2013-05-13 08:00,2013-06-16 17:00,,2013-03-10 08:00,2013-04-13 17:00,2013-03-10 08:00,2013-04-13 17:00,2013-03-10 08:00,2013-04-13 17:00,2013-05-13 08:00,2013-06-16 17:00,,PT_Normal,,,,,zI5zl9P0Q2W59AddXXUWzA,,,,N,0,0,,,2013-02-16 15:51,2013-02-16 15:56,admin,admin
499670,6359,124347,13662,0,N,N,N,CP_Drtn,TT_Task,DT_FixedDUR2,TK_NotStart,DUKHENGP03DWARAP5640,Ceramic Flooring & Wall Drawings-App,,384,48,240,0,0,0,240,0,0,0,,,,2013-05-14 08:00,2013-06-17 17:00,,2013-03-19 08:00,2013-04-22 17:00,2013-03-19 08:00,2013-04-22 17:00,2013-03-19 08:00,2013-04-22 17:00,2013-05-14 08:00,2013-06-17 17:00,,PT_Normal,,,,,o4gqkeQSThCq0ZYw+0n2tA,,,,N,0,0,,,2013-02-16 15:51,2013-02-16 15:56,admin,admin
499671,6359,124347,13662,0,N,N,N,CP_Drtn,TT_Task,DT_FixedDUR2,TK_NotStart,DUKHENGP03DWARAP5650,Porcelain Floor Drawings-App,,456,48,240,0,0,0,240,0,0,0,,,,2013-05-25 08:00,2013-06-27 17:00,,2013-03-19 08:00,2013-04-22 17:00,2013-03-19 08:00,2013-04-22 17:00,2013-03-19 08:00,2013-04-22 17:00,2013-05-25 08:00,2013-06-27 17:00,,PT_Normal,,,,,hKTGhKx2RGOtjw4MBWQ7JA,,,,N,0,0,,,2013-02-16 15:51,2013-02-16 15:56,admin,admin
499672,6359,124347,13662,0,N,N,N,CP_Drtn,TT_Task,DT_FixedDUR2,TK_NotStart,DUKHENGP03DWARAP5660,Cobble & Slate Flooring Drawings-App,,704,48,240,0,0,0,240,0,0,0,,,,2013-06-30 08:00,2013-08-03 17:00,,2013-03-19 08:00,2013-04-22 17:00,2013-03-19 08:00,2013-04-22 17:00,2013-03-19 08:00,2013-04-22 17:00,2013-06-30 08:00,2013-08-03 17:00,,PT_Normal,,,,,M40nBK6VTDyw8UgTVQFU7g,,,,N,0,0,,,2013-02-16 15:51,2013-02-16 15:56,admin,admin
499673,6359,124347,13662,0,N,N,N,CP_Drtn,TT_Task,DT_FixedDUR2,TK_NotStart,DUKHENGP03DWARAP5670,Gypsum False Ceiling Drawings-App,,536,280,240,0,0,0,240,0,0,0,,,,2013-06-18 08:00,2013-07-22 17:00,,2013-04-01 08:00,2013-05-05 17:00,2013-04-01 08:00,2013-05-05 17:00,2013-04-01 08:00,2013-05-05 17:00,2013-06-18 08:00,2013-07-22 17:00,,PT_Normal,,,,,jxOSRDlZTFCU1CJ2P245SQ,,,,N,0,0,,,2013-02-16 15:51,2013-02-16 15:56,admin,admin
499674,6359,124347,13662,0,N,N,N,CP_Drtn,TT_Task,DT_FixedDUR2,TK_NotStart,DUKHENGP03DWARAP5680,Aluminum False Ceiling Drawings-App,,656,320,240,0,0,0,240,0,0,0,,,,2013-07-06 08:00,2013-08-08 17:00,,2013-04-01 08:00,2013-05-05 17:00,2013-04-01 08:00,2013-05-05 17:00,2013-04-01 08:00,2013-05-05 17:00,2013-07-06 08:00,2013-08-08 17:00,,PT_Normal,,,,,4hTqMOMwQY+cSG9/0av2Cw,,,,N,0,0,,,2013-02-16 15:51,2013-02-16 15:56,admin,admin
499675,6359,124347,13662,0,N,N,N,CP_Drtn,TT_Task,DT_FixedDUR2,TK_NotStart,DUKHENGP03DWARAP5690,Doors & Window Drawings-App,,440,232,240,0,0,0,240,0,0,0,,,,2013-06-17 08:00,2013-07-21 17:00,,2013-04-14 08:00,2013-05-18 17:00,2013-04-14 08:00,2013-05-18 17:00,2013-04-14 08:00,2013-05-18 17:00,2013-06-17 08:00,2013-07-21 17:00,,PT_Normal,,,,,zTdvq/PgRSG4qWqVY/RzmA,,,,N,0,0,,,2013-02-16 15:51,2013-02-16 15:56,admin,admin
499676,6359,124347,13662,0,N,N,N,CP_Drtn,TT_Task,DT_FixedDUR2,TK_NotStart,DUKHENGP03DWARAP5700,Carpentry & Joinery Drawings-App,,664,320,240,0,0,0,240,0,0,0,,,,2013-07-30 08:00,2013-09-05 17:00,,2013-04-24 08:00,2013-05-28 17:00,2013-04-24 08:00,2013-05-28 17:00,2013-04-24 08:00,2013-05-28 17:00,2013-07-30 08:00,2013-09-05 17:00,,PT_Normal,,,,,Dpbiuh45TtO2WwGSK4R/RA,,,,N,0,0,,,2013-02-16 15:51,2013-02-16 15:56,admin,admin
499677,6359,124348,13662,0,N,N,N,CP_Drtn,TT_Task,DT_FixedDUR2,TK_NotStart,DUKHENGP03DWARSM5610,Ground Floor Plan-Sub,,384,0,120,0,30,30,120,0,0,0,,,,2013-03-30 08:00,2013-04-15 17:00,,2013-01-31 08:00,2013-02-18 17:00,2013-01-31 08:00,2013-02-18 17:00,2013-01-31 08:00,2013-02-18 17:00,2013-03-30 08:00,2013-04-15 17:00,,PT_Normal,,,,,TexPCWFUSGmNWgVQ42O0Cw,,,,N,0,0,,,2013-02-16 15:51,2013-02-16 15:56,admin,admin
499678,6359,124348,13662,0,N,N,N,CP_Drtn,TT_Task,DT_FixedDUR2,TK_NotStart,DUKHENGP03DWARSM5620,First Floor Plan-Sub,,384,0,120,0,30,30,120,0,0,0,,,,2013-04-09 08:00,2013-04-25 17:00,,2013-02-11 08:00,2013-02-28 17:00,2013-02-11 08:00,2013-02-28 17:00,2013-02-11 08:00,2013-02-28 17:00,2013-04-09 08:00,2013-04-25 17:00,,PT_Normal,,,,,FBnCtwzTSsODeVEwJMAnQg,,,,N,0,0,,,2013-02-16 15:51,2013-02-16 15:56,admin,admin
499679,6359,124348,13662,0,N,N,N,CP_Drtn,TT_Task,DT_FixedDUR2,TK_NotStart,DUKHENGP03DWARSM5630,Roof Floor Plan-Sub,,424,0,120,0,30,30,120,0,0,0,,,,2013-04-23 08:00,2013-05-09 17:00,,2013-02-20 08:00,2013-03-09 17:00,2013-02-20 08:00,2013-03-09 17:00,2013-02-20 08:00,2013-03-09 17:00,2013-04-23 08:00,2013-05-09 17:00,,PT_Normal,,,,,U+8mNnk/T8WuZrqmw6+UIw,,,,N,0,0,,,2013-02-16 15:51,2013-02-16 15:56,admin,admin
499680,6359,124348,13662,0,N,N,N,CP_Drtn,TT_Task,DT_FixedDUR2,TK_NotStart,DUKHENGP03DWARSM5640,Ceramic Flooring & Wall Drawings-Sub,,384,0,120,0,20,20,120,0,0,0,,,,2013-04-27 08:00,2013-05-13 17:00,,2013-03-02 08:00,2013-03-18 17:00,2013-03-02 08:00,2013-03-18 17:00,2013-03-02 08:00,2013-03-18 17:00,2013-04-27 08:00,2013-05-13 17:00,,PT_Normal,,,,,+jvoExw6Qq6nrCoerugNVQ,,,,N,0,0,,,2013-02-16 15:51,2013-02-16 15:56,admin,admin
499681,6359,124348,13662,0,N,N,N,CP_Drtn,TT_Task,DT_FixedDUR2,TK_NotStart,DUKHENGP03DWARSM5650,Porcelain Floor Drawings-Sub,,456,0,120,0,20,20,120,0,0,0,,,,2013-05-07 08:00,2013-05-23 17:00,,2013-03-02 08:00,2013-03-18 17:00,2013-03-02 08:00,2013-03-18 17:00,2013-03-02 08:00,2013-03-18 17:00,2013-05-07 08:00,2013-05-23 17:00,,PT_Normal,,,,,zAErE6zESA2TglDh9HqS9Q,,,,N,0,0,,,2013-02-16 15:51,2013-02-16 15:56,admin,admin
499682,6359,124348,13662,0,N,N,N,CP_Drtn,TT_Task,DT_FixedDUR2,TK_NotStart,DUKHENGP03DWARSM5660,Cobble & Slate Flooring Drawings-Sub,,704,0,120,0,20,20,120,0,0,0,,,,2013-06-12 08:00,2013-06-29 17:00,,2013-03-02 08:00,2013-03-18 17:00,2013-03-02 08:00,2013-03-18 17:00,2013-03-02 08:00,2013-03-18 17:00,2013-06-12 08:00,2013-06-29 17:00,,PT_Normal,,,,,9gRXSGWzQpSoNZ2ZKiadnw,,,,N,0,0,,,2013-02-16 15:51,2013-02-16 15:56,admin,admin
499683,6359,124348,13662,0,N,N,N,CP_Drtn,TT_Task,DT_FixedDUR2,TK_NotStart,DUKHENGP03DWARSM5670,Gypsum False Ceiling Drawings-Sub,,536,0,120,0,20,20,120,0,0,0,,,,2013-06-01 08:00,2013-06-17 17:00,,2013-03-14 08:00,2013-03-31 17:00,2013-03-14 08:00,2013-03-31 17:00,2013-03-14 08:00,2013-03-31 17:00,2013-06-01 08:00,2013-06-17 17:00,,PT_Normal,,,,,taSVXtkiSlyzTyRpSA1kpA,,,,N,0,0,,,2013-02-16 15:51,2013-02-16 15:56,admin,admin
499684,6359,124348,13662,0,N,N,N,CP_Drtn,TT_Task,DT_FixedDUR2,TK_NotStart,DUKHENGP03DWARSM5680,Aluminum False Ceiling Drawings-Sub,,656,0,120,0,20,20,120,0,0,0,,,,2013-06-18 08:00,2013-07-04 17:00,,2013-03-14 08:00,2013-03-31 17:00,2013-03-14 08:00,2013-03-31 17:00,2013-03-14 08:00,2013-03-31 17:00,2013-06-18 08:00,2013-07-04 17:00,,PT_Normal,,,,,aBCpHTZ2T1ae6Qw5lZXmkA,,,,N,0,0,,,2013-02-16 15:51,2013-02-16 15:56,admin,admin
499685,6359,124348,13662,0,N,N,N,CP_Drtn,TT_Task,DT_FixedDUR2,TK_NotStart,DUKHENGP03DWARSM5690,Doors & window Drawings-Sub,,488,48,120,0,20,20,120,0,0,0,,,,2013-05-30 08:00,2013-06-16 17:00,,2013-03-20 08:00,2013-04-06 17:00,2013-03-20 08:00,2013-04-06 17:00,2013-03-20 08:00,2013-04-06 17:00,2013-05-30 08:00,2013-06-16 17:00,,PT_Normal,,,,,S0BEYEuTQy2nPG0r5IllvQ,,,,N,0,0,,,2013-02-16 15:51,2013-02-16 15:56,admin,admin
499686,6359,124348,13662,0,N,N,N,CP_Drtn,TT_Task,DT_FixedDUR2,TK_NotStart,DUKHENGP03DWARSM5700,Carpentry & Joinery Drawings-Sub,,664,0,120,0,30,30,120,0,0,0,,,,2013-07-13 08:00,2013-07-29 17:00,,2013-04-07 08:00,2013-04-23 17:00,2013-04-07 08:00,2013-04-23 17:00,2013-04-07 08:00,2013-04-23 17:00,2013-07-13 08:00,2013-07-29 17:00,,PT_Normal,,,,,kJAmMPeJR/Cetsv1ar3mLQ,,,,N,0,0,,,2013-02-16 15:51,2013-02-16 15:56,admin,admin
499687,6359,124350,13662,0,N,N,N,CP_Drtn,TT_Task,DT_FixedDUR2,TK_NotStart,DUKHENGP03DWSTAP5560,Footing Drawings-App,,256,256,200,0,0,0,200,0,0,0,,,,2013-01-20 08:00,2013-02-18 17:00,,2012-12-12 08:00,2013-01-10 17:00,2012-12-12 08:00,2013-01-10 17:00,2012-12-12 08:00,2013-01-10 17:00,2013-01-20 08:00,2013-02-18 17:00,,PT_Normal,,,,,bBwiuEhgR0Gmbl1ZtFu91A,,,,N,0,0,,,2013-02-16 15:51,2013-02-16 15:56,admin,admin
499688,6359,124350,13662,0,N,N,N,CP_Drtn,TT_Task,DT_FixedDUR2,TK_NotStart,DUKHENGP03DWSTAP5570,Grade Beam & Slab Drawings-App,,544,544,240,0,0,0,240,0,0,0,,,,2013-03-17 08:00,2013-04-20 17:00,,2012-12-26 08:00,2013-01-29 17:00,2012-12-26 08:00,2013-01-29 17:00,2012-12-26 08:00,2013-01-29 17:00,2013-03-17 08:00,2013-04-20 17:00,,PT_Normal,,,,,jrYb+hS+SQS0LaK+7eBAeA,,,,N,0,0,,,2013-02-16 15:51,2013-02-16 15:56,admin,admin
499689,6359,124350,13662,0,N,N,N,CP_Drtn,TT_Task,DT_FixedDUR2,TK_NotStart,DUKHENGP03DWSTAP5580,Column Drawings-App,,792,792,240,0,0,0,240,0,0,0,,,,2013-04-29 08:00,2013-06-02 17:00,,2013-01-02 08:00,2013-02-05 17:00,2013-01-02 08:00,2013-02-05 17:00,2013-01-02 08:00,2013-02-05 17:00,2013-04-29 08:00,2013-06-02 17:00,,PT_Normal,,,,,fLlZdKyOTRi+SMUoQc+36g,,,,N,0,0,,,2013-02-16 15:51,2013-02-16 15:56,admin,admin
499690,6359,124350,13662,0,N,N,N,CP_Drtn,TT_Task,DT_FixedDUR2,TK_NotStart,DUKHENGP03DWSTAP5590,GF Beams & Slabs Drawings-App,,880,880,240,0,0,0,240,0,0,0,,,,2013-05-23 08:00,2013-06-26 17:00,,2013-01-14 08:00,2013-02-18 17:00,2013-01-14 08:00,2013-02-18 17:00,2013-01-14 08:00,2013-02-18 17:00,2013-05-23 08:00,2013-06-26 17:00,,PT_Normal,,,,,re8tJnjdTryfJM2zZcFMIA,,,,N,0,0,,,2013-02-16 15:51,2013-02-16 15:56,admin,admin
499691,6359,124350,13662,0,N,N,N,CP_Drtn,TT_Task,DT_FixedDUR2,TK_NotStart,DUKHENGP03DWSTAP5600,FF Beams & Slabs Drawings-App,,880,880,240,0,0,0,240,0,0,0,,,,2013-06-10 08:00,2013-07-14 17:00,,2013-01-31 08:00,2013-03-07 17:00,2013-01-31 08:00,2013-03-07 17:00,2013-01-31 08:00,2013-03-07 17:00,2013-06-10 08:00,2013-07-14 17:00,,PT_Normal,,,,,CuW+VTnORIuSkR1CaqGQ5g,,,,N,0,0,,,2013-02-16 15:51,2013-02-16 15:56,admin,admin
499692,6359,124351,13662,0,N,N,N,CP_Drtn,TT_Task,DT_FixedDUR2,TK_NotStart,DUKHENGP03DWSTSM5600,FF Beams & Slabs Drawings-Sub,,384,0,120,0,30,30,120,0,0,0,,,,2013-03-12 08:00,2013-03-28 17:00,,2013-01-14 08:00,2013-01-30 17:00,2013-01-14 08:00,2013-01-30 17:00,2013-01-14 08:00,2013-01-30 17:00,2013-03-12 08:00,2013-03-28 17:00,,PT_Normal,,,,,mYMtuSYaSw2gftektTgjCw,,,,N,0,0,,,2013-02-16 15:51,2013-02-16 15:56,admin,admin
499693,6359,124351,13662,0,N,N,N,CP_Drtn,TT_Task,DT_FixedDUR2,TK_NotStart,DUKHENGP03DWSTSM5560,Footing Drawings-Sub,,256,0,80,0,20,20,80,0,0,0,,,,2013-01-08 08:00,2013-01-19 17:00,,2012-12-01 08:00,2012-12-11 17:00,2012-12-01 08:00,2012-12-11 17:00,2012-12-01 08:00,2012-12-11 17:00,2013-01-08 08:00,2013-01-19 17:00,,PT_Normal,,,,,retbBcIQTTqwhOxXyoij3w,,,,N,0,0,,,2013-02-16 15:51,2013-02-16 15:56,admin,admin
499694,6359,124351,13662,0,N,N,N,CP_Drtn,TT_Task,DT_FixedDUR2,TK_NotStart,DUKHENGP03DWSTSM5570,Grade Beam & Slab Drawings-Sub,,384,0,120,0,30,30,120,0,0,0,,,,2013-02-03 08:00,2013-02-20 17:00,,2012-12-08 08:00,2012-12-25 17:00,2012-12-08 08:00,2012-12-25 17:00,2012-12-08 08:00,2012-12-25 17:00,2013-02-03 08:00,2013-02-20 17:00,,PT_Normal,,,,,ONGt3kCPSvOA6XVldi9fMw,,,,N,0,0,,,2013-02-16 15:51,2013-02-16 15:56,admin,admin
499695,6359,124351,13662,0,N,N,N,CP_Drtn,TT_Task,DT_FixedDUR2,TK_NotStart,DUKHENGP03DWSTSM5580,Column Drawings-Sub,,384,0,120,0,30,30,120,0,0,0,,,,2013-02-10 08:00,2013-02-27 17:00,,2012-12-15 08:00,2013-01-01 17:00,2012-12-15 08:00,2013-01-01 17:00,2012-12-15 08:00,2013-01-01 17:00,2013-02-10 08:00,2013-02-27 17:00,,PT_Normal,,,,,mqbV0OO8QUOp1xPf2a5rmw,,,,N,0,0,,,2013-02-16 15:51,2013-02-16 15:56,admin,admin
499696,6359,124351,13662,0,N,N,N,CP_Drtn,TT_Task,DT_FixedDUR2,TK_NotStart,DUKHENGP03DWSTSM5590,GF Beams & Slabs Drawings-Sub,,384,0,120,0,30,30,120,0,0,0,,,,2013-02-23 08:00,2013-03-11 17:00,,2012-12-27 08:00,2013-01-13 17:00,2012-12-27 08:00,2013-01-13 17:00,2012-12-27 08:00,2013-01-13 17:00,2013-02-23 08:00,2013-03-11 17:00,,PT_Normal,,,,,XkBH0MsGQgesYX6Dn6KM4w,,,,N,0,0,,,2013-02-16 15:51,2013-02-16 15:56,admin,admin
499697,6359,124354,13662,0,N,N,N,CP_Drtn,TT_Mile,DT_FixedDUR2,TK_NotStart,DUKHMOBP2APS00002140,Receiving of Site Instruction,,704,0,0,0,0,0,0,0,0,0,,,,2013-03-11 08:00,2013-03-11 08:00,,2012-11-26 08:00,2012-11-26 08:00,2012-11-26 08:00,2012-11-26 08:00,2012-11-26 08:00,2012-11-26 08:00,2013-03-11 08:00,2013-03-11 08:00,,PT_Normal,,,,,Tn3q5BGORyiDLQBRdDBQsQ,,,,N,0,0,,,2013-02-16 15:51,2013-02-16 15:56,admin,admin
499698,6359,124354,13662,0,N,N,N,CP_Drtn,TT_Task,DT_FixedDUR2,TK_NotStart,DUKHMOBP2APS00002145,Finalization of Subcontractor,,944,0,168,0,0,0,168,0,0,0,,,,2013-04-15 08:00,2013-05-08 17:00,,2012-11-26 08:00,2012-12-20 17:00,2012-11-26 08:00,2012-12-20 17:00,2012-11-26 08:00,2012-12-20 17:00,2013-04-15 08:00,2013-05-08 17:00,,PT_Normal,,,,,DCjNjJcZQBSN4sCv7z5RNQ,,,,N,0,0,,,2013-02-16 15:51,2013-02-16 15:56,admin,admin
499699,6359,124354,13662,0,N,N,N,CP_Drtn,TT_Task,DT_FixedDUR2,TK_NotStart,DUKHMOBP2APS00002150,Submission of Cost Proposal,,944,0,56,0,0,0,56,0,0,0,,,,2013-05-09 08:00,2013-05-16 17:00,,2012-12-22 08:00,2012-12-29 17:00,2012-12-22 08:00,2012-12-29 17:00,2012-12-22 08:00,2012-12-29 17:00,2013-05-09 08:00,2013-05-16 17:00,,PT_Normal,,,,,L/dlAWyYQBK4OJBUOqBYxg,,,,N,0,0,,,2013-02-16 15:51,2013-02-16 15:56,admin,admin
499700,6359,124354,13662,0,N,N,N,CP_Drtn,TT_Task,DT_FixedDUR2,TK_NotStart,DUKHMOBP2APS00002155,Approval of Cost Proposal,,944,0,240,0,0,0,240,0,0,0,,,,2013-05-18 08:00,2013-06-20 17:00,,2012-12-30 08:00,2013-02-02 17:00,2012-12-30 08:00,2013-02-02 17:00,2012-12-30 08:00,2013-02-02 17:00,2013-05-18 08:00,2013-06-20 17:00,,PT_Normal,,,,,zLhiqYAiSjuJaxyEaSeyrQ,,,,N,0,0,,,2013-02-16 15:51,2013-02-16 15:56,admin,admin
499701,6359,124354,13662,0,N,N,N,CP_Drtn,TT_FinMile,DT_FixedDrtn,TK_NotStart,DUKHMOBP2APS00002160,Receiving of Variation Order,,944,0,0,0,0,0,0,0,0,0,,,,2013-06-20 17:00,2013-06-20 17:00,,2013-02-02 17:00,2013-02-02 17:00,2013-02-02 17:00,2013-02-02 17:00,2013-02-02 17:00,2013-02-02 17:00,2013-06-20 17:00,2013-06-20 17:00,,PT_Normal,,,,,NCz/r29HThKoMhqALHYInA,,,,N,0,0,,,2013-02-16 15:51,2013-02-16 15:56,admin,admin
499702,6359,124354,13662,0,N,N,N,CP_Drtn,TT_Task,DT_FixedDUR2,TK_NotStart,DUKHMOBP2APS00002165,Engineering & Procurement,,944,584,960,0,0,0,960,0,0,0,,,,2013-06-22 08:00,2013-11-13 17:00,,2013-02-03 08:00,2013-06-23 17:00,2013-02-03 08:00,2013-06-23 17:00,2013-02-03 08:00,2013-06-23 17:00,2013-06-22 08:00,2013-11-13 17:00,,PT_Normal,,,,,KJr7VMb5R5SAApUkFQiLig,,,,N,0,0,,,2013-02-16 15:51,2013-02-16 15:56,admin,admin
499703,6359,124354,13662,0,N,N,N,CP_Drtn,TT_Task,DT_FixedDUR2,TK_NotStart,DUKHMOBP2APS00002170,Commencement of Construction Work,,360,88,1440,0,0,0,1440,0,0,0,,,,2013-11-14 08:00,2014-06-14 17:00,,2013-09-21 08:00,2014-04-22 17:00,2013-09-21 08:00,2014-04-22 17:00,2013-09-21 08:00,2014-04-22 17:00,2013-11-14 08:00,2014-06-14 17:00,,PT_Normal,,,,,7YG5VdG4RJix0Lg5vbTrFg,,,,N,0,0,,,2013-02-16 15:51,2013-02-16 15:56,admin,admin
499704,6359,124355,13662,0,N,N,N,CP_Drtn,TT_Mile,DT_FixedDUR2,TK_NotStart,DUKHMOBP1BPS00002070,Receiving of Site Instruction,,584,0,0,0,0,0,0,0,0,0,,,,2013-02-21 08:00,2013-02-21 08:00,,2012-11-26 08:00,2012-11-26 08:00,2012-11-26 08:00,2012-11-26 08:00,2012-11-26 08:00,2012-11-26 08:00,2013-02-21 08:00,2013-02-21 08:00,,PT_Normal,,,,,SkmogfopTdSUeyVA4vXsAw,,,,N,0,0,,,2013-02-16 15:51,2013-02-16 15:56,admin,admin
499705,6359,124355,13662,0,N,N,N,CP_Drtn,TT_Task,DT_FixedDUR2,TK_NotStart,DUKHMOBP1BPS00002075,Finalization of Subcontractor,,640,0,168,0,0,0,168,0,0,0,,,,2013-03-02 08:00,2013-03-25 17:00,,2012-11-26 08:00,2012-12-20 17:00,2012-11-26 08:00,2012-12-20 17:00,2012-11-26 08:00,2012-12-20 17:00,2013-03-02 08:00,2013-03-25 17:00,,PT_Normal,,,,,Cr0b5UeHQTew8OvXplNLYw,,,,N,0,0,,,2013-02-16 15:51,2013-02-16 15:56,admin,admin
499706,6359,124355,13662,0,N,N,N,CP_Drtn,TT_Task,DT_FixedDUR2,TK_NotStart,DUKHMOBP1BPS00002080,Submission of Cost Proposal,,640,0,56,0,0,0,56,0,0,0,,,,2013-03-26 08:00,2013-04-02 17:00,,2012-12-22 08:00,2012-12-29 17:00,2012-12-22 08:00,2012-12-29 17:00,2012-12-22 08:00,2012-12-29 17:00,2013-03-26 08:00,2013-04-02 17:00,,PT_Normal,,,,,MDCk3v7qQYmsG3GSm2BGEw,,,,N,0,0,,,2013-02-16 15:51,2013-02-16 15:56,admin,admin
499707,6359,124355,13662,0,N,N,N,CP_Drtn,TT_Task,DT_FixedDUR2,TK_NotStart,DUKHMOBP1BPS00002085,Approval of Cost Proposal,,640,0,240,0,0,0,240,0,0,0,,,,2013-04-03 08:00,2013-05-07 17:00,,2012-12-30 08:00,2013-02-02 17:00,2012-12-30 08:00,2013-02-02 17:00,2012-12-30 08:00,2013-02-02 17:00,2013-04-03 08:00,2013-05-07 17:00,,PT_Normal,,,,,0QUyTZ9XT4+vulAqxuUcyQ,,,,N,0,0,,,2013-02-16 15:51,2013-02-16 15:56,admin,admin
499708,6359,124355,13662,0,N,N,N,CP_Drtn,TT_FinMile,DT_FixedDrtn,TK_NotStart,DUKHMOBP1BPS00002090,Receiving of Variation Order,,640,0,0,0,0,0,0,0,0,0,,,,2013-05-07 17:00,2013-05-07 17:00,,2013-02-02 17:00,2013-02-02 17:00,2013-02-02 17:00,2013-02-02 17:00,2013-02-02 17:00,2013-02-02 17:00,2013-05-07 17:00,2013-05-07 17:00,,PT_Normal,,,,,RgYwbcyKSfqC/LM5JCMRnw,,,,N,0,0,,,2013-02-16 15:51,2013-02-16 15:56,admin,admin
499709,6359,124355,13662,0,N,N,N,CP_Drtn,TT_Task,DT_FixedDUR2,TK_NotStart,DUKHMOBP1BPS00002095,Engineering & Procurement,,640,472,1680,0,0,0,1680,0,0,0,,,,2013-05-08 08:00,2014-01-14 17:00,,2013-02-03 08:00,2013-10-09 17:00,2013-02-03 08:00,2013-10-09 17:00,2013-02-03 08:00,2013-10-09 17:00,2013-05-08 08:00,2014-01-14 17:00,,PT_Normal,,,,,eUDuAMD+SlaK/D0LP2FqJw,,,,N,0,0,,,2013-02-16 15:51,2013-02-16 15:56,admin,admin
499710,6359,124355,13662,0,N,N,N,CP_Drtn,TT_Task,DT_FixedDUR2,TK_NotStart,DUKHMOBP1BPS00002100,Commencement of Construction Work,,168,144,2240,0,0,0,2240,0,0,0,,,,2014-01-15 08:00,2014-12-14 17:00,,2013-12-22 08:00,2014-11-19 17:00,2013-12-22 08:00,2014-11-19 17:00,2013-12-22 08:00,2014-11-19 17:00,2014-01-15 08:00,2014-12-14 17:00,,PT_Normal,,,,,QLwMscttQbuZgVGHEYhKbA,,,,N,0,0,,,2013-02-16 15:51,2013-02-16 15:56,admin,admin
499711,6359,124356,13662,0,N,N,N,CP_Drtn,TT_Task,DT_FixedDUR2,TK_NotStart,DUKHMOBP03PS00002295,Approval of Cost Proposal,,784,0,240,0,0,0,240,0,0,0,,,,2013-04-24 08:00,2013-05-28 17:00,,2012-12-30 08:00,2013-02-02 17:00,2012-12-30 08:00,2013-02-02 17:00,2012-12-30 08:00,2013-02-02 17:00,2013-04-24 08:00,2013-05-28 17:00,,PT_Normal,,,,,WfsoKsroQROLi7S6OO/25Q,,,,N,0,0,,,2013-02-16 15:51,2013-02-16 15:56,admin,admin
499712,6359,124356,13662,0,N,N,N,CP_Drtn,TT_FinMile,DT_FixedDrtn,TK_NotStart,DUKHMOBP03PS00002300,Receiving of Variation Order,,784,0,0,0,0,0,0,0,0,0,,,,2013-05-28 17:00,2013-05-28 17:00,,2013-02-02 17:00,2013-02-02 17:00,2013-02-02 17:00,2013-02-02 17:00,2013-02-02 17:00,2013-02-02 17:00,2013-05-28 17:00,2013-05-28 17:00,,PT_Normal,,,,,y/KScyISRyeRWSwNPMPC0Q,,,,N,0,0,,,2013-02-16 15:51,2013-02-16 15:56,admin,admin
499713,6359,124356,13662,0,N,N,N,CP_Drtn,TT_Task,DT_FixedDUR2,TK_NotStart,DUKHMOBP03PS00002305,Engineering & Procurement,,784,760,1200,0,0,0,1200,0,0,0,,,,2013-05-29 08:00,2013-11-25 17:00,,2013-02-03 08:00,2013-07-28 17:00,2013-02-03 08:00,2013-07-28 17:00,2013-02-03 08:00,2013-07-28 17:00,2013-05-29 08:00,2013-11-25 17:00,,PT_Normal,,,,,ZdaFAZzUQRGnjUiHen8LTw,,,,N,0,0,,,2013-02-16 15:51,2013-02-16 15:56,admin,admin
499714,6359,124356,13662,0,N,N,N,CP_Drtn,TT_Task,DT_FixedDUR2,TK_NotStart,DUKHMOBP03PS00002310,Commencement of Construction Work,,24,24,960,0,0,0,960,0,0,0,,,,2013-11-26 08:00,2014-04-16 17:00,,2013-11-23 08:00,2014-04-13 17:00,2013-11-23 08:00,2014-04-13 17:00,2013-11-23 08:00,2014-04-13 17:00,2013-11-26 08:00,2014-04-16 17:00,,PT_Normal,,,,,DN9YTHH4SZ+94aXkK9+HIg,,,,N,0,0,,,2013-02-16 15:51,2013-02-16 15:56,admin,admin
499715,6359,124356,13662,0,N,N,N,CP_Drtn,TT_Mile,DT_FixedDUR2,TK_NotStart,DUKHMOBP03PS00002280,Receiving of Site Instruction,,312,0,0,0,0,0,0,0,0,0,,,,2013-01-12 08:00,2013-01-12 08:00,,2012-11-26 08:00,2012-11-26 08:00,2012-11-26 08:00,2012-11-26 08:00,2012-11-26 08:00,2012-11-26 08:00,2013-01-12 08:00,2013-01-12 08:00,,PT_Normal,,,,,5W/3LfFhSr2ZQmFa6wcU2g,,,,N,0,0,,,2013-02-16 15:51,2013-02-16 15:56,admin,admin
499716,6359,124356,13662,0,N,N,N,CP_Drtn,TT_Task,DT_FixedDUR2,TK_NotStart,DUKHMOBP03PS00002285,Finalization of Subcontractor,,784,0,168,0,0,0,168,0,0,0,,,,2013-03-23 08:00,2013-04-15 17:00,,2012-11-26 08:00,2012-12-20 17:00,2012-11-26 08:00,2012-12-20 17:00,2012-11-26 08:00,2012-12-20 17:00,2013-03-23 08:00,2013-04-15 17:00,,PT_Normal,,,,,ePsrU9DVSMiIM7DjzTzETQ,,,,N,0,0,,,2013-02-16 15:51,2013-02-16 15:56,admin,admin
499717,6359,124356,13662,0,N,N,N,CP_Drtn,TT_Task,DT_FixedDUR2,TK_NotStart,DUKHMOBP03PS00002290,Submission of Cost Proposal,,784,0,56,0,0,0,56,0,0,0,,,,2013-04-16 08:00,2013-04-23 17:00,,2012-12-22 08:00,2012-12-29 17:00,2012-12-22 08:00,2012-12-29 17:00,2012-12-22 08:00,2012-12-29 17:00,2013-04-16 08:00,2013-04-23 17:00,,PT_Normal,,,,,Z2Yr++meR/GgayYojTYqmA,,,,N,0,0,,,2013-02-16 15:51,2013-02-16 15:56,admin,admin
499718,6359,124357,13662,0,N,N,N,CP_Drtn,TT_Mile,DT_FixedDUR2,TK_NotStart,DUKHMOBI2BPS00002245,Receiving of Site Instruction,,384,0,0,0,0,0,0,0,0,0,,,,2013-01-22 08:00,2013-01-22 08:00,,2012-11-26 08:00,2012-11-26 08:00,2012-11-26 08:00,2012-11-26 08:00,2012-11-26 08:00,2012-11-26 08:00,2013-01-22 08:00,2013-01-22 08:00,,PT_Normal,,,,,f4hggcWTRvuPmF4PXkqg5A,,,,N,0,0,,,2013-02-16 15:51,2013-02-16 15:56,admin,admin
499719,6359,124357,13662,0,N,N,N,CP_Drtn,TT_Task,DT_FixedDUR2,TK_NotStart,DUKHMOBI2BPS00002250,Finalization of Subcontractor,,384,0,168,0,0,0,168,0,0,0,,,,2013-01-22 08:00,2013-02-16 17:00,,2012-11-26 08:00,2012-12-20 17:00,2012-11-26 08:00,2012-12-20 17:00,2012-11-26 08:00,2012-12-20 17:00,2013-01-22 08:00,2013-02-16 17:00,,PT_Normal,,,,,4bCKBxYuTjaazy8aiU8GXA,,,,N,0,0,,,2013-02-16 15:51,2013-02-16 15:56,admin,admin
499720,6359,124357,13662,0,N,N,N,CP_Drtn,TT_Task,DT_FixedDUR2,TK_NotStart,DUKHMOBI2BPS00002255,Submission of Cost Proposal,,384,0,56,0,0,0,56,0,0,0,,,,2013-02-17 08:00,2013-02-24 17:00,,2012-12-22 08:00,2012-12-29 17:00,2012-12-22 08:00,2012-12-29 17:00,2012-12-22 08:00,2012-12-29 17:00,2013-02-17 08:00,2013-02-24 17:00,,PT_Normal,,,,,JUsJu/i1SWCmZzhtYON5KQ,,,,N,0,0,,,2013-02-16 15:51,2013-02-16 15:56,admin,admin
499721,6359,124357,13662,0,N,N,N,CP_Drtn,TT_Task,DT_FixedDUR2,TK_NotStart,DUKHMOBI2BPS00002260,Approval of Cost Proposal,,384,0,240,0,0,0,240,0,0,0,,,,2013-02-25 08:00,2013-03-31 17:00,,2012-12-30 08:00,2013-02-02 17:00,2012-12-30 08:00,2013-02-02 17:00,2012-12-30 08:00,2013-02-02 17:00,2013-02-25 08:00,2013-03-31 17:00,,PT_Normal,,,,,q/WwNJOcSHia+BbgcsAXRg,,,,N,0,0,,,2013-02-16 15:51,2013-02-16 15:56,admin,admin
499722,6359,124357,13662,0,N,N,N,CP_Drtn,TT_FinMile,DT_FixedDrtn,TK_NotStart,DUKHMOBI2BPS00002265,Receiving of Variation Order,,384,0,0,0,0,0,0,0,0,0,,,,2013-03-31 17:00,2013-03-31 17:00,,2013-02-02 17:00,2013-02-02 17:00,2013-02-02 17:00,2013-02-02 17:00,2013-02-02 17:00,2013-02-02 17:00,2013-03-31 17:00,2013-03-31 17:00,,PT_Normal,,,,,XHDGe1GMQjmiYI8sj6nNbQ,,,,N,0,0,,,2013-02-16 15:51,2013-02-16 15:56,admin,admin
499723,6359,124357,13662,0,N,N,N,CP_Drtn,TT_Task,DT_FixedDUR2,TK_NotStart,DUKHMOBI2BPS00002270,Engineering & Procurement,,384,96,1120,0,0,0,1120,0,0,0,,,,2013-04-01 08:00,2013-09-14 17:00,,2013-02-03 08:00,2013-07-16 17:00,2013-02-03 08:00,2013-07-16 17:00,2013-02-03 08:00,2013-07-16 17:00,2013-04-01 08:00,2013-09-14 17:00,,PT_Normal,,,,,XOQGjwr+SdyNNmaJRZkKLQ,,,,N,0,0,,,2013-02-16 15:51,2013-02-16 15:56,admin,admin
499724,6359,124357,13662,0,N,N,N,CP_Drtn,TT_Task,DT_FixedDUR2,TK_NotStart,DUKHMOBI2BPS00002275,Commencement of Construction Work,,288,288,1840,0,0,0,1840,0,0,0,,,,2013-09-15 08:00,2014-06-14 17:00,,2013-07-31 08:00,2014-05-03 17:00,2013-07-31 08:00,2014-05-03 17:00,2013-07-31 08:00,2014-05-03 17:00,2013-09-15 08:00,2014-06-14 17:00,,PT_Normal,,,,,La9VGSNoQ2q0c2oX6R3YVQ,,,,N,0,0,,,2013-02-16 15:51,2013-02-16 15:56,admin,admin
499725,6359,124358,13662,0,N,N,N,CP_Drtn,TT_Mile,DT_FixedDUR2,TK_NotStart,DUKHMOBI1APS00002035,Receiving of Site Instruction,,368,0,0,0,0,0,0,0,0,0,,,,2013-01-20 08:00,2013-01-20 08:00,,2012-11-26 08:00,2012-11-26 08:00,2012-11-26 08:00,2012-11-26 08:00,2012-11-26 08:00,2012-11-26 08:00,2013-01-20 08:00,2013-01-20 08:00,,PT_Normal,,,,,2Sfu9a6vTKeK4sxIMJmYXw,,,,N,0,0,,,2013-02-16 15:51,2013-02-16 15:56,admin,admin
499726,6359,124358,13662,0,N,N,N,CP_Drtn,TT_Task,DT_FixedDUR2,TK_NotStart,DUKHMOBI1APS00002040,Finalization of Subcontractor,,368,0,168,0,0,0,168,0,0,0,,,,2013-01-20 08:00,2013-02-13 17:00,,2012-11-26 08:00,2012-12-20 17:00,2012-11-26 08:00,2012-12-20 17:00,2012-11-26 08:00,2012-12-20 17:00,2013-01-20 08:00,2013-02-13 17:00,,PT_Normal,,,,,8aCCZL6RSWSLLSQbUpeg/A,,,,N,0,0,,,2013-02-16 15:51,2013-02-16 15:56,admin,admin
499727,6359,124358,13662,0,N,N,N,CP_Drtn,TT_Task,DT_FixedDUR2,TK_NotStart,DUKHMOBI1APS00002045,Submission of Cost Proposal,,504,0,56,0,0,0,56,0,0,0,,,,2013-03-14 08:00,2013-03-21 17:00,,2012-12-30 08:00,2013-01-06 17:00,2012-12-30 08:00,2013-01-06 17:00,2012-12-30 08:00,2013-01-06 17:00,2013-03-14 08:00,2013-03-21 17:00,,PT_Normal,,,,,r0s5Jr+sSuqj4LXPGg3YBA,,,,N,0,0,,,2013-02-16 15:51,2013-02-16 15:56,admin,admin
499728,6359,124358,13662,0,N,N,N,CP_Drtn,TT_Task,DT_FixedDUR2,TK_NotStart,DUKHMOBI1APS00002050,Approval of Cost Proposal,,504,0,240,0,0,0,240,0,0,0,,,,2013-03-23 08:00,2013-04-25 17:00,,2013-01-07 08:00,2013-02-10 17:00,2013-01-07 08:00,2013-02-10 17:00,2013-01-07 08:00,2013-02-10 17:00,2013-03-23 08:00,2013-04-25 17:00,,PT_Normal,,,,,j9b+DeeeQtqjkTVX8TApUA,,,,N,0,0,,,2013-02-16 15:51,2013-02-16 15:56,admin,admin
499729,6359,124358,13662,0,N,N,N,CP_Drtn,TT_FinMile,DT_FixedDrtn,TK_NotStart,DUKHMOBI1APS00002055,Receiving of Variation Order,,504,0,0,0,0,0,0,0,0,0,,,,2013-04-25 17:00,2013-04-25 17:00,,2013-02-10 17:00,2013-02-10 17:00,2013-02-10 17:00,2013-02-10 17:00,2013-02-10 17:00,2013-02-10 17:00,2013-04-25 17:00,2013-04-25 17:00,,PT_Normal,,,,,qITXsBWhSNSSliX7ihThGw,,,,N,0,0,,,2013-02-16 15:51,2013-02-16 15:56,admin,admin
499730,6359,124358,13662,0,N,N,N,CP_Drtn,TT_Task,DT_FixedDUR2,TK_NotStart,DUKHMOBI1APS00002060,Engineering & Procurement,,504,0,1440,0,0,0,1440,0,0,0,,,,2013-04-27 08:00,2013-11-27 17:00,,2013-02-11 08:00,2013-09-12 17:00,2013-02-11 08:00,2013-09-12 17:00,2013-02-11 08:00,2013-09-12 17:00,2013-04-27 08:00,2013-11-27 17:00,,PT_Normal,,,,,oUH4NJwbSauqgFsK4fKRdA,,,,N,0,0,,,2013-02-16 15:51,2013-02-16 15:56,admin,admin
499731,6359,124358,13662,0,N,N,N,CP_Drtn,TT_Task,DT_FixedDUR2,TK_NotStart,DUKHMOBI1APS00002065,Commencement of Construction Work,,504,504,2560,0,0,0,2560,0,0,0,,,,2013-11-28 08:00,2014-12-14 17:00,,2013-09-14 08:00,2014-09-29 17:00,2013-09-14 08:00,2014-09-29 17:00,2013-09-14 08:00,2014-09-29 17:00,2013-11-28 08:00,2014-12-14 17:00,,PT_Normal,,,,,NZiFFVsPRKaI/oyN3XKz3w,,,,N,0,0,,,2013-02-16 15:51,2013-02-16 15:56,admin,admin
499732,6359,124358,13662,0,N,N,N,CP_Drtn,TT_Task,DT_FixedDUR2,TK_NotStart,DUKHMOBI1APS00002043,Submission & Approval of General Site Layout,,368,0,168,0,0,0,168,0,0,0,,,,2013-01-28 08:00,2013-02-21 17:00,,2012-12-04 08:00,2012-12-29 17:00,2012-12-04 08:00,2012-12-29 17:00,2012-12-04 08:00,2012-12-29 17:00,2013-01-28 08:00,2013-02-21 17:00,,PT_Normal,,,,,G1EiYiwiQF2CNOjjA8OdBw,,,,N,0,0,,,2013-02-16 15:51,2013-02-16 15:56,admin,admin
499733,6359,124358,13662,0,N,N,N,CP_Drtn,TT_Task,DT_FixedDUR2,TK_NotStart,DUKHMOBI1APS00001000,Submission of New Site Design Layout,,0,0,112,0,0,0,112,0,0,0,,,,2012-12-01 08:00,2012-12-16 17:00,,2012-12-01 08:00,2012-12-16 17:00,2012-12-01 08:00,2012-12-16 17:00,2012-12-01 08:00,2012-12-16 17:00,2012-12-01 08:00,2012-12-16 17:00,,PT_Normal,,,,,44aQbJEYQ1CQ91RcBmOh3w,bRhhc9wzTlCfDlhtCkRJTg,,,Y,0,0,,,2013-02-16 15:51,2013-02-16 15:56,admin,admin
499734,6359,124358,13662,0,N,N,N,CP_Drtn,TT_Task,DT_FixedDUR2,TK_NotStart,DUKHMOBI1APS00001200,Approval of New Site Design Layout,,0,0,168,0,0,0,168,0,0,0,,,,2012-12-17 08:00,2013-01-10 17:00,,2012-12-17 08:00,2013-01-10 17:00,2012-12-17 08:00,2013-01-10 17:00,2012-12-17 08:00,2013-01-10 17:00,2012-12-17 08:00,2013-01-10 17:00,,PT_Normal,,,,,rygNNHOHQLmQwbMuHuGLUw,mUa/mwVkL06WZ2VwS6c03g,,,Y,0,0,,,2013-02-16 15:51,2013-02-16 15:56,admin,admin
499735,6359,124358,13662,0,N,N,N,CP_Drtn,TT_Task,DT_FixedDUR2,TK_NotStart,DUKHMOBI1APS00001225,Submission of Finished Floor Level,,0,0,56,0,0,0,56,0,0,0,,,,2013-01-12 08:00,2013-01-19 17:00,,2013-01-12 08:00,2013-01-19 17:00,2013-01-12 08:00,2013-01-19 17:00,2013-01-12 08:00,2013-01-19 17:00,2013-01-12 08:00,2013-01-19 17:00,,PT_Normal,,,,,fOov3uk5QImF8vTG2PRVIA,mUa/mwVkL06WZ2VwS6c03g,,,Y,0,0,,,2013-02-16 15:51,2013-02-16 15:56,admin,admin
499736,6359,124358,13662,0,N,N,N,CP_Drtn,TT_Task,DT_FixedDUR2,TK_NotStart,DUKHMOBI1APS00001250,Approval of Finished Floor Level,,0,0,168,0,0,0,168,0,0,0,,,,2013-01-20 08:00,2013-02-13 17:00,,2013-01-20 08:00,2013-02-13 17:00,2013-01-20 08:00,2013-02-13 17:00,2013-01-20 08:00,2013-02-13 17:00,2013-01-20 08:00,2013-02-13 17:00,,PT_Normal,,,,,Vk40iV5YRyaUjAGAEaxmhQ,1bxI7mBXcUGHOwncrhw4Ig,,,Y,0,0,,,2013-02-16 15:51,2013-02-16 15:56,admin,admin
499737,6359,124358,13662,0,N,N,N,CP_Drtn,TT_Task,DT_FixedDUR2,TK_NotStart,DUKHMOBI1APS00001300,Submission of New Site Design MEP Services Layout,,712,0,112,0,0,0,112,0,0,0,,,,2013-04-27 08:00,2013-05-12 17:00,,2013-01-12 08:00,2013-01-27 17:00,2013-01-12 08:00,2013-01-27 17:00,2013-01-12 08:00,2013-01-27 17:00,2013-04-27 08:00,2013-05-12 17:00,,PT_Normal,,,,,Uma2XfeLQ8SITVfsO1wy/A,mUa/mwVkL06WZ2VwS6c03g,,,N,0,0,,,2013-02-16 15:51,2013-02-16 16:17,admin,admin
499738,6359,124358,13662,0,N,N,N,CP_Drtn,TT_Task,DT_FixedDUR2,TK_NotStart,DUKHMOBI1APS00001400,Approval of New Site Design MEP Services Layout,,712,352,168,0,0,0,168,0,0,0,,,,2013-05-13 08:00,2013-06-05 17:00,,2013-01-28 08:00,2013-02-21 17:00,2013-01-28 08:00,2013-02-21 17:00,2013-01-28 08:00,2013-02-21 17:00,2013-05-13 08:00,2013-06-05 17:00,,PT_Normal,,,,,jAAXMisNTE+d1sFIiD6fyA,1bxI7mBXcUGHOwncrhw4Ig,,,N,0,0,,,2013-02-16 15:51,2013-02-16 16:17,admin,admin
499739,6359,124359,13662,0,N,N,N,CP_Drtn,TT_Mile,DT_FixedDUR2,TK_NotStart,DUKHMOBP2BPS00002210,Receiving of Site Instruction,,384,0,0,0,0,0,0,0,0,0,,,,2013-01-22 08:00,2013-01-22 08:00,,2012-11-26 08:00,2012-11-26 08:00,2012-11-26 08:00,2012-11-26 08:00,2012-11-26 08:00,2012-11-26 08:00,2013-01-22 08:00,2013-01-22 08:00,,PT_Normal,,,,,CHG1xONoRt6Ig3vbsUBNOA,,,,N,0,0,,,2013-02-16 15:51,2013-02-16 15:56,admin,admin
499740,6359,124359,13662,0,N,N,N,CP_Drtn,TT_Task,DT_FixedDUR2,TK_NotStart,DUKHMOBP2BPS00002215,Finalization of Subcontractor,,704,0,168,0,0,0,168,0,0,0,,,,2013-03-11 08:00,2013-04-03 17:00,,2012-11-26 08:00,2012-12-20 17:00,2012-11-26 08:00,2012-12-20 17:00,2012-11-26 08:00,2012-12-20 17:00,2013-03-11 08:00,2013-04-03 17:00,,PT_Normal,,,,,38onYNPrTDKobKm6NBTy0Q,,,,N,0,0,,,2013-02-16 15:51,2013-02-16 15:56,admin,admin
499741,6359,124359,13662,0,N,N,N,CP_Drtn,TT_Task,DT_FixedDUR2,TK_NotStart,DUKHMOBP2BPS00002220,Submission of Cost Proposal,,704,0,56,0,0,0,56,0,0,0,,,,2013-04-04 08:00,2013-04-11 17:00,,2012-12-22 08:00,2012-12-29 17:00,2012-12-22 08:00,2012-12-29 17:00,2012-12-22 08:00,2012-12-29 17:00,2013-04-04 08:00,2013-04-11 17:00,,PT_Normal,,,,,0tW0UkZwTUmAbVhXAkHJMQ,,,,N,0,0,,,2013-02-16 15:51,2013-02-16 15:56,admin,admin
499742,6359,124359,13662,0,N,N,N,CP_Drtn,TT_Task,DT_FixedDUR2,TK_NotStart,DUKHMOBP2BPS00002225,Approval of Cost Proposal,,704,0,240,0,0,0,240,0,0,0,,,,2013-04-13 08:00,2013-05-16 17:00,,2012-12-30 08:00,2013-02-02 17:00,2012-12-30 08:00,2013-02-02 17:00,2012-12-30 08:00,2013-02-02 17:00,2013-04-13 08:00,2013-05-16 17:00,,PT_Normal,,,,,fmVAn88HSu++I1Ywl9x6bw,,,,N,0,0,,,2013-02-16 15:51,2013-02-16 15:56,admin,admin
499743,6359,124359,13662,0,N,N,N,CP_Drtn,TT_FinMile,DT_FixedDrtn,TK_NotStart,DUKHMOBP2BPS00002230,Receiving of Variation Order,,704,0,0,0,0,0,0,0,0,0,,,,2013-05-16 17:00,2013-05-16 17:00,,2013-02-02 17:00,2013-02-02 17:00,2013-02-02 17:00,2013-02-02 17:00,2013-02-02 17:00,2013-02-02 17:00,2013-05-16 17:00,2013-05-16 17:00,,PT_Normal,,,,,iOoAO/oRQ7aenGvZyBfcfQ,,,,N,0,0,,,2013-02-16 15:51,2013-02-16 15:56,admin,admin
499744,6359,124359,13662,0,N,N,N,CP_Drtn,TT_Task,DT_FixedDUR2,TK_NotStart,DUKHMOBP2BPS00002235,Engineering & Procurement,,704,432,1200,0,0,0,1200,0,0,0,,,,2013-05-18 08:00,2013-11-13 17:00,,2013-02-03 08:00,2013-07-28 17:00,2013-02-03 08:00,2013-07-28 17:00,2013-02-03 08:00,2013-07-28 17:00,2013-05-18 08:00,2013-11-13 17:00,,PT_Normal,,,,,5ZX9SOYQTSesDrDB5qSVQQ,,,,N,0,0,,,2013-02-16 15:51,2013-02-16 15:56,admin,admin
499745,6359,124359,13662,0,N,N,N,CP_Drtn,TT_Task,DT_FixedDUR2,TK_NotStart,DUKHMOBP2BPS00002240,Commencement of Construction Work,,272,272,1440,0,0,0,1440,0,0,0,,,,2013-11-14 08:00,2014-06-14 17:00,,2013-10-03 08:00,2014-05-05 17:00,2013-10-03 08:00,2014-05-05 17:00,2013-10-03 08:00,2014-05-05 17:00,2013-11-14 08:00,2014-06-14 17:00,,PT_Normal,,,,,53hKxg8nTTujPCo7qpx3Dw,,,,N,0,0,,,2013-02-16 15:51,2013-02-16 15:56,admin,admin
499746,6359,124360,13662,0,N,N,N,CP_Drtn,TT_Mile,DT_FixedDUR2,TK_NotStart,DUKHMOBI2APS00002175,Receiving of Site Instruction,,704,0,0,0,0,0,0,0,0,0,,,,2013-03-11 08:00,2013-03-11 08:00,,2012-11-26 08:00,2012-11-26 08:00,2012-11-26 08:00,2012-11-26 08:00,2012-11-26 08:00,2012-11-26 08:00,2013-03-11 08:00,2013-03-11 08:00,,PT_Normal,,,,,YYBlsMOQSZ+xXZQF1PmWWg,,,,N,0,0,,,2013-02-16 15:51,2013-02-16 15:56,admin,admin
499747,6359,124360,13662,0,N,N,N,CP_Drtn,TT_Task,DT_FixedDUR2,TK_NotStart,DUKHMOBI2APS00002180,Finalization of Subcontractor,,704,0,168,0,0,0,168,0,0,0,,,,2013-03-11 08:00,2013-04-03 17:00,,2012-11-26 08:00,2012-12-20 17:00,2012-11-26 08:00,2012-12-20 17:00,2012-11-26 08:00,2012-12-20 17:00,2013-03-11 08:00,2013-04-03 17:00,,PT_Normal,,,,,yH9TM9RBSseAbV3LEaPdfA,,,,N,0,0,,,2013-02-16 15:51,2013-02-16 15:56,admin,admin
499748,6359,124360,13662,0,N,N,N,CP_Drtn,TT_Task,DT_FixedDUR2,TK_NotStart,DUKHMOBI2APS00002185,Submission of Cost Proposal,,704,0,56,0,0,0,56,0,0,0,,,,2013-04-04 08:00,2013-04-11 17:00,,2012-12-22 08:00,2012-12-29 17:00,2012-12-22 08:00,2012-12-29 17:00,2012-12-22 08:00,2012-12-29 17:00,2013-04-04 08:00,2013-04-11 17:00,,PT_Normal,,,,,bRof1KunRh6dwpoAUOedzQ,,,,N,0,0,,,2013-02-16 15:51,2013-02-16 15:56,admin,admin
499749,6359,124360,13662,0,N,N,N,CP_Drtn,TT_Task,DT_FixedDUR2,TK_NotStart,DUKHMOBI2APS00002190,Approval of Cost Proposal,,704,0,240,0,0,0,240,0,0,0,,,,2013-04-13 08:00,2013-05-16 17:00,,2012-12-30 08:00,2013-02-02 17:00,2012-12-30 08:00,2013-02-02 17:00,2012-12-30 08:00,2013-02-02 17:00,2013-04-13 08:00,2013-05-16 17:00,,PT_Normal,,,,,lgeLu48hRiOuHKea1CB/7A,,,,N,0,0,,,2013-02-16 15:51,2013-02-16 15:56,admin,admin
499750,6359,124360,13662,0,N,N,N,CP_Drtn,TT_FinMile,DT_FixedDrtn,TK_NotStart,DUKHMOBI2APS00002195,Receiving of Variation Order,,704,0,0,0,0,0,0,0,0,0,,,,2013-05-16 17:00,2013-05-16 17:00,,2013-02-02 17:00,2013-02-02 17:00,2013-02-02 17:00,2013-02-02 17:00,2013-02-02 17:00,2013-02-02 17:00,2013-05-16 17:00,2013-05-16 17:00,,PT_Normal,,,,,cFX/7ZCXTWOisRUgGcEX/Q,,,,N,0,0,,,2013-02-16 15:51,2013-02-16 15:56,admin,admin
499751,6359,124360,13662,0,N,N,N,CP_Drtn,TT_Task,DT_FixedDUR2,TK_NotStart,DUKHMOBI2APS00002200,Engineering & Procurement,,704,424,960,0,0,0,960,0,0,0,,,,2013-05-18 08:00,2013-10-07 17:00,,2013-02-03 08:00,2013-06-23 17:00,2013-02-03 08:00,2013-06-23 17:00,2013-02-03 08:00,2013-06-23 17:00,2013-05-18 08:00,2013-10-07 17:00,,PT_Normal,,,,,Dx3q3P3HQBu+lOOHS99ubA,,,,N,0,0,,,2013-02-16 15:51,2013-02-16 15:56,admin,admin
499752,6359,124360,13662,0,N,N,N,CP_Drtn,TT_Task,DT_FixedDUR2,TK_NotStart,DUKHMOBI2APS00002205,Commencement of Construction Work,,280,8,1680,0,0,0,1680,0,0,0,,,,2013-10-08 08:00,2014-06-14 17:00,,2013-08-28 08:00,2014-05-04 17:00,2013-08-28 08:00,2014-05-04 17:00,2013-08-28 08:00,2014-05-04 17:00,2013-10-08 08:00,2014-06-14 17:00,,PT_Normal,,,,,2W7EY6FzQQadjliLnpv3WA,,,,N,0,0,,,2013-02-16 15:51,2013-02-16 15:56,admin,admin
499753,6359,124361,13662,0,N,N,N,CP_Drtn,TT_Mile,DT_FixedDUR2,TK_NotStart,DUKHMOBI03PS00002315,Receiving of Site Instruction,,312,0,0,0,0,0,0,0,0,0,,,,2013-01-12 08:00,2013-01-12 08:00,,2012-11-26 08:00,2012-11-26 08:00,2012-11-26 08:00,2012-11-26 08:00,2012-11-26 08:00,2012-11-26 08:00,2013-01-12 08:00,2013-01-12 08:00,,PT_Normal,,,,,36vfoOGySRuKAuHh31+HYA,,,,N,0,0,,,2013-02-16 15:51,2013-02-16 15:56,admin,admin
499754,6359,124361,13662,0,N,N,N,CP_Drtn,TT_Task,DT_FixedDUR2,TK_NotStart,DUKHMOBI03PS00002320,Finalization of Subcontractor,,312,0,240,0,0,0,240,0,0,0,,,,2013-01-12 08:00,2013-02-16 17:00,,2012-11-26 08:00,2012-12-31 17:00,2012-11-26 08:00,2012-12-31 17:00,2012-11-26 08:00,2012-12-31 17:00,2013-01-12 08:00,2013-02-16 17:00,,PT_Normal,,,,,Lmk6VuY4TeiW3fhcZ/uH7g,,,,N,0,0,,,2013-02-16 15:51,2013-02-16 15:56,admin,admin
499755,6359,124361,13662,0,N,N,N,CP_Drtn,TT_Task,DT_FixedDUR2,TK_NotStart,DUKHMOBI03PS00002325,Submission of Cost Proposal,,312,0,56,0,0,0,56,0,0,0,,,,2013-02-17 08:00,2013-02-24 17:00,,2013-01-01 08:00,2013-01-08 17:00,2013-01-01 08:00,2013-01-08 17:00,2013-01-01 08:00,2013-01-08 17:00,2013-02-17 08:00,2013-02-24 17:00,,PT_Normal,,,,,5IwxHMLBTYG9LNhLbmjw0A,,,,N,0,0,,,2013-02-16 15:51,2013-02-16 15:56,admin,admin
499756,6359,124361,13662,0,N,N,N,CP_Drtn,TT_Task,DT_FixedDUR2,TK_NotStart,DUKHMOBI03PS00002330,Approval of Cost Proposal,,312,0,240,0,0,0,240,0,0,0,,,,2013-02-25 08:00,2013-03-31 17:00,,2013-01-09 08:00,2013-02-13 17:00,2013-01-09 08:00,2013-02-13 17:00,2013-01-09 08:00,2013-02-13 17:00,2013-02-25 08:00,2013-03-31 17:00,,PT_Normal,,,,,FV5XH/fcRuCIYOK0kUxGog,,,,N,0,0,,,2013-02-16 15:51,2013-02-16 15:56,admin,admin
499757,6359,124361,13662,0,N,N,N,CP_Drtn,TT_FinMile,DT_FixedDrtn,TK_NotStart,DUKHMOBI03PS00002335,Receiving of Variation Order,,312,0,0,0,0,0,0,0,0,0,,,,2013-03-31 17:00,2013-03-31 17:00,,2013-02-13 17:00,2013-02-13 17:00,2013-02-13 17:00,2013-02-13 17:00,2013-02-13 17:00,2013-02-13 17:00,2013-03-31 17:00,2013-03-31 17:00,,PT_Normal,,,,,2U2Dq1C2R+GzMYGO2yfQ4w,,,,N,0,0,,,2013-02-16 15:51,2013-02-16 15:56,admin,admin
499758,6359,124361,13662,0,N,N,N,CP_Drtn,TT_Task,DT_FixedDUR2,TK_NotStart,DUKHMOBI03PS00002340,Engineering & Procurement,,312,272,960,0,0,0,960,0,0,0,,,,2013-04-01 08:00,2013-08-21 17:00,,2013-02-14 08:00,2013-07-03 17:00,2013-02-14 08:00,2013-07-03 17:00,2013-02-14 08:00,2013-07-03 17:00,2013-04-01 08:00,2013-08-21 17:00,,PT_Normal,,,,,zuDPSbdnQQiKvwAbpVa+Vg,,,,N,0,0,,,2013-02-16 15:51,2013-02-16 15:56,admin,admin
499759,6359,124361,13662,0,N,N,N,CP_Drtn,TT_Task,DT_FixedDUR2,TK_NotStart,DUKHMOBI03PS00002345,Commencement of Construction Work,,40,40,1600,0,0,0,1600,0,0,0,,,,2013-08-22 08:00,2014-04-16 17:00,,2013-08-17 08:00,2014-04-10 17:00,2013-08-17 08:00,2014-04-10 17:00,2013-08-17 08:00,2014-04-10 17:00,2013-08-22 08:00,2014-04-16 17:00,,PT_Normal,,,,,uzR0DGRGRHSQrZ12oFDUVw,,,,N,0,0,,,2013-02-16 15:51,2013-02-16 15:56,admin,admin
499760,6359,124362,13662,0,N,N,N,CP_Drtn,TT_Mile,DT_FixedDUR2,TK_NotStart,DUKHMOBI1BPS00002105,Receiving of Site Instruction,,584,0,0,0,0,0,0,0,0,0,,,,2013-02-21 08:00,2013-02-21 08:00,,2012-11-26 08:00,2012-11-26 08:00,2012-11-26 08:00,2012-11-26 08:00,2012-11-26 08:00,2012-11-26 08:00,2013-02-21 08:00,2013-02-21 08:00,,PT_Normal,,,,,2rmjb++tSEqCzSuJW6dnQw,,,,N,0,0,,,2013-02-16 15:51,2013-02-16 15:56,admin,admin
499761,6359,124362,13662,0,N,N,N,CP_Drtn,TT_Task,DT_FixedDUR2,TK_NotStart,DUKHMOBI1BPS00002110,Finalization of Subcontractor,,584,0,168,0,0,0,168,0,0,0,,,,2013-02-21 08:00,2013-03-17 17:00,,2012-11-26 08:00,2012-12-20 17:00,2012-11-26 08:00,2012-12-20 17:00,2012-11-26 08:00,2012-12-20 17:00,2013-02-21 08:00,2013-03-17 17:00,,PT_Normal,,,,,2EIuBOaqRR6EnkJr+sDF5w,,,,N,0,0,,,2013-02-16 15:51,2013-02-16 15:56,admin,admin
499762,6359,124362,13662,0,N,N,N,CP_Drtn,TT_Task,DT_FixedDUR2,TK_NotStart,DUKHMOBI1BPS00002115,Submission of Cost Proposal,,584,0,56,0,0,0,56,0,0,0,,,,2013-03-26 08:00,2013-04-02 17:00,,2012-12-30 08:00,2013-01-06 17:00,2012-12-30 08:00,2013-01-06 17:00,2012-12-30 08:00,2013-01-06 17:00,2013-03-26 08:00,2013-04-02 17:00,,PT_Normal,,,,,5oGl6ZHpSxCVgkQVojlPQg,,,,N,0,0,,,2013-02-16 15:51,2013-02-16 15:56,admin,admin
499763,6359,124362,13662,0,N,N,N,CP_Drtn,TT_Task,DT_FixedDUR2,TK_NotStart,DUKHMOBI1BPS00002120,Approval of Cost Proposal,,584,0,240,0,0,0,240,0,0,0,,,,2013-04-03 08:00,2013-05-07 17:00,,2013-01-07 08:00,2013-02-10 17:00,2013-01-07 08:00,2013-02-10 17:00,2013-01-07 08:00,2013-02-10 17:00,2013-04-03 08:00,2013-05-07 17:00,,PT_Normal,,,,,czWUVQkcR6yOzU6POXlTRQ,,,,N,0,0,,,2013-02-16 15:51,2013-02-16 15:56,admin,admin
499764,6359,124362,13662,0,N,N,N,CP_Drtn,TT_FinMile,DT_FixedDrtn,TK_NotStart,DUKHMOBI1BPS00002125,Receiving of Variation Order,,584,0,0,0,0,0,0,0,0,0,,,,2013-05-07 17:00,2013-05-07 17:00,,2013-02-10 17:00,2013-02-10 17:00,2013-02-10 17:00,2013-02-10 17:00,2013-02-10 17:00,2013-02-10 17:00,2013-05-07 17:00,2013-05-07 17:00,,PT_Normal,,,,,ju5zYPWZS0C5yhBs8mcP+g,,,,N,0,0,,,2013-02-16 15:51,2013-02-16 15:56,admin,admin
499765,6359,124362,13662,0,N,N,N,CP_Drtn,TT_Task,DT_FixedDUR2,TK_NotStart,DUKHMOBI1BPS00002130,Engineering & Procurement,,584,240,1680,0,0,0,1680,0,0,0,,,,2013-05-08 08:00,2014-01-14 17:00,,2013-02-11 08:00,2013-10-20 17:00,2013-02-11 08:00,2013-10-20 17:00,2013-02-11 08:00,2013-10-20 17:00,2013-05-08 08:00,2014-01-14 17:00,,PT_Normal,,,,,4DV+WIf0SBOiDB8uVm14Cg,,,,N,0,0,,,2013-02-16 15:51,2013-02-16 15:56,admin,admin
499766,6359,124362,13662,0,N,N,N,CP_Drtn,TT_Task,DT_FixedDUR2,TK_NotStart,DUKHMOBI1BPS00002135,Commencement of Construction Work,,344,320,2240,0,0,0,2240,0,0,0,,,,2014-01-15 08:00,2014-12-14 17:00,,2013-11-25 08:00,2014-10-25 17:00,2013-11-25 08:00,2014-10-25 17:00,2013-11-25 08:00,2014-10-25 17:00,2014-01-15 08:00,2014-12-14 17:00,,PT_Normal,,,,,5Txk8g09QqGEPrCmlbCy1g,,,,N,0,0,,,2013-02-16 15:51,2013-02-16 15:56,admin,admin
499767,6359,124362,13662,0,N,N,N,CP_Drtn,TT_Task,DT_FixedDUR2,TK_NotStart,DUKHMOBI1BPS00002113,Submission & Approval of General Site Layout,,584,0,168,0,0,0,168,0,0,0,,,,2013-03-02 08:00,2013-03-25 17:00,,2012-12-04 08:00,2012-12-29 17:00,2012-12-04 08:00,2012-12-29 17:00,2012-12-04 08:00,2012-12-29 17:00,2013-03-02 08:00,2013-03-25 17:00,,PT_Normal,,,,,6wwXSlMtRByGUHIRe1BEvQ,,,,N,0,0,,,2013-02-16 15:51,2013-02-16 15:56,admin,admin
499768,6359,124362,13662,0,N,N,N,CP_Drtn,TT_Task,DT_FixedDUR2,TK_NotStart,DUKHMOBI1BPS00001000,Submission of New Site Design Layout,,400,0,112,0,0,0,112,0,0,0,,,,2013-01-29 08:00,2013-02-14 17:00,,2012-12-01 08:00,2012-12-16 17:00,2012-12-01 08:00,2012-12-16 17:00,2012-12-01 08:00,2012-12-16 17:00,2013-01-29 08:00,2013-02-14 17:00,,PT_Normal,,,,,ifoUgD8UQaeWWtar7X5GUg,IT27RBTeT4GTef+9l/xLjQ,,,N,0,0,,,2013-02-16 15:51,2013-02-16 15:56,admin,admin
499769,6359,124362,13662,0,N,N,N,CP_Drtn,TT_Task,DT_FixedDUR2,TK_NotStart,DUKHMOBI1BPS00001200,Approval of New Site Design Layout,,400,0,168,0,0,0,168,0,0,0,,,,2013-02-16 08:00,2013-03-11 17:00,,2012-12-17 08:00,2013-01-10 17:00,2012-12-17 08:00,2013-01-10 17:00,2012-12-17 08:00,2013-01-10 17:00,2013-02-16 08:00,2013-03-11 17:00,,PT_Normal,,,,,8kmLG1TJQcqqOp/QFJ9yjg,TkQuAhd13UORiC85wxansA,,,N,0,0,,,2013-02-16 15:51,2013-02-16 15:56,admin,admin
499770,6359,124362,13662,0,N,N,N,CP_Drtn,TT_Task,DT_FixedDUR2,TK_NotStart,DUKHMOBI1BPS00001225,Submission of Finished Floor Level,,400,0,56,0,0,0,56,0,0,0,,,,2013-03-12 08:00,2013-03-19 17:00,,2013-01-12 08:00,2013-01-19 17:00,2013-01-12 08:00,2013-01-19 17:00,2013-01-12 08:00,2013-01-19 17:00,2013-03-12 08:00,2013-03-19 17:00,,PT_Normal,,,,,dNc0R2OzT6GHWWdU94rcgQ,TkQuAhd13UORiC85wxansA,,,N,0,0,,,2013-02-16 15:51,2013-02-16 15:56,admin,admin
499771,6359,124362,13662,0,N,N,N,CP_Drtn,TT_Task,DT_FixedDUR2,TK_NotStart,DUKHMOBI1BPS00001250,Approval of Finished Floor Level,,400,400,168,0,0,0,168,0,0,0,,,,2013-03-20 08:00,2013-04-13 17:00,,2013-01-20 08:00,2013-02-13 17:00,2013-01-20 08:00,2013-02-13 17:00,2013-01-20 08:00,2013-02-13 17:00,2013-03-20 08:00,2013-04-13 17:00,,PT_Normal,,,,,o4pjqeNcSFOMbcan1041Ew,LkoIGHT/jkujbzY48akh+w,,,N,0,0,,,2013-02-16 15:51,2013-02-16 15:56,admin,admin
499772,6359,124362,13662,0,N,N,N,CP_Drtn,TT_Task,DT_FixedDUR2,TK_NotStart,DUKHMOBI1BPS00001300,Submission of New Site Design MEP Services Layout,,712,0,112,0,0,0,112,0,0,0,,,,2013-04-27 08:00,2013-05-12 17:00,,2013-01-12 08:00,2013-01-27 17:00,2013-01-12 08:00,2013-01-27 17:00,2013-01-12 08:00,2013-01-27 17:00,2013-04-27 08:00,2013-05-12 17:00,,PT_Normal,,,,,F/SRSB0oSGq7f9ALdloEzA,TkQuAhd13UORiC85wxansA,,,N,0,0,,,2013-02-16 15:51,2013-02-16 16:17,admin,admin
499773,6359,124362,13662,0,N,N,N,CP_Drtn,TT_Task,DT_FixedDUR2,TK_NotStart,DUKHMOBI1BPS00001400,Approval of New Site Design MEP Services Layout,,712,352,168,0,0,0,168,0,0,0,,,,2013-05-13 08:00,2013-06-05 17:00,,2013-01-28 08:00,2013-02-21 17:00,2013-01-28 08:00,2013-02-21 17:00,2013-01-28 08:00,2013-02-21 17:00,2013-05-13 08:00,2013-06-05 17:00,,PT_Normal,,,,,wvHZopVLQ2KPkeZ2Wc9hZw,LkoIGHT/jkujbzY48akh+w,,,N,0,0,,,2013-02-16 15:51,2013-02-16 16:17,admin,admin
499774,6359,124363,13662,0,N,N,N,CP_Drtn,TT_Mile,DT_FixedDUR2,TK_NotStart,DUKHMOBP1APS00002000,Receiving of Site Instruction,,368,0,0,0,0,0,0,0,0,0,,,,2013-01-20 08:00,2013-01-20 08:00,,2012-11-26 08:00,2012-11-26 08:00,2012-11-26 08:00,2012-11-26 08:00,2012-11-26 08:00,2012-11-26 08:00,2013-01-20 08:00,2013-01-20 08:00,,PT_Normal,,,,,Pc0+cFSYRJeFqC7co+taHg,,,,N,0,0,,,2013-02-16 15:51,2013-02-16 15:56,admin,admin
499775,6359,124363,13662,0,N,N,N,CP_Drtn,TT_Task,DT_FixedDUR2,TK_NotStart,DUKHMOBP1APS00002005,Finalization of Subcontractor,,720,0,168,0,0,0,168,0,0,0,,,,2013-03-13 08:00,2013-04-06 17:00,,2012-11-26 08:00,2012-12-20 17:00,2012-11-26 08:00,2012-12-20 17:00,2012-11-26 08:00,2012-12-20 17:00,2013-03-13 08:00,2013-04-06 17:00,,PT_Normal,,,,,5WFlcGB+Sse9mc72cU7ppw,,,,N,0,0,,,2013-02-16 15:51,2013-02-16 15:56,admin,admin
499776,6359,124363,13662,0,N,N,N,CP_Drtn,TT_Task,DT_FixedDUR2,TK_NotStart,DUKHMOBP1APS00002010,Submission of Cost Proposal,,720,0,56,0,0,0,56,0,0,0,,,,2013-04-07 08:00,2013-04-14 17:00,,2012-12-22 08:00,2012-12-29 17:00,2012-12-22 08:00,2012-12-29 17:00,2012-12-22 08:00,2012-12-29 17:00,2013-04-07 08:00,2013-04-14 17:00,,PT_Normal,,,,,m+vKgNgeS0exMA2wt69trQ,,,,N,0,0,,,2013-02-16 15:51,2013-02-16 15:56,admin,admin
499777,6359,124363,13662,0,N,N,N,CP_Drtn,TT_Task,DT_FixedDUR2,TK_NotStart,DUKHMOBP1APS00002015,Approval of Cost Proposal,,720,0,240,0,0,0,240,0,0,0,,,,2013-04-15 08:00,2013-05-19 17:00,,2012-12-30 08:00,2013-02-02 17:00,2012-12-30 08:00,2013-02-02 17:00,2012-12-30 08:00,2013-02-02 17:00,2013-04-15 08:00,2013-05-19 17:00,,PT_Normal,,,,,ANuX8edjSPyYzSxearALPA,,,,N,0,0,,,2013-02-16 15:51,2013-02-16 15:56,admin,admin
499778,6359,124363,13662,0,N,N,N,CP_Drtn,TT_FinMile,DT_FixedDrtn,TK_NotStart,DUKHMOBP1APS00002020,Receiving of Variation Order,,720,0,0,0,0,0,0,0,0,0,,,,2013-05-19 17:00,2013-05-19 17:00,,2013-02-02 17:00,2013-02-02 17:00,2013-02-02 17:00,2013-02-02 17:00,2013-02-02 17:00,2013-02-02 17:00,2013-05-19 17:00,2013-05-19 17:00,,PT_Normal,,,,,al1uDbt0SlGBA4Vx8x7Xmw,,,,N,0,0,,,2013-02-16 15:51,2013-02-16 15:56,admin,admin
499779,6359,124363,13662,0,N,N,N,CP_Drtn,TT_Task,DT_FixedDUR2,TK_NotStart,DUKHMOBP1APS00002025,Engineering & Procurement,,720,504,1520,0,0,0,1520,0,0,0,,,,2013-05-20 08:00,2014-01-02 17:00,,2013-02-03 08:00,2013-09-16 17:00,2013-02-03 08:00,2013-09-16 17:00,2013-02-03 08:00,2013-09-16 17:00,2013-05-20 08:00,2014-01-02 17:00,,PT_Normal,,,,,g9Yu21x1RiWAXvS//z9mYA,,,,N,0,0,,,2013-02-16 15:51,2013-02-16 15:56,admin,admin
499780,6359,124363,13662,0,N,N,N,CP_Drtn,TT_Task,DT_FixedDUR2,TK_NotStart,DUKHMOBP1APS00002030,Commencement of Construction Work,,216,216,2320,0,0,0,2320,0,0,0,,,,2014-01-04 08:00,2014-12-14 17:00,,2013-12-02 08:00,2014-11-12 17:00,2013-12-02 08:00,2014-11-12 17:00,2013-12-02 08:00,2014-11-12 17:00,2014-01-04 08:00,2014-12-14 17:00,,PT_Normal,,,,,9bMz2bMISZOdyMusdLeIKg,,,,N,0,0,,,2013-02-16 15:51,2013-02-16 15:56,admin,admin
499781,6359,124364,13662,0,N,N,N,CP_Drtn,TT_Task,DT_FixedDUR2,TK_NotStart,DUKHMOBGEN0000003030,Sub & App -Key Personnel CVs,12515,712,0,480,0,200,200,480,0,0,0,,,,2013-02-20 08:00,2013-04-30 17:00,,2012-11-06 08:00,2013-01-15 17:00,2012-11-06 08:00,2013-01-15 17:00,2012-11-06 08:00,2013-01-15 17:00,2013-02-20 08:00,2013-04-30 17:00,,PT_Normal,,,,,fSf4rNJeSOaYQ4HdJqkOKA,,,,N,0,0,,,2013-02-16 15:51,2013-02-16 15:56,admin,admin
499782,6359,124364,13662,0,N,N,N,CP_Drtn,TT_Task,DT_FixedDUR2,TK_NotStart,DUKHMOBGEN0000003035,Sub & App -HSE plan,12516,712,0,480,0,200,200,480,0,0,0,,,,2013-02-26 08:00,2013-05-06 17:00,,2012-11-12 08:00,2013-01-21 17:00,2012-11-12 08:00,2013-01-21 17:00,2012-11-12 08:00,2013-01-21 17:00,2013-02-26 08:00,2013-05-06 17:00,,PT_Normal,,,,,uwxvoquyRceFh83MXuhfxQ,,,,N,0,0,,,2013-02-16 15:51,2013-02-16 15:56,admin,admin
499783,6359,124364,13662,0,N,N,N,CP_Drtn,TT_Task,DT_FixedDUR2,TK_NotStart,DUKHMOBGEN0000003040,Sub & App -Quality plan,12515,712,224,480,0,200,200,480,0,0,0,,,,2013-03-04 08:00,2013-05-12 17:00,,2012-11-18 08:00,2013-01-27 17:00,2012-11-18 08:00,2013-01-27 17:00,2012-11-18 08:00,2013-01-27 17:00,2013-03-04 08:00,2013-05-12 17:00,,PT_Normal,,,,,UfJiJrDvSJapeI7xwj9L2w,,,,N,0,0,,,2013-02-16 15:51,2013-02-16 15:56,admin,admin
499784,6359,124364,13662,0,N,N,N,CP_Drtn,TT_Task,DT_FixedDUR2,TK_NotStart,DUKHMOBGEN0000003000,Performance Bond (Clause 10),,576,240,240,0,240,240,240,0,0,0,,,,2013-01-26 08:00,2013-03-02 17:00,,2012-11-01 08:00,2012-12-05 17:00,2012-11-01 08:00,2012-12-05 17:00,2012-11-01 08:00,2012-12-05 17:00,2013-01-26 08:00,2013-03-02 17:00,,PT_Normal,,,,,csX3aL49S3i5HC2sXqMzZA,,,,N,0,0,,,2013-02-16 15:51,2013-02-16 15:56,admin,admin
499785,6359,124364,13662,0,N,N,N,CP_Drtn,TT_Task,DT_FixedDUR2,TK_NotStart,DUKHMOBGEN0000003005,Setting Out (Clause 17),,576,240,240,0,0,0,240,0,0,0,,,,2013-01-26 08:00,2013-03-02 17:00,,2012-11-01 08:00,2012-12-05 17:00,2012-11-01 08:00,2012-12-05 17:00,2012-11-01 08:00,2012-12-05 17:00,2013-01-26 08:00,2013-03-02 17:00,,PT_Normal,,,,,IiaD440ZRG2fZlFOFFGHRw,,,,N,0,0,,,2013-02-16 15:51,2013-02-16 15:56,admin,admin
499786,6359,124364,13662,0,N,N,N,CP_Drtn,TT_Task,DT_FixedDUR2,TK_NotStart,DUKHMOBGEN0000003010,Insurance of works (Clause 21-23),,576,240,240,0,0,0,240,0,0,0,,,,2013-01-26 08:00,2013-03-02 17:00,,2012-11-01 08:00,2012-12-05 17:00,2012-11-01 08:00,2012-12-05 17:00,2012-11-01 08:00,2012-12-05 17:00,2013-01-26 08:00,2013-03-02 17:00,,PT_Normal,,,,,BfuIFZ3DSb+Gjzl5ZgZ2KQ,,,,N,0,0,,,2013-02-16 15:51,2013-02-16 15:56,admin,admin
499787,6359,124364,13662,0,N,N,N,CP_Drtn,TT_Task,DT_FixedDUR2,TK_NotStart,DUKHMOBGEN0000003015,Commencement of works (Clause 41),,456,40,240,0,0,0,240,0,0,0,,,,2013-01-08 08:00,2013-02-11 17:00,,2012-11-01 08:00,2012-12-05 17:00,2012-11-01 08:00,2012-12-05 17:00,2012-11-01 08:00,2012-12-05 17:00,2013-01-08 08:00,2013-02-11 17:00,,PT_Normal,,,,,WgC1QOsCQ+WlQETmtiLnRg,,,,N,0,0,,,2013-02-16 15:51,2013-02-16 15:56,admin,admin
499788,6359,124364,13662,0,N,N,N,CP_Drtn,TT_Task,DT_FixedDUR2,TK_NotStart,DUKHMOBGEN0000003020,"Construction of plant,Temporary works & material",,336,0,240,0,0,0,240,0,0,0,,,,2012-12-22 08:00,2013-01-24 17:00,,2012-11-01 08:00,2012-12-05 17:00,2012-11-01 08:00,2012-12-05 17:00,2012-11-01 08:00,2012-12-05 17:00,2012-12-22 08:00,2013-01-24 17:00,,PT_Normal,,,,,B7Kmw0G4TH+w02ntJZAmiA,,,,N,0,0,,,2013-02-16 15:51,2013-02-16 15:56,admin,admin
499789,6359,124364,13663,0,N,N,N,CP_Drtn,TT_Task,DT_FixedDUR2,TK_NotStart,DUKHMOBGEN0000003025,Construction Running Cost,,0,0,7048,0,0,0,7048,0,0,0,,,,2012-11-01 08:00,2015-03-31 17:00,,2012-11-01 08:00,2015-03-31 17:00,2012-11-01 08:00,2015-03-31 17:00,2012-11-01 08:00,2015-03-31 17:00,2012-11-01 08:00,2015-03-31 17:00,,PT_Normal,,,,,riSc+UhpQ+66TxmDJSu31Q,,,,Y,0,0,,,2013-02-16 15:51,2013-02-16 15:56,admin,admin
499790,6359,124365,13662,0,N,N,N,CP_Drtn,TT_Task,DT_FixedDUR2,TK_NotStart,DUKHMOBP020000004000,Securing Gate Passes/Access Permit & Courses,12516,0,0,200,0,100,100,200,0,0,0,,,,2012-11-01 08:00,2012-11-29 17:00,,2012-11-01 08:00,2012-11-29 17:00,2012-11-01 08:00,2012-11-29 17:00,2012-11-01 08:00,2012-11-29 17:00,2012-11-01 08:00,2012-11-29 17:00,,PT_Normal,,,,,wjXXbMT1Sxec4aqJZU58TQ,,,,N,0,0,,,2013-02-16 15:51,2013-02-16 15:56,admin,admin
499791,6359,124365,13662,0,N,N,N,CP_Drtn,TT_Task,DT_FixedDUR2,TK_NotStart,DUKHMOBP020000004010,Sub & Approval of Site Logistic Plan,8176,312,0,240,0,100,100,240,0,0,0,,,,2012-12-31 08:00,2013-02-03 17:00,,2012-11-14 08:00,2012-12-19 17:00,2012-11-14 08:00,2012-12-19 17:00,2012-11-14 08:00,2012-12-19 17:00,2012-12-31 08:00,2013-02-03 17:00,,PT_Normal,,,,,VqlnjOJyTQK4TAPybK9UXg,,,,N,0,0,,,2013-02-16 15:51,2013-02-16 15:56,admin,admin
499792,6359,124365,13662,0,N,N,N,CP_Drtn,TT_Task,DT_FixedDUR2,TK_NotStart,DUKHMOBP020000004020,Sub & App of Method Statement-Temporary Struct.,8176,352,0,240,0,100,100,240,0,0,0,,,,2013-01-12 08:00,2013-02-16 17:00,,2012-11-20 08:00,2012-12-25 17:00,2012-11-20 08:00,2012-12-25 17:00,2012-11-20 08:00,2012-12-25 17:00,2013-01-12 08:00,2013-02-16 17:00,,PT_Normal,,,,,nHXFMgGZRcyJIuptQa3QYA,,,,N,0,0,,,2013-02-16 15:51,2013-02-16 15:56,admin,admin
499793,6359,124365,13662,0,N,N,N,CP_Drtn,TT_Task,DT_FixedDUR2,TK_NotStart,DUKHMOBP020000004030,Sub & App of Layout Drawings-Temporary Struct.,8176,352,0,240,0,100,100,240,0,0,0,,,,2013-02-17 08:00,2013-03-23 17:00,,2012-12-26 08:00,2013-01-29 17:00,2012-12-26 08:00,2013-01-29 17:00,2012-12-26 08:00,2013-01-29 17:00,2013-02-17 08:00,2013-03-23 17:00,,PT_Normal,,,,,Fk7csKwBTk6UphrXPBPh3Q,,,,N,0,0,,,2013-02-16 15:51,2013-02-16 15:56,admin,admin
499794,6359,124365,13662,0,N,N,N,CP_Drtn,TT_Task,DT_FixedDUR2,TK_NotStart,DUKHMOBP020000004040,Securing Permit To Work,12516,312,0,160,0,100,100,160,0,0,0,,,,2013-01-12 08:00,2013-02-03 17:00,,2012-11-26 08:00,2012-12-19 17:00,2012-11-26 08:00,2012-12-19 17:00,2012-11-26 08:00,2012-12-19 17:00,2013-01-12 08:00,2013-02-03 17:00,,PT_Normal,,,,,iHZsk7XzRqabQrXiG/djOg,,,,N,0,0,,,2013-02-16 15:51,2013-02-16 15:56,admin,admin
499795,6359,124365,13662,0,N,N,N,CP_Drtn,TT_Task,DT_FixedDUR2,TK_NotStart,DUKHMOBP020000004060,Establishment of Security Fences & Gates,8177,352,352,160,0,300,300,160,0,0,0,,,,2013-03-24 08:00,2013-04-15 17:00,,2013-01-30 08:00,2013-02-23 17:00,2013-01-30 08:00,2013-02-23 17:00,2013-01-30 08:00,2013-02-23 17:00,2013-03-24 08:00,2013-04-15 17:00,,PT_Normal,,,,,M4wbD0HRSHO5KzAvlu1E4Q,,,,N,0,0,,,2013-02-16 15:51,2013-02-16 15:56,admin,admin
499796,6359,124365,13662,0,N,N,N,CP_Drtn,TT_Task,DT_FixedDUR2,TK_NotStart,DUKHMOBP020000004070,Establishment of Site offices,8166,472,472,160,0,700,700,160,0,0,0,,,,2013-02-28 08:00,2013-03-23 17:00,,2012-12-20 08:00,2013-01-12 17:00,2012-12-20 08:00,2013-01-12 17:00,2012-12-20 08:00,2013-01-12 17:00,2013-02-28 08:00,2013-03-23 17:00,,PT_Normal,,,,,OXe0kD3oTC+Be3SAKur7DQ,,,,N,0,0,,,2013-02-16 15:51,2013-02-16 15:56,admin,admin
499797,6359,124365,13662,0,N,N,N,CP_Drtn,TT_Task,DT_FixedDUR2,TK_NotStart,DUKHMOBP020000004080,Establishment of Labour Mess & Toilets,8168,472,472,160,0,371.25,371.25,160,0,0,0,,,,2013-02-28 08:00,2013-03-23 17:00,,2012-12-20 08:00,2013-01-12 17:00,2012-12-20 08:00,2013-01-12 17:00,2012-12-20 08:00,2013-01-12 17:00,2013-02-28 08:00,2013-03-23 17:00,,PT_Normal,,,,,EeFb7D8uQx+dPexUFqqdcw,,,,N,0,0,,,2013-02-16 15:51,2013-02-16 15:56,admin,admin
499798,6359,124365,13662,0,N,N,N,CP_Drtn,TT_Task,DT_FixedDUR2,TK_NotStart,DUKHMOBP020000004090,Establishment of Stores & Workshops,8166,472,472,160,0,406.25,406.25,160,0,0,0,,,,2013-02-28 08:00,2013-03-23 17:00,,2012-12-20 08:00,2013-01-12 17:00,2012-12-20 08:00,2013-01-12 17:00,2012-12-20 08:00,2013-01-12 17:00,2013-02-28 08:00,2013-03-23 17:00,,PT_Normal,,,,,6Qw0WY69RO+TcoGS5UqkJQ,,,,N,0,0,,,2013-02-16 15:51,2013-02-16 15:56,admin,admin
499799,6359,124365,13662,0,N,N,N,CP_Drtn,TT_Task,DT_FixedDUR2,TK_NotStart,DUKHMOBP020000004050,Site Cleaning & Leveling Works,8177,312,312,200,0,148.69,148.69,200,31.5,0,31.5,,,,2013-01-23 08:00,2013-02-21 17:00,,2012-12-08 08:00,2013-01-06 17:00,2012-12-08 08:00,2013-01-06 17:00,2012-12-08 08:00,2013-01-06 17:00,2013-01-23 08:00,2013-02-21 17:00,,PT_Normal,,,,,c4t8zjpXQfCrR/+AlOeAhA,,,,N,0,0,,,2013-02-16 15:51,2013-02-16 15:56,admin,admin
499800,6359,124366,13662,0,N,N,N,CP_Drtn,TT_Task,DT_FixedDUR2,TK_NotStart,DUKHMOBP010000004060,Establishment of Security Fences & Gates,8177,488,488,160,0,300,300,160,0,0,0,,,,2013-03-20 08:00,2013-04-11 17:00,,2013-01-07 08:00,2013-01-29 17:00,2013-01-07 08:00,2013-01-29 17:00,2013-01-07 08:00,2013-01-29 17:00,2013-03-20 08:00,2013-04-11 17:00,,PT_Normal,,,,,TPW8Fre0RWiNyH9+0JlUZw,,,,N,0,0,,,2013-02-16 15:51,2013-02-16 15:56,admin,admin
499801,6359,124366,13662,0,N,N,N,CP_Drtn,TT_Task,DT_FixedDUR2,TK_NotStart,DUKHMOBP010000004070,Establishment of Site offices,8166,416,416,160,0,700,700,160,0,0,0,,,,2013-03-20 08:00,2013-04-11 17:00,,2013-01-17 08:00,2013-02-09 17:00,2013-01-17 08:00,2013-02-09 17:00,2013-01-17 08:00,2013-02-09 17:00,2013-03-20 08:00,2013-04-11 17:00,,PT_Normal,,,,,Lm0dEQ3JS+qrr1ABpI7TlA,,,,N,0,0,,,2013-02-16 15:51,2013-02-16 15:56,admin,admin
499802,6359,124366,13662,0,N,N,N,CP_Drtn,TT_Task,DT_FixedDUR2,TK_NotStart,DUKHMOBP010000004080,Establishment of Labour Mess & Toilets,8168,488,488,160,0,371.25,371.25,160,0,0,0,,,,2013-03-20 08:00,2013-04-11 17:00,,2013-01-07 08:00,2013-01-29 17:00,2013-01-07 08:00,2013-01-29 17:00,2013-01-07 08:00,2013-01-29 17:00,2013-03-20 08:00,2013-04-11 17:00,,PT_Normal,,,,,A0QOdTNyRHOX8Y/gJ8yaUA,,,,N,0,0,,,2013-02-16 15:51,2013-02-16 15:56,admin,admin
499803,6359,124366,13662,0,N,N,N,CP_Drtn,TT_Task,DT_FixedDUR2,TK_NotStart,DUKHMOBP010000004090,Establishment of Stores & Workshops,8166,488,488,160,0,406.25,406.25,160,0,0,0,,,,2013-03-20 08:00,2013-04-11 17:00,,2013-01-07 08:00,2013-01-29 17:00,2013-01-07 08:00,2013-01-29 17:00,2013-01-07 08:00,2013-01-29 17:00,2013-03-20 08:00,2013-04-11 17:00,,PT_Normal,,,,,TQZTzGkVTLu2fcQRwoPVwQ,,,,N,0,0,,,2013-02-16 15:51,2013-02-16 15:56,admin,admin
499804,6359,124366,13662,0,N,N,N,CP_Drtn,TT_Task,DT_FixedDUR2,TK_NotStart,DUKHMOBP010000004050,Site Cleaning & Leveling Works,8177,296,296,200,0,148.69,148.69,200,31.5,0,31.5,,,,2013-02-07 08:00,2013-03-09 17:00,,2012-12-26 08:00,2013-01-23 17:00,2012-12-26 08:00,2013-01-23 17:00,2012-12-26 08:00,2013-01-23 17:00,2013-02-07 08:00,2013-03-09 17:00,,PT_Normal,,,,,J/fH5xrcR2WwdTKGBDtzZg,,,,N,0,0,,,2013-02-16 15:51,2013-02-16 15:56,admin,admin
499805,6359,124366,13662,0,N,N,N,CP_Drtn,TT_Task,DT_FixedDUR2,TK_NotStart,DUKHMOBP010000004000,Securing Gate Passes/Access Permit & Courses,12516,0,0,200,0,100,100,200,0,0,0,,,,2012-11-01 08:00,2012-11-29 17:00,,2012-11-01 08:00,2012-11-29 17:00,2012-11-01 08:00,2012-11-29 17:00,2012-11-01 08:00,2012-11-29 17:00,2012-11-01 08:00,2012-11-29 17:00,,PT_Normal,,,,,wARin3HnSUGHtzD4ROCUTw,,,,Y,0,0,,,2013-02-16 15:51,2013-02-16 15:56,admin,admin
499806,6359,124366,13662,0,N,N,N,CP_Drtn,TT_Task,DT_FixedDUR2,TK_NotStart,DUKHMOBP010000004010,Sub & Approval of Site Logistic Plan,8176,296,0,240,0,100,100,240,0,0,0,,,,2012-12-23 08:00,2013-01-26 17:00,,2012-11-08 08:00,2012-12-12 17:00,2012-11-08 08:00,2012-12-12 17:00,2012-11-08 08:00,2012-12-12 17:00,2012-12-23 08:00,2013-01-26 17:00,,PT_Normal,,,,,Gy3Fr2/gSja7wlUM8+7rVw,,,,N,0,0,,,2013-02-16 15:51,2013-02-16 15:56,admin,admin
499807,6359,124366,13662,0,N,N,N,CP_Drtn,TT_Task,DT_FixedDUR2,TK_NotStart,DUKHMOBP010000004020,Sub & App of Method Statement-Temporary Struct.,12515,336,0,240,0,100,100,240,0,0,0,,,,2013-01-26 08:00,2013-03-02 17:00,,2012-12-06 08:00,2013-01-10 17:00,2012-12-06 08:00,2013-01-10 17:00,2012-12-06 08:00,2013-01-10 17:00,2013-01-26 08:00,2013-03-02 17:00,,PT_Normal,,,,,AdXrhxeaQCWCyuxA0kmVJw,,,,N,0,0,,,2013-02-16 15:51,2013-02-16 15:56,admin,admin
499808,6359,124366,13662,0,N,N,N,CP_Drtn,TT_Task,DT_FixedDUR2,TK_NotStart,DUKHMOBP010000004030,Sub & App of Layout Drawings-Temporary Struct.,8176,416,0,240,0,100,100,240,0,0,0,,,,2013-02-13 08:00,2013-03-19 17:00,,2012-12-12 08:00,2013-01-16 17:00,2012-12-12 08:00,2013-01-16 17:00,2012-12-12 08:00,2013-01-16 17:00,2013-02-13 08:00,2013-03-19 17:00,,PT_Normal,,,,,bbgzm3mSQBGt6ohvnU39cg,,,,N,0,0,,,2013-02-16 15:51,2013-02-16 15:56,admin,admin
499809,6359,124366,13662,0,N,N,N,CP_Drtn,TT_Task,DT_FixedDUR2,TK_NotStart,DUKHMOBP010000004040,Securing Permit To Work,12516,296,0,160,0,100,100,160,0,0,0,,,,2013-01-27 08:00,2013-02-19 17:00,,2012-12-13 08:00,2013-01-06 17:00,2012-12-13 08:00,2013-01-06 17:00,2012-12-13 08:00,2013-01-06 17:00,2013-01-27 08:00,2013-02-19 17:00,,PT_Normal,,,,,w+mEqGIIRyWNyjdQYRTdeA,,,,N,0,0,,,2013-02-16 15:51,2013-02-16 15:56,admin,admin
499810,6359,124367,13662,0,N,N,N,CP_Drtn,TT_Task,DT_FixedDUR2,TK_NotStart,DUKHMOBP030000004010,Sub & Approval of Site Logistic Plan,8176,192,0,240,0,100,100,240,0,0,0,,,,2012-12-08 08:00,2013-01-12 17:00,,2012-11-10 08:00,2012-12-13 17:00,2012-11-10 08:00,2012-12-13 17:00,2012-11-10 08:00,2012-12-13 17:00,2012-12-08 08:00,2013-01-12 17:00,,PT_Normal,,,,,R/tQfH0SQhK9ssH1ykvfEQ,,,,N,0,0,,,2013-02-16 15:51,2013-02-16 15:56,admin,admin
499811,6359,124367,13662,0,N,N,N,CP_Drtn,TT_Task,DT_FixedDUR2,TK_NotStart,DUKHMOBP030000004020,Sub & App of Method Statement-Temporary Struct.,8176,496,0,240,0,100,100,240,0,0,0,,,,2013-01-29 08:00,2013-03-05 17:00,,2012-11-17 08:00,2012-12-22 17:00,2012-11-17 08:00,2012-12-22 17:00,2012-11-17 08:00,2012-12-22 17:00,2013-01-29 08:00,2013-03-05 17:00,,PT_Normal,,,,,CBOYGxNST+2+4MWz6b6IBg,,,,N,0,0,,,2013-02-16 15:51,2013-02-16 15:56,admin,admin
499812,6359,124367,13662,0,N,N,N,CP_Drtn,TT_Task,DT_FixedDUR2,TK_NotStart,DUKHMOBP030000004030,Sub & App of Layout Drawings-Temporary Struct.,8176,496,112,240,0,100,100,240,0,0,0,,,,2013-01-29 08:00,2013-03-05 17:00,,2012-11-17 08:00,2012-12-22 17:00,2012-11-17 08:00,2012-12-22 17:00,2012-11-17 08:00,2012-12-22 17:00,2013-01-29 08:00,2013-03-05 17:00,,PT_Normal,,,,,Z0uC7CjhQ6m/PUG1TawSNw,,,,N,0,0,,,2013-02-16 15:51,2013-02-16 15:56,admin,admin
499813,6359,124367,13662,0,N,N,N,CP_Drtn,TT_Task,DT_FixedDUR2,TK_NotStart,DUKHMOBP030000004040,Securing Permit To Work,12516,192,0,160,0,100,100,160,0,0,0,,,,2013-01-13 08:00,2013-02-04 17:00,,2012-12-15 08:00,2013-01-07 17:00,2012-12-15 08:00,2013-01-07 17:00,2012-12-15 08:00,2013-01-07 17:00,2013-01-13 08:00,2013-02-04 17:00,,PT_Normal,,,,,zfwuuPD3QZWywWaLm4JW1w,,,,N,0,0,,,2013-02-16 15:51,2013-02-16 15:56,admin,admin
499814,6359,124367,13662,0,N,N,N,CP_Drtn,TT_Task,DT_FixedDUR2,TK_NotStart,DUKHMOBP030000004060,Establishment of Security Fences & Gates,8177,384,384,160,0,300,300,160,0,0,0,,,,2013-03-06 08:00,2013-03-28 17:00,,2013-01-08 08:00,2013-01-30 17:00,2013-01-08 08:00,2013-01-30 17:00,2013-01-08 08:00,2013-01-30 17:00,2013-03-06 08:00,2013-03-28 17:00,,PT_Normal,,,,,uwiUCQPzR3yErMJoGrID9Q,,,,N,0,0,,,2013-02-16 15:51,2013-02-16 15:56,admin,admin
499815,6359,124367,13662,0,N,N,N,CP_Drtn,TT_Task,DT_FixedDUR2,TK_NotStart,DUKHMOBP030000004070,Establishment of Site offices,8166,384,384,160,0,700,700,160,0,0,0,,,,2013-03-06 08:00,2013-03-28 17:00,,2013-01-08 08:00,2013-01-30 17:00,2013-01-08 08:00,2013-01-30 17:00,2013-01-08 08:00,2013-01-30 17:00,2013-03-06 08:00,2013-03-28 17:00,,PT_Normal,,,,,prBMPP/FTx+6UHO6LC2IAw,,,,N,0,0,,,2013-02-16 15:51,2013-02-16 15:56,admin,admin
499816,6359,124367,13662,0,N,N,N,CP_Drtn,TT_Task,DT_FixedDUR2,TK_NotStart,DUKHMOBP030000004090,Establishment of Stores & Workshops,8166,224,224,160,0,406.25,406.25,160,0,0,0,,,,2013-02-10 08:00,2013-03-05 17:00,,2013-01-08 08:00,2013-01-30 17:00,2013-01-08 08:00,2013-01-30 17:00,2013-01-08 08:00,2013-01-30 17:00,2013-02-10 08:00,2013-03-05 17:00,,PT_Normal,,,,,/+hp9TcFSL2TisNvH6jkVQ,,,,N,0,0,,,2013-02-16 15:51,2013-02-16 15:56,admin,admin
499817,6359,124367,13662,0,N,N,N,CP_Drtn,TT_Task,DT_FixedDUR2,TK_NotStart,DUKHMOBP030000004050,Site Cleaning & Leveling Works,8177,192,192,200,0,148.69,148.69,200,31.5,0,31.5,,,,2013-01-17 08:00,2013-02-16 17:00,,2012-12-20 08:00,2013-01-17 17:00,2012-12-20 08:00,2013-01-17 17:00,2012-12-20 08:00,2013-01-17 17:00,2013-01-17 08:00,2013-02-16 17:00,,PT_Normal,,,,,vY4RdM4iQFKpT1sUAaTbbQ,,,,N,0,0,,,2013-02-16 15:51,2013-02-16 15:56,admin,admin
499818,6359,124367,13662,0,N,N,N,CP_Drtn,TT_Task,DT_FixedDUR2,TK_NotStart,DUKHMOBP030000004080,Establishment of Labour Mess & Toilets,8168,384,384,160,0,371.25,371.25,160,0,0,0,,,,2013-03-06 08:00,2013-03-28 17:00,,2013-01-08 08:00,2013-01-30 17:00,2013-01-08 08:00,2013-01-30 17:00,2013-01-08 08:00,2013-01-30 17:00,2013-03-06 08:00,2013-03-28 17:00,,PT_Normal,,,,,eJV2+nZnRHKFzobAR1FvaA,,,,N,0,0,,,2013-02-16 15:51,2013-02-16 15:56,admin,admin
499819,6359,124367,13662,0,N,N,N,CP_Drtn,TT_Task,DT_FixedDUR2,TK_NotStart,DUKHMOBP030000004000,Securing Gate Passes/Access Permit & Courses,12516,0,0,200,0,100,100,200,0,0,0,,,,2012-11-01 08:00,2012-11-29 17:00,,2012-11-01 08:00,2012-11-29 17:00,2012-11-01 08:00,2012-11-29 17:00,2012-11-01 08:00,2012-11-29 17:00,2012-11-01 08:00,2012-11-29 17:00,,PT_Normal,,,,,6ZSF96fXQvOv0rdxKjuCPw,,,,N,0,0,,,2013-02-16 15:51,2013-02-16 15:56,admin,admin
499820,6359,124370,13662,0,N,N,N,CP_Drtn,TT_Task,DT_FixedDUR2,TK_NotStart,DUKHPROGEN00PQAP1040,MEPD_Prequa. 1st App.,,32,0,240,0,0,0,240,0,0,0,,,,2012-12-02 08:00,2013-01-06 17:00,,2012-11-27 08:00,2013-01-01 17:00,2012-11-27 08:00,2013-01-01 17:00,2012-11-27 08:00,2013-01-01 17:00,2012-12-02 08:00,2013-01-06 17:00,,PT_Normal,,,,,cBK61wD7TF+VAjuytiCdFw,,,,N,0,0,,,2013-02-16 15:51,2013-02-16 16:35,admin,admin
499821,6359,124370,13662,0,N,N,N,CP_Drtn,TT_Task,DT_FixedDUR2,TK_NotStart,DUKHPROGEN00PQAP1000,Anti Termite Treatment_Prequa. 1st App.,,360,0,120,0,0,0,120,0,0,0,,,,2013-01-02 08:00,2013-01-19 17:00,,2012-11-10 08:00,2012-11-26 17:00,2012-11-10 08:00,2012-11-26 17:00,2012-11-10 08:00,2012-11-26 17:00,2013-01-02 08:00,2013-01-19 17:00,,PT_Normal,,,,,qHpZpgQ0QCe2xjNFAhLE+g,,,,N,0,0,,,2013-02-16 15:51,2013-02-16 15:56,admin,admin
499822,6359,124370,13662,0,N,N,N,CP_Drtn,TT_Task,DT_FixedDUR2,TK_NotStart,DUKHPROGEN00PQAP1010,Concrete_Prequa. 1st App.,,312,0,120,0,0,0,120,0,0,0,,,,2012-12-27 08:00,2013-01-13 17:00,,2012-11-11 08:00,2012-11-27 17:00,2012-11-11 08:00,2012-11-27 17:00,2012-11-11 08:00,2012-11-27 17:00,2012-12-27 08:00,2013-01-13 17:00,,PT_Normal,,,,,c5o8SpVjQlis5yesYuFJVQ,,,,N,0,0,,,2013-02-16 15:51,2013-02-16 15:56,admin,admin
499823,6359,124370,13662,0,N,N,N,CP_Drtn,TT_Task,DT_FixedDUR2,TK_NotStart,DUKHPROGEN00PQAP1020,Waterproofing  -Wet Area _Prequa. 1st App.,,304,0,120,0,0,0,120,0,0,0,,,,2013-01-12 08:00,2013-01-28 17:00,,2012-11-27 08:00,2012-12-13 17:00,2012-11-27 08:00,2012-12-13 17:00,2012-11-27 08:00,2012-12-13 17:00,2013-01-12 08:00,2013-01-28 17:00,,PT_Normal,,,,,hygnP707TMi8oK6BZREWIA,,,,N,0,0,,,2013-02-16 15:51,2013-02-16 15:56,admin,admin
499824,6359,124370,13662,0,N,N,N,CP_Drtn,TT_Task,DT_FixedDUR2,TK_NotStart,DUKHPROGEN00PQAP1030,Waterproofing  -Roof_Prequa. 1st App.,,304,0,120,0,0,0,120,0,0,0,,,,2013-01-12 08:00,2013-01-28 17:00,,2012-11-27 08:00,2012-12-13 17:00,2012-11-27 08:00,2012-12-13 17:00,2012-11-27 08:00,2012-12-13 17:00,2013-01-12 08:00,2013-01-28 17:00,,PT_Normal,,,,,iW+NByfHSdqXlybvA7Uk2A,,,,N,0,0,,,2013-02-16 15:51,2013-02-16 15:56,admin,admin
499825,6359,124370,13662,0,N,N,N,CP_Drtn,TT_Task,DT_FixedDUR2,TK_NotStart,DUKHPROGEN00PQAP1070,Wooden Doors_Prequa. 1st App.,,208,0,240,0,0,0,240,0,0,0,,,,2013-01-27 08:00,2013-03-03 17:00,,2012-12-27 08:00,2013-01-30 17:00,2012-12-27 08:00,2013-01-30 17:00,2012-12-27 08:00,2013-01-30 17:00,2013-01-27 08:00,2013-03-03 17:00,,PT_Normal,,,,,TiQnNwDuQ+S2kNnNehljjA,,,,N,0,0,,,2013-02-16 15:51,2013-02-16 15:56,admin,admin
499826,6359,124370,13662,0,N,N,N,CP_Drtn,TT_Task,DT_FixedDUR2,TK_NotStart,DUKHPROGEN00PQAP1150,Carpentry & Joinery Works_Prequa. 1st App.,,344,0,240,0,0,0,240,0,0,0,,,,2013-03-06 08:00,2013-04-09 17:00,,2013-01-14 08:00,2013-02-18 17:00,2013-01-14 08:00,2013-02-18 17:00,2013-01-14 08:00,2013-02-18 17:00,2013-03-06 08:00,2013-04-09 17:00,,PT_Normal,,,,,GsS892mORSGRvCTOVInXhQ,,,,N,0,0,,,2013-02-16 15:51,2013-02-16 15:56,admin,admin
499827,6359,124370,13662,0,N,N,N,CP_Drtn,TT_Task,DT_FixedDUR2,TK_NotStart,DUKHPROGEN00PQAP1080,Aluminum Doors &  Windows_Prequa. 1st App.,,208,0,240,0,0,0,240,0,0,0,,,,2013-01-27 08:00,2013-03-03 17:00,,2012-12-27 08:00,2013-01-30 17:00,2012-12-27 08:00,2013-01-30 17:00,2012-12-27 08:00,2013-01-30 17:00,2013-01-27 08:00,2013-03-03 17:00,,PT_Normal,,,,,tNRqvh56RsqOezmRGLOatA,,,,N,0,0,,,2013-02-16 15:51,2013-02-16 15:56,admin,admin
499828,6359,124370,13662,0,N,N,N,CP_Drtn,TT_Task,DT_FixedDUR2,TK_NotStart,DUKHPROGEN00PQAP1090,Granite_Prequa. 1st App.,,368,0,240,0,0,0,240,0,0,0,,,,2013-02-20 08:00,2013-03-26 17:00,,2012-12-27 08:00,2013-01-30 17:00,2012-12-27 08:00,2013-01-30 17:00,2012-12-27 08:00,2013-01-30 17:00,2013-02-20 08:00,2013-03-26 17:00,,PT_Normal,,,,,Ri0+BgcZTmydtEkiMtjOgg,,,,N,0,0,,,2013-02-16 15:51,2013-02-16 15:56,admin,admin
499829,6359,124370,13662,0,N,N,N,CP_Drtn,TT_Task,DT_FixedDUR2,TK_NotStart,DUKHPROGEN00PQAP1050,Ceiling Works_Prequa. 1st App.,,80,0,240,0,0,0,240,0,0,0,,,,2012-12-29 08:00,2013-01-31 17:00,,2012-12-16 08:00,2013-01-20 17:00,2012-12-16 08:00,2013-01-20 17:00,2012-12-16 08:00,2013-01-20 17:00,2012-12-29 08:00,2013-01-31 17:00,,PT_Normal,,,,,fMfyjUHPSv6pyIoOM/Rv/g,,,,N,0,0,,,2013-02-16 15:51,2013-02-16 15:56,admin,admin
499830,6359,124370,13662,0,N,N,N,CP_Drtn,TT_Task,DT_FixedDUR2,TK_NotStart,DUKHPROGEN00PQAP1060,GRC Panels_Prequa. 1st App.,,504,0,240,0,0,0,240,0,0,0,,,,2013-02-28 08:00,2013-04-03 17:00,,2012-12-15 08:00,2013-01-19 17:00,2012-12-15 08:00,2013-01-19 17:00,2012-12-15 08:00,2013-01-19 17:00,2013-02-28 08:00,2013-04-03 17:00,,PT_Normal,,,,,rB5fgeUKSn6CBTf4xg9tIg,,,,N,0,0,,,2013-02-16 15:51,2013-02-16 15:56,admin,admin
499831,6359,124370,13662,0,N,N,N,CP_Drtn,TT_Task,DT_FixedDUR2,TK_NotStart,DUKHPROGEN00PQAP1100,Roller Shutter_Prequa. 1st App.,,232,0,240,0,0,0,240,0,0,0,,,,2013-01-27 08:00,2013-03-03 17:00,,2012-12-24 08:00,2013-01-27 17:00,2012-12-24 08:00,2013-01-27 17:00,2012-12-24 08:00,2013-01-27 17:00,2013-01-27 08:00,2013-03-03 17:00,,PT_Normal,,,,,b0RffBJ9SQidTYhQ98xKMw,,,,N,0,0,,,2013-02-16 15:51,2013-02-16 15:56,admin,admin
499832,6359,124370,13662,0,N,N,N,CP_Drtn,TT_Task,DT_FixedDUR2,TK_NotStart,DUKHPROGEN00PQAP1180,Road Works _Prequa. 1st App.,,176,0,240,0,0,0,240,0,0,0,,,,2013-03-13 08:00,2013-04-16 17:00,,2013-02-16 08:00,2013-03-21 17:00,2013-02-16 08:00,2013-03-21 17:00,2013-02-16 08:00,2013-03-21 17:00,2013-03-13 08:00,2013-04-16 17:00,,PT_Normal,,,,,dXkmhGCsQNmUtQEXArRVkQ,,,,N,0,0,,,2013-02-16 15:51,2013-02-16 15:56,admin,admin
499833,6359,124370,13662,0,N,N,N,CP_Drtn,TT_Task,DT_FixedDUR2,TK_NotStart,DUKHPROGEN00PQAP1110,Structural Steel works_Prequa. 1st App.,,320,0,240,0,0,0,240,0,0,0,,,,2013-02-27 08:00,2013-04-02 17:00,,2013-01-10 08:00,2013-02-14 17:00,2013-01-10 08:00,2013-02-14 17:00,2013-01-10 08:00,2013-02-14 17:00,2013-02-27 08:00,2013-04-02 17:00,,PT_Normal,,,,,1Nx4n0jmQsifUnMSYmQ4Ag,,,,N,0,0,,,2013-02-16 15:51,2013-02-16 16:45,admin,admin
499834,6359,124370,13662,0,N,N,N,CP_Drtn,TT_Task,DT_FixedDUR2,TK_NotStart,DUKHPROGEN00PQAP1120,Car Parking Shed_Prequa. 1st App.,,560,0,240,0,0,0,240,0,0,0,,,,2013-04-03 08:00,2013-05-07 17:00,,2013-01-10 08:00,2013-02-14 17:00,2013-01-10 08:00,2013-02-14 17:00,2013-01-10 08:00,2013-02-14 17:00,2013-04-03 08:00,2013-05-07 17:00,,PT_Normal,,,,,tl1znwdORgW5SEvhh31Ubw,,,,N,0,0,,,2013-02-16 15:51,2013-02-16 16:45,admin,admin
499835,6359,124370,13662,0,N,N,N,CP_Drtn,TT_Task,DT_FixedDUR2,TK_NotStart,DUKHPROGEN00PQAP1160,Soft landscaping /Irrigation _Prequa. 1st App.,,296,0,240,0,0,0,240,0,0,0,,,,2013-03-13 08:00,2013-04-16 17:00,,2013-01-28 08:00,2013-03-04 17:00,2013-01-28 08:00,2013-03-04 17:00,2013-01-28 08:00,2013-03-04 17:00,2013-03-13 08:00,2013-04-16 17:00,,PT_Normal,,,,,QKs/fqsIRZCOnqqIF5OZCA,,,,N,0,0,,,2013-02-16 15:51,2013-02-16 15:56,admin,admin
499836,6359,124370,13662,0,N,N,N,CP_Drtn,TT_Task,DT_FixedDUR2,TK_NotStart,DUKHPROGEN00PQAP1170,Pre-cast Boundary Wall _Prequa. 1st App.,,560,0,240,0,0,0,240,0,0,0,,,,2013-04-21 08:00,2013-05-25 17:00,,2013-01-28 08:00,2013-03-04 17:00,2013-01-28 08:00,2013-03-04 17:00,2013-01-28 08:00,2013-03-04 17:00,2013-04-21 08:00,2013-05-25 17:00,,PT_Normal,,,,,pjyNaT55QN+euZczgzXY5A,,,,N,0,0,,,2013-02-16 15:51,2013-02-16 16:45,admin,admin
499837,6359,124370,13662,0,N,N,N,CP_Drtn,TT_Task,DT_FixedDUR2,TK_NotStart,DUKHPROGEN00PQAP1130,Steel Door_Prequa. 1st App.,,680,0,240,0,0,0,240,0,0,0,,,,2013-04-21 08:00,2013-05-25 17:00,,2013-01-10 08:00,2013-02-14 17:00,2013-01-10 08:00,2013-02-14 17:00,2013-01-10 08:00,2013-02-14 17:00,2013-04-21 08:00,2013-05-25 17:00,,PT_Normal,,,,,oLOJYPQkSfmef4V04W7EVg,,,,N,0,0,,,2013-02-16 15:51,2013-02-16 16:45,admin,admin
499838,6359,124370,13662,0,N,N,N,CP_Drtn,TT_Task,DT_FixedDUR2,TK_NotStart,DUKHPROGEN00PQAP1140,PVC Tent_Prequa. 1st App.,,224,0,240,0,0,0,240,0,0,0,,,,2013-02-13 08:00,2013-03-19 17:00,,2013-01-10 08:00,2013-02-14 17:00,2013-01-10 08:00,2013-02-14 17:00,2013-01-10 08:00,2013-02-14 17:00,2013-02-13 08:00,2013-03-19 17:00,,PT_Normal,,,,,B193jFb9RS2Rjc7bieYjKg,,,,N,0,0,,,2013-02-16 15:51,2013-02-16 15:56,admin,admin
499839,6359,124371,13662,0,N,N,N,CP_Drtn,TT_Task,DT_FixedDUR2,TK_NotStart,DUKHPROGEN00PQAP2070,Wooden Doors_Prequa. 2nd App.,,208,0,240,0,0,0,240,0,0,0,,,,2013-03-16 08:00,2013-04-18 17:00,,2013-02-13 08:00,2013-03-19 17:00,2013-02-13 08:00,2013-03-19 17:00,2013-02-13 08:00,2013-03-19 17:00,2013-03-16 08:00,2013-04-18 17:00,,PT_Normal,,,,,1zCrdXdnRmioH7vCiqHouA,,,,N,0,0,,,2013-02-16 15:51,2013-02-16 15:56,admin,admin
499840,6359,124371,13662,0,N,N,N,CP_Drtn,TT_Task,DT_FixedDUR2,TK_NotStart,DUKHPROGEN00PQAP2150,Carpentry & Joinery Works_Prequa. 2nd App.,,344,0,240,0,0,0,240,0,0,0,,,,2013-04-22 08:00,2013-05-26 17:00,,2013-03-03 08:00,2013-04-06 17:00,2013-03-03 08:00,2013-04-06 17:00,2013-03-03 08:00,2013-04-06 17:00,2013-04-22 08:00,2013-05-26 17:00,,PT_Normal,,,,,V5DPXN15SoKUu1P5C+jjpA,,,,N,0,0,,,2013-02-16 15:51,2013-02-16 15:56,admin,admin
499841,6359,124371,13662,0,N,N,N,CP_Drtn,TT_Task,DT_FixedDUR2,TK_NotStart,DUKHPROGEN00PQAP2080,Aluminum Doors &  Windows_Prequa. 2nd App.,,208,0,240,0,0,0,240,0,0,0,,,,2013-03-16 08:00,2013-04-18 17:00,,2013-02-13 08:00,2013-03-19 17:00,2013-02-13 08:00,2013-03-19 17:00,2013-02-13 08:00,2013-03-19 17:00,2013-03-16 08:00,2013-04-18 17:00,,PT_Normal,,,,,dhNbusm+SMKcwtlDCoElsQ,,,,N,0,0,,,2013-02-16 15:51,2013-02-16 15:56,admin,admin
499842,6359,124371,13662,0,N,N,N,CP_Drtn,TT_Task,DT_FixedDUR2,TK_NotStart,DUKHPROGEN00PQAP2090,Granite_Prequa. 2nd App.,,368,0,240,0,0,0,240,0,0,0,,,,2013-04-08 08:00,2013-05-12 17:00,,2013-02-13 08:00,2013-03-19 17:00,2013-02-13 08:00,2013-03-19 17:00,2013-02-13 08:00,2013-03-19 17:00,2013-04-08 08:00,2013-05-12 17:00,,PT_Normal,,,,,4gBzssxrQNeK2aQ6ZRUkcA,,,,N,0,0,,,2013-02-16 15:51,2013-02-16 15:56,admin,admin
499843,6359,124371,13662,0,N,N,N,CP_Drtn,TT_Task,DT_FixedDUR2,TK_NotStart,DUKHPROGEN00PQAP2050,Ceiling Works_Prequa. 2nd App.,,80,0,240,0,0,0,240,0,0,0,,,,2013-02-19 08:00,2013-03-25 17:00,,2013-02-06 08:00,2013-03-13 17:00,2013-02-06 08:00,2013-03-13 17:00,2013-02-06 08:00,2013-03-13 17:00,2013-02-19 08:00,2013-03-25 17:00,,PT_Normal,,,,,sc/AfN15TfKVqjaE2pzsJQ,,,,N,0,0,,,2013-02-16 15:51,2013-02-16 15:56,admin,admin
499844,6359,124371,13662,0,N,N,N,CP_Drtn,TT_Task,DT_FixedDUR2,TK_NotStart,DUKHPROGEN00PQAP2060,GRC Panels_Prequa. 2nd App.,,504,0,240,0,0,0,240,0,0,0,,,,2013-04-16 08:00,2013-05-20 17:00,,2013-01-31 08:00,2013-03-07 17:00,2013-01-31 08:00,2013-03-07 17:00,2013-01-31 08:00,2013-03-07 17:00,2013-04-16 08:00,2013-05-20 17:00,,PT_Normal,,,,,a25T1+4oSmiAGBqix7Na8Q,,,,N,0,0,,,2013-02-16 15:51,2013-02-16 15:56,admin,admin
499845,6359,124371,13662,0,N,N,N,CP_Drtn,TT_Task,DT_FixedDUR2,TK_NotStart,DUKHPROGEN00PQAP2100,Roller Shutter_Prequa. 2nd App.,,232,0,240,0,0,0,240,0,0,0,,,,2013-03-16 08:00,2013-04-18 17:00,,2013-02-09 08:00,2013-03-16 17:00,2013-02-09 08:00,2013-03-16 17:00,2013-02-09 08:00,2013-03-16 17:00,2013-03-16 08:00,2013-04-18 17:00,,PT_Normal,,,,,ctid1VCtQkCgB0YnbRkolA,,,,N,0,0,,,2013-02-16 15:51,2013-02-16 15:56,admin,admin
499846,6359,124371,13662,0,N,N,N,CP_Drtn,TT_Task,DT_FixedDUR2,TK_NotStart,DUKHPROGEN00PQAP2180,Road Works _Prequa. 2nd App.,,176,0,240,0,0,0,240,0,0,0,,,,2013-04-29 08:00,2013-06-02 17:00,,2013-04-03 08:00,2013-05-07 17:00,2013-04-03 08:00,2013-05-07 17:00,2013-04-03 08:00,2013-05-07 17:00,2013-04-29 08:00,2013-06-02 17:00,,PT_Normal,,,,,XVZqivyASZqrgLirS2d6Ig,,,,N,0,0,,,2013-02-16 15:51,2013-02-16 15:56,admin,admin
499847,6359,124371,13662,0,N,N,N,CP_Drtn,TT_Task,DT_FixedDUR2,TK_NotStart,DUKHPROGEN00PQAP2110,Structural Steel works_Prequa. 2nd App.,,320,0,240,0,0,0,240,0,0,0,,,,2013-04-15 08:00,2013-05-19 17:00,,2013-02-27 08:00,2013-04-02 17:00,2013-02-27 08:00,2013-04-02 17:00,2013-02-27 08:00,2013-04-02 17:00,2013-04-15 08:00,2013-05-19 17:00,,PT_Normal,,,,,0qZrMYeZSWydm6P1BjcmNw,,,,N,0,0,,,2013-02-16 15:51,2013-02-16 16:45,admin,admin
499848,6359,124371,13662,0,N,N,N,CP_Drtn,TT_Task,DT_FixedDUR2,TK_NotStart,DUKHPROGEN00PQAP2120,Car Parking Shed_Prequa. 2nd App.,,560,240,240,0,0,0,240,0,0,0,,,,2013-05-20 08:00,2013-06-23 17:00,,2013-02-27 08:00,2013-04-02 17:00,2013-02-27 08:00,2013-04-02 17:00,2013-02-27 08:00,2013-04-02 17:00,2013-05-20 08:00,2013-06-23 17:00,,PT_Normal,,,,,CBUkRDYjRFSyqaja3CSASw,,,,N,0,0,,,2013-02-16 15:51,2013-02-16 16:45,admin,admin
499849,6359,124371,13662,0,N,N,N,CP_Drtn,TT_Task,DT_FixedDUR2,TK_NotStart,DUKHPROGEN00PQAP2160,Soft landscaping /Irrigation _Prequa. 2nd App.,,296,0,240,0,0,0,240,0,0,0,,,,2013-04-29 08:00,2013-06-02 17:00,,2013-03-17 08:00,2013-04-20 17:00,2013-03-17 08:00,2013-04-20 17:00,2013-03-17 08:00,2013-04-20 17:00,2013-04-29 08:00,2013-06-02 17:00,,PT_Normal,,,,,o74M114SRrqt60nZ9skthw,,,,N,0,0,,,2013-02-16 15:51,2013-02-16 15:56,admin,admin
499850,6359,124371,13662,0,N,N,N,CP_Drtn,TT_Task,DT_FixedDUR2,TK_NotStart,DUKHPROGEN00PQAP2170,Pre-cast Boundary Wall _Prequa. 2nd App.,,560,240,240,0,0,0,240,0,0,0,,,,2013-06-06 08:00,2013-07-10 17:00,,2013-03-17 08:00,2013-04-20 17:00,2013-03-17 08:00,2013-04-20 17:00,2013-03-17 08:00,2013-04-20 17:00,2013-06-06 08:00,2013-07-10 17:00,,PT_Normal,,,,,FYAKtstCReyedaMKeIvvOw,,,,N,0,0,,,2013-02-16 15:51,2013-02-16 16:45,admin,admin
499851,6359,124371,13662,0,N,N,N,CP_Drtn,TT_Task,DT_FixedDUR2,TK_NotStart,DUKHPROGEN00PQAP2130,Steel Door_Prequa. 2nd App.,,680,360,240,0,0,0,240,0,0,0,,,,2013-06-06 08:00,2013-07-10 17:00,,2013-02-27 08:00,2013-04-02 17:00,2013-02-27 08:00,2013-04-02 17:00,2013-02-27 08:00,2013-04-02 17:00,2013-06-06 08:00,2013-07-10 17:00,,PT_Normal,,,,,xIXyO10BQdmXVrgdmx8jTw,,,,N,0,0,,,2013-02-16 15:51,2013-02-16 16:45,admin,admin
499852,6359,124371,13662,0,N,N,N,CP_Drtn,TT_Task,DT_FixedDUR2,TK_NotStart,DUKHPROGEN00PQAP2140,PVC Tent_Prequa. 2nd App.,,224,0,240,0,0,0,240,0,0,0,,,,2013-04-01 08:00,2013-05-05 17:00,,2013-02-27 08:00,2013-04-02 17:00,2013-02-27 08:00,2013-04-02 17:00,2013-02-27 08:00,2013-04-02 17:00,2013-04-01 08:00,2013-05-05 17:00,,PT_Normal,,,,,85ZO41dQTR6D27reQX09Ig,,,,N,0,0,,,2013-02-16 15:51,2013-02-16 15:56,admin,admin
499853,6359,124371,13662,0,N,N,N,CP_Drtn,TT_Task,DT_FixedDUR2,TK_NotStart,DUKHPROGEN00PQAP2040,MEPD_Prequa. 2nd App.,,32,0,240,0,0,0,240,0,0,0,,,,2013-01-21 08:00,2013-02-25 17:00,,2013-01-16 08:00,2013-02-20 17:00,2013-01-16 08:00,2013-02-20 17:00,2013-01-16 08:00,2013-02-20 17:00,2013-01-21 08:00,2013-02-25 17:00,,PT_Normal,,,,,5m3dpAJkQKqvXDws1iWFyQ,,,,N,0,0,,,2013-02-16 15:51,2013-02-16 16:35,admin,admin
499854,6359,124372,13662,0,N,N,N,CP_Drtn,TT_Task,DT_FixedDUR2,TK_NotStart,DUKHPROGEN00PQSM1000,Anti Termite Treatment_Prequa. 1st Sub.,11918,32,0,56,0,14,14,56,0,0,0,,,,2012-11-06 08:00,2012-11-13 17:00,,2012-11-01 08:00,2012-11-08 17:00,2012-11-01 08:00,2012-11-08 17:00,2012-11-01 08:00,2012-11-08 17:00,2012-11-06 08:00,2012-11-13 17:00,,PT_Normal,,,,,0pecTXKuThCysn6J4pcnOw,,,,N,0,0,,,2013-02-16 15:51,2013-02-16 16:35,admin,admin
499855,6359,124372,13662,0,N,N,N,CP_Drtn,TT_Task,DT_FixedDUR2,TK_NotStart,DUKHPROGEN00PQSM1010,Concrete_Prequa. 1st Sub.,11918,32,0,64,0,16,16,64,0,0,0,,,,2012-11-06 08:00,2012-11-14 17:00,,2012-11-01 08:00,2012-11-10 17:00,2012-11-01 08:00,2012-11-10 17:00,2012-11-01 08:00,2012-11-10 17:00,2012-11-06 08:00,2012-11-14 17:00,,PT_Normal,,,,,GiQc8FCeTM6nKUAL3QQJvw,,,,N,0,0,,,2013-02-16 15:51,2013-02-16 16:35,admin,admin
499856,6359,124372,13662,0,N,N,N,CP_Drtn,TT_Task,DT_FixedDUR2,TK_NotStart,DUKHPROGEN00PQSM1020,Waterproofing  -Wet Area _Prequa. 1st Sub.,11918,80,0,112,0,28,28,112,0,0,0,,,,2012-11-22 08:00,2012-12-08 17:00,,2012-11-11 08:00,2012-11-26 17:00,2012-11-11 08:00,2012-11-26 17:00,2012-11-11 08:00,2012-11-26 17:00,2012-11-22 08:00,2012-12-08 17:00,,PT_Normal,,,,,e8i4ZaTEQNaPwJaZejSeqA,,,,N,0,0,,,2013-02-16 15:51,2013-02-16 15:56,admin,admin
499857,6359,124372,13662,0,N,N,N,CP_Drtn,TT_Task,DT_FixedDUR2,TK_NotStart,DUKHPROGEN00PQSM1030,Waterproofing  -Roof_Prequa. 1st Sub.,,80,0,112,0,28,28,112,0,0,0,,,,2012-11-22 08:00,2012-12-08 17:00,,2012-11-11 08:00,2012-11-26 17:00,2012-11-11 08:00,2012-11-26 17:00,2012-11-11 08:00,2012-11-26 17:00,2012-11-22 08:00,2012-12-08 17:00,,PT_Normal,,,,,xaNo8x/YQeeTebKLWG+nLQ,,,,N,0,0,,,2013-02-16 15:51,2013-02-16 15:56,admin,admin
499858,6359,124372,13662,0,N,N,N,CP_Drtn,TT_Task,DT_FixedDUR2,TK_NotStart,DUKHPROGEN00PQSM1070,Wooden Doors_Prequa. 1st Sub.,,208,0,120,0,30,30,120,0,0,0,,,,2013-01-09 08:00,2013-01-26 17:00,,2012-12-09 08:00,2012-12-26 17:00,2012-12-09 08:00,2012-12-26 17:00,2012-12-09 08:00,2012-12-26 17:00,2013-01-09 08:00,2013-01-26 17:00,,PT_Normal,,,,,9i0SXUvKSGqxEFST1hEzOw,,,,N,0,0,,,2013-02-16 15:51,2013-02-16 15:56,admin,admin
499859,6359,124372,13662,0,N,N,N,CP_Drtn,TT_Task,DT_FixedDUR2,TK_NotStart,DUKHPROGEN00PQSM1150,Carpentry & Joinery Works_Prequa. 1st Sub.,,344,0,120,0,30,30,120,0,0,0,,,,2013-02-17 08:00,2013-03-05 17:00,,2012-12-27 08:00,2013-01-13 17:00,2012-12-27 08:00,2013-01-13 17:00,2012-12-27 08:00,2013-01-13 17:00,2013-02-17 08:00,2013-03-05 17:00,,PT_Normal,,,,,wUYBPUO+T82KevHz/mugHg,,,,N,0,0,,,2013-02-16 15:51,2013-02-16 15:56,admin,admin
499860,6359,124372,13662,0,N,N,N,CP_Drtn,TT_Task,DT_FixedDUR2,TK_NotStart,DUKHPROGEN00PQSM1080,Aluminum Doors &  Windows_Prequa. 1st Sub.,,208,0,120,0,30,30,120,0,0,0,,,,2013-01-09 08:00,2013-01-26 17:00,,2012-12-09 08:00,2012-12-26 17:00,2012-12-09 08:00,2012-12-26 17:00,2012-12-09 08:00,2012-12-26 17:00,2013-01-09 08:00,2013-01-26 17:00,,PT_Normal,,,,,D9lvn6i/QW2QzO+b5WQ7gA,,,,N,0,0,,,2013-02-16 15:51,2013-02-16 15:56,admin,admin
499861,6359,124372,13662,0,N,N,N,CP_Drtn,TT_Task,DT_FixedDUR2,TK_NotStart,DUKHPROGEN00PQSM1090,Granite_Prequa. 1st Sub.,,368,0,120,0,30,30,120,0,0,0,,,,2013-02-02 08:00,2013-02-19 17:00,,2012-12-09 08:00,2012-12-26 17:00,2012-12-09 08:00,2012-12-26 17:00,2012-12-09 08:00,2012-12-26 17:00,2013-02-02 08:00,2013-02-19 17:00,,PT_Normal,,,,,txApPcAGQ7em3mOukfW9Bw,,,,N,0,0,,,2013-02-16 15:51,2013-02-16 15:56,admin,admin
499862,6359,124372,13662,0,N,N,N,CP_Drtn,TT_Task,DT_FixedDUR2,TK_NotStart,DUKHPROGEN00PQSM1050,Ceiling Works_Prequa. 1st Sub.,,80,0,128,0,32,32,128,0,0,0,,,,2012-12-09 08:00,2012-12-27 17:00,,2012-11-27 08:00,2012-12-15 17:00,2012-11-27 08:00,2012-12-15 17:00,2012-11-27 08:00,2012-12-15 17:00,2012-12-09 08:00,2012-12-27 17:00,,PT_Normal,,,,,5jo+j4sNR0a9D0BB9sr2Bg,,,,N,0,0,,,2013-02-16 15:51,2013-02-16 15:56,admin,admin
499863,6359,124372,13662,0,N,N,N,CP_Drtn,TT_Task,DT_FixedDUR2,TK_NotStart,DUKHPROGEN00PQSM1060,GRC Panels_Prequa. 1st Sub.,,176,0,120,0,30,30,120,0,0,0,,,,2012-12-24 08:00,2013-01-09 17:00,,2012-11-27 08:00,2012-12-13 17:00,2012-11-27 08:00,2012-12-13 17:00,2012-11-27 08:00,2012-12-13 17:00,2012-12-24 08:00,2013-01-09 17:00,,PT_Normal,,,,,I9EWoGbjS/CZ4mydhW3EWQ,,,,N,0,0,,,2013-02-16 15:51,2013-02-16 15:56,admin,admin
499864,6359,124372,13662,0,N,N,N,CP_Drtn,TT_Task,DT_FixedDUR2,TK_NotStart,DUKHPROGEN00PQSM1100,Roller Shutter_Prequa. 1st Sub.,,176,0,120,0,30,30,120,0,0,0,,,,2013-01-01 08:00,2013-01-17 17:00,,2012-12-05 08:00,2012-12-23 17:00,2012-12-05 08:00,2012-12-23 17:00,2012-12-05 08:00,2012-12-23 17:00,2013-01-01 08:00,2013-01-17 17:00,,PT_Normal,,,,,l1D7v2QbQU6e+PlSDvtq3A,,,,N,0,0,,,2013-02-16 15:51,2013-02-16 15:56,admin,admin
499865,6359,124372,13662,0,N,N,N,CP_Drtn,TT_Task,DT_FixedDUR2,TK_NotStart,DUKHPROGEN00PQSM1180,Road Works _Prequa. 1st Sub.,,176,0,120,0,30,30,120,0,0,0,,,,2013-02-24 08:00,2013-03-12 17:00,,2013-01-28 08:00,2013-02-14 17:00,2013-01-28 08:00,2013-02-14 17:00,2013-01-28 08:00,2013-02-14 17:00,2013-02-24 08:00,2013-03-12 17:00,,PT_Normal,,,,,4tuM0s6/RJGVaNA2YHRtJg,,,,N,0,0,,,2013-02-16 15:51,2013-02-16 15:56,admin,admin
499866,6359,124372,13662,0,N,N,N,CP_Drtn,TT_Task,DT_FixedDUR2,TK_NotStart,DUKHPROGEN00PQSM1110,Structural Steel works_Prequa. 1st Sub.,,176,0,120,0,30,30,120,0,0,0,,,,2013-01-19 08:00,2013-02-04 17:00,,2012-12-24 08:00,2013-01-09 17:00,2012-12-24 08:00,2013-01-09 17:00,2012-12-24 08:00,2013-01-09 17:00,2013-01-19 08:00,2013-02-04 17:00,,PT_Normal,,,,,Qf0bo65zQrGD7vIKfKsVpg,,,,N,0,0,,,2013-02-16 15:51,2013-02-16 15:56,admin,admin
499867,6359,124372,13662,0,N,N,N,CP_Drtn,TT_Task,DT_FixedDUR2,TK_NotStart,DUKHPROGEN00PQSM1120,Car Parking Shed_Prequa. 1st Sub.,,176,0,120,0,30,30,120,0,0,0,,,,2013-01-19 08:00,2013-02-04 17:00,,2012-12-24 08:00,2013-01-09 17:00,2012-12-24 08:00,2013-01-09 17:00,2012-12-24 08:00,2013-01-09 17:00,2013-01-19 08:00,2013-02-04 17:00,,PT_Normal,,,,,ilnjxFq6QO2gGM0bQ6nG0Q,,,,N,0,0,,,2013-02-16 15:51,2013-02-16 15:56,admin,admin
499868,6359,124372,13662,0,N,N,N,CP_Drtn,TT_Task,DT_FixedDUR2,TK_NotStart,DUKHPROGEN00PQSM1160,Soft landscaping /Irrigation _Prequa. 1st Sub.,,176,0,120,0,30,30,120,0,0,0,,,,2013-02-05 08:00,2013-02-23 17:00,,2013-01-10 08:00,2013-01-27 17:00,2013-01-10 08:00,2013-01-27 17:00,2013-01-10 08:00,2013-01-27 17:00,2013-02-05 08:00,2013-02-23 17:00,,PT_Normal,,,,,kkOy/lcRQOGEb5xZiNFWNg,,,,N,0,0,,,2013-02-16 15:51,2013-02-16 15:56,admin,admin
499869,6359,124372,13662,0,N,N,N,CP_Drtn,TT_Task,DT_FixedDUR2,TK_NotStart,DUKHPROGEN00PQSM1170,Pre-cast Boundary Wall _Prequa. 1st Sub.,,560,0,120,0,30,30,120,0,0,0,,,,2013-04-03 08:00,2013-04-20 17:00,,2013-01-10 08:00,2013-01-27 17:00,2013-01-10 08:00,2013-01-27 17:00,2013-01-10 08:00,2013-01-27 17:00,2013-04-03 08:00,2013-04-20 17:00,,PT_Normal,,,,,QJBDZA6CRwKZVtVenir1gQ,,,,N,0,0,,,2013-02-16 15:51,2013-02-16 16:45,admin,admin
499870,6359,124372,13662,0,N,N,N,CP_Drtn,TT_Task,DT_FixedDUR2,TK_NotStart,DUKHPROGEN00PQSM1130,Steel Door_Prequa. 1st Sub.,,680,0,120,0,30,30,120,0,0,0,,,,2013-04-03 08:00,2013-04-20 17:00,,2012-12-24 08:00,2013-01-09 17:00,2012-12-24 08:00,2013-01-09 17:00,2012-12-24 08:00,2013-01-09 17:00,2013-04-03 08:00,2013-04-20 17:00,,PT_Normal,,,,,5cXkRsZKR1+eOHhkPHpWqA,,,,N,0,0,,,2013-02-16 15:51,2013-02-16 16:45,admin,admin
499871,6359,124372,13662,0,N,N,N,CP_Drtn,TT_Task,DT_FixedDUR2,TK_NotStart,DUKHPROGEN00PQSM1140,PVC Tent_Prequa. 1st Sub.,,224,0,120,0,30,30,120,0,0,0,,,,2013-01-26 08:00,2013-02-11 17:00,,2012-12-24 08:00,2013-01-09 17:00,2012-12-24 08:00,2013-01-09 17:00,2012-12-24 08:00,2013-01-09 17:00,2013-01-26 08:00,2013-02-11 17:00,,PT_Normal,,,,,GY7IXbPLTTK/eEzDxc9ruw,,,,N,0,0,,,2013-02-16 15:51,2013-02-16 15:56,admin,admin
499872,6359,124372,13662,0,N,N,N,CP_Drtn,TT_Task,DT_FixedDUR2,TK_NotStart,DUKHPROGEN00PQSM1040,MEPD_Prequa. 1st Sub.,,32,0,112,0,28,28,112,0,0,0,,,,2012-11-15 08:00,2012-12-01 17:00,,2012-11-11 08:00,2012-11-26 17:00,2012-11-11 08:00,2012-11-26 17:00,2012-11-11 08:00,2012-11-26 17:00,2012-11-15 08:00,2012-12-01 17:00,,PT_Normal,,,,,4tXW3AuBTnWwHi6JgJ/KBQ,,,,N,0,0,,,2013-02-16 15:51,2013-02-16 16:35,admin,admin
499873,6359,124373,13662,0,N,N,N,CP_Drtn,TT_Task,DT_FixedDUR2,TK_NotStart,DUKHPROGEN00PQSM2070,Wooden Doors_Prequa. 2nd Sub.,,208,0,80,0,15,15,80,0,0,0,,,,2013-03-04 08:00,2013-03-14 17:00,,2013-01-31 08:00,2013-02-11 17:00,2013-01-31 08:00,2013-02-11 17:00,2013-01-31 08:00,2013-02-11 17:00,2013-03-04 08:00,2013-03-14 17:00,,PT_Normal,,,,,CbVZW7DiR6qNOUk8ibiAeg,,,,N,0,0,,,2013-02-16 15:51,2013-02-16 15:56,admin,admin
499874,6359,124373,13662,0,N,N,N,CP_Drtn,TT_Task,DT_FixedDUR2,TK_NotStart,DUKHPROGEN00PQSM2150,Carpentry & Joinery Works_Prequa. 2nd Sub.,,344,0,80,0,15,15,80,0,0,0,,,,2013-04-10 08:00,2013-04-21 17:00,,2013-02-19 08:00,2013-03-02 17:00,2013-02-19 08:00,2013-03-02 17:00,2013-02-19 08:00,2013-03-02 17:00,2013-04-10 08:00,2013-04-21 17:00,,PT_Normal,,,,,dIjlcmGdQKyc0+IZS1Y+9A,,,,N,0,0,,,2013-02-16 15:51,2013-02-16 15:56,admin,admin
499875,6359,124373,13662,0,N,N,N,CP_Drtn,TT_Task,DT_FixedDUR2,TK_NotStart,DUKHPROGEN00PQSM2080,Aluminum Doors &  Windows_Prequa. 2nd Sub.,,208,0,80,0,15,15,80,0,0,0,,,,2013-03-04 08:00,2013-03-14 17:00,,2013-01-31 08:00,2013-02-11 17:00,2013-01-31 08:00,2013-02-11 17:00,2013-01-31 08:00,2013-02-11 17:00,2013-03-04 08:00,2013-03-14 17:00,,PT_Normal,,,,,W7jWMjQ8TxqKNBFaA7LOYg,,,,N,0,0,,,2013-02-16 15:51,2013-02-16 15:56,admin,admin
499876,6359,124373,13662,0,N,N,N,CP_Drtn,TT_Task,DT_FixedDUR2,TK_NotStart,DUKHPROGEN00PQSM2090,Granite_Prequa. 2nd Sub.,,368,0,80,0,15,15,80,0,0,0,,,,2013-03-27 08:00,2013-04-07 17:00,,2013-01-31 08:00,2013-02-11 17:00,2013-01-31 08:00,2013-02-11 17:00,2013-01-31 08:00,2013-02-11 17:00,2013-03-27 08:00,2013-04-07 17:00,,PT_Normal,,,,,uY6svZ/ATIes22INlSgUlQ,,,,N,0,0,,,2013-02-16 15:51,2013-02-16 15:56,admin,admin
499877,6359,124373,13662,0,N,N,N,CP_Drtn,TT_Task,DT_FixedDUR2,TK_NotStart,DUKHPROGEN00PQSM2050,Ceiling Works_Prequa. 2nd Sub.,,80,0,112,0,21,21,112,0,0,0,,,,2013-02-02 08:00,2013-02-18 17:00,,2013-01-21 08:00,2013-02-05 17:00,2013-01-21 08:00,2013-02-05 17:00,2013-01-21 08:00,2013-02-05 17:00,2013-02-02 08:00,2013-02-18 17:00,,PT_Normal,,,,,321Xi0rbR3u/GYc0He3R6g,,,,N,0,0,,,2013-02-16 15:51,2013-02-16 15:56,admin,admin
499878,6359,124373,13662,0,N,N,N,CP_Drtn,TT_Task,DT_FixedDUR2,TK_NotStart,DUKHPROGEN00PQSM2060,GRC Panels_Prequa. 2nd Sub.,,504,0,80,0,15,15,80,0,0,0,,,,2013-04-04 08:00,2013-04-15 17:00,,2013-01-20 08:00,2013-01-30 17:00,2013-01-20 08:00,2013-01-30 17:00,2013-01-20 08:00,2013-01-30 17:00,2013-04-04 08:00,2013-04-15 17:00,,PT_Normal,,,,,MIbNMv6tRpeAfgUNUb5EUQ,,,,N,0,0,,,2013-02-16 15:51,2013-02-16 15:56,admin,admin
499879,6359,124373,13662,0,N,N,N,CP_Drtn,TT_Task,DT_FixedDUR2,TK_NotStart,DUKHPROGEN00PQSM2100,Roller Shutter_Prequa. 2nd Sub.,,232,0,80,0,15,15,80,0,0,0,,,,2013-03-04 08:00,2013-03-14 17:00,,2013-01-28 08:00,2013-02-07 17:00,2013-01-28 08:00,2013-02-07 17:00,2013-01-28 08:00,2013-02-07 17:00,2013-03-04 08:00,2013-03-14 17:00,,PT_Normal,,,,,0Ga+V4cvTLi8qZmBT78XbA,,,,N,0,0,,,2013-02-16 15:51,2013-02-16 15:56,admin,admin
499880,6359,124373,13662,0,N,N,N,CP_Drtn,TT_Task,DT_FixedDUR2,TK_NotStart,DUKHPROGEN00PQSM2180,Road Works _Prequa. 2nd Sub.,,176,0,80,0,15,15,80,0,0,0,,,,2013-04-17 08:00,2013-04-28 17:00,,2013-03-23 08:00,2013-04-02 17:00,2013-03-23 08:00,2013-04-02 17:00,2013-03-23 08:00,2013-04-02 17:00,2013-04-17 08:00,2013-04-28 17:00,,PT_Normal,,,,,dmVo6cq8TMupnS2/mkc/HQ,,,,N,0,0,,,2013-02-16 15:51,2013-02-16 15:56,admin,admin
499881,6359,124373,13662,0,N,N,N,CP_Drtn,TT_Task,DT_FixedDUR2,TK_NotStart,DUKHPROGEN00PQSM2110,Structural Steel works_Prequa. 2nd Sub.,,320,0,80,0,15,15,80,0,0,0,,,,2013-04-03 08:00,2013-04-14 17:00,,2013-02-16 08:00,2013-02-26 17:00,2013-02-16 08:00,2013-02-26 17:00,2013-02-16 08:00,2013-02-26 17:00,2013-04-03 08:00,2013-04-14 17:00,,PT_Normal,,,,,zV//qnVWT+6FI7Gl5UDoyQ,,,,N,0,0,,,2013-02-16 15:51,2013-02-16 16:45,admin,admin
499882,6359,124373,13662,0,N,N,N,CP_Drtn,TT_Task,DT_FixedDUR2,TK_NotStart,DUKHPROGEN00PQSM2120,Car Parking Shed_Prequa. 2nd Sub.,,560,0,80,0,15,15,80,0,0,0,,,,2013-05-08 08:00,2013-05-19 17:00,,2013-02-16 08:00,2013-02-26 17:00,2013-02-16 08:00,2013-02-26 17:00,2013-02-16 08:00,2013-02-26 17:00,2013-05-08 08:00,2013-05-19 17:00,,PT_Normal,,,,,8zEvZm41TpS/LRqTBC+prA,,,,N,0,0,,,2013-02-16 15:51,2013-02-16 16:45,admin,admin
499883,6359,124373,13662,0,N,N,N,CP_Drtn,TT_Task,DT_FixedDUR2,TK_NotStart,DUKHPROGEN00PQSM2160,Soft landscaping /Irrigation _Prequa. 2nd Sub.,,296,0,80,0,12,12,80,0,0,0,,,,2013-04-17 08:00,2013-04-28 17:00,,2013-03-05 08:00,2013-03-16 17:00,2013-03-05 08:00,2013-03-16 17:00,2013-03-05 08:00,2013-03-16 17:00,2013-04-17 08:00,2013-04-28 17:00,,PT_Normal,,,,,r4LYV/qeQWGMjGy4DXKsag,,,,N,0,0,,,2013-02-16 15:51,2013-02-16 15:56,admin,admin
499884,6359,124373,13662,0,N,N,N,CP_Drtn,TT_Task,DT_FixedDUR2,TK_NotStart,DUKHPROGEN00PQSM2170,Pre-cast Boundary Wall _Prequa. 2nd Sub.,,560,0,80,0,12,12,80,0,0,0,,,,2013-05-26 08:00,2013-06-05 17:00,,2013-03-05 08:00,2013-03-16 17:00,2013-03-05 08:00,2013-03-16 17:00,2013-03-05 08:00,2013-03-16 17:00,2013-05-26 08:00,2013-06-05 17:00,,PT_Normal,,,,,j6nipW33R2+HwclLGV4Djg,,,,N,0,0,,,2013-02-16 15:51,2013-02-16 16:45,admin,admin
499885,6359,124373,13662,0,N,N,N,CP_Drtn,TT_Task,DT_FixedDUR2,TK_NotStart,DUKHPROGEN00PQSM2130,Steel Door_Prequa. 2nd Sub.,,680,0,80,0,15,15,80,0,0,0,,,,2013-05-26 08:00,2013-06-05 17:00,,2013-02-16 08:00,2013-02-26 17:00,2013-02-16 08:00,2013-02-26 17:00,2013-02-16 08:00,2013-02-26 17:00,2013-05-26 08:00,2013-06-05 17:00,,PT_Normal,,,,,AjC2gIkgRTSunNE53YqzxQ,,,,N,0,0,,,2013-02-16 15:51,2013-02-16 16:45,admin,admin
499886,6359,124373,13662,0,N,N,N,CP_Drtn,TT_Task,DT_FixedDUR2,TK_NotStart,DUKHPROGEN00PQSM2140,PVC Tent_Prequa. 2nd Sub.,,224,0,80,0,15,15,80,0,0,0,,,,2013-03-20 08:00,2013-03-31 17:00,,2013-02-16 08:00,2013-02-26 17:00,2013-02-16 08:00,2013-02-26 17:00,2013-02-16 08:00,2013-02-26 17:00,2013-03-20 08:00,2013-03-31 17:00,,PT_Normal,,,,,b9bcPOiITCaCbKbLCmksnw,,,,N,0,0,,,2013-02-16 15:51,2013-02-16 15:56,admin,admin
499887,6359,124373,13662,0,N,N,N,CP_Drtn,TT_Task,DT_FixedDUR2,TK_NotStart,DUKHPROGEN00PQSM2040,MEPD_Prequa. 2nd Sub.,,32,0,96,0,18,18,96,0,0,0,,,,2013-01-07 08:00,2013-01-20 17:00,,2013-01-02 08:00,2013-01-15 17:00,2013-01-02 08:00,2013-01-15 17:00,2013-01-02 08:00,2013-01-15 17:00,2013-01-07 08:00,2013-01-20 17:00,,PT_Normal,,,,,VoBuPQDARf+TAbobqVjqDw,,,,N,0,0,,,2013-02-16 15:51,2013-02-16 16:35,admin,admin
499888,6359,124374,13663,0,N,N,N,CP_Drtn,TT_Task,DT_FixedDUR2,TK_NotStart,DUKHPROGEN00PRDV3000,Proc & Del Anti Termite,,432,432,56,0,0,0,56,0,0,0,,,,2013-02-19 08:00,2013-02-25 17:00,,2012-12-27 08:00,2013-01-02 17:00,2012-12-27 08:00,2013-01-02 17:00,2012-12-27 08:00,2013-01-02 17:00,2013-02-19 08:00,2013-02-25 17:00,,PT_Normal,,,,,8Wb7S9GTTV+6+/TstzWrFg,,,,N,0,0,,,2013-02-16 15:51,2013-02-16 15:56,admin,admin
499889,6359,124374,13663,0,N,N,N,CP_Drtn,TT_Task,DT_FixedDUR2,TK_NotStart,DUKHPROGEN00PRDV3020,Proc & Del Concrete,,368,368,56,0,0,0,56,0,0,0,,,,2013-02-12 08:00,2013-02-18 17:00,,2012-12-28 08:00,2013-01-03 17:00,2012-12-28 08:00,2013-01-03 17:00,2012-12-28 08:00,2013-01-03 17:00,2013-02-12 08:00,2013-02-18 17:00,,PT_Normal,,,,,Xt7xHu/7Sum0+Z1YhLGa3Q,,,,N,0,0,,,2013-02-16 15:51,2013-02-16 15:56,admin,admin
499890,6359,124374,13663,0,N,N,N,CP_Drtn,TT_Task,DT_FixedDUR2,TK_NotStart,DUKHPROGEN00PRDV3030,Proc & Del Waterproofing,,360,360,56,0,0,0,56,0,0,0,,,,2013-02-28 08:00,2013-03-06 17:00,,2013-01-14 08:00,2013-01-20 17:00,2013-01-14 08:00,2013-01-20 17:00,2013-01-14 08:00,2013-01-20 17:00,2013-02-28 08:00,2013-03-06 17:00,,PT_Normal,,,,,4uWAzpkSSBW2cvnA0O1nqw,,,,N,0,0,,,2013-02-16 15:51,2013-02-16 15:56,admin,admin
499891,6359,124374,13663,0,N,N,N,CP_Drtn,TT_Task,DT_FixedDUR2,TK_NotStart,DUKHPROGEN00PRDV3010,Proc & Del Block Work,,560,560,80,0,0,0,80,0,0,0,,,,2013-03-13 08:00,2013-03-22 17:00,,2013-01-02 08:00,2013-01-11 17:00,2013-01-02 08:00,2013-01-11 17:00,2013-01-02 08:00,2013-01-11 17:00,2013-03-13 08:00,2013-03-22 17:00,,PT_Normal,,,,,fXsxZGT8QEqOUtRWh67eiw,,,,N,0,0,,,2013-02-16 15:51,2013-02-16 15:56,admin,admin
499892,6359,124374,13663,0,N,N,N,CP_Drtn,TT_Task,DT_FixedDUR2,TK_NotStart,DUKHPROGEN00PRDV3040,Proc & Del Plastering & Accessories,,784,576,480,0,0,0,480,0,0,0,,,,2013-07-19 08:00,2013-09-16 17:00,,2013-04-12 08:00,2013-06-10 17:00,2013-04-12 08:00,2013-06-10 17:00,2013-04-12 08:00,2013-06-10 17:00,2013-07-19 08:00,2013-09-16 17:00,,PT_Normal,,,,,/LnHX4KXQY6ZoOfPD45ldw,,,,N,0,0,,,2013-02-16 15:51,2013-02-16 15:56,admin,admin
499893,6359,124374,13663,0,N,N,N,CP_Drtn,TT_Task,DT_FixedDUR2,TK_NotStart,DUKHPROGEN00PRDV3050,Proc & Del Thermal Insulation,,1040,696,480,0,0,0,480,0,0,0,,,,2013-08-29 08:00,2013-10-27 17:00,,2013-04-21 08:00,2013-06-19 17:00,2013-04-21 08:00,2013-06-19 17:00,2013-04-21 08:00,2013-06-19 17:00,2013-08-29 08:00,2013-10-27 17:00,,PT_Normal,,,,,FLXiaGN9Qt2t0NtPrPZjXg,,,,N,0,0,,,2013-02-16 15:51,2013-02-16 15:56,admin,admin
499894,6359,124374,13663,0,N,N,N,CP_Drtn,TT_Task,DT_FixedDUR2,TK_NotStart,DUKHPROGEN00PRDV3140,Proc & Del Pitch roofing,,840,560,320,0,0,0,320,0,0,0,,,,2013-08-13 08:00,2013-09-21 17:00,,2013-04-30 08:00,2013-06-08 17:00,2013-04-30 08:00,2013-06-08 17:00,2013-04-30 08:00,2013-06-08 17:00,2013-08-13 08:00,2013-09-21 17:00,,PT_Normal,,,,,L0SSzgrYRoey+9qpbcsJuQ,,,,N,0,0,,,2013-02-16 15:51,2013-02-16 15:56,admin,admin
499895,6359,124374,13663,0,N,N,N,CP_Drtn,TT_Task,DT_FixedDUR2,TK_NotStart,DUKHPROGEN00PRDV3490,Proc & Del Wooden Doors,,248,16,960,0,0,0,960,0,0,0,,,,2013-07-22 08:00,2013-11-18 17:00,,2013-06-21 08:00,2013-10-18 17:00,2013-06-21 08:00,2013-10-18 17:00,2013-06-21 08:00,2013-10-18 17:00,2013-07-22 08:00,2013-11-18 17:00,,PT_Normal,,,,,0XGijsp8RzGuktC6GD9jhA,,,,N,0,0,,,2013-02-16 15:51,2013-02-16 15:56,admin,admin
499896,6359,124374,13663,0,N,N,N,CP_Drtn,TT_Task,DT_FixedDUR2,TK_NotStart,DUKHPROGEN00PRDV3440,Proc & Del PVC Doors,,888,360,720,0,0,0,720,0,0,0,,,,2013-10-10 08:00,2014-01-07 17:00,,2013-06-21 08:00,2013-09-18 17:00,2013-06-21 08:00,2013-09-18 17:00,2013-06-21 08:00,2013-09-18 17:00,2013-10-10 08:00,2014-01-07 17:00,,PT_Normal,,,,,umqCD0GXTBmoihKz5x/XmQ,,,,N,0,0,,,2013-02-16 15:51,2013-02-16 15:56,admin,admin
499897,6359,124374,13663,0,N,N,N,CP_Drtn,TT_Task,DT_FixedDUR2,TK_NotStart,DUKHPROGEN00PRDV3550,Proc & Del Closets /wardrobe& Pelmets,,432,0,960,0,0,0,960,0,0,0,,,,2013-09-07 08:00,2014-01-04 17:00,,2013-07-15 08:00,2013-11-11 17:00,2013-07-15 08:00,2013-11-11 17:00,2013-07-15 08:00,2013-11-11 17:00,2013-09-07 08:00,2014-01-04 17:00,,PT_Normal,,,,,cB/Luw1xTCeOmX+AzA6mZg,,,,N,0,0,,,2013-02-16 15:51,2013-02-16 15:56,admin,admin
499898,6359,124374,13663,0,N,N,N,CP_Drtn,TT_Task,DT_FixedDUR2,TK_NotStart,DUKHPROGEN00PRDV3560,"Proc & Del Counters, Cabinets & Shelves",,432,0,960,0,0,0,960,0,0,0,,,,2013-09-07 08:00,2014-01-04 17:00,,2013-07-15 08:00,2013-11-11 17:00,2013-07-15 08:00,2013-11-11 17:00,2013-07-15 08:00,2013-11-11 17:00,2013-09-07 08:00,2014-01-04 17:00,,PT_Normal,,,,,2r+YEmVcRP+vFO9+BnjDvg,,,,N,0,0,,,2013-02-16 15:51,2013-02-16 15:56,admin,admin
499899,6359,124374,13663,0,N,N,N,CP_Drtn,TT_Task,DT_FixedDUR2,TK_NotStart,DUKHPROGEN00PRDV3570,Proc & Del Wooden Hand Rails,,592,160,800,0,0,0,800,0,0,0,,,,2013-09-27 08:00,2014-01-04 17:00,,2013-07-15 08:00,2013-10-22 17:00,2013-07-15 08:00,2013-10-22 17:00,2013-07-15 08:00,2013-10-22 17:00,2013-09-27 08:00,2014-01-04 17:00,,PT_Normal,,,,,n1sGUYCtRvS7lfuyY7qQyg,,,,N,0,0,,,2013-02-16 15:51,2013-02-16 15:56,admin,admin
499900,6359,124374,13663,0,N,N,N,CP_Drtn,TT_Task,DT_FixedDUR2,TK_NotStart,DUKHPROGEN00PRDV3780,Proc & Del Gazebo Structure,,584,368,960,0,0,0,960,0,0,0,,,,2013-11-25 08:00,2014-03-24 17:00,,2013-09-13 08:00,2014-01-10 17:00,2013-09-13 08:00,2014-01-10 17:00,2013-09-13 08:00,2014-01-10 17:00,2013-11-25 08:00,2014-03-24 17:00,,PT_Normal,,,,,OuSZO8pJTAqbK6RuPiCQow,,,,N,0,0,,,2013-02-16 15:51,2013-02-16 16:35,admin,admin
499901,6359,124374,13663,0,N,N,N,CP_Drtn,TT_Task,DT_FixedDUR2,TK_NotStart,DUKHPROGEN00PRDV3450,Proc & Del Ironmogeries,,248,16,960,0,0,0,960,0,0,0,,,,2013-07-22 08:00,2013-11-18 17:00,,2013-06-21 08:00,2013-10-18 17:00,2013-06-21 08:00,2013-10-18 17:00,2013-06-21 08:00,2013-10-18 17:00,2013-07-22 08:00,2013-11-18 17:00,,PT_Normal,,,,,I+neYZmXR7WiaTP6t55Sww,,,,N,0,0,,,2013-02-16 15:51,2013-02-16 15:56,admin,admin
499902,6359,124374,13663,0,N,N,N,CP_Drtn,TT_Task,DT_FixedDUR2,TK_NotStart,DUKHPROGEN00PRDV3460,Proc & Del Aluminum Doors,,640,120,960,0,0,0,960,0,0,0,,,,2013-09-09 08:00,2014-01-06 17:00,,2013-06-21 08:00,2013-10-18 17:00,2013-06-21 08:00,2013-10-18 17:00,2013-06-21 08:00,2013-10-18 17:00,2013-09-09 08:00,2014-01-06 17:00,,PT_Normal,,,,,tC7fTznKQQCMh8H60Iu6oA,,,,N,0,0,,,2013-02-16 15:51,2013-02-16 15:56,admin,admin
499903,6359,124374,13663,0,N,N,N,CP_Drtn,TT_Task,DT_FixedDUR2,TK_NotStart,DUKHPROGEN00PRDV3470,Proc & Del Aluminum Windows,,696,80,960,0,0,0,960,0,0,0,,,,2013-09-16 08:00,2014-01-13 17:00,,2013-06-21 08:00,2013-10-18 17:00,2013-06-21 08:00,2013-10-18 17:00,2013-06-21 08:00,2013-10-18 17:00,2013-09-16 08:00,2014-01-13 17:00,,PT_Normal,,,,,L4WQG3tlRLqt+iP6GEAgHA,,,,N,0,0,,,2013-02-16 15:51,2013-02-16 15:56,admin,admin
499904,6359,124374,13663,0,N,N,N,CP_Drtn,TT_Task,DT_FixedDUR2,TK_NotStart,DUKHPROGEN00PRDV3480,Proc & Del Granite,,464,8,960,0,0,0,960,0,0,0,,,,2013-08-18 08:00,2013-12-15 17:00,,2013-06-21 08:00,2013-10-18 17:00,2013-06-21 08:00,2013-10-18 17:00,2013-06-21 08:00,2013-10-18 17:00,2013-08-18 08:00,2013-12-15 17:00,,PT_Normal,,,,,ACQS0Rk1Tlq0KoH9pJWlxg,,,,N,0,0,,,2013-02-16 15:51,2013-02-16 15:56,admin,admin
499905,6359,124374,13663,0,N,N,N,CP_Drtn,TT_Task,DT_FixedDUR2,TK_NotStart,DUKHPROGEN00PRDV3090,Proc & Del Cobble stone finish,,768,168,960,0,0,0,960,0,0,0,,,,2013-08-04 08:00,2013-12-01 17:00,,2013-04-30 08:00,2013-08-27 17:00,2013-04-30 08:00,2013-08-27 17:00,2013-04-30 08:00,2013-08-27 17:00,2013-08-04 08:00,2013-12-01 17:00,,PT_Normal,,,,,o4II+gWaTC2gE8Q25VGbXQ,,,,N,0,0,,,2013-02-16 15:51,2013-02-16 15:56,admin,admin
499906,6359,124374,13663,0,N,N,N,CP_Drtn,TT_Task,DT_FixedDUR2,TK_NotStart,DUKHPROGEN00PRDV3100,Proc & Del Slate Tile,,816,216,960,0,0,0,960,0,0,0,,,,2013-08-10 08:00,2013-12-07 17:00,,2013-04-30 08:00,2013-08-27 17:00,2013-04-30 08:00,2013-08-27 17:00,2013-04-30 08:00,2013-08-27 17:00,2013-08-10 08:00,2013-12-07 17:00,,PT_Normal,,,,,OXzv6ylZQZePPHfwsq4dNg,,,,N,0,0,,,2013-02-16 15:51,2013-02-16 15:56,admin,admin
499907,6359,124374,13663,0,N,N,N,CP_Drtn,TT_Task,DT_FixedDUR2,TK_NotStart,DUKHPROGEN00PRDV3110,Proc & Del Stone Cladding,,1112,960,960,0,0,0,960,0,0,0,,,,2013-08-21 08:00,2013-12-18 17:00,,2013-04-04 08:00,2013-08-01 17:00,2013-04-04 08:00,2013-08-01 17:00,2013-04-04 08:00,2013-08-01 17:00,2013-08-21 08:00,2013-12-18 17:00,,PT_Normal,,,,,rAQaS7+NTSSn01vVtH9KLw,,,,N,0,0,,,2013-02-16 15:51,2013-02-16 15:56,admin,admin
499908,6359,124374,13663,0,N,N,N,CP_Drtn,TT_Task,DT_FixedDUR2,TK_NotStart,DUKHPROGEN00PRDV3300,Proc & Del Gypsum Board false ceiling,,296,40,880,0,0,0,880,0,0,0,,,,2013-07-23 08:00,2013-11-09 17:00,,2013-06-16 08:00,2013-10-03 17:00,2013-06-16 08:00,2013-10-03 17:00,2013-06-16 08:00,2013-10-03 17:00,2013-07-23 08:00,2013-11-09 17:00,,PT_Normal,,,,,89844HFbR0Gl62E9Ydo8TQ,,,,N,0,0,,,2013-02-16 15:51,2013-02-16 15:56,admin,admin
499909,6359,124374,13663,0,N,N,N,CP_Drtn,TT_Task,DT_FixedDUR2,TK_NotStart,DUKHPROGEN00PRDV3310,Proc & Del Aluminum Tile false ceiling,,424,8,960,0,0,0,960,0,0,0,,,,2013-08-13 08:00,2013-12-10 17:00,,2013-06-21 08:00,2013-10-18 17:00,2013-06-21 08:00,2013-10-18 17:00,2013-06-21 08:00,2013-10-18 17:00,2013-08-13 08:00,2013-12-10 17:00,,PT_Normal,,,,,Jc9yw7wqRWa0t9t1psW2ng,,,,N,0,0,,,2013-02-16 15:51,2013-02-16 15:56,admin,admin
499910,6359,124374,13663,0,N,N,N,CP_Drtn,TT_Task,DT_FixedDUR2,TK_NotStart,DUKHPROGEN00PRDV3390,Proc & Del GRC Panels,,712,536,720,0,0,0,720,0,0,0,,,,2013-09-13 08:00,2013-12-11 17:00,,2013-06-16 08:00,2013-09-13 17:00,2013-06-16 08:00,2013-09-13 17:00,2013-06-16 08:00,2013-09-13 17:00,2013-09-13 08:00,2013-12-11 17:00,,PT_Normal,,,,,4XVCDMk6Qa+ALeCbfzLTFQ,,,,N,0,0,,,2013-02-16 15:51,2013-02-16 15:56,admin,admin
499911,6359,124374,13663,0,N,N,N,CP_Drtn,TT_Task,DT_FixedDUR2,TK_NotStart,DUKHPROGEN00PRDV3320,Proc & Del Paints,,96,0,720,0,0,0,720,0,0,0,,,,2013-07-09 08:00,2013-10-06 17:00,,2013-06-27 08:00,2013-09-24 17:00,2013-06-27 08:00,2013-09-24 17:00,2013-06-27 08:00,2013-09-24 17:00,2013-07-09 08:00,2013-10-06 17:00,,PT_Normal,,,,,BLoVsv/mT9qUdiL4+vyIwQ,,,,N,0,0,,,2013-02-16 15:51,2013-02-16 15:56,admin,admin
499912,6359,124374,13663,0,N,N,N,CP_Drtn,TT_Task,DT_FixedDUR2,TK_NotStart,DUKHPROGEN00PRDV3420,Proc & Del Epoxy,,1304,424,320,0,0,0,320,0,0,0,,,,2013-12-25 08:00,2014-02-02 17:00,,2013-07-15 08:00,2013-08-23 17:00,2013-07-15 08:00,2013-08-23 17:00,2013-07-15 08:00,2013-08-23 17:00,2013-12-25 08:00,2014-02-02 17:00,,PT_Normal,,,,,RJY+MBFoSty8i2PsbtCcpg,,,,N,0,0,,,2013-02-16 15:51,2013-02-16 15:56,admin,admin
499913,6359,124374,13663,0,N,N,N,CP_Drtn,TT_Task,DT_FixedDUR2,TK_NotStart,DUKHPROGEN00PRDV3430,Proc & Del Roller Shutter,,2096,1128,960,0,0,0,960,0,0,0,,,,2014-03-07 08:00,2014-07-04 17:00,,2013-06-18 08:00,2013-10-15 17:00,2013-06-18 08:00,2013-10-15 17:00,2013-06-18 08:00,2013-10-15 17:00,2014-03-07 08:00,2014-07-04 17:00,,PT_Normal,,,,,hpIU0T1RRuS49jdNGeW1ug,,,,N,0,0,,,2013-02-16 15:51,2013-02-16 16:44,admin,admin
499914,6359,124374,13663,0,N,N,N,CP_Drtn,TT_Task,DT_FixedDUR2,TK_NotStart,DUKHPROGEN00PRDV3700,Proc & Del Road Works Materials,,1800,1456,320,0,0,0,320,0,0,0,,,,2014-04-01 08:00,2014-05-10 17:00,,2013-08-19 08:00,2013-09-27 17:00,2013-08-19 08:00,2013-09-27 17:00,2013-08-19 08:00,2013-09-27 17:00,2014-04-01 08:00,2014-05-10 17:00,,PT_Normal,,,,,UKFxiTjgQuiheyA5s+0Fig,,,,N,0,0,,,2013-02-16 15:51,2013-02-16 16:35,admin,admin
499915,6359,124374,13663,0,N,N,N,CP_Drtn,TT_Task,DT_FixedDUR2,TK_NotStart,DUKHPROGEN00PRDV3710,Proc & Del External signage,,1640,1296,480,0,0,0,480,0,0,0,,,,2014-03-12 08:00,2014-05-10 17:00,,2013-08-19 08:00,2013-10-17 17:00,2013-08-19 08:00,2013-10-17 17:00,2013-08-19 08:00,2013-10-17 17:00,2014-03-12 08:00,2014-05-10 17:00,,PT_Normal,,,,,PepPMZjNT1qDndm8V++59A,,,,N,0,0,,,2013-02-16 15:51,2013-02-16 16:35,admin,admin
499916,6359,124374,13663,0,N,N,N,CP_Drtn,TT_Task,DT_FixedDUR2,TK_NotStart,DUKHPROGEN00PRDV3720,Proc & Del Road Marking,,1640,1296,480,0,0,0,480,0,0,0,,,,2014-03-12 08:00,2014-05-10 17:00,,2013-08-19 08:00,2013-10-17 17:00,2013-08-19 08:00,2013-10-17 17:00,2013-08-19 08:00,2013-10-17 17:00,2014-03-12 08:00,2014-05-10 17:00,,PT_Normal,,,,,LzCWd8cyS9qtmJq86MoGgQ,,,,N,0,0,,,2013-02-16 15:51,2013-02-16 16:35,admin,admin
499917,6359,124374,13663,0,N,N,N,CP_Drtn,TT_Task,DT_FixedDUR2,TK_NotStart,DUKHPROGEN00PRDV3600,Proc & Del kerb works,,760,368,320,0,0,0,320,0,0,0,,,,2013-10-14 08:00,2013-11-22 17:00,,2013-07-11 08:00,2013-08-19 17:00,2013-07-11 08:00,2013-08-19 17:00,2013-07-11 08:00,2013-08-19 17:00,2013-10-14 08:00,2013-11-22 17:00,,PT_Normal,,,,,o2/Aa23sQaikl0gkooYP5g,,,,N,0,0,,,2013-02-16 15:51,2013-02-16 15:56,admin,admin
499918,6359,124374,13663,0,N,N,N,CP_Drtn,TT_Task,DT_FixedDUR2,TK_NotStart,DUKHPROGEN00PRDV3660,Proc & Del Interlock works,,840,312,320,0,0,0,320,0,0,0,,,,2013-11-11 08:00,2013-12-20 17:00,,2013-07-29 08:00,2013-09-06 17:00,2013-07-29 08:00,2013-09-06 17:00,2013-07-29 08:00,2013-09-06 17:00,2013-11-11 08:00,2013-12-20 17:00,,PT_Normal,,,,,jXIRrFPfTp27vW6/hNVovg,,,,N,0,0,,,2013-02-16 15:51,2013-02-16 15:56,admin,admin
499919,6359,124374,13663,0,N,N,N,CP_Drtn,TT_Task,DT_FixedDUR2,TK_NotStart,DUKHPROGEN00PRDV3730,Proc & Del Car Parking Shed,,1208,1008,720,0,0,0,720,0,0,0,,,,2014-01-17 08:00,2014-04-16 17:00,,2013-08-19 08:00,2013-11-16 17:00,2013-08-19 08:00,2013-11-16 17:00,2013-08-19 08:00,2013-11-16 17:00,2014-01-17 08:00,2014-04-16 17:00,,PT_Normal,,,,,UhTsZsbfSvavPiQNxBfrBQ,,,,N,0,0,,,2013-02-16 15:51,2013-02-16 16:35,admin,admin
499920,6359,124374,13663,0,N,N,N,CP_Drtn,TT_Task,DT_FixedDUR2,TK_NotStart,DUKHPROGEN00PRDV3740,Proc & Del Stone Boulders,,1216,912,480,0,0,0,480,0,0,0,,,,2014-01-18 08:00,2014-03-18 17:00,,2013-08-19 08:00,2013-10-17 17:00,2013-08-19 08:00,2013-10-17 17:00,2013-08-19 08:00,2013-10-17 17:00,2014-01-18 08:00,2014-03-18 17:00,,PT_Normal,,,,,Zq0wagwVTjWJ7lqrOPN9Dw,,,,N,0,0,,,2013-02-16 15:51,2013-02-16 16:35,admin,admin
499921,6359,124374,13663,0,N,N,N,CP_Drtn,TT_Task,DT_FixedDUR2,TK_NotStart,DUKHPROGEN00PRDV3750,Proc & Del Speed Humps,,1200,936,480,0,0,0,480,0,0,0,,,,2014-01-16 08:00,2014-03-16 17:00,,2013-08-19 08:00,2013-10-17 17:00,2013-08-19 08:00,2013-10-17 17:00,2013-08-19 08:00,2013-10-17 17:00,2014-01-16 08:00,2014-03-16 17:00,,PT_Normal,,,,,hn4C5f1QTGmhepZ4uWNEWw,,,,N,0,0,,,2013-02-16 15:51,2013-02-16 16:35,admin,admin
499922,6359,124374,13663,0,N,N,N,CP_Drtn,TT_Task,DT_FixedDUR2,TK_NotStart,DUKHPROGEN00PRDV3790,"Proc & Del Plantation(Grass,Trees)",,208,0,720,0,0,0,720,0,0,0,,,,2013-10-01 08:00,2013-12-29 17:00,,2013-09-05 08:00,2013-12-03 17:00,2013-09-05 08:00,2013-12-03 17:00,2013-09-05 08:00,2013-12-03 17:00,2013-10-01 08:00,2013-12-29 17:00,,PT_Normal,,,,,MI3VswreSXiwISVdHNGJmQ,,,,N,0,0,,,2013-02-16 15:51,2013-02-16 15:56,admin,admin
499923,6359,124374,13663,0,N,N,N,CP_Drtn,TT_Task,DT_FixedDUR2,TK_NotStart,DUKHPROGEN00PRDV3820,Proc & Del Pre-cast Boundry Wall,,392,80,800,0,0,0,800,0,0,0,,,,2013-10-24 08:00,2014-01-31 17:00,,2013-09-05 08:00,2013-12-13 17:00,2013-09-05 08:00,2013-12-13 17:00,2013-09-05 08:00,2013-12-13 17:00,2013-10-24 08:00,2014-01-31 17:00,,PT_Normal,,,,,JXNlIgkgTdmt0zzi9uSg6g,,,,N,0,0,,,2013-02-16 15:51,2013-02-16 16:45,admin,admin
499924,6359,124374,13663,0,N,N,N,CP_Drtn,TT_Task,DT_FixedDUR2,TK_NotStart,DUKHPROGEN00PRDV3800,Proc & Del Steel Gate & Barrier gates,,608,288,720,0,0,0,720,0,0,0,,,,2013-11-20 08:00,2014-02-17 17:00,,2013-09-05 08:00,2013-12-03 17:00,2013-09-05 08:00,2013-12-03 17:00,2013-09-05 08:00,2013-12-03 17:00,2013-11-20 08:00,2014-02-17 17:00,,PT_Normal,,,,,AsPksYx5ROGFF85qspuzlA,,,,N,0,0,,,2013-02-16 15:51,2013-02-16 16:45,admin,admin
499925,6359,124374,13663,0,N,N,N,CP_Drtn,TT_Task,DT_FixedDUR2,TK_NotStart,DUKHPROGEN00PRDV3630,Proc & Del Steel Ladder,,360,104,720,0,0,0,720,0,0,0,,,,2013-09-06 08:00,2013-12-04 17:00,,2013-07-23 08:00,2013-10-20 17:00,2013-07-23 08:00,2013-10-20 17:00,2013-07-23 08:00,2013-10-20 17:00,2013-09-06 08:00,2013-12-04 17:00,,PT_Normal,,,,,FVLra+tbRB6XA1v57Eo5Rw,,,,N,0,0,,,2013-02-16 15:51,2013-02-16 15:56,admin,admin
499926,6359,124374,13663,0,N,N,N,CP_Drtn,TT_Task,DT_FixedDUR2,TK_NotStart,DUKHPROGEN00PRDV3590,Proc & Del Manhole Covers and Frames,,488,368,720,0,0,0,720,0,0,0,,,,2013-09-18 08:00,2013-12-16 17:00,,2013-07-19 08:00,2013-10-16 17:00,2013-07-19 08:00,2013-10-16 17:00,2013-07-19 08:00,2013-10-16 17:00,2013-09-18 08:00,2013-12-16 17:00,,PT_Normal,,,,,zCVQbx4MTKu94lzZKUA8jA,,,,N,0,0,,,2013-02-16 15:51,2013-02-16 15:56,admin,admin
499927,6359,124374,13663,0,N,N,N,CP_Drtn,TT_Task,DT_FixedDUR2,TK_NotStart,DUKHPROGEN00PRDV3400,Proc & Del Access Ladder,,872,0,720,0,0,0,720,0,0,0,,,,2013-10-03 08:00,2013-12-31 17:00,,2013-06-16 08:00,2013-09-13 17:00,2013-06-16 08:00,2013-09-13 17:00,2013-06-16 08:00,2013-09-13 17:00,2013-10-03 08:00,2013-12-31 17:00,,PT_Normal,,,,,uNiah1TWRdqVio6t3mc/Fg,,,,N,0,0,,,2013-02-16 15:51,2013-02-16 15:56,admin,admin
499928,6359,124374,13663,0,N,N,N,CP_Drtn,TT_Task,DT_FixedDUR2,TK_NotStart,DUKHPROGEN00PRDV3500,Proc & Del Steel Door,,264,0,960,0,0,0,960,0,0,0,,,,2013-08-02 08:00,2013-11-29 17:00,,2013-06-30 08:00,2013-10-27 17:00,2013-06-30 08:00,2013-10-27 17:00,2013-06-30 08:00,2013-10-27 17:00,2013-08-02 08:00,2013-11-29 17:00,,PT_Normal,,,,,ohRtti9xTIKHVPSzrPdLSw,,,,N,0,0,,,2013-02-16 15:51,2013-02-16 15:56,admin,admin
499929,6359,124374,13663,0,N,N,N,CP_Drtn,TT_Task,DT_FixedDUR2,TK_NotStart,DUKHPROGEN00PRDV3580,Proc & Del Stainless Steel Handrail,,600,240,960,0,0,0,960,0,0,0,,,,2013-09-28 08:00,2014-01-25 17:00,,2013-07-15 08:00,2013-11-11 17:00,2013-07-15 08:00,2013-11-11 17:00,2013-07-15 08:00,2013-11-11 17:00,2013-09-28 08:00,2014-01-25 17:00,,PT_Normal,,,,,/26/VQbFTbigXIBVdoglDQ,,,,N,0,0,,,2013-02-16 15:51,2013-02-16 15:56,admin,admin
499930,6359,124374,13663,0,N,N,N,CP_Drtn,TT_Task,DT_FixedDUR2,TK_NotStart,DUKHPROGEN00PRDV3120,Proc & Del Ceramic Tile,,392,56,960,0,0,0,960,0,0,0,,,,2013-06-18 08:00,2013-10-15 17:00,,2013-04-30 08:00,2013-08-27 17:00,2013-04-30 08:00,2013-08-27 17:00,2013-04-30 08:00,2013-08-27 17:00,2013-06-18 08:00,2013-10-15 17:00,,PT_Normal,,,,,IlxyE6oVQKSxOOkP/1WHDg,,,,N,0,0,,,2013-02-16 15:51,2013-02-16 15:56,admin,admin
499931,6359,124374,13663,0,N,N,N,CP_Drtn,TT_Task,DT_FixedDUR2,TK_NotStart,DUKHPROGEN00PRDV3130,Proc & Del Porcelain Tile,,472,112,960,0,0,0,960,0,0,0,,,,2013-06-28 08:00,2013-10-25 17:00,,2013-04-30 08:00,2013-08-27 17:00,2013-04-30 08:00,2013-08-27 17:00,2013-04-30 08:00,2013-08-27 17:00,2013-06-28 08:00,2013-10-25 17:00,,PT_Normal,,,,,isDC3dehR9GFKjnSxNvyJg,,,,N,0,0,,,2013-02-16 15:51,2013-02-16 15:56,admin,admin
499932,6359,124374,13663,0,N,N,N,CP_Drtn,TT_Task,DT_FixedDUR2,TK_NotStart,DUKHPROGEN00PRDV3410,Proc & Del Aluminium Slat Screen,,784,208,960,0,0,0,960,0,0,0,,,,2013-09-22 08:00,2014-01-19 17:00,,2013-06-16 08:00,2013-10-13 17:00,2013-06-16 08:00,2013-10-13 17:00,2013-06-16 08:00,2013-10-13 17:00,2013-09-22 08:00,2014-01-19 17:00,,PT_Normal,,,,,D01LvmOHTz24FfWoXI7mKw,,,,N,0,0,,,2013-02-16 15:51,2013-02-16 15:56,admin,admin
499933,6359,124374,13663,0,N,N,N,CP_Drtn,TT_Task,DT_FixedDUR2,TK_NotStart,DUKHPROGEN00PRDV3510,Proc & Del Stainless Steel Cover,,264,0,960,0,0,0,960,0,0,0,,,,2013-08-02 08:00,2013-11-29 17:00,,2013-06-30 08:00,2013-10-27 17:00,2013-06-30 08:00,2013-10-27 17:00,2013-06-30 08:00,2013-10-27 17:00,2013-08-02 08:00,2013-11-29 17:00,,PT_Normal,,,,,sOqAZf7VQW+lXb2EhlIWEQ,,,,N,0,0,,,2013-02-16 15:51,2013-02-16 15:56,admin,admin
499934,6359,124374,13663,0,N,N,N,CP_Drtn,TT_Task,DT_FixedDUR2,TK_NotStart,DUKHPROGEN00PRDV3610,Proc & Del PVC Tent,,304,40,880,0,0,0,880,0,0,0,,,,2013-08-12 08:00,2013-11-29 17:00,,2013-07-05 08:00,2013-10-22 17:00,2013-07-05 08:00,2013-10-22 17:00,2013-07-05 08:00,2013-10-22 17:00,2013-08-12 08:00,2013-11-29 17:00,,PT_Normal,,,,,e1ljy9pVQXeXZghDXtN1Qg,,,,N,0,0,,,2013-02-16 15:51,2013-02-16 15:56,admin,admin
499935,6359,124374,13663,0,N,N,N,CP_Drtn,TT_Task,DT_FixedDUR2,TK_NotStart,DUKHPROGEN00PRDV3620,Proc & Del Strutural Steel,,264,8,960,0,0,0,960,0,0,0,,,,2013-08-07 08:00,2013-12-04 17:00,,2013-07-05 08:00,2013-11-01 17:00,2013-07-05 08:00,2013-11-01 17:00,2013-07-05 08:00,2013-11-01 17:00,2013-08-07 08:00,2013-12-04 17:00,,PT_Normal,,,,,uCFLOOBUT+aDO1z4NqmyAw,,,,N,0,0,,,2013-02-16 15:51,2013-02-16 15:56,admin,admin
499936,6359,124374,13663,0,N,N,N,CP_Drtn,TT_Task,DT_FixedDUR2,TK_NotStart,DUKHPROGEN00PRDV3220,Proc & Del Water Chiller,,496,400,960,0,0,0,960,0,0,0,,,,2013-08-19 08:00,2013-12-16 17:00,,2013-06-18 08:00,2013-10-15 17:00,2013-06-18 08:00,2013-10-15 17:00,2013-06-18 08:00,2013-10-15 17:00,2013-08-19 08:00,2013-12-16 17:00,,PT_Normal,,,,,aohwlh0GSHq3riFviIJ8Gw,,,,N,0,0,,,2013-02-16 15:51,2013-02-16 15:56,admin,admin
499937,6359,124374,13663,0,N,N,N,CP_Drtn,TT_Task,DT_FixedDUR2,TK_NotStart,DUKHPROGEN00PRDV3330,Proc & Del Booster Pump,,360,264,960,0,0,0,960,0,0,0,,,,2013-08-19 08:00,2013-12-16 17:00,,2013-07-05 08:00,2013-11-01 17:00,2013-07-05 08:00,2013-11-01 17:00,2013-07-05 08:00,2013-11-01 17:00,2013-08-19 08:00,2013-12-16 17:00,,PT_Normal,,,,,sqfp6MChRi+NhhHu4X+TNg,,,,N,0,0,,,2013-02-16 15:51,2013-02-16 15:56,admin,admin
499938,6359,124374,13663,0,N,N,N,CP_Drtn,TT_Task,DT_FixedDUR2,TK_NotStart,DUKHPROGEN00PRDV3520,Proc & Del Lift Pump,,216,120,960,0,0,0,960,0,0,0,,,,2013-08-19 08:00,2013-12-16 17:00,,2013-07-23 08:00,2013-11-19 17:00,2013-07-23 08:00,2013-11-19 17:00,2013-07-23 08:00,2013-11-19 17:00,2013-08-19 08:00,2013-12-16 17:00,,PT_Normal,,,,,Q9brF3R/TtOkMer6RrFQUw,,,,N,0,0,,,2013-02-16 15:51,2013-02-16 15:56,admin,admin
499939,6359,124374,13663,0,N,N,N,CP_Drtn,TT_Task,DT_FixedDUR2,TK_NotStart,DUKHPROGEN00PRDV3640,Proc & Del Water meter,,560,464,480,0,0,0,480,0,0,0,,,,2013-10-18 08:00,2013-12-16 17:00,,2013-08-09 08:00,2013-10-07 17:00,2013-08-09 08:00,2013-10-07 17:00,2013-08-09 08:00,2013-10-07 17:00,2013-10-18 08:00,2013-12-16 17:00,,PT_Normal,,,,,F5JBfXk9R+KM3JjV+urL4w,,,,N,0,0,,,2013-02-16 15:51,2013-02-16 15:56,admin,admin
499940,6359,124374,13663,0,N,N,N,CP_Drtn,TT_Task,DT_FixedDUR2,TK_NotStart,DUKHPROGEN00PRDV3680,Proc & Del Water Tank,,392,296,480,0,0,0,480,0,0,0,,,,2013-10-18 08:00,2013-12-16 17:00,,2013-08-30 08:00,2013-10-28 17:00,2013-08-30 08:00,2013-10-28 17:00,2013-08-30 08:00,2013-10-28 17:00,2013-10-18 08:00,2013-12-16 17:00,,PT_Normal,,,,,U0Le3K4QRcmqm4r8aFLKNA,,,,N,0,0,,,2013-02-16 15:51,2013-02-16 15:56,admin,admin
499941,6359,124374,13663,0,N,N,N,CP_Drtn,TT_Task,DT_FixedDUR2,TK_NotStart,DUKHPROGEN00PRDV3770,Proc & Del Kitchen Water Filter,,88,0,480,0,0,0,480,0,0,0,,,,2013-09-28 08:00,2013-11-26 17:00,,2013-09-17 08:00,2013-11-15 17:00,2013-09-17 08:00,2013-11-15 17:00,2013-09-17 08:00,2013-11-15 17:00,2013-09-28 08:00,2013-11-26 17:00,,PT_Normal,,,,,mIfA6HWNTp6jDccD1dvPXw,,,,N,0,0,,,2013-02-16 15:51,2013-02-16 15:56,admin,admin
499942,6359,124374,13663,0,N,N,N,CP_Drtn,TT_Task,DT_FixedDUR2,TK_NotStart,DUKHPROGEN00PRDV3060,Proc & Del UPVC Pipes,,256,256,320,0,0,0,320,0,0,0,,,,2013-03-29 08:00,2013-05-07 17:00,,2013-02-25 08:00,2013-04-05 17:00,2013-02-25 08:00,2013-04-05 17:00,2013-02-25 08:00,2013-04-05 17:00,2013-03-29 08:00,2013-05-07 17:00,,PT_Normal,,,,,zITfWHlXTWGgQZErkcKpoQ,,,,N,0,0,,,2013-02-16 15:51,2013-02-16 15:56,admin,admin
499943,6359,124374,13663,0,N,N,N,CP_Drtn,TT_Task,DT_FixedDUR2,TK_NotStart,DUKHPROGEN00PRDV3070,Proc & Del Floor drains & Cleanouts,,256,256,320,0,0,0,320,0,0,0,,,,2013-03-29 08:00,2013-05-07 17:00,,2013-02-25 08:00,2013-04-05 17:00,2013-02-25 08:00,2013-04-05 17:00,2013-02-25 08:00,2013-04-05 17:00,2013-03-29 08:00,2013-05-07 17:00,,PT_Normal,,,,,e/2j6+LpSKegPWpjeiyklA,,,,N,0,0,,,2013-02-16 15:51,2013-02-16 15:56,admin,admin
499944,6359,124374,13663,0,N,N,N,CP_Drtn,TT_Task,DT_FixedDUR2,TK_NotStart,DUKHPROGEN00PRDV3150,Proc & Del Sanitary Fittings,,480,392,960,0,0,0,960,0,0,0,,,,2013-07-30 08:00,2013-11-26 17:00,,2013-05-31 08:00,2013-09-27 17:00,2013-05-31 08:00,2013-09-27 17:00,2013-05-31 08:00,2013-09-27 17:00,2013-07-30 08:00,2013-11-26 17:00,,PT_Normal,,,,,etirqcXURn+rR0q1mKfTJw,,,,N,0,0,,,2013-02-16 15:51,2013-02-16 15:56,admin,admin
499945,6359,124374,13663,0,N,N,N,CP_Drtn,TT_Task,DT_FixedDUR2,TK_NotStart,DUKHPROGEN00PRDV3230,Proc & Del Water Heater,,576,488,720,0,0,0,720,0,0,0,,,,2013-08-29 08:00,2013-11-26 17:00,,2013-06-18 08:00,2013-09-15 17:00,2013-06-18 08:00,2013-09-15 17:00,2013-06-18 08:00,2013-09-15 17:00,2013-08-29 08:00,2013-11-26 17:00,,PT_Normal,,,,,ElX2xa7xQpakMSjJbEAjaA,,,,N,0,0,,,2013-02-16 15:51,2013-02-16 15:56,admin,admin
499946,6359,124374,13663,0,N,N,N,CP_Drtn,TT_Task,DT_FixedDUR2,TK_NotStart,DUKHPROGEN00PRDV3080,Proc & Del Polyethylene Pipes,,496,360,720,0,0,0,720,0,0,0,,,,2013-06-16 08:00,2013-09-13 17:00,,2013-04-15 08:00,2013-07-13 17:00,2013-04-15 08:00,2013-07-13 17:00,2013-04-15 08:00,2013-07-13 17:00,2013-06-16 08:00,2013-09-13 17:00,,PT_Normal,,,,,y1Xtf3nXSmOsOW/sNby8ZA,,,,N,0,0,,,2013-02-16 15:51,2013-02-16 15:56,admin,admin
499947,6359,124374,13663,0,N,N,N,CP_Drtn,TT_Task,DT_FixedDUR2,TK_NotStart,DUKHPROGEN00PRDV3160,Proc & Del Copper Pipes,,504,16,720,0,0,0,720,0,0,0,,,,2013-08-02 08:00,2013-10-30 17:00,,2013-05-31 08:00,2013-08-28 17:00,2013-05-31 08:00,2013-08-28 17:00,2013-05-31 08:00,2013-08-28 17:00,2013-08-02 08:00,2013-10-30 17:00,,PT_Normal,,,,,9xko36ofScyZ3rxX4Fyoww,,,,N,0,0,,,2013-02-16 15:51,2013-02-16 15:56,admin,admin
499948,6359,124374,13663,0,N,N,N,CP_Drtn,TT_Task,DT_FixedDUR2,TK_NotStart,DUKHPROGEN00PRDV3240,Proc & Del Split AC,,808,88,960,0,0,0,960,0,0,0,,,,2013-09-27 08:00,2014-01-24 17:00,,2013-06-18 08:00,2013-10-15 17:00,2013-06-18 08:00,2013-10-15 17:00,2013-06-18 08:00,2013-10-15 17:00,2013-09-27 08:00,2014-01-24 17:00,,PT_Normal,,,,,fESIShToQiewIU2FUvogQg,,,,N,0,0,,,2013-02-16 15:51,2013-02-16 15:56,admin,admin
499949,6359,124374,13663,0,N,N,N,CP_Drtn,TT_Task,DT_FixedDUR2,TK_NotStart,DUKHPROGEN00PRDV3340,Proc & Del Exhaust Air louver,,744,144,720,0,0,0,720,0,0,0,,,,2013-10-06 08:00,2014-01-03 17:00,,2013-07-05 08:00,2013-10-02 17:00,2013-07-05 08:00,2013-10-02 17:00,2013-07-05 08:00,2013-10-02 17:00,2013-10-06 08:00,2014-01-03 17:00,,PT_Normal,,,,,vScc18xWSy2YsevwwCdopQ,,,,N,0,0,,,2013-02-16 15:51,2013-02-16 15:56,admin,admin
499950,6359,124374,13663,0,N,N,N,CP_Drtn,TT_Task,DT_FixedDUR2,TK_NotStart,DUKHPROGEN00PRDV3530,Proc & Del Exhaust Fan,,600,0,720,0,0,0,720,0,0,0,,,,2013-10-06 08:00,2014-01-03 17:00,,2013-07-23 08:00,2013-10-20 17:00,2013-07-23 08:00,2013-10-20 17:00,2013-07-23 08:00,2013-10-20 17:00,2013-10-06 08:00,2014-01-03 17:00,,PT_Normal,,,,,Q1op94UkTzKzZbwqaeH5Ow,,,,N,0,0,,,2013-02-16 15:51,2013-02-16 15:56,admin,admin
499951,6359,124374,13663,0,N,N,N,CP_Drtn,TT_Task,DT_FixedDUR2,TK_NotStart,DUKHPROGEN00PRDV3170,Proc & Del SMDB,,736,184,960,0,0,0,960,0,0,0,,,,2013-08-31 08:00,2013-12-28 17:00,,2013-05-31 08:00,2013-09-27 17:00,2013-05-31 08:00,2013-09-27 17:00,2013-05-31 08:00,2013-09-27 17:00,2013-08-31 08:00,2013-12-28 17:00,,PT_Normal,,,,,KhmibntlT8qpreD47AXt7A,,,,N,0,0,,,2013-02-16 15:51,2013-02-16 15:56,admin,admin
499952,6359,124374,13663,0,N,N,N,CP_Drtn,TT_Task,DT_FixedDUR2,TK_NotStart,DUKHPROGEN00PRDV3180,Proc & Del Cables & Wires,,552,136,960,0,0,0,960,0,0,0,,,,2013-06-29 08:00,2013-10-26 17:00,,2013-04-21 08:00,2013-08-18 17:00,2013-04-21 08:00,2013-08-18 17:00,2013-04-21 08:00,2013-08-18 17:00,2013-06-29 08:00,2013-10-26 17:00,,PT_Normal,,,,,EdF2+9X5RsOs1sh6dlt5xA,,,,N,0,0,,,2013-02-16 15:51,2013-02-16 15:56,admin,admin
499953,6359,124374,13663,0,N,N,N,CP_Drtn,TT_Task,DT_FixedDUR2,TK_NotStart,DUKHPROGEN00PRDV3190,Proc & Del Lights & Fixtures,,840,232,960,0,0,0,960,0,0,0,,,,2013-09-13 08:00,2014-01-10 17:00,,2013-05-31 08:00,2013-09-27 17:00,2013-05-31 08:00,2013-09-27 17:00,2013-05-31 08:00,2013-09-27 17:00,2013-09-13 08:00,2014-01-10 17:00,,PT_Normal,,,,,QoITUMzVQouGOOMOIQxwjA,,,,N,0,0,,,2013-02-16 15:52,2013-02-16 15:56,admin,admin
499954,6359,124374,13663,0,N,N,N,CP_Drtn,TT_Task,DT_FixedDUR2,TK_NotStart,DUKHPROGEN00PRDV3200,Proc & Del Isolators,,1040,280,960,0,0,0,960,0,0,0,,,,2013-10-08 08:00,2014-02-04 17:00,,2013-05-31 08:00,2013-09-27 17:00,2013-05-31 08:00,2013-09-27 17:00,2013-05-31 08:00,2013-09-27 17:00,2013-10-08 08:00,2014-02-04 17:00,,PT_Normal,,,,,2kUFuJggRoWBGaWEl67lbw,,,,N,0,0,,,2013-02-16 15:52,2013-02-16 15:56,admin,admin
499955,6359,124374,13663,0,N,N,N,CP_Drtn,TT_Task,DT_FixedDUR2,TK_NotStart,DUKHPROGEN00PRDV3250,Proc & Del Street Light Post Set,,584,8,960,0,0,0,960,0,0,0,,,,2013-11-17 08:00,2014-03-16 17:00,,2013-09-05 08:00,2014-01-02 17:00,2013-09-05 08:00,2014-01-02 17:00,2013-09-05 08:00,2014-01-02 17:00,2013-11-17 08:00,2014-03-16 17:00,,PT_Normal,,,,,FcdCPNHTRDCpAhS22EEqGQ,,,,N,0,0,,,2013-02-16 15:52,2013-02-16 16:40,admin,admin
499956,6359,124374,13663,0,N,N,N,CP_Drtn,TT_Task,DT_FixedDUR2,TK_NotStart,DUKHPROGEN00PRDV3350,Proc & Del Bollard Lamp,,888,312,960,0,0,0,960,0,0,0,,,,2013-11-17 08:00,2014-03-16 17:00,,2013-07-29 08:00,2013-11-25 17:00,2013-07-29 08:00,2013-11-25 17:00,2013-07-29 08:00,2013-11-25 17:00,2013-11-17 08:00,2014-03-16 17:00,,PT_Normal,,,,,x9gh1c7uTEekorMEz2V/zA,,,,N,0,0,,,2013-02-16 15:52,2013-02-16 16:40,admin,admin
499957,6359,124374,13663,0,N,N,N,CP_Drtn,TT_Task,DT_FixedDUR2,TK_NotStart,DUKHPROGEN00PRDV3210,Proc & Del Fire Resistant Cables,,1008,520,720,0,0,0,720,0,0,0,,,,2013-10-04 08:00,2014-01-01 17:00,,2013-05-31 08:00,2013-08-28 17:00,2013-05-31 08:00,2013-08-28 17:00,2013-05-31 08:00,2013-08-28 17:00,2013-10-04 08:00,2014-01-01 17:00,,PT_Normal,,,,,JgsaH4/TT2CTIKLoYgi4SQ,,,,N,0,0,,,2013-02-16 15:52,2013-02-16 15:56,admin,admin
499958,6359,124374,13663,0,N,N,N,CP_Drtn,TT_Task,DT_FixedDUR2,TK_NotStart,DUKHPROGEN00PRDV3260,Proc & Del Smoke Detector,,864,376,720,0,0,0,720,0,0,0,,,,2013-10-04 08:00,2014-01-01 17:00,,2013-06-18 08:00,2013-09-15 17:00,2013-06-18 08:00,2013-09-15 17:00,2013-06-18 08:00,2013-09-15 17:00,2013-10-04 08:00,2014-01-01 17:00,,PT_Normal,,,,,IwLry5U7TCy7lw7NDUUNAw,,,,N,0,0,,,2013-02-16 15:52,2013-02-16 15:56,admin,admin
499959,6359,124374,13663,0,N,N,N,CP_Drtn,TT_Task,DT_FixedDUR2,TK_NotStart,DUKHPROGEN00PRDV3360,Proc & Del Digital Alarm Communicator Panel,,488,0,960,0,0,0,960,0,0,0,,,,2013-09-04 08:00,2014-01-01 17:00,,2013-07-05 08:00,2013-11-01 17:00,2013-07-05 08:00,2013-11-01 17:00,2013-07-05 08:00,2013-11-01 17:00,2013-09-04 08:00,2014-01-01 17:00,,PT_Normal,,,,,78PC1t7eRQyb2sk0w0eCrg,,,,N,0,0,,,2013-02-16 15:52,2013-02-16 15:56,admin,admin
499960,6359,124374,13663,0,N,N,N,CP_Drtn,TT_Task,DT_FixedDUR2,TK_NotStart,DUKHPROGEN00PRDV3370,Proc & Del Fire Blanket,,968,480,480,0,0,0,480,0,0,0,,,,2013-11-03 08:00,2014-01-01 17:00,,2013-07-05 08:00,2013-09-02 17:00,2013-07-05 08:00,2013-09-02 17:00,2013-07-05 08:00,2013-09-02 17:00,2013-11-03 08:00,2014-01-01 17:00,,PT_Normal,,,,,kmxIvSh+SkuSDSRazdiKtw,,,,N,0,0,,,2013-02-16 15:52,2013-02-16 15:56,admin,admin
499961,6359,124374,13663,0,N,N,N,CP_Drtn,TT_Task,DT_FixedDUR2,TK_NotStart,DUKHPROGEN00PRDV3380,Proc & Del Fire Extinguisher,,888,400,560,0,0,0,560,0,0,0,,,,2013-10-24 08:00,2014-01-01 17:00,,2013-07-05 08:00,2013-09-12 17:00,2013-07-05 08:00,2013-09-12 17:00,2013-07-05 08:00,2013-09-12 17:00,2013-10-24 08:00,2014-01-01 17:00,,PT_Normal,,,,,gfM0g5BaSPymUXn3j6GobQ,,,,N,0,0,,,2013-02-16 15:52,2013-02-16 15:56,admin,admin
499962,6359,124374,13663,0,N,N,N,CP_Drtn,TT_Task,DT_FixedDUR2,TK_NotStart,DUKHPROGEN00PRDV3540,Proc & Del Ductile Iron Pipes,,48,0,880,0,0,0,880,0,0,0,,,,2013-07-29 08:00,2013-11-15 17:00,,2013-07-23 08:00,2013-11-09 17:00,2013-07-23 08:00,2013-11-09 17:00,2013-07-23 08:00,2013-11-09 17:00,2013-07-29 08:00,2013-11-15 17:00,,PT_Normal,,,,,IrQQ31TtRHKsTceNP7v7Wg,,,,N,0,0,,,2013-02-16 15:52,2013-02-16 16:35,admin,admin
499963,6359,124374,13663,0,N,N,N,CP_Drtn,TT_Task,DT_FixedDUR2,TK_NotStart,DUKHPROGEN00PRDV3650,Proc & Del Isolating Values,,72,24,720,0,0,0,720,0,0,0,,,,2013-08-18 08:00,2013-11-15 17:00,,2013-08-09 08:00,2013-11-06 17:00,2013-08-09 08:00,2013-11-06 17:00,2013-08-09 08:00,2013-11-06 17:00,2013-08-18 08:00,2013-11-15 17:00,,PT_Normal,,,,,BqIqLteOR1aIxLhmo726iQ,,,,N,0,0,,,2013-02-16 15:52,2013-02-16 16:35,admin,admin
499964,6359,124374,13663,0,N,N,N,CP_Drtn,TT_Task,DT_FixedDUR2,TK_NotStart,DUKHPROGEN00PRDV3690,Proc & Del Fire Hydrant,,144,0,800,0,0,0,800,0,0,0,,,,2013-09-17 08:00,2013-12-25 17:00,,2013-08-30 08:00,2013-12-07 17:00,2013-08-30 08:00,2013-12-07 17:00,2013-08-30 08:00,2013-12-07 17:00,2013-09-17 08:00,2013-12-25 17:00,,PT_Normal,,,,,9CLMAthDS9eeEbYPZVUn7w,,,,N,0,0,,,2013-02-16 15:52,2013-02-16 16:35,admin,admin
499965,6359,124374,13663,0,N,N,N,CP_Drtn,TT_Task,DT_FixedDUR2,TK_NotStart,DUKHPROGEN00PRDV3270,Proc & Del Video Com System,,680,88,960,0,0,0,960,0,0,0,,,,2013-09-11 08:00,2014-01-08 17:00,,2013-06-18 08:00,2013-10-15 17:00,2013-06-18 08:00,2013-10-15 17:00,2013-06-18 08:00,2013-10-15 17:00,2013-09-11 08:00,2014-01-08 17:00,,PT_Normal,,,,,USmZJE+dT+mEFA/BCKjSJA,,,,N,0,0,,,2013-02-16 15:52,2013-02-16 15:56,admin,admin
499966,6359,124374,13663,0,N,N,N,CP_Drtn,TT_Task,DT_FixedDUR2,TK_NotStart,DUKHPROGEN00PRDV3280,Proc & Del Telephone Fittings & Accessories,,672,80,960,0,0,0,960,0,0,0,,,,2013-09-11 08:00,2014-01-08 17:00,,2013-06-19 08:00,2013-10-16 17:00,2013-06-19 08:00,2013-10-16 17:00,2013-06-19 08:00,2013-10-16 17:00,2013-09-11 08:00,2014-01-08 17:00,,PT_Normal,,,,,Q3Cy1qrbR7SH+oWHTYs3gQ,,,,N,0,0,,,2013-02-16 15:52,2013-02-16 15:56,admin,admin
499967,6359,124374,13663,0,N,N,N,CP_Drtn,TT_Task,DT_FixedDUR2,TK_NotStart,DUKHPROGEN00PRDV3290,"Proc & Del Television devices,Fit. & Access.",,944,168,960,0,0,0,960,0,0,0,,,,2013-10-15 08:00,2014-02-11 17:00,,2013-06-19 08:00,2013-10-16 17:00,2013-06-19 08:00,2013-10-16 17:00,2013-06-19 08:00,2013-10-16 17:00,2013-10-15 08:00,2014-02-11 17:00,,PT_Normal,,,,,YtPgJNnGSFKVDva7RLB3Ww,,,,N,0,0,,,2013-02-16 15:52,2013-02-16 15:56,admin,admin
499968,6359,124374,13663,0,N,N,N,CP_Drtn,TT_Task,DT_FixedDUR2,TK_NotStart,DUKHPROGEN00PRDV3670,Proc & Del Irrigation Pipes,,752,544,480,0,0,0,480,0,0,0,,,,2013-10-31 08:00,2013-12-29 17:00,,2013-07-29 08:00,2013-09-26 17:00,2013-07-29 08:00,2013-09-26 17:00,2013-07-29 08:00,2013-09-26 17:00,2013-10-31 08:00,2013-12-29 17:00,,PT_Normal,,,,,m2OiZKGNSTuYDWHf/pPuiw,,,,N,0,0,,,2013-02-16 15:52,2013-02-16 15:56,admin,admin
499969,6359,124374,13663,0,N,N,N,CP_Drtn,TT_Task,DT_FixedDUR2,TK_NotStart,DUKHPROGEN00PRDV3760,Proc & Del Sprinklers,,1312,1024,480,0,0,0,480,0,0,0,,,,2014-01-30 08:00,2014-03-30 17:00,,2013-08-19 08:00,2013-10-17 17:00,2013-08-19 08:00,2013-10-17 17:00,2013-08-19 08:00,2013-10-17 17:00,2014-01-30 08:00,2014-03-30 17:00,,PT_Normal,,,,,HW6Rb+TLS7eQBdYc4IZvpg,,,,N,0,0,,,2013-02-16 15:52,2013-02-16 16:35,admin,admin
499970,6359,124374,13663,0,N,N,N,CP_Drtn,TT_Task,DT_FixedDUR2,TK_NotStart,DUKHPROGEN00PRDV3810,Proc & Del Nozzle Jet,,936,648,720,0,0,0,720,0,0,0,,,,2013-12-31 08:00,2014-03-30 17:00,,2013-09-05 08:00,2013-12-03 17:00,2013-09-05 08:00,2013-12-03 17:00,2013-09-05 08:00,2013-12-03 17:00,2013-12-31 08:00,2014-03-30 17:00,,PT_Normal,,,,,zhb2uA6QQqCyjO4twxEKPg,,,,N,0,0,,,2013-02-16 15:52,2013-02-16 16:35,admin,admin
499971,6359,124374,13663,0,N,N,N,CP_Drtn,TT_Task,DT_FixedDUR2,TK_NotStart,DUKHPROGEN00PRDV3830,Proc & Del Solenoid Values,,792,504,720,0,0,0,720,0,0,0,,,,2013-12-31 08:00,2014-03-30 17:00,,2013-09-23 08:00,2013-12-21 17:00,2013-09-23 08:00,2013-12-21 17:00,2013-09-23 08:00,2013-12-21 17:00,2013-12-31 08:00,2014-03-30 17:00,,PT_Normal,,,,,ULEHDSTdTLKBFPG3riW6kw,,,,N,0,0,,,2013-02-16 15:52,2013-02-16 16:35,admin,admin
499972,6359,124374,13663,0,N,N,N,CP_Drtn,TT_Task,DT_FixedDUR2,TK_NotStart,DUKHPROGEN00PRDV3840,Proc & Del Gate Values,,656,368,720,0,0,0,720,0,0,0,,,,2013-12-31 08:00,2014-03-30 17:00,,2013-10-10 08:00,2014-01-07 17:00,2013-10-10 08:00,2014-01-07 17:00,2013-10-10 08:00,2014-01-07 17:00,2013-12-31 08:00,2014-03-30 17:00,,PT_Normal,,,,,OmM5vicdSwC+Bcc22Nt1SQ,,,,N,0,0,,,2013-02-16 15:52,2013-02-16 16:35,admin,admin
499973,6359,124374,13663,0,N,N,N,CP_Drtn,TT_Task,DT_FixedDUR2,TK_NotStart,DUKHPROGEN00PRDV3860,Proc & Del Remote Control Value,,496,208,720,0,0,0,720,0,0,0,,,,2013-12-31 08:00,2014-03-30 17:00,,2013-10-30 08:00,2014-01-27 17:00,2013-10-30 08:00,2014-01-27 17:00,2013-10-30 08:00,2014-01-27 17:00,2013-12-31 08:00,2014-03-30 17:00,,PT_Normal,,,,,UN2cCFVERpC2SB3cRqBXDw,,,,N,0,0,,,2013-02-16 15:52,2013-02-16 16:35,admin,admin
499974,6359,124374,13663,0,N,N,N,CP_Drtn,TT_Task,DT_FixedDUR2,TK_NotStart,DUKHPROGEN00PRDV3870,Proc & Del Irrigation Controller,,352,64,720,0,0,0,720,0,0,0,,,,2013-12-31 08:00,2014-03-30 17:00,,2013-11-17 08:00,2014-02-14 17:00,2013-11-17 08:00,2014-02-14 17:00,2013-11-17 08:00,2014-02-14 17:00,2013-12-31 08:00,2014-03-30 17:00,,PT_Normal,,,,,e2/ASqgRR92AQw6zlEJ1ZA,,,,N,0,0,,,2013-02-16 15:52,2013-02-16 16:35,admin,admin
499975,6359,124374,13663,0,N,N,N,CP_Drtn,TT_Task,DT_FixedDUR2,TK_NotStart,DUKHPROGEN00PRDV3850,Proc & Del Fences,,1208,680,720,0,0,0,720,0,0,0,,,,2014-02-21 08:00,2014-05-21 17:00,,2013-09-23 08:00,2013-12-21 17:00,2013-09-23 08:00,2013-12-21 17:00,2013-09-23 08:00,2013-12-21 17:00,2014-02-21 08:00,2014-05-21 17:00,,PT_Normal,,,,,bPjAiBIYSfO2cwhf0w4OZw,,,,N,0,0,,,2013-02-16 15:52,2013-02-16 16:47,admin,admin
499976,6359,124376,13662,0,N,N,N,CP_Drtn,TT_Task,DT_FixedDUR2,TK_NotStart,DUKHPROGEN00MTSM1770,Kitchen Water Filter_1st_Sub,,72,0,120,0,30,30,120,0,0,0,,,,2013-06-17 08:00,2013-07-03 17:00,,2013-06-06 08:00,2013-06-23 17:00,2013-06-06 08:00,2013-06-23 17:00,2013-06-06 08:00,2013-06-23 17:00,2013-06-17 08:00,2013-07-03 17:00,,PT_Normal,,,,,rBNbPTi9QEe+KL0NbVEbiw,,,,N,0,0,,,2013-02-16 15:52,2013-02-16 15:56,admin,admin
499977,6359,124376,13662,0,N,N,N,CP_Drtn,TT_Task,DT_FixedDUR2,TK_NotStart,DUKHPROGEN00MTSM1060,UPVC  Pipes_1st_Sub,,224,0,120,0,30,30,120,0,0,0,,,,2013-02-04 08:00,2013-02-21 17:00,,2013-01-02 08:00,2013-01-19 17:00,2013-01-02 08:00,2013-01-19 17:00,2013-01-02 08:00,2013-01-19 17:00,2013-02-04 08:00,2013-02-21 17:00,,PT_Normal,,,,,NEIhDbUXRjOdGoG7xR9tPA,,,,N,0,0,,,2013-02-16 15:52,2013-02-16 15:56,admin,admin
499978,6359,124376,13662,0,N,N,N,CP_Drtn,TT_Task,DT_FixedDUR2,TK_NotStart,DUKHPROGEN00MTSM1070,Floor drains & Cleanouts_1st_Sub,,224,0,120,0,30,30,120,0,0,0,,,,2013-02-04 08:00,2013-02-21 17:00,,2013-01-02 08:00,2013-01-19 17:00,2013-01-02 08:00,2013-01-19 17:00,2013-01-02 08:00,2013-01-19 17:00,2013-02-04 08:00,2013-02-21 17:00,,PT_Normal,,,,,gizdsa8aTJ+glIc+oNTjUA,,,,N,0,0,,,2013-02-16 15:52,2013-02-16 15:56,admin,admin
499979,6359,124376,13662,0,N,N,N,CP_Drtn,TT_Task,DT_FixedDUR2,TK_NotStart,DUKHPROGEN00MTSM1150,Sanitary Fittings_1st_Sub,,32,0,120,0,30,30,120,0,0,0,,,,2013-02-26 08:00,2013-03-14 17:00,,2013-02-21 08:00,2013-03-10 17:00,2013-02-21 08:00,2013-03-10 17:00,2013-02-21 08:00,2013-03-10 17:00,2013-02-26 08:00,2013-03-14 17:00,,PT_Normal,,,,,vSJjUntOQHiBFi3yjDd8mg,,,,N,0,0,,,2013-02-16 15:52,2013-02-16 16:35,admin,admin
499980,6359,124376,13662,0,N,N,N,CP_Drtn,TT_Task,DT_FixedDUR2,TK_NotStart,DUKHPROGEN00MTSM1230,Water Heater_1st_Sub,,32,0,120,0,30,30,120,0,0,0,,,,2013-03-16 08:00,2013-04-01 17:00,,2013-03-11 08:00,2013-03-27 17:00,2013-03-11 08:00,2013-03-27 17:00,2013-03-11 08:00,2013-03-27 17:00,2013-03-16 08:00,2013-04-01 17:00,,PT_Normal,,,,,+q3CTbQdSYmX5M8QZWsO1A,,,,N,0,0,,,2013-02-16 15:52,2013-02-16 16:35,admin,admin
499981,6359,124376,13662,0,N,N,N,CP_Drtn,TT_Task,DT_FixedDUR2,TK_NotStart,DUKHPROGEN00MTSM1080,Polyethylene Pipes_1st_Sub,,440,0,120,0,30,30,120,0,0,0,,,,2013-03-09 08:00,2013-03-25 17:00,,2013-01-02 08:00,2013-01-19 17:00,2013-01-02 08:00,2013-01-19 17:00,2013-01-02 08:00,2013-01-19 17:00,2013-03-09 08:00,2013-03-25 17:00,,PT_Normal,,,,,ra8fEGGaRmanjp4FC8Ceeg,,,,N,0,0,,,2013-02-16 15:52,2013-02-16 15:56,admin,admin
499982,6359,124376,13662,0,N,N,N,CP_Drtn,TT_Task,DT_FixedDUR2,TK_NotStart,DUKHPROGEN00MTSM1160,Copper Pipes_1st_Sub,,432,0,120,0,30,30,120,0,0,0,,,,2013-04-25 08:00,2013-05-12 17:00,,2013-02-21 08:00,2013-03-10 17:00,2013-02-21 08:00,2013-03-10 17:00,2013-02-21 08:00,2013-03-10 17:00,2013-04-25 08:00,2013-05-12 17:00,,PT_Normal,,,,,OoV9WKL+QyOwMI3bTjl7Yw,,,,N,0,0,,,2013-02-16 15:52,2013-02-16 15:56,admin,admin
499983,6359,124376,13662,0,N,N,N,CP_Drtn,TT_Task,DT_FixedDUR2,TK_NotStart,DUKHPROGEN00MTSM1240,Split AC_1st_Sub,,488,0,120,0,30,30,120,0,0,0,,,,2013-05-21 08:00,2013-06-06 17:00,,2013-03-11 08:00,2013-03-27 17:00,2013-03-11 08:00,2013-03-27 17:00,2013-03-11 08:00,2013-03-27 17:00,2013-05-21 08:00,2013-06-06 17:00,,PT_Normal,,,,,g3ciCJr3Sw+Bnm/ZW3ae8Q,,,,N,0,0,,,2013-02-16 15:52,2013-02-16 15:56,admin,admin
499984,6359,124376,13662,0,N,N,N,CP_Drtn,TT_Task,DT_FixedDUR2,TK_NotStart,DUKHPROGEN00MTSM1340,Exhaust Air louver_1st_Sub,,488,0,120,0,30,30,120,0,0,0,,,,2013-06-08 08:00,2013-06-24 17:00,,2013-03-28 08:00,2013-04-14 17:00,2013-03-28 08:00,2013-04-14 17:00,2013-03-28 08:00,2013-04-14 17:00,2013-06-08 08:00,2013-06-24 17:00,,PT_Normal,,,,,SZq3mc/2RjSrB+1ik4jY3Q,,,,N,0,0,,,2013-02-16 15:52,2013-02-16 15:56,admin,admin
499985,6359,124376,13662,0,N,N,N,CP_Drtn,TT_Task,DT_FixedDUR2,TK_NotStart,DUKHPROGEN00MTSM1530,Exhaust Fan_1st_Sub,,488,0,120,0,30,30,120,0,0,0,,,,2013-06-25 08:00,2013-07-11 17:00,,2013-04-15 08:00,2013-05-01 17:00,2013-04-15 08:00,2013-05-01 17:00,2013-04-15 08:00,2013-05-01 17:00,2013-06-25 08:00,2013-07-11 17:00,,PT_Normal,,,,,MUPF4u3tQZO0KUUjkZIT2g,,,,N,0,0,,,2013-02-16 15:52,2013-02-16 15:56,admin,admin
499986,6359,124376,13662,0,N,N,N,CP_Drtn,TT_Task,DT_FixedDUR2,TK_NotStart,DUKHPROGEN00MTSM1170,SMDB_1st_Sub,,600,0,120,0,30,30,120,0,0,0,,,,2013-05-20 08:00,2013-06-05 17:00,,2013-02-21 08:00,2013-03-10 17:00,2013-02-21 08:00,2013-03-10 17:00,2013-02-21 08:00,2013-03-10 17:00,2013-05-20 08:00,2013-06-05 17:00,,PT_Normal,,,,,Q6cMZ9D3SrCq+TU/op3u5A,,,,N,0,0,,,2013-02-16 15:52,2013-02-16 15:56,admin,admin
499987,6359,124376,13662,0,N,N,N,CP_Drtn,TT_Task,DT_FixedDUR2,TK_NotStart,DUKHPROGEN00MTSM1180,Cables & Wires_1st_Sub,,392,0,120,0,30,30,120,0,0,0,,,,2013-04-20 08:00,2013-05-06 17:00,,2013-02-21 08:00,2013-03-10 17:00,2013-02-21 08:00,2013-03-10 17:00,2013-02-21 08:00,2013-03-10 17:00,2013-04-20 08:00,2013-05-06 17:00,,PT_Normal,,,,,lFNBUELYRE67Rlgy0V8n6g,,,,N,0,0,,,2013-02-16 15:52,2013-02-16 15:56,admin,admin
499988,6359,124376,13662,0,N,N,N,CP_Drtn,TT_Task,DT_FixedDUR2,TK_NotStart,DUKHPROGEN00MTSM1190,Lights & Fixtures_1st_Sub,,696,0,120,0,30,30,120,0,0,0,,,,2013-06-03 08:00,2013-06-19 17:00,,2013-02-21 08:00,2013-03-10 17:00,2013-02-21 08:00,2013-03-10 17:00,2013-02-21 08:00,2013-03-10 17:00,2013-06-03 08:00,2013-06-19 17:00,,PT_Normal,,,,,6SnECwHqTfG1cggW2fJ6nA,,,,N,0,0,,,2013-02-16 15:52,2013-02-16 15:56,admin,admin
499989,6359,124376,13662,0,N,N,N,CP_Drtn,TT_Task,DT_FixedDUR2,TK_NotStart,DUKHPROGEN00MTSM1200,Isolators_1st_Sub,,864,0,120,0,30,30,120,0,0,0,,,,2013-06-27 08:00,2013-07-14 17:00,,2013-02-21 08:00,2013-03-10 17:00,2013-02-21 08:00,2013-03-10 17:00,2013-02-21 08:00,2013-03-10 17:00,2013-06-27 08:00,2013-07-14 17:00,,PT_Normal,,,,,6JieAoFqRN2V/WFczR+D3A,,,,N,0,0,,,2013-02-16 15:52,2013-02-16 15:56,admin,admin
499990,6359,124376,13662,0,N,N,N,CP_Drtn,TT_Task,DT_FixedDUR2,TK_NotStart,DUKHPROGEN00MTSM1250,Street Light Post Set_1st_Sub,,880,0,120,0,30,30,120,0,0,0,,,,2013-07-17 08:00,2013-08-03 17:00,,2013-03-11 08:00,2013-03-27 17:00,2013-03-11 08:00,2013-03-27 17:00,2013-03-11 08:00,2013-03-27 17:00,2013-07-17 08:00,2013-08-03 17:00,,PT_Normal,,,,,NBuH9ITNQHqqW86t086C4g,,,,N,0,0,,,2013-02-16 15:52,2013-02-16 15:56,admin,admin
499991,6359,124376,13662,0,N,N,N,CP_Drtn,TT_Task,DT_FixedDUR2,TK_NotStart,DUKHPROGEN00MTSM1350,Bollard Lamp_1st_Sub,,880,0,120,0,30,30,120,0,0,0,,,,2013-08-04 08:00,2013-08-24 17:00,,2013-03-28 08:00,2013-04-14 17:00,2013-03-28 08:00,2013-04-14 17:00,2013-03-28 08:00,2013-04-14 17:00,2013-08-04 08:00,2013-08-24 17:00,,PT_Normal,,,,,3TmXbWSqSOirm5jxG3dJVg,,,,N,0,0,,,2013-02-16 15:52,2013-02-16 15:56,admin,admin
499992,6359,124376,13662,0,N,N,N,CP_Drtn,TT_Task,DT_FixedDUR2,TK_NotStart,DUKHPROGEN00MTSM1210,Fire Resistant Cables_1st_Sub,,392,0,120,0,30,30,120,0,0,0,,,,2013-04-20 08:00,2013-05-06 17:00,,2013-02-21 08:00,2013-03-10 17:00,2013-02-21 08:00,2013-03-10 17:00,2013-02-21 08:00,2013-03-10 17:00,2013-04-20 08:00,2013-05-06 17:00,,PT_Normal,,,,,4g28TsejSiCviMy/VW+Cvw,,,,N,0,0,,,2013-02-16 15:52,2013-02-16 15:56,admin,admin
499993,6359,124376,13662,0,N,N,N,CP_Drtn,TT_Task,DT_FixedDUR2,TK_NotStart,DUKHPROGEN00MTSM1260,Smoke Detector_1st_Sub,,392,0,120,0,30,30,120,0,0,0,,,,2013-05-07 08:00,2013-05-23 17:00,,2013-03-11 08:00,2013-03-27 17:00,2013-03-11 08:00,2013-03-27 17:00,2013-03-11 08:00,2013-03-27 17:00,2013-05-07 08:00,2013-05-23 17:00,,PT_Normal,,,,,hQ1hA2rvQkWZmerJDpO8Xw,,,,N,0,0,,,2013-02-16 15:52,2013-02-16 15:56,admin,admin
499994,6359,124376,13662,0,N,N,N,CP_Drtn,TT_Task,DT_FixedDUR2,TK_NotStart,DUKHPROGEN00MTSM1360,Digital Alarm Communicator Panel_1st_Sub,,392,0,120,0,30,30,120,0,0,0,,,,2013-05-25 08:00,2013-06-10 17:00,,2013-03-28 08:00,2013-04-14 17:00,2013-03-28 08:00,2013-04-14 17:00,2013-03-28 08:00,2013-04-14 17:00,2013-05-25 08:00,2013-06-10 17:00,,PT_Normal,,,,,xvVaVQxTQJK5y0hhdkOtwg,,,,N,0,0,,,2013-02-16 15:52,2013-02-16 15:56,admin,admin
499995,6359,124376,13662,0,N,N,N,CP_Drtn,TT_Task,DT_FixedDUR2,TK_NotStart,DUKHPROGEN00MTSM1370,Fire Blanket_1st_Sub,,32,0,120,0,30,30,120,0,0,0,,,,2013-04-02 08:00,2013-04-18 17:00,,2013-03-28 08:00,2013-04-14 17:00,2013-03-28 08:00,2013-04-14 17:00,2013-03-28 08:00,2013-04-14 17:00,2013-04-02 08:00,2013-04-18 17:00,,PT_Normal,,,,,KkOXOC9zSB+F8aEIhft3AA,,,,N,0,0,,,2013-02-16 15:52,2013-02-16 16:35,admin,admin
499996,6359,124376,13662,0,N,N,N,CP_Drtn,TT_Task,DT_FixedDUR2,TK_NotStart,DUKHPROGEN00MTSM1380,Fire Extinguisher_1st_Sub,,32,0,120,0,30,30,120,0,0,0,,,,2013-04-02 08:00,2013-04-18 17:00,,2013-03-28 08:00,2013-04-14 17:00,2013-03-28 08:00,2013-04-14 17:00,2013-03-28 08:00,2013-04-14 17:00,2013-04-02 08:00,2013-04-18 17:00,,PT_Normal,,,,,8/pjydewQjeKeLcsZpn6bQ,,,,N,0,0,,,2013-02-16 15:52,2013-02-16 16:35,admin,admin
499997,6359,124376,13662,0,N,N,N,CP_Drtn,TT_Task,DT_FixedDUR2,TK_NotStart,DUKHPROGEN00MTSM1540,Ductile Iron Pipes_1st_Sub,,32,0,120,0,30,30,120,0,0,0,,,,2013-04-20 08:00,2013-05-06 17:00,,2013-04-15 08:00,2013-05-01 17:00,2013-04-15 08:00,2013-05-01 17:00,2013-04-15 08:00,2013-05-01 17:00,2013-04-20 08:00,2013-05-06 17:00,,PT_Normal,,,,,Q31knEOvRPi90E4zH5LlhA,,,,N,0,0,,,2013-02-16 15:52,2013-02-16 16:35,admin,admin
499998,6359,124376,13662,0,N,N,N,CP_Drtn,TT_Task,DT_FixedDUR2,TK_NotStart,DUKHPROGEN00MTSM1650,Isolating Values_1st_Sub,,32,0,120,0,20,20,120,0,0,0,,,,2013-05-07 08:00,2013-05-23 17:00,,2013-05-02 08:00,2013-05-19 17:00,2013-05-02 08:00,2013-05-19 17:00,2013-05-02 08:00,2013-05-19 17:00,2013-05-07 08:00,2013-05-23 17:00,,PT_Normal,,,,,ZSsmeZVGSTyxfSwNRM9CHg,,,,N,0,0,,,2013-02-16 15:52,2013-02-16 16:35,admin,admin
499999,6359,124376,13662,0,N,N,N,CP_Drtn,TT_Task,DT_FixedDUR2,TK_NotStart,DUKHPROGEN00MTSM1690,Fire Hydrant_1st_Sub,,120,0,120,0,30,30,120,0,0,0,,,,2013-06-06 08:00,2013-06-23 17:00,,2013-05-20 08:00,2013-06-05 17:00,2013-05-20 08:00,2013-06-05 17:00,2013-05-20 08:00,2013-06-05 17:00,2013-06-06 08:00,2013-06-23 17:00,,PT_Normal,,,,,e6eMt+VSRY6gLvAm6HdnWw,,,,N,0,0,,,2013-02-16 15:52,2013-02-16 16:35,admin,admin
500000,6359,124376,13662,0,N,N,N,CP_Drtn,TT_Task,DT_FixedDUR2,TK_NotStart,DUKHPROGEN00MTSM1270,Video Com System_1st_Sub,,560,0,120,0,30,30,120,0,0,0,,,,2013-06-01 08:00,2013-06-17 17:00,,2013-03-11 08:00,2013-03-27 17:00,2013-03-11 08:00,2013-03-27 17:00,2013-03-11 08:00,2013-03-27 17:00,2013-06-01 08:00,2013-06-17 17:00,,PT_Normal,,,,,p2jKDuy1Sx+WJarOiyYyuQ,,,,N,0,0,,,2013-02-16 15:52,2013-02-16 15:56,admin,admin
500001,6359,124376,13662,0,N,N,N,CP_Drtn,TT_Task,DT_FixedDUR2,TK_NotStart,DUKHPROGEN00MTSM1280,Telephone Fittings & Accessories_1st_Sub,,560,0,120,0,30,30,120,0,0,0,,,,2013-06-01 08:00,2013-06-17 17:00,,2013-03-11 08:00,2013-03-27 17:00,2013-03-11 08:00,2013-03-27 17:00,2013-03-11 08:00,2013-03-27 17:00,2013-06-01 08:00,2013-06-17 17:00,,PT_Normal,,,,,pYoxM+kOSKaqhj2X8xnR8Q,,,,N,0,0,,,2013-02-16 15:52,2013-02-16 15:56,admin,admin
500002,6359,124376,13662,0,N,N,N,CP_Drtn,TT_Task,DT_FixedDUR2,TK_NotStart,DUKHPROGEN00MTSM1290,"Television devices,Fittings & Access._1st_Sub",,792,0,120,0,30,30,120,0,0,0,,,,2013-07-04 08:00,2013-07-21 17:00,,2013-03-11 08:00,2013-03-27 17:00,2013-03-11 08:00,2013-03-27 17:00,2013-03-11 08:00,2013-03-27 17:00,2013-07-04 08:00,2013-07-21 17:00,,PT_Normal,,,,,QKvb/2vKRU2d9p2On95QYg,,,,N,0,0,,,2013-02-16 15:52,2013-02-16 15:56,admin,admin
500003,6359,124376,13662,0,N,N,N,CP_Drtn,TT_Task,DT_FixedDUR2,TK_NotStart,DUKHPROGEN00MTSM1670,Irrigation Pipes_1st_Sub,,296,0,120,0,30,30,120,0,0,0,,,,2013-06-03 08:00,2013-06-19 17:00,,2013-04-21 08:00,2013-05-07 17:00,2013-04-21 08:00,2013-05-07 17:00,2013-04-21 08:00,2013-05-07 17:00,2013-06-03 08:00,2013-06-19 17:00,,PT_Normal,,,,,CmzOYHXWSVC4zgZ3LEOSwg,,,,N,0,0,,,2013-02-16 15:52,2013-02-16 15:56,admin,admin
500004,6359,124376,13662,0,N,N,N,CP_Drtn,TT_Task,DT_FixedDUR2,TK_NotStart,DUKHPROGEN00MTSM1760,Sprinklers_1st_Sub,,296,0,120,0,20,20,120,0,0,0,,,,2013-06-20 08:00,2013-07-07 17:00,,2013-05-08 08:00,2013-05-25 17:00,2013-05-08 08:00,2013-05-25 17:00,2013-05-08 08:00,2013-05-25 17:00,2013-06-20 08:00,2013-07-07 17:00,,PT_Normal,,,,,pJIIDO1+TxKeSbA/eaMZCA,,,,N,0,0,,,2013-02-16 15:52,2013-02-16 15:56,admin,admin
500005,6359,124376,13662,0,N,N,N,CP_Drtn,TT_Task,DT_FixedDUR2,TK_NotStart,DUKHPROGEN00MTSM1810,Nozzle Jet_1st_Sub,,296,0,120,0,30,30,120,0,0,0,,,,2013-07-08 08:00,2013-07-24 17:00,,2013-05-26 08:00,2013-06-11 17:00,2013-05-26 08:00,2013-06-11 17:00,2013-05-26 08:00,2013-06-11 17:00,2013-07-08 08:00,2013-07-24 17:00,,PT_Normal,,,,,5aSsgTmDQQG6yFGPV6AhJQ,,,,N,0,0,,,2013-02-16 15:52,2013-02-16 15:56,admin,admin
500006,6359,124376,13662,0,N,N,N,CP_Drtn,TT_Task,DT_FixedDUR2,TK_NotStart,DUKHPROGEN00MTSM1830,Solenoid Values_1st_Sub,,296,0,120,0,30,30,120,0,0,0,,,,2013-07-25 08:00,2013-08-14 17:00,,2013-06-12 08:00,2013-06-29 17:00,2013-06-12 08:00,2013-06-29 17:00,2013-06-12 08:00,2013-06-29 17:00,2013-07-25 08:00,2013-08-14 17:00,,PT_Normal,,,,,6LOmAWmuR1KyONCN+jaR0w,,,,N,0,0,,,2013-02-16 15:52,2013-02-16 15:56,admin,admin
500007,6359,124376,13662,0,N,N,N,CP_Drtn,TT_Task,DT_FixedDUR2,TK_NotStart,DUKHPROGEN00MTSM1840,Gate Values_1st_Sub,,296,0,120,0,30,30,120,0,0,0,,,,2013-08-15 08:00,2013-09-01 17:00,,2013-06-30 08:00,2013-07-16 17:00,2013-06-30 08:00,2013-07-16 17:00,2013-06-30 08:00,2013-07-16 17:00,2013-08-15 08:00,2013-09-01 17:00,,PT_Normal,,,,,RJPtyZrQSAaE9/ziJLcOAQ,,,,N,0,0,,,2013-02-16 15:52,2013-02-16 15:56,admin,admin
500008,6359,124376,13662,0,N,N,N,CP_Drtn,TT_Task,DT_FixedDUR2,TK_NotStart,DUKHPROGEN00MTSM1860,Remote Control Value_1st_Sub,,296,0,120,0,30,30,120,0,0,0,,,,2013-09-02 08:00,2013-09-18 17:00,,2013-07-17 08:00,2013-08-03 17:00,2013-07-17 08:00,2013-08-03 17:00,2013-07-17 08:00,2013-08-03 17:00,2013-09-02 08:00,2013-09-18 17:00,,PT_Normal,,,,,egVjoAQ1Tyau5WDYvIhCtQ,,,,N,0,0,,,2013-02-16 15:52,2013-02-16 15:56,admin,admin
500009,6359,124376,13662,0,N,N,N,CP_Drtn,TT_Task,DT_FixedDUR2,TK_NotStart,DUKHPROGEN00MTSM1870,Irrigation Controller_1st_Sub,,296,0,120,0,30,30,120,0,0,0,,,,2013-09-19 08:00,2013-10-06 17:00,,2013-08-04 08:00,2013-08-24 17:00,2013-08-04 08:00,2013-08-24 17:00,2013-08-04 08:00,2013-08-24 17:00,2013-09-19 08:00,2013-10-06 17:00,,PT_Normal,,,,,UV/XMsURThyCzP3MuxtzWg,,,,N,0,0,,,2013-02-16 15:52,2013-02-16 15:56,admin,admin
500010,6359,124376,13662,0,N,N,N,CP_Drtn,TT_Task,DT_FixedDUR2,TK_NotStart,DUKHPROGEN00MTSM1850,Fences_1st_Sub,,1008,0,120,0,30,30,120,0,0,0,,,,2013-11-12 08:00,2013-11-28 17:00,,2013-06-12 08:00,2013-06-29 17:00,2013-06-12 08:00,2013-06-29 17:00,2013-06-12 08:00,2013-06-29 17:00,2013-11-12 08:00,2013-11-28 17:00,,PT_Normal,,,,,HPi9gU+oRX+mBHEL3tlzFw,,,,N,0,0,,,2013-02-16 15:52,2013-02-16 16:47,admin,admin
500011,6359,124376,13662,0,N,N,N,CP_Drtn,TT_Task,DT_FixedDUR2,TK_NotStart,DUKHPROGEN00MTSM1000,Anti Termite _1st_Sub,,360,0,80,0,20,20,80,0,0,0,,,,2013-01-20 08:00,2013-01-30 17:00,,2012-11-27 08:00,2012-12-08 17:00,2012-11-27 08:00,2012-12-08 17:00,2012-11-27 08:00,2012-12-08 17:00,2013-01-20 08:00,2013-01-30 17:00,,PT_Normal,,,,,HKBperbgRf6aJvd6cMhqoQ,,,,N,0,0,,,2013-02-16 15:52,2013-02-16 15:56,admin,admin
500012,6359,124376,13662,0,N,N,N,CP_Drtn,TT_Task,DT_FixedDUR2,TK_NotStart,DUKHPROGEN00MTSM1020,Concrete_1st_Sub,,312,0,80,0,20,20,80,0,0,0,,,,2013-01-14 08:00,2013-01-24 17:00,,2012-11-28 08:00,2012-12-09 17:00,2012-11-28 08:00,2012-12-09 17:00,2012-11-28 08:00,2012-12-09 17:00,2013-01-14 08:00,2013-01-24 17:00,,PT_Normal,,,,,tBhUPahbRPKnJ7EFFT3vSw,,,,N,0,0,,,2013-02-16 15:52,2013-02-16 15:56,admin,admin
500013,6359,124376,13662,0,N,N,N,CP_Drtn,TT_Task,DT_FixedDUR2,TK_NotStart,DUKHPROGEN00MTSM1030,Waterproofing_1st_Sub,,304,0,80,0,20,20,80,0,0,0,,,,2013-01-29 08:00,2013-02-09 17:00,,2012-12-15 08:00,2012-12-26 17:00,2012-12-15 08:00,2012-12-26 17:00,2012-12-15 08:00,2012-12-26 17:00,2013-01-29 08:00,2013-02-09 17:00,,PT_Normal,,,,,8HSmcqb8SWS0OLnj23/HZw,,,,N,0,0,,,2013-02-16 15:52,2013-02-16 15:56,admin,admin
500014,6359,124376,13662,0,N,N,N,CP_Drtn,TT_Task,DT_FixedDUR2,TK_NotStart,DUKHPROGEN00MTSM1010,Block Work_1st_Sub,,472,0,80,0,20,20,80,0,0,0,,,,2013-02-05 08:00,2013-02-17 17:00,,2012-11-27 08:00,2012-12-08 17:00,2012-11-27 08:00,2012-12-08 17:00,2012-11-27 08:00,2012-12-08 17:00,2013-02-05 08:00,2013-02-17 17:00,,PT_Normal,,,,,aWiOrVNRQ9CZ+S67LK23/A,,,,N,0,0,,,2013-02-16 15:52,2013-02-16 15:56,admin,admin
500015,6359,124376,13662,0,N,N,N,CP_Drtn,TT_Task,DT_FixedDUR2,TK_NotStart,DUKHPROGEN00MTSM1040,Plastering & Accessories_1st_Sub,,584,0,80,0,20,20,80,0,0,0,,,,2013-02-27 08:00,2013-03-10 17:00,,2012-12-02 08:00,2012-12-12 17:00,2012-12-02 08:00,2012-12-12 17:00,2012-12-02 08:00,2012-12-12 17:00,2013-02-27 08:00,2013-03-10 17:00,,PT_Normal,,,,,MgMhw1aQTg2Zn8GJfKfFIg,,,,N,0,0,,,2013-02-16 15:52,2013-02-16 15:56,admin,admin
500016,6359,124376,13662,0,N,N,N,CP_Drtn,TT_Task,DT_FixedDUR2,TK_NotStart,DUKHPROGEN00MTSM1050,Thermal Insulation_1st_Sub,,696,0,120,0,30,30,120,0,0,0,,,,2013-04-09 08:00,2013-04-25 17:00,,2012-12-27 08:00,2013-01-13 17:00,2012-12-27 08:00,2013-01-13 17:00,2012-12-27 08:00,2013-01-13 17:00,2013-04-09 08:00,2013-04-25 17:00,,PT_Normal,,,,,8l9Xz7moRwaAQMdlM7b71Q,,,,N,0,0,,,2013-02-16 15:52,2013-02-16 15:56,admin,admin
500017,6359,124376,13662,0,N,N,N,CP_Drtn,TT_Task,DT_FixedDUR2,TK_NotStart,DUKHPROGEN00MTSM1140,Pitch roofing_1st_Sub,,696,0,120,0,30,30,120,0,0,0,,,,2013-04-27 08:00,2013-05-13 17:00,,2013-01-14 08:00,2013-01-30 17:00,2013-01-14 08:00,2013-01-30 17:00,2013-01-14 08:00,2013-01-30 17:00,2013-04-27 08:00,2013-05-13 17:00,,PT_Normal,,,,,lAQP8WCOS/OHKEsKuOfuvw,,,,N,0,0,,,2013-02-16 15:52,2013-02-16 15:56,admin,admin
500018,6359,124376,13662,0,N,N,N,CP_Drtn,TT_Task,DT_FixedDUR2,TK_NotStart,DUKHPROGEN00MTSM1490,Wooden Doors_1st_Sub,,208,0,80,0,20,20,80,0,0,0,,,,2013-04-20 08:00,2013-04-30 17:00,,2013-03-20 08:00,2013-03-31 17:00,2013-03-20 08:00,2013-03-31 17:00,2013-03-20 08:00,2013-03-31 17:00,2013-04-20 08:00,2013-04-30 17:00,,PT_Normal,,,,,NyVJGkG8TgWltDTdqPisnw,,,,N,0,0,,,2013-02-16 15:52,2013-02-16 15:56,admin,admin
500019,6359,124376,13662,0,N,N,N,CP_Drtn,TT_Task,DT_FixedDUR2,TK_NotStart,DUKHPROGEN00MTSM1440,PVC Doors_1st_Sub,,736,0,80,0,20,20,80,0,0,0,,,,2013-07-06 08:00,2013-07-16 17:00,,2013-03-20 08:00,2013-03-31 17:00,2013-03-20 08:00,2013-03-31 17:00,2013-03-20 08:00,2013-03-31 17:00,2013-07-06 08:00,2013-07-16 17:00,,PT_Normal,,,,,76H76br2SZq3IAEdBU+w8A,,,,N,0,0,,,2013-02-16 15:52,2013-02-16 15:56,admin,admin
500020,6359,124376,13662,0,N,N,N,CP_Drtn,TT_Task,DT_FixedDUR2,TK_NotStart,DUKHPROGEN00MTSM1550,Closets /wardrobe& Pelmets_1st_Sub,,344,0,120,0,30,30,120,0,0,0,,,,2013-05-27 08:00,2013-06-12 17:00,,2013-04-07 08:00,2013-04-23 17:00,2013-04-07 08:00,2013-04-23 17:00,2013-04-07 08:00,2013-04-23 17:00,2013-05-27 08:00,2013-06-12 17:00,,PT_Normal,,,,,hhIDIEjwQGGCjjwf4LOwTA,,,,N,0,0,,,2013-02-16 15:52,2013-02-16 15:56,admin,admin
500021,6359,124376,13662,0,N,N,N,CP_Drtn,TT_Task,DT_FixedDUR2,TK_NotStart,DUKHPROGEN00MTSM1560,"Counters, Cabinets & Shelves_1st_Sub",,344,0,120,0,30,30,120,0,0,0,,,,2013-05-27 08:00,2013-06-12 17:00,,2013-04-07 08:00,2013-04-23 17:00,2013-04-07 08:00,2013-04-23 17:00,2013-04-07 08:00,2013-04-23 17:00,2013-05-27 08:00,2013-06-12 17:00,,PT_Normal,,,,,jPJxVLWxSMC1fTt0mXdVuQ,,,,N,0,0,,,2013-02-16 15:52,2013-02-16 15:56,admin,admin
500022,6359,124376,13662,0,N,N,N,CP_Drtn,TT_Task,DT_FixedDUR2,TK_NotStart,DUKHPROGEN00MTSM1570,Wooden Hand Rails _1st_Sub,,488,0,120,0,30,30,120,0,0,0,,,,2013-06-17 08:00,2013-07-03 17:00,,2013-04-07 08:00,2013-04-23 17:00,2013-04-07 08:00,2013-04-23 17:00,2013-04-07 08:00,2013-04-23 17:00,2013-06-17 08:00,2013-07-03 17:00,,PT_Normal,,,,,uBW4M3qRQeuN9LBdN5dyKw,,,,N,0,0,,,2013-02-16 15:52,2013-02-16 15:56,admin,admin
500023,6359,124376,13662,0,N,N,N,CP_Drtn,TT_Task,DT_FixedDUR2,TK_NotStart,DUKHPROGEN00MTSM1780,Gazebo Structure_1st_Sub,,536,0,120,0,30,30,120,0,0,0,,,,2013-08-15 08:00,2013-09-01 17:00,,2013-05-26 08:00,2013-06-11 17:00,2013-05-26 08:00,2013-06-11 17:00,2013-05-26 08:00,2013-06-11 17:00,2013-08-15 08:00,2013-09-01 17:00,,PT_Normal,,,,,NOKaWfcGRKyMiLDJo38uQw,,,,N,0,0,,,2013-02-16 15:52,2013-02-16 15:56,admin,admin
500024,6359,124376,13662,0,N,N,N,CP_Drtn,TT_Task,DT_FixedDUR2,TK_NotStart,DUKHPROGEN00MTSM1450,Ironmongeries_1st_Sub,,208,0,80,0,20,20,80,0,0,0,,,,2013-04-20 08:00,2013-04-30 17:00,,2013-03-20 08:00,2013-03-31 17:00,2013-03-20 08:00,2013-03-31 17:00,2013-03-20 08:00,2013-03-31 17:00,2013-04-20 08:00,2013-04-30 17:00,,PT_Normal,,,,,FlTQePuwQGuAxr4yru3Osw,,,,N,0,0,,,2013-02-16 15:52,2013-02-16 15:56,admin,admin
500025,6359,124376,13662,0,N,N,N,CP_Drtn,TT_Task,DT_FixedDUR2,TK_NotStart,DUKHPROGEN00MTSM1460,Aluminum Doors _1st_Sub,,520,0,80,0,20,20,80,0,0,0,,,,2013-06-04 08:00,2013-06-15 17:00,,2013-03-20 08:00,2013-03-31 17:00,2013-03-20 08:00,2013-03-31 17:00,2013-03-20 08:00,2013-03-31 17:00,2013-06-04 08:00,2013-06-15 17:00,,PT_Normal,,,,,0vjwiLKfRB6sSO0DIVkq1g,,,,N,0,0,,,2013-02-16 15:52,2013-02-16 15:56,admin,admin
500026,6359,124376,13662,0,N,N,N,CP_Drtn,TT_Task,DT_FixedDUR2,TK_NotStart,DUKHPROGEN00MTSM1470,Aluminum  Windows_1st_Sub,,568,0,80,0,20,20,80,0,0,0,,,,2013-06-11 08:00,2013-06-22 17:00,,2013-03-20 08:00,2013-03-31 17:00,2013-03-20 08:00,2013-03-31 17:00,2013-03-20 08:00,2013-03-31 17:00,2013-06-11 08:00,2013-06-22 17:00,,PT_Normal,,,,,r+yd50qXSmCmN3KxjJ/10Q,,,,N,0,0,,,2013-02-16 15:52,2013-02-16 15:56,admin,admin
500027,6359,124376,13662,0,N,N,N,CP_Drtn,TT_Task,DT_FixedDUR2,TK_NotStart,DUKHPROGEN00MTSM1480,Granite_1st_Sub,,368,0,80,0,20,20,80,0,0,0,,,,2013-05-13 08:00,2013-05-23 17:00,,2013-03-20 08:00,2013-03-31 17:00,2013-03-20 08:00,2013-03-31 17:00,2013-03-20 08:00,2013-03-31 17:00,2013-05-13 08:00,2013-05-23 17:00,,PT_Normal,,,,,oSWCdZ66RbakNE7mFhE7eA,,,,N,0,0,,,2013-02-16 15:52,2013-02-16 15:56,admin,admin
500028,6359,124376,13662,0,N,N,N,CP_Drtn,TT_Task,DT_FixedDUR2,TK_NotStart,DUKHPROGEN00MTSM1090,Cobble stone finish _1st_Sub,,584,0,120,0,30,30,120,0,0,0,,,,2013-03-11 08:00,2013-03-27 17:00,,2012-12-13 08:00,2012-12-31 17:00,2012-12-13 08:00,2012-12-31 17:00,2012-12-13 08:00,2012-12-31 17:00,2013-03-11 08:00,2013-03-27 17:00,,PT_Normal,,,,,/okdHIO5TA2rBjWrZd24eg,,,,N,0,0,,,2013-02-16 15:52,2013-02-16 15:56,admin,admin
500029,6359,124376,13662,0,N,N,N,CP_Drtn,TT_Task,DT_FixedDUR2,TK_NotStart,DUKHPROGEN00MTSM1100,Slate Tile_1st_Sub,,584,0,120,0,30,30,120,0,0,0,,,,2013-03-11 08:00,2013-03-27 17:00,,2012-12-13 08:00,2012-12-31 17:00,2012-12-13 08:00,2012-12-31 17:00,2012-12-13 08:00,2012-12-31 17:00,2013-03-11 08:00,2013-03-27 17:00,,PT_Normal,,,,,FMj5DRmVQAWaUVOaTTQfCg,,,,N,0,0,,,2013-02-16 15:52,2013-02-16 15:56,admin,admin
500030,6359,124376,13662,0,N,N,N,CP_Drtn,TT_Task,DT_FixedDUR2,TK_NotStart,DUKHPROGEN00MTSM1110,Stone Cladding_1st_Sub,,584,0,120,0,30,30,120,0,0,0,,,,2013-03-11 08:00,2013-03-27 17:00,,2012-12-13 08:00,2012-12-31 17:00,2012-12-13 08:00,2012-12-31 17:00,2012-12-13 08:00,2012-12-31 17:00,2013-03-11 08:00,2013-03-27 17:00,,PT_Normal,,,,,nFmhk7+MTb6UPlmIDJwgQw,,,,N,0,0,,,2013-02-16 15:52,2013-02-16 15:56,admin,admin
500031,6359,124376,13662,0,N,N,N,CP_Drtn,TT_Task,DT_FixedDUR2,TK_NotStart,DUKHPROGEN00MTSM1300,Gypsum Board false ceiling_1st_Sub,,80,0,80,0,20,20,80,0,0,0,,,,2013-03-26 08:00,2013-04-06 17:00,,2013-03-14 08:00,2013-03-25 17:00,2013-03-14 08:00,2013-03-25 17:00,2013-03-14 08:00,2013-03-25 17:00,2013-03-26 08:00,2013-04-06 17:00,,PT_Normal,,,,,ZMaWTQ0wTqSU8Cy46WyFtg,,,,N,0,0,,,2013-02-16 15:52,2013-02-16 15:56,admin,admin
500032,6359,124376,13662,0,N,N,N,CP_Drtn,TT_Task,DT_FixedDUR2,TK_NotStart,DUKHPROGEN00MTSM1310,Aluminum Tile false ceiling_1st_Sub,,336,0,120,0,30,30,120,0,0,0,,,,2013-05-02 08:00,2013-05-19 17:00,,2013-03-14 08:00,2013-03-31 17:00,2013-03-14 08:00,2013-03-31 17:00,2013-03-14 08:00,2013-03-31 17:00,2013-05-02 08:00,2013-05-19 17:00,,PT_Normal,,,,,+m/nj1LSRcGiZN3gjJt4gQ,,,,N,0,0,,,2013-02-16 15:52,2013-02-16 15:56,admin,admin
500033,6359,124376,13662,0,N,N,N,CP_Drtn,TT_Task,DT_FixedDUR2,TK_NotStart,DUKHPROGEN00MTSM1390,GRC Panels_1st_Sub,,504,0,120,0,30,30,120,0,0,0,,,,2013-05-21 08:00,2013-06-06 17:00,,2013-03-09 08:00,2013-03-25 17:00,2013-03-09 08:00,2013-03-25 17:00,2013-03-09 08:00,2013-03-25 17:00,2013-05-21 08:00,2013-06-06 17:00,,PT_Normal,,,,,7mRp3/JTQDmfnXeM/hg8Qg,,,,N,0,0,,,2013-02-16 15:52,2013-02-16 15:56,admin,admin
500034,6359,124376,13662,0,N,N,N,CP_Drtn,TT_Task,DT_FixedDUR2,TK_NotStart,DUKHPROGEN00MTSM1320,Paints_1st_Sub,,80,0,120,0,30,30,120,0,0,0,,,,2013-04-01 08:00,2013-04-17 17:00,,2013-03-20 08:00,2013-04-06 17:00,2013-03-20 08:00,2013-04-06 17:00,2013-03-20 08:00,2013-04-06 17:00,2013-04-01 08:00,2013-04-17 17:00,,PT_Normal,,,,,1cRMQ+JdQbysrEyi3hxZYA,,,,N,0,0,,,2013-02-16 15:52,2013-02-16 15:56,admin,admin
500035,6359,124376,13662,0,N,N,N,CP_Drtn,TT_Task,DT_FixedDUR2,TK_NotStart,DUKHPROGEN00MTSM1420,Epoxy_1st_Sub,,1072,0,120,0,30,30,120,0,0,0,,,,2013-09-14 08:00,2013-09-30 17:00,,2013-04-07 08:00,2013-04-23 17:00,2013-04-07 08:00,2013-04-23 17:00,2013-04-07 08:00,2013-04-23 17:00,2013-09-14 08:00,2013-09-30 17:00,,PT_Normal,,,,,Zl+sOJ2qTeKzeyIrpWyqVA,,,,N,0,0,,,2013-02-16 15:52,2013-02-16 15:56,admin,admin
500036,6359,124376,13662,0,N,N,N,CP_Drtn,TT_Task,DT_FixedDUR2,TK_NotStart,DUKHPROGEN00MTSM1430,Roller Shutter_1st_Sub,,232,0,80,0,20,20,80,0,0,0,,,,2013-04-20 08:00,2013-04-30 17:00,,2013-03-17 08:00,2013-03-27 17:00,2013-03-17 08:00,2013-03-27 17:00,2013-03-17 08:00,2013-03-27 17:00,2013-04-20 08:00,2013-04-30 17:00,,PT_Normal,,,,,WEGs/hcUQjWLyj6Srl0qDA,,,,N,0,0,,,2013-02-16 15:52,2013-02-16 15:56,admin,admin
500037,6359,124376,13662,0,N,N,N,CP_Drtn,TT_Task,DT_FixedDUR2,TK_NotStart,DUKHPROGEN00MTSM1700,Road Works Materials _1st_Sub,,176,0,120,0,20,20,120,0,0,0,,,,2013-06-03 08:00,2013-06-19 17:00,,2013-05-08 08:00,2013-05-25 17:00,2013-05-08 08:00,2013-05-25 17:00,2013-05-08 08:00,2013-05-25 17:00,2013-06-03 08:00,2013-06-19 17:00,,PT_Normal,,,,,CgIeeifxQVS6NMLhSHSJEQ,,,,N,0,0,,,2013-02-16 15:52,2013-02-16 15:56,admin,admin
500038,6359,124376,13662,0,N,N,N,CP_Drtn,TT_Task,DT_FixedDUR2,TK_NotStart,DUKHPROGEN00MTSM1710,External signage _1st_Sub,,1376,0,120,0,20,20,120,0,0,0,,,,2013-12-01 08:00,2013-12-17 17:00,,2013-05-08 08:00,2013-05-25 17:00,2013-05-08 08:00,2013-05-25 17:00,2013-05-08 08:00,2013-05-25 17:00,2013-12-01 08:00,2013-12-17 17:00,,PT_Normal,,,,,291Cdw7PRkOFYASDzZSqgQ,,,,N,0,0,,,2013-02-16 15:52,2013-02-16 15:56,admin,admin
500039,6359,124376,13662,0,N,N,N,CP_Drtn,TT_Task,DT_FixedDUR2,TK_NotStart,DUKHPROGEN00MTSM1720,Road Marking_1st_Sub,,1376,0,120,0,20,20,120,0,0,0,,,,2013-12-01 08:00,2013-12-17 17:00,,2013-05-08 08:00,2013-05-25 17:00,2013-05-08 08:00,2013-05-25 17:00,2013-05-08 08:00,2013-05-25 17:00,2013-12-01 08:00,2013-12-17 17:00,,PT_Normal,,,,,FIThM7j7SLCi0E0elpDcEA,,,,N,0,0,,,2013-02-16 15:52,2013-02-16 15:56,admin,admin
500040,6359,124376,13662,0,N,N,N,CP_Drtn,TT_Task,DT_FixedDUR2,TK_NotStart,DUKHPROGEN00MTSM1600,kerb works_1st_Sub,,320,0,120,0,30,30,120,0,0,0,,,,2013-05-20 08:00,2013-06-05 17:00,,2013-04-03 08:00,2013-04-20 17:00,2013-04-03 08:00,2013-04-20 17:00,2013-04-03 08:00,2013-04-20 17:00,2013-05-20 08:00,2013-06-05 17:00,,PT_Normal,,,,,d7m9wXgsS06+ymofUaApbA,,,,N,0,0,,,2013-02-16 15:52,2013-02-16 16:45,admin,admin
500041,6359,124376,13662,0,N,N,N,CP_Drtn,TT_Task,DT_FixedDUR2,TK_NotStart,DUKHPROGEN00MTSM1660,Interlock works_1st_Sub,,320,0,120,0,30,30,120,0,0,0,,,,2013-06-06 08:00,2013-06-23 17:00,,2013-04-21 08:00,2013-05-07 17:00,2013-04-21 08:00,2013-05-07 17:00,2013-04-21 08:00,2013-05-07 17:00,2013-06-06 08:00,2013-06-23 17:00,,PT_Normal,,,,,ht0UpetwTH6/FFwj27cCqw,,,,N,0,0,,,2013-02-16 15:52,2013-02-16 16:45,admin,admin
500042,6359,124376,13662,0,N,N,N,CP_Drtn,TT_Task,DT_FixedDUR2,TK_NotStart,DUKHPROGEN00MTSM1730,Car Parking Shed_1st_Sub,,320,0,120,0,20,20,120,0,0,0,,,,2013-06-24 08:00,2013-07-10 17:00,,2013-05-08 08:00,2013-05-25 17:00,2013-05-08 08:00,2013-05-25 17:00,2013-05-08 08:00,2013-05-25 17:00,2013-06-24 08:00,2013-07-10 17:00,,PT_Normal,,,,,Nky5hvFyTTGHMgq0JVM6Cg,,,,N,0,0,,,2013-02-16 15:52,2013-02-16 16:45,admin,admin
500043,6359,124376,13662,0,N,N,N,CP_Drtn,TT_Task,DT_FixedDUR2,TK_NotStart,DUKHPROGEN00MTSM1740,Stone Boulders_1st_Sub,,176,0,120,0,20,20,120,0,0,0,,,,2013-06-03 08:00,2013-06-19 17:00,,2013-05-08 08:00,2013-05-25 17:00,2013-05-08 08:00,2013-05-25 17:00,2013-05-08 08:00,2013-05-25 17:00,2013-06-03 08:00,2013-06-19 17:00,,PT_Normal,,,,,ejbo+ymqQEmGpBPkWRAP7w,,,,N,0,0,,,2013-02-16 15:52,2013-02-16 15:56,admin,admin
500044,6359,124376,13662,0,N,N,N,CP_Drtn,TT_Task,DT_FixedDUR2,TK_NotStart,DUKHPROGEN00MTSM1750,Speed Humps _1st_Sub,,176,0,120,0,20,20,120,0,0,0,,,,2013-06-03 08:00,2013-06-19 17:00,,2013-05-08 08:00,2013-05-25 17:00,2013-05-08 08:00,2013-05-25 17:00,2013-05-08 08:00,2013-05-25 17:00,2013-06-03 08:00,2013-06-19 17:00,,PT_Normal,,,,,EVThxlyRRjWKmpP4R9iLKQ,,,,N,0,0,,,2013-02-16 15:52,2013-02-16 15:56,admin,admin
500045,6359,124376,13662,0,N,N,N,CP_Drtn,TT_Task,DT_FixedDUR2,TK_NotStart,DUKHPROGEN00MTSM1790,"Plantation(Grass,Trees)_1st_Sub",,176,0,120,0,30,30,120,0,0,0,,,,2013-06-20 08:00,2013-07-07 17:00,,2013-05-26 08:00,2013-06-11 17:00,2013-05-26 08:00,2013-06-11 17:00,2013-05-26 08:00,2013-06-11 17:00,2013-06-20 08:00,2013-07-07 17:00,,PT_Normal,,,,,Ihg8ysbwRW2Xt/HUPKaBOA,,,,N,0,0,,,2013-02-16 15:52,2013-02-16 15:56,admin,admin
500046,6359,124376,13662,0,N,N,N,CP_Drtn,TT_Task,DT_FixedDUR2,TK_NotStart,DUKHPROGEN00MTSM1820,Pre-cast Boundary Wall _1st_Sub,,320,0,120,0,30,30,120,0,0,0,,,,2013-07-11 08:00,2013-07-28 17:00,,2013-05-26 08:00,2013-06-11 17:00,2013-05-26 08:00,2013-06-11 17:00,2013-05-26 08:00,2013-06-11 17:00,2013-07-11 08:00,2013-07-28 17:00,,PT_Normal,,,,,GTd+JgkqRBmN50pxbrl7wA,,,,N,0,0,,,2013-02-16 15:52,2013-02-16 16:45,admin,admin
500047,6359,124376,13662,0,N,N,N,CP_Drtn,TT_Task,DT_FixedDUR2,TK_NotStart,DUKHPROGEN00MTSM1800,Steel Gate & Barrier gates_1st_Sub,,320,0,120,0,30,30,120,0,0,0,,,,2013-07-11 08:00,2013-07-28 17:00,,2013-05-26 08:00,2013-06-11 17:00,2013-05-26 08:00,2013-06-11 17:00,2013-05-26 08:00,2013-06-11 17:00,2013-07-11 08:00,2013-07-28 17:00,,PT_Normal,,,,,myzyxuXxRzypl3T7ccalew,,,,N,0,0,,,2013-02-16 15:52,2013-02-16 16:45,admin,admin
500048,6359,124376,13662,0,N,N,N,CP_Drtn,TT_Task,DT_FixedDUR2,TK_NotStart,DUKHPROGEN00MTSM1630,Steel Ladder_1st_Sub,,288,0,120,0,30,30,120,0,0,0,,,,2013-05-27 08:00,2013-06-12 17:00,,2013-04-15 08:00,2013-05-01 17:00,2013-04-15 08:00,2013-05-01 17:00,2013-04-15 08:00,2013-05-01 17:00,2013-05-27 08:00,2013-06-12 17:00,,PT_Normal,,,,,VMhjfJ9wT+K6xrhP/zkMFw,,,,N,0,0,,,2013-02-16 15:52,2013-02-16 15:56,admin,admin
500049,6359,124376,13662,0,N,N,N,CP_Drtn,TT_Task,DT_FixedDUR2,TK_NotStart,DUKHPROGEN00MTSM1590,Manhole Covers  and Frames_1st_Sub,,504,0,120,0,30,30,120,0,0,0,,,,2013-06-08 08:00,2013-06-24 17:00,,2013-03-26 08:00,2013-04-11 17:00,2013-03-26 08:00,2013-04-11 17:00,2013-03-26 08:00,2013-04-11 17:00,2013-06-08 08:00,2013-06-24 17:00,,PT_Normal,,,,,hTEssUAWTHGC/P95KYJetw,,,,N,0,0,,,2013-02-16 15:52,2013-02-16 15:56,admin,admin
500050,6359,124376,13662,0,N,N,N,CP_Drtn,TT_Task,DT_FixedDUR2,TK_NotStart,DUKHPROGEN00MTSM1400,Access Ladder_1st_Sub,,504,0,120,0,30,30,120,0,0,0,,,,2013-05-21 08:00,2013-06-06 17:00,,2013-03-09 08:00,2013-03-25 17:00,2013-03-09 08:00,2013-03-25 17:00,2013-03-09 08:00,2013-03-25 17:00,2013-05-21 08:00,2013-06-06 17:00,,PT_Normal,,,,,81e/gAwnQBu1dlSLASytgQ,,,,N,0,0,,,2013-02-16 15:52,2013-02-16 15:56,admin,admin
500051,6359,124376,13662,0,N,N,N,CP_Drtn,TT_Task,DT_FixedDUR2,TK_NotStart,DUKHPROGEN00MTSM1500,Steel Door_1st_Sub,,232,0,80,0,20,20,80,0,0,0,,,,2013-05-01 08:00,2013-05-12 17:00,,2013-03-28 08:00,2013-04-08 17:00,2013-03-28 08:00,2013-04-08 17:00,2013-03-28 08:00,2013-04-08 17:00,2013-05-01 08:00,2013-05-12 17:00,,PT_Normal,,,,,k59ZIJIsS5emqpA8hBAbtQ,,,,N,0,0,,,2013-02-16 15:52,2013-02-16 15:56,admin,admin
500052,6359,124376,13662,0,N,N,N,CP_Drtn,TT_Task,DT_FixedDUR2,TK_NotStart,DUKHPROGEN00MTSM1580,Stainless Steel Handrail_1st_Sub,,488,0,120,0,30,30,120,0,0,0,,,,2013-06-17 08:00,2013-07-03 17:00,,2013-04-07 08:00,2013-04-23 17:00,2013-04-07 08:00,2013-04-23 17:00,2013-04-07 08:00,2013-04-23 17:00,2013-06-17 08:00,2013-07-03 17:00,,PT_Normal,,,,,8vMki393TJW0wVx2IJZTiA,,,,N,0,0,,,2013-02-16 15:52,2013-02-16 15:56,admin,admin
500053,6359,124376,13662,0,N,N,N,CP_Drtn,TT_Task,DT_FixedDUR2,TK_NotStart,DUKHPROGEN00MTSM1120,Ceramic Tile_1st_Sub,,584,0,120,0,30,30,120,0,0,0,,,,2013-03-11 08:00,2013-03-27 17:00,,2012-12-13 08:00,2012-12-31 17:00,2012-12-13 08:00,2012-12-31 17:00,2012-12-13 08:00,2012-12-31 17:00,2013-03-11 08:00,2013-03-27 17:00,,PT_Normal,,,,,yfjw2M78RjWFJ1bnJ0BuTw,,,,N,0,0,,,2013-02-16 15:52,2013-02-16 15:56,admin,admin
500054,6359,124376,13662,0,N,N,N,CP_Drtn,TT_Task,DT_FixedDUR2,TK_NotStart,DUKHPROGEN00MTSM1130,Porcelain Tile_1st_Sub,,656,0,120,0,30,30,120,0,0,0,,,,2013-03-21 08:00,2013-04-07 17:00,,2012-12-13 08:00,2012-12-31 17:00,2012-12-13 08:00,2012-12-31 17:00,2012-12-13 08:00,2012-12-31 17:00,2013-03-21 08:00,2013-04-07 17:00,,PT_Normal,,,,,kW3n69z0S66wt9xczsrjvw,,,,N,0,0,,,2013-02-16 15:52,2013-02-16 15:56,admin,admin
500055,6359,124376,13662,0,N,N,N,CP_Drtn,TT_Task,DT_FixedDUR2,TK_NotStart,DUKHPROGEN00MTSM1410,Aluminum Slat Screen_1st_Sub,,648,0,120,0,30,30,120,0,0,0,,,,2013-06-11 08:00,2013-06-27 17:00,,2013-03-09 08:00,2013-03-25 17:00,2013-03-09 08:00,2013-03-25 17:00,2013-03-09 08:00,2013-03-25 17:00,2013-06-11 08:00,2013-06-27 17:00,,PT_Normal,,,,,zNQ/IfcpQaGdcRRU/57K4Q,,,,N,0,0,,,2013-02-16 15:52,2013-02-16 15:56,admin,admin
500056,6359,124376,13662,0,N,N,N,CP_Drtn,TT_Task,DT_FixedDUR2,TK_NotStart,DUKHPROGEN00MTSM1510,Stainless Steel Cover_1st_Sub,,232,0,80,0,20,20,80,0,0,0,,,,2013-05-01 08:00,2013-05-12 17:00,,2013-03-28 08:00,2013-04-08 17:00,2013-03-28 08:00,2013-04-08 17:00,2013-03-28 08:00,2013-04-08 17:00,2013-05-01 08:00,2013-05-12 17:00,,PT_Normal,,,,,jzrU9lEES+my5akjC0T+xA,,,,N,0,0,,,2013-02-16 15:52,2013-02-16 15:56,admin,admin
500057,6359,124376,13662,0,N,N,N,CP_Drtn,TT_Task,DT_FixedDUR2,TK_NotStart,DUKHPROGEN00MTSM1610,PVC Tent_1st_Sub,,224,0,80,0,20,20,80,0,0,0,,,,2013-05-06 08:00,2013-05-16 17:00,,2013-04-03 08:00,2013-04-14 17:00,2013-04-03 08:00,2013-04-14 17:00,2013-04-03 08:00,2013-04-14 17:00,2013-05-06 08:00,2013-05-16 17:00,,PT_Normal,,,,,9sO0bggyQLOGMg4h9JuQgw,,,,N,0,0,,,2013-02-16 15:52,2013-02-16 15:56,admin,admin
500058,6359,124376,13662,0,N,N,N,CP_Drtn,TT_Task,DT_FixedDUR2,TK_NotStart,DUKHPROGEN00MTSM1620,Structural Steel_1st_Sub,,224,0,80,0,20,20,80,0,0,0,,,,2013-05-06 08:00,2013-05-16 17:00,,2013-04-03 08:00,2013-04-14 17:00,2013-04-03 08:00,2013-04-14 17:00,2013-04-03 08:00,2013-04-14 17:00,2013-05-06 08:00,2013-05-16 17:00,,PT_Normal,,,,,Vu5j6ponSpe/1fe+RJEA4Q,,,,N,0,0,,,2013-02-16 15:52,2013-02-16 15:56,admin,admin
500059,6359,124376,13662,0,N,N,N,CP_Drtn,TT_Task,DT_FixedDUR2,TK_NotStart,DUKHPROGEN00MTSM1220,Water Chiller_1st_Sub,,72,0,120,0,30,30,120,0,0,0,,,,2013-03-21 08:00,2013-04-07 17:00,,2013-03-11 08:00,2013-03-27 17:00,2013-03-11 08:00,2013-03-27 17:00,2013-03-11 08:00,2013-03-27 17:00,2013-03-21 08:00,2013-04-07 17:00,,PT_Normal,,,,,XWkQsZ8QQeCKDEqK+qKR+g,,,,N,0,0,,,2013-02-16 15:52,2013-02-16 15:56,admin,admin
500060,6359,124376,13662,0,N,N,N,CP_Drtn,TT_Task,DT_FixedDUR2,TK_NotStart,DUKHPROGEN00MTSM1330,Booster Pump_1st_Sub,,72,0,120,0,30,30,120,0,0,0,,,,2013-04-08 08:00,2013-04-24 17:00,,2013-03-28 08:00,2013-04-14 17:00,2013-03-28 08:00,2013-04-14 17:00,2013-03-28 08:00,2013-04-14 17:00,2013-04-08 08:00,2013-04-24 17:00,,PT_Normal,,,,,4ywkfXpRR4SfdlzJXkQDpA,,,,N,0,0,,,2013-02-16 15:52,2013-02-16 15:56,admin,admin
500061,6359,124376,13662,0,N,N,N,CP_Drtn,TT_Task,DT_FixedDUR2,TK_NotStart,DUKHPROGEN00MTSM1520,Lift Pump_1st_Sub,,72,0,120,0,30,30,120,0,0,0,,,,2013-04-25 08:00,2013-05-12 17:00,,2013-04-15 08:00,2013-05-01 17:00,2013-04-15 08:00,2013-05-01 17:00,2013-04-15 08:00,2013-05-01 17:00,2013-04-25 08:00,2013-05-12 17:00,,PT_Normal,,,,,fMgpQsw+SiWX1b0jXdRyig,,,,N,0,0,,,2013-02-16 15:52,2013-02-16 15:56,admin,admin
500062,6359,124376,13662,0,N,N,N,CP_Drtn,TT_Task,DT_FixedDUR2,TK_NotStart,DUKHPROGEN00MTSM1640,Water meter_1st_Sub,,72,0,120,0,20,20,120,0,0,0,,,,2013-05-13 08:00,2013-05-29 17:00,,2013-05-02 08:00,2013-05-19 17:00,2013-05-02 08:00,2013-05-19 17:00,2013-05-02 08:00,2013-05-19 17:00,2013-05-13 08:00,2013-05-29 17:00,,PT_Normal,,,,,ph9++lC7THqLbeoDtZmNjw,,,,N,0,0,,,2013-02-16 15:52,2013-02-16 15:56,admin,admin
500063,6359,124376,13662,0,N,N,N,CP_Drtn,TT_Task,DT_FixedDUR2,TK_NotStart,DUKHPROGEN00MTSM1680,Water Tank_1st_Sub,,72,0,120,0,30,30,120,0,0,0,,,,2013-05-30 08:00,2013-06-16 17:00,,2013-05-20 08:00,2013-06-05 17:00,2013-05-20 08:00,2013-06-05 17:00,2013-05-20 08:00,2013-06-05 17:00,2013-05-30 08:00,2013-06-16 17:00,,PT_Normal,,,,,5/bvnojRRFC6id1GftfH4w,,,,N,0,0,,,2013-02-16 15:52,2013-02-16 15:56,admin,admin
500064,6359,124377,13662,0,N,N,N,CP_Drtn,TT_Task,DT_FixedDUR2,TK_NotStart,DUKHPROGEN00MTSM2160,Copper Pipes_2nd_Sub,,432,0,80,0,15,15,80,0,0,0,,,,2013-06-17 08:00,2013-06-27 17:00,,2013-04-15 08:00,2013-04-25 17:00,2013-04-15 08:00,2013-04-25 17:00,2013-04-15 08:00,2013-04-25 17:00,2013-06-17 08:00,2013-06-27 17:00,,PT_Normal,,,,,uAOGQYLDQ+mGzC4ZfQb+JQ,,,,N,0,0,,,2013-02-16 15:52,2013-02-16 15:56,admin,admin
500065,6359,124377,13662,0,N,N,N,CP_Drtn,TT_Task,DT_FixedDUR2,TK_NotStart,DUKHPROGEN00MTSM2240,Split AC_2nd_Sub,,672,0,80,0,15,15,80,0,0,0,,,,2013-08-08 08:00,2013-08-22 17:00,,2013-05-02 08:00,2013-05-13 17:00,2013-05-02 08:00,2013-05-13 17:00,2013-05-02 08:00,2013-05-13 17:00,2013-08-08 08:00,2013-08-22 17:00,,PT_Normal,,,,,ci+SMUOGSE+CJQY9xGUPqg,,,,N,0,0,,,2013-02-16 15:52,2013-02-16 15:56,admin,admin
500066,6359,124377,13662,0,N,N,N,CP_Drtn,TT_Task,DT_FixedDUR2,TK_NotStart,DUKHPROGEN00MTSM2340,Exhaust Air louver_2nd_Sub,,608,0,80,0,15,15,80,0,0,0,,,,2013-08-20 08:00,2013-08-31 17:00,,2013-05-20 08:00,2013-05-30 17:00,2013-05-20 08:00,2013-05-30 17:00,2013-05-20 08:00,2013-05-30 17:00,2013-08-20 08:00,2013-08-31 17:00,,PT_Normal,,,,,1lvBHxeoSkKWu8hbNfVggg,,,,N,0,0,,,2013-02-16 15:52,2013-02-16 15:56,admin,admin
500067,6359,124377,13662,0,N,N,N,CP_Drtn,TT_Task,DT_FixedDUR2,TK_NotStart,DUKHPROGEN00MTSM2530,Exhaust Fan_2nd_Sub,,488,0,80,0,15,15,80,0,0,0,,,,2013-08-20 08:00,2013-08-31 17:00,,2013-06-06 08:00,2013-06-17 17:00,2013-06-06 08:00,2013-06-17 17:00,2013-06-06 08:00,2013-06-17 17:00,2013-08-20 08:00,2013-08-31 17:00,,PT_Normal,,,,,YcL4oI0ERNeT7PmPQ4rWUw,,,,N,0,0,,,2013-02-16 15:52,2013-02-16 15:56,admin,admin
500068,6359,124377,13662,0,N,N,N,CP_Drtn,TT_Task,DT_FixedDUR2,TK_NotStart,DUKHPROGEN00MTSM2170,SMDB_2nd_Sub,,600,0,80,0,15,15,80,0,0,0,,,,2013-07-11 08:00,2013-07-22 17:00,,2013-04-15 08:00,2013-04-25 17:00,2013-04-15 08:00,2013-04-25 17:00,2013-04-15 08:00,2013-04-25 17:00,2013-07-11 08:00,2013-07-22 17:00,,PT_Normal,,,,,Pekute/pSSqb/zgJVLIwRA,,,,N,0,0,,,2013-02-16 15:52,2013-02-16 15:56,admin,admin
500069,6359,124377,13662,0,N,N,N,CP_Drtn,TT_Task,DT_FixedDUR2,TK_NotStart,DUKHPROGEN00MTSM2190,Lights & Fixtures_2nd_Sub,,696,0,80,0,15,15,80,0,0,0,,,,2013-07-25 08:00,2013-08-05 17:00,,2013-04-15 08:00,2013-04-25 17:00,2013-04-15 08:00,2013-04-25 17:00,2013-04-15 08:00,2013-04-25 17:00,2013-07-25 08:00,2013-08-05 17:00,,PT_Normal,,,,,iMMIlg9zRGylNFCxiJU3mg,,,,N,0,0,,,2013-02-16 15:52,2013-02-16 15:56,admin,admin
500070,6359,124377,13662,0,N,N,N,CP_Drtn,TT_Task,DT_FixedDUR2,TK_NotStart,DUKHPROGEN00MTSM2200,Isolators_2nd_Sub,,864,0,80,0,15,15,80,0,0,0,,,,2013-08-22 08:00,2013-09-02 17:00,,2013-04-15 08:00,2013-04-25 17:00,2013-04-15 08:00,2013-04-25 17:00,2013-04-15 08:00,2013-04-25 17:00,2013-08-22 08:00,2013-09-02 17:00,,PT_Normal,,,,,2vZ5u/AwTau58uSUCNA9+A,,,,N,0,0,,,2013-02-16 15:52,2013-02-16 15:56,admin,admin
500071,6359,124377,13662,0,N,N,N,CP_Drtn,TT_Task,DT_FixedDUR2,TK_NotStart,DUKHPROGEN00MTSM2250,Street Light Post Set_2nd_Sub,,1000,0,80,0,15,15,80,0,0,0,,,,2013-09-29 08:00,2013-10-09 17:00,,2013-05-02 08:00,2013-05-13 17:00,2013-05-02 08:00,2013-05-13 17:00,2013-05-02 08:00,2013-05-13 17:00,2013-09-29 08:00,2013-10-09 17:00,,PT_Normal,,,,,vJfJALVCRJumifBWnzjZTg,,,,N,0,0,,,2013-02-16 15:52,2013-02-16 15:56,admin,admin
500072,6359,124377,13662,0,N,N,N,CP_Drtn,TT_Task,DT_FixedDUR2,TK_NotStart,DUKHPROGEN00MTSM2350,Bollard Lamp_2nd_Sub,,880,0,80,0,15,15,80,0,0,0,,,,2013-09-29 08:00,2013-10-09 17:00,,2013-05-20 08:00,2013-05-30 17:00,2013-05-20 08:00,2013-05-30 17:00,2013-05-20 08:00,2013-05-30 17:00,2013-09-29 08:00,2013-10-09 17:00,,PT_Normal,,,,,CP1NyKeZR4OpqgLSU6Xs2w,,,,N,0,0,,,2013-02-16 15:52,2013-02-16 15:56,admin,admin
500073,6359,124377,13662,0,N,N,N,CP_Drtn,TT_Task,DT_FixedDUR2,TK_NotStart,DUKHPROGEN00MTSM2210,Fire Resistant Cables_2nd_Sub,,840,0,80,0,15,15,80,0,0,0,,,,2013-08-19 08:00,2013-08-29 17:00,,2013-04-15 08:00,2013-04-25 17:00,2013-04-15 08:00,2013-04-25 17:00,2013-04-15 08:00,2013-04-25 17:00,2013-08-19 08:00,2013-08-29 17:00,,PT_Normal,,,,,GODjD1dTQPicsjIKbk/uyg,,,,N,0,0,,,2013-02-16 15:52,2013-02-16 15:56,admin,admin
500074,6359,124377,13662,0,N,N,N,CP_Drtn,TT_Task,DT_FixedDUR2,TK_NotStart,DUKHPROGEN00MTSM2260,Smoke Detector_2nd_Sub,,720,0,80,0,15,15,80,0,0,0,,,,2013-08-19 08:00,2013-08-29 17:00,,2013-05-02 08:00,2013-05-13 17:00,2013-05-02 08:00,2013-05-13 17:00,2013-05-02 08:00,2013-05-13 17:00,2013-08-19 08:00,2013-08-29 17:00,,PT_Normal,,,,,uO1OYItOTwWh4jOJxbbJXg,,,,N,0,0,,,2013-02-16 15:52,2013-02-16 15:56,admin,admin
500075,6359,124377,13662,0,N,N,N,CP_Drtn,TT_Task,DT_FixedDUR2,TK_NotStart,DUKHPROGEN00MTSM2360,Digital Alarm Communicator Panel_2nd_Sub,,392,0,80,0,15,15,80,0,0,0,,,,2013-07-16 08:00,2013-07-27 17:00,,2013-05-20 08:00,2013-05-30 17:00,2013-05-20 08:00,2013-05-30 17:00,2013-05-20 08:00,2013-05-30 17:00,2013-07-16 08:00,2013-07-27 17:00,,PT_Normal,,,,,fI2xeKbsRLGNMSnJnINB6Q,,,,N,0,0,,,2013-02-16 15:52,2013-02-16 15:56,admin,admin
500076,6359,124377,13662,0,N,N,N,CP_Drtn,TT_Task,DT_FixedDUR2,TK_NotStart,DUKHPROGEN00MTSM2370,Fire Blanket_2nd_Sub,,784,0,80,0,15,15,80,0,0,0,,,,2013-09-15 08:00,2013-09-25 17:00,,2013-05-20 08:00,2013-05-30 17:00,2013-05-20 08:00,2013-05-30 17:00,2013-05-20 08:00,2013-05-30 17:00,2013-09-15 08:00,2013-09-25 17:00,,PT_Normal,,,,,NDQislaMRsWlxdGHMehFBA,,,,N,0,0,,,2013-02-16 15:52,2013-02-16 15:56,admin,admin
500077,6359,124377,13662,0,N,N,N,CP_Drtn,TT_Task,DT_FixedDUR2,TK_NotStart,DUKHPROGEN00MTSM2380,Fire Extinguisher_2nd_Sub,,720,0,80,0,15,15,80,0,0,0,,,,2013-09-05 08:00,2013-09-16 17:00,,2013-05-20 08:00,2013-05-30 17:00,2013-05-20 08:00,2013-05-30 17:00,2013-05-20 08:00,2013-05-30 17:00,2013-09-05 08:00,2013-09-16 17:00,,PT_Normal,,,,,hNeBc7x+SMu3wxD5OAeyXQ,,,,N,0,0,,,2013-02-16 15:52,2013-02-16 15:56,admin,admin
500078,6359,124377,13662,0,N,N,N,CP_Drtn,TT_Task,DT_FixedDUR2,TK_NotStart,DUKHPROGEN00MTSM2540,Ductile Iron Pipes_2nd_Sub,,40,0,80,0,15,15,80,0,0,0,,,,2013-06-12 08:00,2013-06-23 17:00,,2013-06-06 08:00,2013-06-17 17:00,2013-06-06 08:00,2013-06-17 17:00,2013-06-06 08:00,2013-06-17 17:00,2013-06-12 08:00,2013-06-23 17:00,,PT_Normal,,,,,4p+0oHn0Q86/4J/XZLLu/g,,,,N,0,0,,,2013-02-16 15:52,2013-02-16 16:17,admin,admin
500079,6359,124377,13662,0,N,N,N,CP_Drtn,TT_Task,DT_FixedDUR2,TK_NotStart,DUKHPROGEN00MTSM2650,Isolating Values_2nd_Sub,,32,0,80,0,15,15,80,0,0,0,,,,2013-06-29 08:00,2013-07-09 17:00,,2013-06-24 08:00,2013-07-04 17:00,2013-06-24 08:00,2013-07-04 17:00,2013-06-24 08:00,2013-07-04 17:00,2013-06-29 08:00,2013-07-09 17:00,,PT_Normal,,,,,M1ByVVpIQTW9SSrhCaNuIA,,,,N,0,0,,,2013-02-16 15:52,2013-02-16 16:22,admin,admin
500080,6359,124377,13662,0,N,N,N,CP_Drtn,TT_Task,DT_FixedDUR2,TK_NotStart,DUKHPROGEN00MTSM2690,Fire Hydrant_2nd_Sub,,120,0,80,0,15,15,80,0,0,0,,,,2013-07-29 08:00,2013-08-08 17:00,,2013-07-11 08:00,2013-07-22 17:00,2013-07-11 08:00,2013-07-22 17:00,2013-07-11 08:00,2013-07-22 17:00,2013-07-29 08:00,2013-08-08 17:00,,PT_Normal,,,,,Cg3wtHwhQ9q2kiN2Sve3RA,,,,N,0,0,,,2013-02-16 15:52,2013-02-16 16:35,admin,admin
500081,6359,124377,13662,0,N,N,N,CP_Drtn,TT_Task,DT_FixedDUR2,TK_NotStart,DUKHPROGEN00MTSM2270,Video Com System_2nd_Sub,,560,0,80,0,15,15,80,0,0,0,,,,2013-07-23 08:00,2013-08-03 17:00,,2013-05-02 08:00,2013-05-13 17:00,2013-05-02 08:00,2013-05-13 17:00,2013-05-02 08:00,2013-05-13 17:00,2013-07-23 08:00,2013-08-03 17:00,,PT_Normal,,,,,peZJdBmrSV+uHfYyTYYRsw,,,,N,0,0,,,2013-02-16 15:52,2013-02-16 15:56,admin,admin
500082,6359,124377,13662,0,N,N,N,CP_Drtn,TT_Task,DT_FixedDUR2,TK_NotStart,DUKHPROGEN00MTSM2280,Telephone Fittings & Accessories_2nd_Sub,,560,0,80,0,15,15,80,0,0,0,,,,2013-07-23 08:00,2013-08-03 17:00,,2013-05-02 08:00,2013-05-13 17:00,2013-05-02 08:00,2013-05-13 17:00,2013-05-02 08:00,2013-05-13 17:00,2013-07-23 08:00,2013-08-03 17:00,,PT_Normal,,,,,4+nVT+haTdKlC8KEzoM0gQ,,,,N,0,0,,,2013-02-16 15:52,2013-02-16 15:56,admin,admin
500083,6359,124377,13662,0,N,N,N,CP_Drtn,TT_Task,DT_FixedDUR2,TK_NotStart,DUKHPROGEN00MTSM2290,"Television devices,Fittings & Access._2nd_Sub",,792,0,80,0,15,15,80,0,0,0,,,,2013-08-29 08:00,2013-09-09 17:00,,2013-05-02 08:00,2013-05-13 17:00,2013-05-02 08:00,2013-05-13 17:00,2013-05-02 08:00,2013-05-13 17:00,2013-08-29 08:00,2013-09-09 17:00,,PT_Normal,,,,,iwhLh5B6TyumdT2CDP40Kw,,,,N,0,0,,,2013-02-16 15:52,2013-02-16 15:56,admin,admin
500084,6359,124377,13662,0,N,N,N,CP_Drtn,TT_Task,DT_FixedDUR2,TK_NotStart,DUKHPROGEN00MTSM2670,Irrigation Pipes_2nd_Sub,,608,0,80,0,15,15,80,0,0,0,,,,2013-09-12 08:00,2013-09-23 17:00,,2013-06-12 08:00,2013-06-23 17:00,2013-06-12 08:00,2013-06-23 17:00,2013-06-12 08:00,2013-06-23 17:00,2013-09-12 08:00,2013-09-23 17:00,,PT_Normal,,,,,TNYKhNUGR4i/a9KKA839/g,,,,N,0,0,,,2013-02-16 15:52,2013-02-16 15:56,admin,admin
500085,6359,124377,13662,0,N,N,N,CP_Drtn,TT_Task,DT_FixedDUR2,TK_NotStart,DUKHPROGEN00MTSM2760,Sprinklers_2nd_Sub,,1104,0,80,0,15,15,80,0,0,0,,,,2013-12-14 08:00,2013-12-25 17:00,,2013-06-30 08:00,2013-07-10 17:00,2013-06-30 08:00,2013-07-10 17:00,2013-06-30 08:00,2013-07-10 17:00,2013-12-14 08:00,2013-12-25 17:00,,PT_Normal,,,,,daS/v5WTRpy0/alX3daZmw,,,,N,0,0,,,2013-02-16 15:52,2013-02-16 15:56,admin,admin
500086,6359,124377,13662,0,N,N,N,CP_Drtn,TT_Task,DT_FixedDUR2,TK_NotStart,DUKHPROGEN00MTSM2810,Nozzle Jet_2nd_Sub,,776,0,80,0,15,15,80,0,0,0,,,,2013-11-13 08:00,2013-11-24 17:00,,2013-07-17 08:00,2013-07-28 17:00,2013-07-17 08:00,2013-07-28 17:00,2013-07-17 08:00,2013-07-28 17:00,2013-11-13 08:00,2013-11-24 17:00,,PT_Normal,,,,,5bf6ijy3TtiE9v1Mn9jQIg,,,,N,0,0,,,2013-02-16 15:52,2013-02-16 15:56,admin,admin
500087,6359,124377,13662,0,N,N,N,CP_Drtn,TT_Task,DT_FixedDUR2,TK_NotStart,DUKHPROGEN00MTSM2830,Solenoid Values_2nd_Sub,,656,0,80,0,15,15,80,0,0,0,,,,2013-11-13 08:00,2013-11-24 17:00,,2013-08-04 08:00,2013-08-18 17:00,2013-08-04 08:00,2013-08-18 17:00,2013-08-04 08:00,2013-08-18 17:00,2013-11-13 08:00,2013-11-24 17:00,,PT_Normal,,,,,qfU0Pdt2QUq53/jsx3KwPw,,,,N,0,0,,,2013-02-16 15:52,2013-02-16 15:56,admin,admin
500088,6359,124377,13662,0,N,N,N,CP_Drtn,TT_Task,DT_FixedDUR2,TK_NotStart,DUKHPROGEN00MTSM2840,Gate Values_2nd_Sub,,536,0,80,0,15,15,80,0,0,0,,,,2013-11-13 08:00,2013-11-24 17:00,,2013-08-25 08:00,2013-09-04 17:00,2013-08-25 08:00,2013-09-04 17:00,2013-08-25 08:00,2013-09-04 17:00,2013-11-13 08:00,2013-11-24 17:00,,PT_Normal,,,,,uX+JPsXpRDixtgGVxDaUew,,,,N,0,0,,,2013-02-16 15:52,2013-02-16 15:56,admin,admin
500089,6359,124377,13662,0,N,N,N,CP_Drtn,TT_Task,DT_FixedDUR2,TK_NotStart,DUKHPROGEN00MTSM2860,Remote Control Value_2nd_Sub,,416,0,80,0,15,15,80,0,0,0,,,,2013-11-13 08:00,2013-11-24 17:00,,2013-09-11 08:00,2013-09-22 17:00,2013-09-11 08:00,2013-09-22 17:00,2013-09-11 08:00,2013-09-22 17:00,2013-11-13 08:00,2013-11-24 17:00,,PT_Normal,,,,,CHznwBy4SZWK8G7bJWKhMQ,,,,N,0,0,,,2013-02-16 15:52,2013-02-16 15:56,admin,admin
500090,6359,124377,13662,0,N,N,N,CP_Drtn,TT_Task,DT_FixedDUR2,TK_NotStart,DUKHPROGEN00MTSM2870,Irrigation Controller_2nd_Sub,,296,0,80,0,15,15,80,0,0,0,,,,2013-11-13 08:00,2013-11-24 17:00,,2013-09-29 08:00,2013-10-09 17:00,2013-09-29 08:00,2013-10-09 17:00,2013-09-29 08:00,2013-10-09 17:00,2013-11-13 08:00,2013-11-24 17:00,,PT_Normal,,,,,1tk4veiGTvm6+ZcSnsKYlg,,,,N,0,0,,,2013-02-16 15:52,2013-02-16 15:56,admin,admin
500091,6359,124377,13662,0,N,N,N,CP_Drtn,TT_Task,DT_FixedDUR2,TK_NotStart,DUKHPROGEN00MTSM2850,Fences_2nd_Sub,,1008,0,80,0,15,15,80,0,0,0,,,,2014-01-05 08:00,2014-01-15 17:00,,2013-08-04 08:00,2013-08-18 17:00,2013-08-04 08:00,2013-08-18 17:00,2013-08-04 08:00,2013-08-18 17:00,2014-01-05 08:00,2014-01-15 17:00,,PT_Normal,,,,,wUfa15V/TTKijpl/c+X4gw,,,,N,0,0,,,2013-02-16 15:52,2013-02-16 16:47,admin,admin
500092,6359,124377,13662,0,N,N,N,CP_Drtn,TT_Task,DT_FixedDUR2,TK_NotStart,DUKHPROGEN00MTSM2040,Plastering & Accessories_2nd_Sub,,920,0,80,0,15,15,80,0,0,0,,,,2013-06-03 08:00,2013-06-13 17:00,,2013-01-19 08:00,2013-01-29 17:00,2013-01-19 08:00,2013-01-29 17:00,2013-01-19 08:00,2013-01-29 17:00,2013-06-03 08:00,2013-06-13 17:00,,PT_Normal,,,,,/hPp7g7qQlizW09VztGUzw,,,,N,0,0,,,2013-02-16 15:52,2013-02-16 15:56,admin,admin
500093,6359,124377,13662,0,N,N,N,CP_Drtn,TT_Task,DT_FixedDUR2,TK_NotStart,DUKHPROGEN00MTSM2050,Thermal Insulation_2nd_Sub,,928,0,120,0,22.5,22.5,120,0,0,0,,,,2013-07-04 08:00,2013-07-21 17:00,,2013-02-19 08:00,2013-03-07 17:00,2013-02-19 08:00,2013-03-07 17:00,2013-02-19 08:00,2013-03-07 17:00,2013-07-04 08:00,2013-07-21 17:00,,PT_Normal,,,,,AP0iD93RTwuUx6EkAoCpfg,,,,N,0,0,,,2013-02-16 15:52,2013-02-16 15:56,admin,admin
500094,6359,124377,13662,0,N,N,N,CP_Drtn,TT_Task,DT_FixedDUR2,TK_NotStart,DUKHPROGEN00MTSM2140,Pitch roofing_2nd_Sub,,696,0,120,0,22.5,22.5,120,0,0,0,,,,2013-06-18 08:00,2013-07-04 17:00,,2013-03-09 08:00,2013-03-25 17:00,2013-03-09 08:00,2013-03-25 17:00,2013-03-09 08:00,2013-03-25 17:00,2013-06-18 08:00,2013-07-04 17:00,,PT_Normal,,,,,WB6ZV8JNR9+srsFwIFlJOg,,,,N,0,0,,,2013-02-16 15:52,2013-02-16 15:56,admin,admin
500095,6359,124377,13662,0,N,N,N,CP_Drtn,TT_Task,DT_FixedDUR2,TK_NotStart,DUKHPROGEN00MTSM2490,Wooden Doors_2nd_Sub,,208,0,80,0,15,15,80,0,0,0,,,,2013-06-05 08:00,2013-06-16 17:00,,2013-05-06 08:00,2013-05-16 17:00,2013-05-06 08:00,2013-05-16 17:00,2013-05-06 08:00,2013-05-16 17:00,2013-06-05 08:00,2013-06-16 17:00,,PT_Normal,,,,,1NmZDjazRI6pJ/khn0K8Pw,,,,N,0,0,,,2013-02-16 15:52,2013-02-16 15:56,admin,admin
500096,6359,124377,13662,0,N,N,N,CP_Drtn,TT_Task,DT_FixedDUR2,TK_NotStart,DUKHPROGEN00MTSM2440,PVC Doors_2nd_Sub,,736,0,80,0,15,15,80,0,0,0,,,,2013-08-25 08:00,2013-09-04 17:00,,2013-05-06 08:00,2013-05-16 17:00,2013-05-06 08:00,2013-05-16 17:00,2013-05-06 08:00,2013-05-16 17:00,2013-08-25 08:00,2013-09-04 17:00,,PT_Normal,,,,,kg8uXcE2TMe6/Y7zQWSvWw,,,,N,0,0,,,2013-02-16 15:52,2013-02-16 15:56,admin,admin
500097,6359,124377,13662,0,N,N,N,CP_Drtn,TT_Task,DT_FixedDUR2,TK_NotStart,DUKHPROGEN00MTSM2550,Closets /wardrobe& Pelmets_2nd_Sub,,344,0,80,0,15,15,80,0,0,0,,,,2013-07-18 08:00,2013-07-29 17:00,,2013-05-29 08:00,2013-06-09 17:00,2013-05-29 08:00,2013-06-09 17:00,2013-05-29 08:00,2013-06-09 17:00,2013-07-18 08:00,2013-07-29 17:00,,PT_Normal,,,,,htkvZirGRCO2Z6V2nhvbTg,,,,N,0,0,,,2013-02-16 15:52,2013-02-16 15:56,admin,admin
500098,6359,124377,13662,0,N,N,N,CP_Drtn,TT_Task,DT_FixedDUR2,TK_NotStart,DUKHPROGEN00MTSM2560,"Counters, Cabinets & Shelves_2nd_Sub",,344,0,80,0,15,15,80,0,0,0,,,,2013-07-18 08:00,2013-07-29 17:00,,2013-05-29 08:00,2013-06-09 17:00,2013-05-29 08:00,2013-06-09 17:00,2013-05-29 08:00,2013-06-09 17:00,2013-07-18 08:00,2013-07-29 17:00,,PT_Normal,,,,,pQtDkr3EQUGbGlpfy7HlyA,,,,N,0,0,,,2013-02-16 15:52,2013-02-16 15:56,admin,admin
500099,6359,124377,13662,0,N,N,N,CP_Drtn,TT_Task,DT_FixedDUR2,TK_NotStart,DUKHPROGEN00MTSM2570,Wooden Hand Rails _2nd_Sub,,488,0,80,0,15,15,80,0,0,0,,,,2013-08-08 08:00,2013-08-22 17:00,,2013-05-29 08:00,2013-06-09 17:00,2013-05-29 08:00,2013-06-09 17:00,2013-05-29 08:00,2013-06-09 17:00,2013-08-08 08:00,2013-08-22 17:00,,PT_Normal,,,,,RwGfwcWBT6aMb9gr8dUCmA,,,,N,0,0,,,2013-02-16 15:52,2013-02-16 15:56,admin,admin
500100,6359,124377,13662,0,N,N,N,CP_Drtn,TT_Task,DT_FixedDUR2,TK_NotStart,DUKHPROGEN00MTSM2780,Gazebo Structure_2nd_Sub,,536,0,80,0,15,15,80,0,0,0,,,,2013-10-07 08:00,2013-10-20 17:00,,2013-07-17 08:00,2013-07-28 17:00,2013-07-17 08:00,2013-07-28 17:00,2013-07-17 08:00,2013-07-28 17:00,2013-10-07 08:00,2013-10-20 17:00,,PT_Normal,,,,,SToAaYsgSamepC+Ej0wkWw,,,,N,0,0,,,2013-02-16 15:52,2013-02-16 15:56,admin,admin
500101,6359,124377,13662,0,N,N,N,CP_Drtn,TT_Task,DT_FixedDUR2,TK_NotStart,DUKHPROGEN00MTSM2450,Ironmongeries_2nd_Sub,,208,0,80,0,15,15,80,0,0,0,,,,2013-06-05 08:00,2013-06-16 17:00,,2013-05-06 08:00,2013-05-16 17:00,2013-05-06 08:00,2013-05-16 17:00,2013-05-06 08:00,2013-05-16 17:00,2013-06-05 08:00,2013-06-16 17:00,,PT_Normal,,,,,fRTdVDUbQruecw5B974U7g,,,,N,0,0,,,2013-02-16 15:52,2013-02-16 15:56,admin,admin
500102,6359,124377,13662,0,N,N,N,CP_Drtn,TT_Task,DT_FixedDUR2,TK_NotStart,DUKHPROGEN00MTSM2460,Aluminum Doors_2nd_Sub,,520,0,80,0,15,15,80,0,0,0,,,,2013-07-21 08:00,2013-07-31 17:00,,2013-05-06 08:00,2013-05-16 17:00,2013-05-06 08:00,2013-05-16 17:00,2013-05-06 08:00,2013-05-16 17:00,2013-07-21 08:00,2013-07-31 17:00,,PT_Normal,,,,,lRhjVPLQTCSCufN/SiUbcw,,,,N,0,0,,,2013-02-16 15:52,2013-02-16 15:56,admin,admin
500103,6359,124377,13662,0,N,N,N,CP_Drtn,TT_Task,DT_FixedDUR2,TK_NotStart,DUKHPROGEN00MTSM2470,Aluminum  Windows_2nd_Sub,,568,0,80,0,15,15,80,0,0,0,,,,2013-07-28 08:00,2013-08-07 17:00,,2013-05-06 08:00,2013-05-16 17:00,2013-05-06 08:00,2013-05-16 17:00,2013-05-06 08:00,2013-05-16 17:00,2013-07-28 08:00,2013-08-07 17:00,,PT_Normal,,,,,GmZLPUAkT62TTgB0FOkDnA,,,,N,0,0,,,2013-02-16 15:52,2013-02-16 15:56,admin,admin
500104,6359,124377,13662,0,N,N,N,CP_Drtn,TT_Task,DT_FixedDUR2,TK_NotStart,DUKHPROGEN00MTSM2480,Granite_2nd_Sub,,368,0,80,0,15,15,80,0,0,0,,,,2013-06-29 08:00,2013-07-09 17:00,,2013-05-06 08:00,2013-05-16 17:00,2013-05-06 08:00,2013-05-16 17:00,2013-05-06 08:00,2013-05-16 17:00,2013-06-29 08:00,2013-07-09 17:00,,PT_Normal,,,,,yryjH7RsQ4mKFhduCaFq2Q,,,,N,0,0,,,2013-02-16 15:52,2013-02-16 15:56,admin,admin
500105,6359,124377,13662,0,N,N,N,CP_Drtn,TT_Task,DT_FixedDUR2,TK_NotStart,DUKHPROGEN00MTSM2090,Cobble stone finish _2nd_Sub,,904,0,80,0,15,15,80,0,0,0,,,,2013-06-18 08:00,2013-06-29 17:00,,2013-02-05 08:00,2013-02-17 17:00,2013-02-05 08:00,2013-02-17 17:00,2013-02-05 08:00,2013-02-17 17:00,2013-06-18 08:00,2013-06-29 17:00,,PT_Normal,,,,,xTKJAoRlSTmiJ079oRuS5w,,,,N,0,0,,,2013-02-16 15:52,2013-02-16 15:56,admin,admin
500106,6359,124377,13662,0,N,N,N,CP_Drtn,TT_Task,DT_FixedDUR2,TK_NotStart,DUKHPROGEN00MTSM2100,Slate Tile_2nd_Sub,,944,0,80,0,15,15,80,0,0,0,,,,2013-06-24 08:00,2013-07-04 17:00,,2013-02-05 08:00,2013-02-17 17:00,2013-02-05 08:00,2013-02-17 17:00,2013-02-05 08:00,2013-02-17 17:00,2013-06-24 08:00,2013-07-04 17:00,,PT_Normal,,,,,FrOsMcmaS8SkE5R1XUlIcA,,,,N,0,0,,,2013-02-16 15:52,2013-02-16 15:56,admin,admin
500107,6359,124377,13662,0,N,N,N,CP_Drtn,TT_Task,DT_FixedDUR2,TK_NotStart,DUKHPROGEN00MTSM2110,Stone Cladding_2nd_Sub,,1000,0,80,0,15,15,80,0,0,0,,,,2013-07-02 08:00,2013-07-13 17:00,,2013-02-05 08:00,2013-02-17 17:00,2013-02-05 08:00,2013-02-17 17:00,2013-02-05 08:00,2013-02-17 17:00,2013-07-02 08:00,2013-07-13 17:00,,PT_Normal,,,,,DZpM3iQnSPuwn8WYFGsEWA,,,,N,0,0,,,2013-02-16 15:52,2013-02-16 15:56,admin,admin
500108,6359,124377,13662,0,N,N,N,CP_Drtn,TT_Task,DT_FixedDUR2,TK_NotStart,DUKHPROGEN00MTSM2300,Gypsum Board false ceiling_2nd_Sub,,256,0,80,0,15,15,80,0,0,0,,,,2013-06-06 08:00,2013-06-17 17:00,,2013-04-30 08:00,2013-05-11 17:00,2013-04-30 08:00,2013-05-11 17:00,2013-04-30 08:00,2013-05-11 17:00,2013-06-06 08:00,2013-06-17 17:00,,PT_Normal,,,,,sVAyAWOnSEediC5lU7PWWw,,,,N,0,0,,,2013-02-16 15:52,2013-02-16 15:56,admin,admin
500109,6359,124377,13662,0,N,N,N,CP_Drtn,TT_Task,DT_FixedDUR2,TK_NotStart,DUKHPROGEN00MTSM2310,Aluminum Tile false ceiling_2nd_Sub,,336,0,80,0,15,15,80,0,0,0,,,,2013-06-24 08:00,2013-07-04 17:00,,2013-05-06 08:00,2013-05-16 17:00,2013-05-06 08:00,2013-05-16 17:00,2013-05-06 08:00,2013-05-16 17:00,2013-06-24 08:00,2013-07-04 17:00,,PT_Normal,,,,,uLwX5OboSIarUyTe3I67kA,,,,N,0,0,,,2013-02-16 15:52,2013-02-16 15:56,admin,admin
500110,6359,124377,13662,0,N,N,N,CP_Drtn,TT_Task,DT_FixedDUR2,TK_NotStart,DUKHPROGEN00MTSM2390,GRC Panels_2nd_Sub,,592,0,80,0,15,15,80,0,0,0,,,,2013-07-25 08:00,2013-08-05 17:00,,2013-04-30 08:00,2013-05-11 17:00,2013-04-30 08:00,2013-05-11 17:00,2013-04-30 08:00,2013-05-11 17:00,2013-07-25 08:00,2013-08-05 17:00,,PT_Normal,,,,,unIVVFClSWWifIWJPe/PIA,,,,N,0,0,,,2013-02-16 15:52,2013-02-16 15:56,admin,admin
500111,6359,124377,13662,0,N,N,N,CP_Drtn,TT_Task,DT_FixedDUR2,TK_NotStart,DUKHPROGEN00MTSM2320,Paints_2nd_Sub,,80,0,80,0,15,15,80,0,0,0,,,,2013-05-23 08:00,2013-06-03 17:00,,2013-05-12 08:00,2013-05-22 17:00,2013-05-12 08:00,2013-05-22 17:00,2013-05-12 08:00,2013-05-22 17:00,2013-05-23 08:00,2013-06-03 17:00,,PT_Normal,,,,,n2g4sYEHQKSJUXINYby+og,,,,N,0,0,,,2013-02-16 15:52,2013-02-16 15:56,admin,admin
500112,6359,124377,13662,0,N,N,N,CP_Drtn,TT_Task,DT_FixedDUR2,TK_NotStart,DUKHPROGEN00MTSM2420,Epoxy_2nd_Sub,,1072,0,80,0,15,15,80,0,0,0,,,,2013-11-07 08:00,2013-11-18 17:00,,2013-05-29 08:00,2013-06-09 17:00,2013-05-29 08:00,2013-06-09 17:00,2013-05-29 08:00,2013-06-09 17:00,2013-11-07 08:00,2013-11-18 17:00,,PT_Normal,,,,,W6cxKXbtQ/qlopG1MnbSDQ,,,,N,0,0,,,2013-02-16 15:52,2013-02-16 15:56,admin,admin
500113,6359,124377,13662,0,N,N,N,CP_Drtn,TT_Task,DT_FixedDUR2,TK_NotStart,DUKHPROGEN00MTSM2430,Roller Shutter_2nd_Sub,,1744,0,80,0,15,15,80,0,0,0,,,,2014-01-19 08:00,2014-01-29 17:00,,2013-05-02 08:00,2013-05-13 17:00,2013-05-02 08:00,2013-05-13 17:00,2013-05-02 08:00,2013-05-13 17:00,2014-01-19 08:00,2014-01-29 17:00,,PT_Normal,,,,,eAJib3DRS0ajlLofe+HcWg,,,,N,0,0,,,2013-02-16 15:52,2013-02-16 15:56,admin,admin
500114,6359,124377,13662,0,N,N,N,CP_Drtn,TT_Task,DT_FixedDUR2,TK_NotStart,DUKHPROGEN00MTSM2700,Road Works Materials _2nd_Sub,,1512,0,80,0,15,15,80,0,0,0,,,,2014-02-13 08:00,2014-02-24 17:00,,2013-06-30 08:00,2013-07-10 17:00,2013-06-30 08:00,2013-07-10 17:00,2013-06-30 08:00,2013-07-10 17:00,2014-02-13 08:00,2014-02-24 17:00,,PT_Normal,,,,,XpOZj/T9QnmroIo8Y8khvg,,,,N,0,0,,,2013-02-16 15:52,2013-02-16 15:56,admin,admin
500115,6359,124377,13662,0,N,N,N,CP_Drtn,TT_Task,DT_FixedDUR2,TK_NotStart,DUKHPROGEN00MTSM2710,External signage _2nd_Sub,,1376,0,80,0,15,15,80,0,0,0,,,,2014-01-23 08:00,2014-02-03 17:00,,2013-06-30 08:00,2013-07-10 17:00,2013-06-30 08:00,2013-07-10 17:00,2013-06-30 08:00,2013-07-10 17:00,2014-01-23 08:00,2014-02-03 17:00,,PT_Normal,,,,,yUKzoV13TM6NFGmOH69Eaw,,,,N,0,0,,,2013-02-16 15:52,2013-02-16 15:56,admin,admin
500116,6359,124377,13662,0,N,N,N,CP_Drtn,TT_Task,DT_FixedDUR2,TK_NotStart,DUKHPROGEN00MTSM2720,Road Marking_2nd_Sub,,1376,0,80,0,15,15,80,0,0,0,,,,2014-01-23 08:00,2014-02-03 17:00,,2013-06-30 08:00,2013-07-10 17:00,2013-06-30 08:00,2013-07-10 17:00,2013-06-30 08:00,2013-07-10 17:00,2014-01-23 08:00,2014-02-03 17:00,,PT_Normal,,,,,U5LWA4LyRYyt/uCAKsoWkw,,,,N,0,0,,,2013-02-16 15:52,2013-02-16 15:56,admin,admin
500117,6359,124377,13662,0,N,N,N,CP_Drtn,TT_Task,DT_FixedDUR2,TK_NotStart,DUKHPROGEN00MTSM2600,kerb works_2nd_Sub,,624,0,80,0,15,15,80,0,0,0,,,,2013-08-28 08:00,2013-09-08 17:00,,2013-05-26 08:00,2013-06-05 17:00,2013-05-26 08:00,2013-06-05 17:00,2013-05-26 08:00,2013-06-05 17:00,2013-08-28 08:00,2013-09-08 17:00,,PT_Normal,,,,,eIAf8qW3SQ6EsdK3EBn9Zw,,,,N,0,0,,,2013-02-16 15:52,2013-02-16 15:56,admin,admin
500118,6359,124377,13662,0,N,N,N,CP_Drtn,TT_Task,DT_FixedDUR2,TK_NotStart,DUKHPROGEN00MTSM2660,Interlock works_2nd_Sub,,680,0,80,0,15,15,80,0,0,0,,,,2013-09-23 08:00,2013-10-03 17:00,,2013-06-12 08:00,2013-06-23 17:00,2013-06-12 08:00,2013-06-23 17:00,2013-06-12 08:00,2013-06-23 17:00,2013-09-23 08:00,2013-10-03 17:00,,PT_Normal,,,,,65bBuUWxSKGUt3o1sMFksQ,,,,N,0,0,,,2013-02-16 15:52,2013-02-16 15:56,admin,admin
500119,6359,124377,13662,0,N,N,N,CP_Drtn,TT_Task,DT_FixedDUR2,TK_NotStart,DUKHPROGEN00MTSM2730,Car Parking Shed_2nd_Sub,,1016,0,80,0,15,15,80,0,0,0,,,,2013-12-01 08:00,2013-12-11 17:00,,2013-06-30 08:00,2013-07-10 17:00,2013-06-30 08:00,2013-07-10 17:00,2013-06-30 08:00,2013-07-10 17:00,2013-12-01 08:00,2013-12-11 17:00,,PT_Normal,,,,,KJxFwO5ETPikNZ5TMHaDgw,,,,N,0,0,,,2013-02-16 15:52,2013-02-16 15:56,admin,admin
500120,6359,124377,13662,0,N,N,N,CP_Drtn,TT_Task,DT_FixedDUR2,TK_NotStart,DUKHPROGEN00MTSM2740,Stone Boulders_2nd_Sub,,1016,0,80,0,15,15,80,0,0,0,,,,2013-12-01 08:00,2013-12-11 17:00,,2013-06-30 08:00,2013-07-10 17:00,2013-06-30 08:00,2013-07-10 17:00,2013-06-30 08:00,2013-07-10 17:00,2013-12-01 08:00,2013-12-11 17:00,,PT_Normal,,,,,oThMtqtHQWKCFWubZAvnZA,,,,N,0,0,,,2013-02-16 15:52,2013-02-16 15:56,admin,admin
500121,6359,124377,13662,0,N,N,N,CP_Drtn,TT_Task,DT_FixedDUR2,TK_NotStart,DUKHPROGEN00MTSM2750,Speed Humps _2nd_Sub,,1008,0,80,0,15,15,80,0,0,0,,,,2013-11-30 08:00,2013-12-10 17:00,,2013-06-30 08:00,2013-07-10 17:00,2013-06-30 08:00,2013-07-10 17:00,2013-06-30 08:00,2013-07-10 17:00,2013-11-30 08:00,2013-12-10 17:00,,PT_Normal,,,,,+saHVCUtStqlTf6QxHJN9Q,,,,N,0,0,,,2013-02-16 15:52,2013-02-16 15:56,admin,admin
500122,6359,124377,13662,0,N,N,N,CP_Drtn,TT_Task,DT_FixedDUR2,TK_NotStart,DUKHPROGEN00MTSM2790,"Plantation(Grass,Trees)_2nd_Sub",,176,0,80,0,15,15,80,0,0,0,,,,2013-08-15 08:00,2013-08-26 17:00,,2013-07-17 08:00,2013-07-28 17:00,2013-07-17 08:00,2013-07-28 17:00,2013-07-17 08:00,2013-07-28 17:00,2013-08-15 08:00,2013-08-26 17:00,,PT_Normal,,,,,aNRpfXLSStS9rVRvkGnsjw,,,,N,0,0,,,2013-02-16 15:52,2013-02-16 15:56,admin,admin
500123,6359,124377,13662,0,N,N,N,CP_Drtn,TT_Task,DT_FixedDUR2,TK_NotStart,DUKHPROGEN00MTSM2820,Pre-cast Boundary Wall _2nd_Sub,,320,0,80,0,15,15,80,0,0,0,,,,2013-09-05 08:00,2013-09-16 17:00,,2013-07-17 08:00,2013-07-28 17:00,2013-07-17 08:00,2013-07-28 17:00,2013-07-17 08:00,2013-07-28 17:00,2013-09-05 08:00,2013-09-16 17:00,,PT_Normal,,,,,5YEorxACR2+OG3NE8+xsnQ,,,,N,0,0,,,2013-02-16 15:52,2013-02-16 16:45,admin,admin
500124,6359,124377,13662,0,N,N,N,CP_Drtn,TT_Task,DT_FixedDUR2,TK_NotStart,DUKHPROGEN00MTSM2800,Steel Gate & Barrier gates_2nd_Sub,,504,0,80,0,15,15,80,0,0,0,,,,2013-10-02 08:00,2013-10-13 17:00,,2013-07-17 08:00,2013-07-28 17:00,2013-07-17 08:00,2013-07-28 17:00,2013-07-17 08:00,2013-07-28 17:00,2013-10-02 08:00,2013-10-13 17:00,,PT_Normal,,,,,g4I57hoTRz6ZPjAkLBfLyQ,,,,N,0,0,,,2013-02-16 15:52,2013-02-16 15:56,admin,admin
500125,6359,124377,13662,0,N,N,N,CP_Drtn,TT_Task,DT_FixedDUR2,TK_NotStart,DUKHPROGEN00MTSM2630,Steel Ladder_2nd_Sub,,288,0,80,0,15,15,80,0,0,0,,,,2013-07-18 08:00,2013-07-29 17:00,,2013-06-06 08:00,2013-06-17 17:00,2013-06-06 08:00,2013-06-17 17:00,2013-06-06 08:00,2013-06-17 17:00,2013-07-18 08:00,2013-07-29 17:00,,PT_Normal,,,,,2wFJCz/aQyaTY8QbaYm8KA,,,,N,0,0,,,2013-02-16 15:52,2013-02-16 15:56,admin,admin
500126,6359,124377,13662,0,N,N,N,CP_Drtn,TT_Task,DT_FixedDUR2,TK_NotStart,DUKHPROGEN00MTSM2590,Manhole Covers  and Frames_2nd_Sub,,504,0,80,0,15,15,80,0,0,0,,,,2013-07-30 08:00,2013-08-13 17:00,,2013-05-18 08:00,2013-05-28 17:00,2013-05-18 08:00,2013-05-28 17:00,2013-05-18 08:00,2013-05-28 17:00,2013-07-30 08:00,2013-08-13 17:00,,PT_Normal,,,,,Rvo1T3RcRr+eVl6UojpdEw,,,,N,0,0,,,2013-02-16 15:52,2013-02-16 15:56,admin,admin
500127,6359,124377,13662,0,N,N,N,CP_Drtn,TT_Task,DT_FixedDUR2,TK_NotStart,DUKHPROGEN00MTSM2400,Access Ladder_2nd_Sub,,728,0,80,0,15,15,80,0,0,0,,,,2013-08-18 08:00,2013-08-28 17:00,,2013-04-30 08:00,2013-05-11 17:00,2013-04-30 08:00,2013-05-11 17:00,2013-04-30 08:00,2013-05-11 17:00,2013-08-18 08:00,2013-08-28 17:00,,PT_Normal,,,,,UVv1cyqQTUi6NLZZUd2Wrw,,,,N,0,0,,,2013-02-16 15:52,2013-02-16 15:56,admin,admin
500128,6359,124377,13662,0,N,N,N,CP_Drtn,TT_Task,DT_FixedDUR2,TK_NotStart,DUKHPROGEN00MTSM2500,Steel Door_2nd_Sub,,232,0,80,0,15,15,80,0,0,0,,,,2013-06-17 08:00,2013-06-27 17:00,,2013-05-14 08:00,2013-05-25 17:00,2013-05-14 08:00,2013-05-25 17:00,2013-05-14 08:00,2013-05-25 17:00,2013-06-17 08:00,2013-06-27 17:00,,PT_Normal,,,,,jwxJZbM3TMiIMbxf9hBjUA,,,,N,0,0,,,2013-02-16 15:52,2013-02-16 15:56,admin,admin
500129,6359,124377,13662,0,N,N,N,CP_Drtn,TT_Task,DT_FixedDUR2,TK_NotStart,DUKHPROGEN00MTSM2580,Stainless Steel Handrail_2nd_Sub,,488,0,80,0,15,15,80,0,0,0,,,,2013-08-08 08:00,2013-08-22 17:00,,2013-05-29 08:00,2013-06-09 17:00,2013-05-29 08:00,2013-06-09 17:00,2013-05-29 08:00,2013-06-09 17:00,2013-08-08 08:00,2013-08-22 17:00,,PT_Normal,,,,,ijE0EZUGSiOunFFKA8Lw2A,,,,N,0,0,,,2013-02-16 15:52,2013-02-16 15:56,admin,admin
500130,6359,124377,13662,0,N,N,N,CP_Drtn,TT_Task,DT_FixedDUR2,TK_NotStart,DUKHPROGEN00MTSM2120,Ceramic Tile_2nd_Sub,,584,0,80,0,15,15,80,0,0,0,,,,2013-05-02 08:00,2013-05-13 17:00,,2013-02-05 08:00,2013-02-17 17:00,2013-02-05 08:00,2013-02-17 17:00,2013-02-05 08:00,2013-02-17 17:00,2013-05-02 08:00,2013-05-13 17:00,,PT_Normal,,,,,KujlUx6cSQ6PmyOJZMshKw,,,,N,0,0,,,2013-02-16 15:52,2013-02-16 15:56,admin,admin
500131,6359,124377,13662,0,N,N,N,CP_Drtn,TT_Task,DT_FixedDUR2,TK_NotStart,DUKHPROGEN00MTSM2130,Porcelain Tile_2nd_Sub,,656,0,80,0,15,15,80,0,0,0,,,,2013-05-13 08:00,2013-05-23 17:00,,2013-02-05 08:00,2013-02-17 17:00,2013-02-05 08:00,2013-02-17 17:00,2013-02-05 08:00,2013-02-17 17:00,2013-05-13 08:00,2013-05-23 17:00,,PT_Normal,,,,,sHV1NvSnSQWGlG2bXEUS7Q,,,,N,0,0,,,2013-02-16 15:52,2013-02-16 15:56,admin,admin
500132,6359,124377,13662,0,N,N,N,CP_Drtn,TT_Task,DT_FixedDUR2,TK_NotStart,DUKHPROGEN00MTSM2410,Aluminum Slat Screen_2nd_Sub,,648,0,80,0,15,15,80,0,0,0,,,,2013-08-03 08:00,2013-08-17 17:00,,2013-04-30 08:00,2013-05-11 17:00,2013-04-30 08:00,2013-05-11 17:00,2013-04-30 08:00,2013-05-11 17:00,2013-08-03 08:00,2013-08-17 17:00,,PT_Normal,,,,,vxZhp5jSQRSbG9rWMhH32g,,,,N,0,0,,,2013-02-16 15:52,2013-02-16 15:56,admin,admin
500133,6359,124377,13662,0,N,N,N,CP_Drtn,TT_Task,DT_FixedDUR2,TK_NotStart,DUKHPROGEN00MTSM2510,Stainless Steel Cover_2nd_Sub,,232,0,80,0,15,15,80,0,0,0,,,,2013-06-17 08:00,2013-06-27 17:00,,2013-05-14 08:00,2013-05-25 17:00,2013-05-14 08:00,2013-05-25 17:00,2013-05-14 08:00,2013-05-25 17:00,2013-06-17 08:00,2013-06-27 17:00,,PT_Normal,,,,,h+ryDR/bTQqpP0XXqSf1Xg,,,,N,0,0,,,2013-02-16 15:52,2013-02-16 15:56,admin,admin
500134,6359,124377,13662,0,N,N,N,CP_Drtn,TT_Task,DT_FixedDUR2,TK_NotStart,DUKHPROGEN00MTSM2610,PVC Tent_2nd_Sub,,240,0,80,0,15,15,80,0,0,0,,,,2013-06-24 08:00,2013-07-04 17:00,,2013-05-20 08:00,2013-05-30 17:00,2013-05-20 08:00,2013-05-30 17:00,2013-05-20 08:00,2013-05-30 17:00,2013-06-24 08:00,2013-07-04 17:00,,PT_Normal,,,,,4cqp27B/RC+E7a1ttW9TPA,,,,N,0,0,,,2013-02-16 15:52,2013-02-16 15:56,admin,admin
500135,6359,124377,13662,0,N,N,N,CP_Drtn,TT_Task,DT_FixedDUR2,TK_NotStart,DUKHPROGEN00MTSM2620,Structural Steel_2nd_Sub,,224,0,80,0,15,15,80,0,0,0,,,,2013-06-22 08:00,2013-07-02 17:00,,2013-05-20 08:00,2013-05-30 17:00,2013-05-20 08:00,2013-05-30 17:00,2013-05-20 08:00,2013-05-30 17:00,2013-06-22 08:00,2013-07-02 17:00,,PT_Normal,,,,,uwY85T+5RGayDA5VzQ6tag,,,,N,0,0,,,2013-02-16 15:52,2013-02-16 15:56,admin,admin
500136,6359,124377,13662,0,N,N,N,CP_Drtn,TT_Task,DT_FixedDUR2,TK_NotStart,DUKHPROGEN00MTSM2220,Water Chiller_2nd_Sub,,400,0,80,0,15,15,80,0,0,0,,,,2013-06-30 08:00,2013-07-10 17:00,,2013-05-02 08:00,2013-05-13 17:00,2013-05-02 08:00,2013-05-13 17:00,2013-05-02 08:00,2013-05-13 17:00,2013-06-30 08:00,2013-07-10 17:00,,PT_Normal,,,,,nBRwf1kHQTGZnITAadpalQ,,,,N,0,0,,,2013-02-16 15:52,2013-02-16 15:56,admin,admin
500137,6359,124377,13662,0,N,N,N,CP_Drtn,TT_Task,DT_FixedDUR2,TK_NotStart,DUKHPROGEN00MTSM2330,Booster Pump_2nd_Sub,,280,0,80,0,15,15,80,0,0,0,,,,2013-06-30 08:00,2013-07-10 17:00,,2013-05-20 08:00,2013-05-30 17:00,2013-05-20 08:00,2013-05-30 17:00,2013-05-20 08:00,2013-05-30 17:00,2013-06-30 08:00,2013-07-10 17:00,,PT_Normal,,,,,EsoK58SVQIKHxqUas7vfUA,,,,N,0,0,,,2013-02-16 15:52,2013-02-16 15:56,admin,admin
500138,6359,124377,13662,0,N,N,N,CP_Drtn,TT_Task,DT_FixedDUR2,TK_NotStart,DUKHPROGEN00MTSM2520,Lift Pump_2nd_Sub,,160,0,80,0,15,15,80,0,0,0,,,,2013-06-30 08:00,2013-07-10 17:00,,2013-06-06 08:00,2013-06-17 17:00,2013-06-06 08:00,2013-06-17 17:00,2013-06-06 08:00,2013-06-17 17:00,2013-06-30 08:00,2013-07-10 17:00,,PT_Normal,,,,,WNGIBPILTNOM6lUvj6vfUA,,,,N,0,0,,,2013-02-16 15:52,2013-02-16 15:56,admin,admin
500139,6359,124377,13662,0,N,N,N,CP_Drtn,TT_Task,DT_FixedDUR2,TK_NotStart,DUKHPROGEN00MTSM2640,Water meter_2nd_Sub,,448,0,80,0,15,15,80,0,0,0,,,,2013-09-01 08:00,2013-09-11 17:00,,2013-06-24 08:00,2013-07-04 17:00,2013-06-24 08:00,2013-07-04 17:00,2013-06-24 08:00,2013-07-04 17:00,2013-09-01 08:00,2013-09-11 17:00,,PT_Normal,,,,,oHymLTmfQOe0QX6CWrcoxg,,,,N,0,0,,,2013-02-16 15:52,2013-02-16 15:56,admin,admin
500140,6359,124377,13662,0,N,N,N,CP_Drtn,TT_Task,DT_FixedDUR2,TK_NotStart,DUKHPROGEN00MTSM2680,Water Tank_2nd_Sub,,328,0,80,0,15,15,80,0,0,0,,,,2013-09-01 08:00,2013-09-11 17:00,,2013-07-11 08:00,2013-07-22 17:00,2013-07-11 08:00,2013-07-22 17:00,2013-07-11 08:00,2013-07-22 17:00,2013-09-01 08:00,2013-09-11 17:00,,PT_Normal,,,,,Ao8rgSR7QfyHe7Z1ae8jFQ,,,,N,0,0,,,2013-02-16 15:52,2013-02-16 15:56,admin,admin
500141,6359,124377,13662,0,N,N,N,CP_Drtn,TT_Task,DT_FixedDUR2,TK_NotStart,DUKHPROGEN00MTSM2770,Kitchen Water Filter_2nd_Sub,,72,0,80,0,15,15,80,0,0,0,,,,2013-08-08 08:00,2013-08-22 17:00,,2013-07-29 08:00,2013-08-08 17:00,2013-07-29 08:00,2013-08-08 17:00,2013-07-29 08:00,2013-08-08 17:00,2013-08-08 08:00,2013-08-22 17:00,,PT_Normal,,,,,QtyHNMdGT6ye1jzFjXcqTQ,,,,N,0,0,,,2013-02-16 15:52,2013-02-16 15:56,admin,admin
500142,6359,124377,13662,0,N,N,N,CP_Drtn,TT_Task,DT_FixedDUR2,TK_NotStart,DUKHPROGEN00MTSM2150,Sanitary Fittings_2nd_Sub,,408,0,80,0,15,15,80,0,0,0,,,,2013-06-13 08:00,2013-06-24 17:00,,2013-04-15 08:00,2013-04-25 17:00,2013-04-15 08:00,2013-04-25 17:00,2013-04-15 08:00,2013-04-25 17:00,2013-06-13 08:00,2013-06-24 17:00,,PT_Normal,,,,,JNRiA0qJRMaC3EyA0a0/QQ,,,,N,0,0,,,2013-02-16 15:52,2013-02-16 15:56,admin,admin
500143,6359,124377,13662,0,N,N,N,CP_Drtn,TT_Task,DT_FixedDUR2,TK_NotStart,DUKHPROGEN00MTSM2230,Water Heater_2nd_Sub,,472,0,80,0,15,15,80,0,0,0,,,,2013-07-10 08:00,2013-07-21 17:00,,2013-05-02 08:00,2013-05-13 17:00,2013-05-02 08:00,2013-05-13 17:00,2013-05-02 08:00,2013-05-13 17:00,2013-07-10 08:00,2013-07-21 17:00,,PT_Normal,,,,,iFtnVIgVQ4C4khGhFkR/FA,,,,N,0,0,,,2013-02-16 15:52,2013-02-16 15:56,admin,admin
500144,6359,124377,13662,0,N,N,N,CP_Drtn,TT_Task,DT_FixedDUR2,TK_NotStart,DUKHPROGEN00MTSM2080,Polyethylene Pipes_2nd_Sub,,440,0,80,0,15,15,80,0,0,0,,,,2013-04-30 08:00,2013-05-11 17:00,,2013-02-25 08:00,2013-03-07 17:00,2013-02-25 08:00,2013-03-07 17:00,2013-02-25 08:00,2013-03-07 17:00,2013-04-30 08:00,2013-05-11 17:00,,PT_Normal,,,,,ZVa9QX63Tgum8wKaxtwJow,,,,N,0,0,,,2013-02-16 15:52,2013-02-16 15:56,admin,admin
500145,6359,124378,13662,0,N,N,N,CP_Drtn,TT_Task,DT_FixedDUR2,TK_NotStart,DUKHPROGEN00MTAP2120,Ceramic Tile_2nd_App,,584,248,240,0,0,0,240,0,0,0,,,,2013-05-14 08:00,2013-06-17 17:00,,2013-02-18 08:00,2013-03-24 17:00,2013-02-18 08:00,2013-03-24 17:00,2013-02-18 08:00,2013-03-24 17:00,2013-05-14 08:00,2013-06-17 17:00,,PT_Normal,,,,,ZWbMK02sSCevHA3YqwLtfQ,,,,N,0,0,,,2013-02-16 15:52,2013-02-16 15:56,admin,admin
500146,6359,124378,13662,0,N,N,N,CP_Drtn,TT_Task,DT_FixedDUR2,TK_NotStart,DUKHPROGEN00MTAP2130,Porcelain Tile_2nd_App,,656,248,240,0,0,0,240,0,0,0,,,,2013-05-25 08:00,2013-06-27 17:00,,2013-02-18 08:00,2013-03-24 17:00,2013-02-18 08:00,2013-03-24 17:00,2013-02-18 08:00,2013-03-24 17:00,2013-05-25 08:00,2013-06-27 17:00,,PT_Normal,,,,,WX9YmS4ATfiWPR8RORhmTg,,,,N,0,0,,,2013-02-16 15:52,2013-02-16 15:56,admin,admin
500147,6359,124378,13662,0,N,N,N,CP_Drtn,TT_Task,DT_FixedDUR2,TK_NotStart,DUKHPROGEN00MTAP2410,Aluminum Slat Screen_2nd_App,,648,0,240,0,0,0,240,0,0,0,,,,2013-08-18 08:00,2013-09-21 17:00,,2013-05-12 08:00,2013-06-15 17:00,2013-05-12 08:00,2013-06-15 17:00,2013-05-12 08:00,2013-06-15 17:00,2013-08-18 08:00,2013-09-21 17:00,,PT_Normal,,,,,qiZjluVHQx2BHya1AbFAsw,,,,N,0,0,,,2013-02-16 15:52,2013-02-16 15:56,admin,admin
500148,6359,124378,13662,0,N,N,N,CP_Drtn,TT_Task,DT_FixedDUR2,TK_NotStart,DUKHPROGEN00MTAP2510,Stainless Steel Cover_2nd_App,,232,0,240,0,0,0,240,0,0,0,,,,2013-06-29 08:00,2013-08-01 17:00,,2013-05-26 08:00,2013-06-29 17:00,2013-05-26 08:00,2013-06-29 17:00,2013-05-26 08:00,2013-06-29 17:00,2013-06-29 08:00,2013-08-01 17:00,,PT_Normal,,,,,PnBitO/bQ0uF3nOxwIvCZg,,,,N,0,0,,,2013-02-16 15:52,2013-02-16 15:56,admin,admin
500149,6359,124378,13662,0,N,N,N,CP_Drtn,TT_Task,DT_FixedDUR2,TK_NotStart,DUKHPROGEN00MTAP2610,PVC Tent_2nd_App,,240,0,240,0,0,0,240,0,0,0,,,,2013-07-06 08:00,2013-08-08 17:00,,2013-06-01 08:00,2013-07-04 17:00,2013-06-01 08:00,2013-07-04 17:00,2013-06-01 08:00,2013-07-04 17:00,2013-07-06 08:00,2013-08-08 17:00,,PT_Normal,,,,,TxinutySRUaQPSkGp/56vA,,,,N,0,0,,,2013-02-16 15:52,2013-02-16 15:56,admin,admin
500150,6359,124378,13662,0,N,N,N,CP_Drtn,TT_Task,DT_FixedDUR2,TK_NotStart,DUKHPROGEN00MTAP2620,Structural Steel_2nd_App,,224,0,240,0,0,0,240,0,0,0,,,,2013-07-03 08:00,2013-08-06 17:00,,2013-06-01 08:00,2013-07-04 17:00,2013-06-01 08:00,2013-07-04 17:00,2013-06-01 08:00,2013-07-04 17:00,2013-07-03 08:00,2013-08-06 17:00,,PT_Normal,,,,,hETOEiaRR6GNgCjodPMkeQ,,,,N,0,0,,,2013-02-16 15:52,2013-02-16 15:56,admin,admin
500151,6359,124378,13662,0,N,N,N,CP_Drtn,TT_Task,DT_FixedDUR2,TK_NotStart,DUKHPROGEN00MTAP2220,Water Chiller_2nd_App,,400,0,240,0,0,0,240,0,0,0,,,,2013-07-11 08:00,2013-08-18 17:00,,2013-05-14 08:00,2013-06-17 17:00,2013-05-14 08:00,2013-06-17 17:00,2013-05-14 08:00,2013-06-17 17:00,2013-07-11 08:00,2013-08-18 17:00,,PT_Normal,,,,,tdfU+Vi5RCWw6WTLFWoIlw,,,,N,0,0,,,2013-02-16 15:52,2013-02-16 15:56,admin,admin
500152,6359,124378,13662,0,N,N,N,CP_Drtn,TT_Task,DT_FixedDUR2,TK_NotStart,DUKHPROGEN00MTAP2330,Booster Pump_2nd_App,,280,0,240,0,0,0,240,0,0,0,,,,2013-07-11 08:00,2013-08-18 17:00,,2013-06-01 08:00,2013-07-04 17:00,2013-06-01 08:00,2013-07-04 17:00,2013-06-01 08:00,2013-07-04 17:00,2013-07-11 08:00,2013-08-18 17:00,,PT_Normal,,,,,l3DjWR14Th+JZilh7/b5ZA,,,,N,0,0,,,2013-02-16 15:52,2013-02-16 15:56,admin,admin
500153,6359,124378,13662,0,N,N,N,CP_Drtn,TT_Task,DT_FixedDUR2,TK_NotStart,DUKHPROGEN00MTAP2520,Lift Pump_2nd_App,,160,0,240,0,0,0,240,0,0,0,,,,2013-07-11 08:00,2013-08-18 17:00,,2013-06-18 08:00,2013-07-22 17:00,2013-06-18 08:00,2013-07-22 17:00,2013-06-18 08:00,2013-07-22 17:00,2013-07-11 08:00,2013-08-18 17:00,,PT_Normal,,,,,t04jGlEuQ4u0HRGX+OAD+Q,,,,N,0,0,,,2013-02-16 15:52,2013-02-16 15:56,admin,admin
500154,6359,124378,13662,0,N,N,N,CP_Drtn,TT_Task,DT_FixedDUR2,TK_NotStart,DUKHPROGEN00MTAP2640,Water meter_2nd_App,,448,0,240,0,0,0,240,0,0,0,,,,2013-09-12 08:00,2013-10-16 17:00,,2013-07-06 08:00,2013-08-08 17:00,2013-07-06 08:00,2013-08-08 17:00,2013-07-06 08:00,2013-08-08 17:00,2013-09-12 08:00,2013-10-16 17:00,,PT_Normal,,,,,G6WgscAXSjiDSlvGI5rKCg,,,,N,0,0,,,2013-02-16 15:52,2013-02-16 15:56,admin,admin
500155,6359,124378,13662,0,N,N,N,CP_Drtn,TT_Task,DT_FixedDUR2,TK_NotStart,DUKHPROGEN00MTAP2680,Water Tank_2nd_App,,328,0,240,0,0,0,240,0,0,0,,,,2013-09-12 08:00,2013-10-16 17:00,,2013-07-23 08:00,2013-08-29 17:00,2013-07-23 08:00,2013-08-29 17:00,2013-07-23 08:00,2013-08-29 17:00,2013-09-12 08:00,2013-10-16 17:00,,PT_Normal,,,,,WU9ucWLZQBmLdMoIZyPPzA,,,,N,0,0,,,2013-02-16 15:52,2013-02-16 15:56,admin,admin
500156,6359,124378,13662,0,N,N,N,CP_Drtn,TT_Task,DT_FixedDUR2,TK_NotStart,DUKHPROGEN00MTAP2770,Kitchen Water Filter_2nd_App,,72,0,240,0,0,0,240,0,0,0,,,,2013-08-24 08:00,2013-09-26 17:00,,2013-08-13 08:00,2013-09-16 17:00,2013-08-13 08:00,2013-09-16 17:00,2013-08-13 08:00,2013-09-16 17:00,2013-08-24 08:00,2013-09-26 17:00,,PT_Normal,,,,,IK4XHHjaSEOT47kRk1awRg,,,,N,0,0,,,2013-02-16 15:52,2013-02-16 15:56,admin,admin
500157,6359,124378,13662,0,N,N,N,CP_Drtn,TT_Task,DT_FixedDUR2,TK_NotStart,DUKHPROGEN00MTAP2150,Sanitary Fittings_2nd_App,,408,0,240,0,0,0,240,0,0,0,,,,2013-06-25 08:00,2013-07-29 17:00,,2013-04-27 08:00,2013-05-30 17:00,2013-04-27 08:00,2013-05-30 17:00,2013-04-27 08:00,2013-05-30 17:00,2013-06-25 08:00,2013-07-29 17:00,,PT_Normal,,,,,fuUfs7NfQ0GEmqd9WLOGSQ,,,,N,0,0,,,2013-02-16 15:52,2013-02-16 15:56,admin,admin
500158,6359,124378,13662,0,N,N,N,CP_Drtn,TT_Task,DT_FixedDUR2,TK_NotStart,DUKHPROGEN00MTAP2230,Water Heater_2nd_App,,472,0,240,0,0,0,240,0,0,0,,,,2013-07-22 08:00,2013-08-28 17:00,,2013-05-14 08:00,2013-06-17 17:00,2013-05-14 08:00,2013-06-17 17:00,2013-05-14 08:00,2013-06-17 17:00,2013-07-22 08:00,2013-08-28 17:00,,PT_Normal,,,,,ofCKk+s5SK6SgAL20+gdQg,,,,N,0,0,,,2013-02-16 15:52,2013-02-16 15:56,admin,admin
500159,6359,124378,13662,0,N,N,N,CP_Drtn,TT_Task,DT_FixedDUR2,TK_NotStart,DUKHPROGEN00MTAP2080,Polyethylene Pipes_2nd_App,,440,16,240,0,0,0,240,0,0,0,,,,2013-05-12 08:00,2013-06-15 17:00,,2013-03-09 08:00,2013-04-11 17:00,2013-03-09 08:00,2013-04-11 17:00,2013-03-09 08:00,2013-04-11 17:00,2013-05-12 08:00,2013-06-15 17:00,,PT_Normal,,,,,GyS4RQCDTsCvNrlqvNyKXg,,,,N,0,0,,,2013-02-16 15:52,2013-02-16 15:56,admin,admin
500160,6359,124378,13662,0,N,N,N,CP_Drtn,TT_Task,DT_FixedDUR2,TK_NotStart,DUKHPROGEN00MTAP2160,Copper Pipes_2nd_App,,432,0,240,0,0,0,240,0,0,0,,,,2013-06-29 08:00,2013-08-01 17:00,,2013-04-27 08:00,2013-05-30 17:00,2013-04-27 08:00,2013-05-30 17:00,2013-04-27 08:00,2013-05-30 17:00,2013-06-29 08:00,2013-08-01 17:00,,PT_Normal,,,,,70nGHixcScuuNkKkIR5Y/A,,,,N,0,0,,,2013-02-16 15:52,2013-02-16 15:56,admin,admin
500161,6359,124378,13662,0,N,N,N,CP_Drtn,TT_Task,DT_FixedDUR2,TK_NotStart,DUKHPROGEN00MTAP2240,Split AC_2nd_App,,672,0,240,0,0,0,240,0,0,0,,,,2013-08-24 08:00,2013-09-26 17:00,,2013-05-14 08:00,2013-06-17 17:00,2013-05-14 08:00,2013-06-17 17:00,2013-05-14 08:00,2013-06-17 17:00,2013-08-24 08:00,2013-09-26 17:00,,PT_Normal,,,,,bAMnCvq5TD6YpzotheDXQQ,,,,N,0,0,,,2013-02-16 15:52,2013-02-16 15:56,admin,admin
500162,6359,124378,13662,0,N,N,N,CP_Drtn,TT_Task,DT_FixedDUR2,TK_NotStart,DUKHPROGEN00MTAP2340,Exhaust Air louver_2nd_App,,608,0,240,0,0,0,240,0,0,0,,,,2013-09-01 08:00,2013-10-05 17:00,,2013-06-01 08:00,2013-07-04 17:00,2013-06-01 08:00,2013-07-04 17:00,2013-06-01 08:00,2013-07-04 17:00,2013-09-01 08:00,2013-10-05 17:00,,PT_Normal,,,,,ZZFrMzLKTEK8Ed+cy0p33Q,,,,N,0,0,,,2013-02-16 15:52,2013-02-16 15:56,admin,admin
500163,6359,124378,13662,0,N,N,N,CP_Drtn,TT_Task,DT_FixedDUR2,TK_NotStart,DUKHPROGEN00MTAP2530,Exhaust Fan_2nd_App,,488,0,240,0,0,0,240,0,0,0,,,,2013-09-01 08:00,2013-10-05 17:00,,2013-06-18 08:00,2013-07-22 17:00,2013-06-18 08:00,2013-07-22 17:00,2013-06-18 08:00,2013-07-22 17:00,2013-09-01 08:00,2013-10-05 17:00,,PT_Normal,,,,,QccfJ6sPReCACxK8SPRyBA,,,,N,0,0,,,2013-02-16 15:52,2013-02-16 15:56,admin,admin
500164,6359,124378,13662,0,N,N,N,CP_Drtn,TT_Task,DT_FixedDUR2,TK_NotStart,DUKHPROGEN00MTAP2170,SMDB_2nd_App,,600,0,240,0,0,0,240,0,0,0,,,,2013-07-23 08:00,2013-08-29 17:00,,2013-04-27 08:00,2013-05-30 17:00,2013-04-27 08:00,2013-05-30 17:00,2013-04-27 08:00,2013-05-30 17:00,2013-07-23 08:00,2013-08-29 17:00,,PT_Normal,,,,,aPhCAjDHSh6CKjuwFpdlEQ,,,,N,0,0,,,2013-02-16 15:52,2013-02-16 15:56,admin,admin
500165,6359,124378,13662,0,N,N,N,CP_Drtn,TT_Task,DT_FixedDUR2,TK_NotStart,DUKHPROGEN00MTAP2190,Lights & Fixtures_2nd_App,,696,0,240,0,0,0,240,0,0,0,,,,2013-08-06 08:00,2013-09-12 17:00,,2013-04-27 08:00,2013-05-30 17:00,2013-04-27 08:00,2013-05-30 17:00,2013-04-27 08:00,2013-05-30 17:00,2013-08-06 08:00,2013-09-12 17:00,,PT_Normal,,,,,sgxBjf9iSve04rtgVDr/Lw,,,,N,0,0,,,2013-02-16 15:52,2013-02-16 15:56,admin,admin
500166,6359,124378,13662,0,N,N,N,CP_Drtn,TT_Task,DT_FixedDUR2,TK_NotStart,DUKHPROGEN00MTAP2200,Isolators_2nd_App,,864,0,240,0,0,0,240,0,0,0,,,,2013-09-03 08:00,2013-10-07 17:00,,2013-04-27 08:00,2013-05-30 17:00,2013-04-27 08:00,2013-05-30 17:00,2013-04-27 08:00,2013-05-30 17:00,2013-09-03 08:00,2013-10-07 17:00,,PT_Normal,,,,,R5b9ErBdTk+bunRTV7ROxA,,,,N,0,0,,,2013-02-16 15:52,2013-02-16 15:56,admin,admin
500167,6359,124378,13662,0,N,N,N,CP_Drtn,TT_Task,DT_FixedDUR2,TK_NotStart,DUKHPROGEN00MTAP2250,Street Light Post Set_2nd_App,,1000,520,240,0,0,0,240,0,0,0,,,,2013-10-10 08:00,2013-11-16 17:00,,2013-05-14 08:00,2013-06-17 17:00,2013-05-14 08:00,2013-06-17 17:00,2013-05-14 08:00,2013-06-17 17:00,2013-10-10 08:00,2013-11-16 17:00,,PT_Normal,,,,,rUHHVDZBSRW7C2cDnxGnMA,,,,N,0,0,,,2013-02-16 15:52,2013-02-16 15:56,admin,admin
500168,6359,124378,13662,0,N,N,N,CP_Drtn,TT_Task,DT_FixedDUR2,TK_NotStart,DUKHPROGEN00MTAP2350,Bollard Lamp_2nd_App,,880,160,240,0,0,0,240,0,0,0,,,,2013-10-10 08:00,2013-11-16 17:00,,2013-06-01 08:00,2013-07-04 17:00,2013-06-01 08:00,2013-07-04 17:00,2013-06-01 08:00,2013-07-04 17:00,2013-10-10 08:00,2013-11-16 17:00,,PT_Normal,,,,,UuR+TXGYRXW9Gw1zQL2KcA,,,,N,0,0,,,2013-02-16 15:52,2013-02-16 15:56,admin,admin
500169,6359,124378,13662,0,N,N,N,CP_Drtn,TT_Task,DT_FixedDUR2,TK_NotStart,DUKHPROGEN00MTAP2210,Fire Resistant Cables_2nd_App,,840,0,240,0,0,0,240,0,0,0,,,,2013-08-31 08:00,2013-10-03 17:00,,2013-04-27 08:00,2013-05-30 17:00,2013-04-27 08:00,2013-05-30 17:00,2013-04-27 08:00,2013-05-30 17:00,2013-08-31 08:00,2013-10-03 17:00,,PT_Normal,,,,,2R4GlMVCTlG0jedqcJj/NQ,,,,N,0,0,,,2013-02-16 15:52,2013-02-16 15:56,admin,admin
500170,6359,124378,13662,0,N,N,N,CP_Drtn,TT_Task,DT_FixedDUR2,TK_NotStart,DUKHPROGEN00MTAP2260,Smoke Detector_2nd_App,,720,0,240,0,0,0,240,0,0,0,,,,2013-08-31 08:00,2013-10-03 17:00,,2013-05-14 08:00,2013-06-17 17:00,2013-05-14 08:00,2013-06-17 17:00,2013-05-14 08:00,2013-06-17 17:00,2013-08-31 08:00,2013-10-03 17:00,,PT_Normal,,,,,9tKos1DUSK+r+S6f7Ko19Q,,,,N,0,0,,,2013-02-16 15:52,2013-02-16 15:56,admin,admin
500171,6359,124378,13662,0,N,N,N,CP_Drtn,TT_Task,DT_FixedDUR2,TK_NotStart,DUKHPROGEN00MTAP2360,Digital Alarm Communicator Panel_2nd_App,,392,0,240,0,0,0,240,0,0,0,,,,2013-07-28 08:00,2013-09-03 17:00,,2013-06-01 08:00,2013-07-04 17:00,2013-06-01 08:00,2013-07-04 17:00,2013-06-01 08:00,2013-07-04 17:00,2013-07-28 08:00,2013-09-03 17:00,,PT_Normal,,,,,R83IdQZ5SKujTDdoZlU5FQ,,,,N,0,0,,,2013-02-16 15:52,2013-02-16 15:56,admin,admin
500172,6359,124378,13662,0,N,N,N,CP_Drtn,TT_Task,DT_FixedDUR2,TK_NotStart,DUKHPROGEN00MTAP2370,Fire Blanket_2nd_App,,784,0,240,0,0,0,240,0,0,0,,,,2013-09-26 08:00,2013-11-02 17:00,,2013-06-01 08:00,2013-07-04 17:00,2013-06-01 08:00,2013-07-04 17:00,2013-06-01 08:00,2013-07-04 17:00,2013-09-26 08:00,2013-11-02 17:00,,PT_Normal,,,,,I2Q6Frd/R26BBJxtEuBpEg,,,,N,0,0,,,2013-02-16 15:52,2013-02-16 15:56,admin,admin
500173,6359,124378,13662,0,N,N,N,CP_Drtn,TT_Task,DT_FixedDUR2,TK_NotStart,DUKHPROGEN00MTAP2380,Fire Extinguisher_2nd_App,,720,0,240,0,0,0,240,0,0,0,,,,2013-09-17 08:00,2013-10-23 17:00,,2013-06-01 08:00,2013-07-04 17:00,2013-06-01 08:00,2013-07-04 17:00,2013-06-01 08:00,2013-07-04 17:00,2013-09-17 08:00,2013-10-23 17:00,,PT_Normal,,,,,BmLgSW/dTaG7ELRY+bkqhw,,,,N,0,0,,,2013-02-16 15:52,2013-02-16 15:56,admin,admin
500174,6359,124378,13662,0,N,N,N,CP_Drtn,TT_Task,DT_FixedDUR2,TK_NotStart,DUKHPROGEN00MTAP2540,Ductile Iron Pipes_2nd_App,,40,0,240,0,0,0,240,0,0,0,,,,2013-06-24 08:00,2013-07-28 17:00,,2013-06-18 08:00,2013-07-22 17:00,2013-06-18 08:00,2013-07-22 17:00,2013-06-18 08:00,2013-07-22 17:00,2013-06-24 08:00,2013-07-28 17:00,,PT_Normal,,,,,IvWFRQLdRxy5wvocWUMSxg,,,,N,0,0,,,2013-02-16 15:52,2013-02-16 16:17,admin,admin
500175,6359,124378,13662,0,N,N,N,CP_Drtn,TT_Task,DT_FixedDUR2,TK_NotStart,DUKHPROGEN00MTAP2650,Isolating Values_2nd_App,,32,0,240,0,0,0,240,0,0,0,,,,2013-07-10 08:00,2013-08-17 17:00,,2013-07-06 08:00,2013-08-08 17:00,2013-07-06 08:00,2013-08-08 17:00,2013-07-06 08:00,2013-08-08 17:00,2013-07-10 08:00,2013-08-17 17:00,,PT_Normal,,,,,EK1viainTBuQABGQxCENdQ,,,,N,0,0,,,2013-02-16 15:52,2013-02-16 16:22,admin,admin
500176,6359,124378,13662,0,N,N,N,CP_Drtn,TT_Task,DT_FixedDUR2,TK_NotStart,DUKHPROGEN00MTAP2690,Fire Hydrant_2nd_App,,120,0,240,0,0,0,240,0,0,0,,,,2013-08-13 08:00,2013-09-16 17:00,,2013-07-23 08:00,2013-08-29 17:00,2013-07-23 08:00,2013-08-29 17:00,2013-07-23 08:00,2013-08-29 17:00,2013-08-13 08:00,2013-09-16 17:00,,PT_Normal,,,,,lWJ21gnATv6H7bbAIVdqHw,,,,N,0,0,,,2013-02-16 15:52,2013-02-16 16:35,admin,admin
500177,6359,124378,13662,0,N,N,N,CP_Drtn,TT_Task,DT_FixedDUR2,TK_NotStart,DUKHPROGEN00MTAP2270,Video Com System_2nd_App,,560,0,240,0,0,0,240,0,0,0,,,,2013-08-04 08:00,2013-09-10 17:00,,2013-05-14 08:00,2013-06-17 17:00,2013-05-14 08:00,2013-06-17 17:00,2013-05-14 08:00,2013-06-17 17:00,2013-08-04 08:00,2013-09-10 17:00,,PT_Normal,,,,,CPdkg0pxT3mMIdB1vXMK6A,,,,N,0,0,,,2013-02-16 15:52,2013-02-16 15:56,admin,admin
500178,6359,124378,13662,0,N,N,N,CP_Drtn,TT_Task,DT_FixedDUR2,TK_NotStart,DUKHPROGEN00MTAP2280,Telephone Fittings & Accessories_2nd_App,,560,8,240,0,0,0,240,0,0,0,,,,2013-08-04 08:00,2013-09-10 17:00,,2013-05-14 08:00,2013-06-17 17:00,2013-05-14 08:00,2013-06-17 17:00,2013-05-14 08:00,2013-06-17 17:00,2013-08-04 08:00,2013-09-10 17:00,,PT_Normal,,,,,EoXXU4kjQ3+E4gW7gHkhTQ,,,,N,0,0,,,2013-02-16 15:52,2013-02-16 15:56,admin,admin
500179,6359,124378,13662,0,N,N,N,CP_Drtn,TT_Task,DT_FixedDUR2,TK_NotStart,DUKHPROGEN00MTAP2290,"Television devices,Fittings & Access._2nd_App",,792,8,240,0,0,0,240,0,0,0,,,,2013-09-10 08:00,2013-10-14 17:00,,2013-05-14 08:00,2013-06-17 17:00,2013-05-14 08:00,2013-06-17 17:00,2013-05-14 08:00,2013-06-17 17:00,2013-09-10 08:00,2013-10-14 17:00,,PT_Normal,,,,,cHXO1TnTRCO9nibc2VVdwg,,,,N,0,0,,,2013-02-16 15:52,2013-02-16 15:56,admin,admin
500180,6359,124378,13662,0,N,N,N,CP_Drtn,TT_Task,DT_FixedDUR2,TK_NotStart,DUKHPROGEN00MTAP2670,Irrigation Pipes_2nd_App,,608,0,240,0,0,0,240,0,0,0,,,,2013-09-24 08:00,2013-10-30 17:00,,2013-06-24 08:00,2013-07-28 17:00,2013-06-24 08:00,2013-07-28 17:00,2013-06-24 08:00,2013-07-28 17:00,2013-09-24 08:00,2013-10-30 17:00,,PT_Normal,,,,,cLB6HM9DSVS0zGESeK04gQ,,,,N,0,0,,,2013-02-16 15:52,2013-02-16 15:56,admin,admin
500181,6359,124378,13662,0,N,N,N,CP_Drtn,TT_Task,DT_FixedDUR2,TK_NotStart,DUKHPROGEN00MTAP2760,Sprinklers_2nd_App,,1104,0,240,0,0,0,240,0,0,0,,,,2013-12-26 08:00,2014-01-29 17:00,,2013-07-11 08:00,2013-08-18 17:00,2013-07-11 08:00,2013-08-18 17:00,2013-07-11 08:00,2013-08-18 17:00,2013-12-26 08:00,2014-01-29 17:00,,PT_Normal,,,,,rkhthhIdQPORgsKXZ7qfcg,,,,N,0,0,,,2013-02-16 15:52,2013-02-16 15:56,admin,admin
500182,6359,124378,13662,0,N,N,N,CP_Drtn,TT_Task,DT_FixedDUR2,TK_NotStart,DUKHPROGEN00MTAP2810,Nozzle Jet_2nd_App,,776,0,240,0,0,0,240,0,0,0,,,,2013-11-25 08:00,2013-12-30 17:00,,2013-07-29 08:00,2013-09-04 17:00,2013-07-29 08:00,2013-09-04 17:00,2013-07-29 08:00,2013-09-04 17:00,2013-11-25 08:00,2013-12-30 17:00,,PT_Normal,,,,,oipesOMoSSef65JG6YUfUQ,,,,N,0,0,,,2013-02-16 15:52,2013-02-16 15:56,admin,admin
500183,6359,124378,13662,0,N,N,N,CP_Drtn,TT_Task,DT_FixedDUR2,TK_NotStart,DUKHPROGEN00MTAP2830,Solenoid Values_2nd_App,,656,0,240,0,0,0,240,0,0,0,,,,2013-11-25 08:00,2013-12-30 17:00,,2013-08-19 08:00,2013-09-22 17:00,2013-08-19 08:00,2013-09-22 17:00,2013-08-19 08:00,2013-09-22 17:00,2013-11-25 08:00,2013-12-30 17:00,,PT_Normal,,,,,t6rpaC9BTJuQPS16Ez4Vdw,,,,N,0,0,,,2013-02-16 15:52,2013-02-16 15:56,admin,admin
500184,6359,124378,13662,0,N,N,N,CP_Drtn,TT_Task,DT_FixedDUR2,TK_NotStart,DUKHPROGEN00MTAP2840,Gate Values_2nd_App,,536,0,240,0,0,0,240,0,0,0,,,,2013-11-25 08:00,2013-12-30 17:00,,2013-09-05 08:00,2013-10-09 17:00,2013-09-05 08:00,2013-10-09 17:00,2013-09-05 08:00,2013-10-09 17:00,2013-11-25 08:00,2013-12-30 17:00,,PT_Normal,,,,,yYorHzJsT1CD+gWzlft6bw,,,,N,0,0,,,2013-02-16 15:52,2013-02-16 15:56,admin,admin
500185,6359,124378,13662,0,N,N,N,CP_Drtn,TT_Task,DT_FixedDUR2,TK_NotStart,DUKHPROGEN00MTAP2860,Remote Control Value_2nd_App,,416,0,240,0,0,0,240,0,0,0,,,,2013-11-25 08:00,2013-12-30 17:00,,2013-09-23 08:00,2013-10-29 17:00,2013-09-23 08:00,2013-10-29 17:00,2013-09-23 08:00,2013-10-29 17:00,2013-11-25 08:00,2013-12-30 17:00,,PT_Normal,,,,,Ta/xqEnXQ7OuSBygpKmAww,,,,N,0,0,,,2013-02-16 15:52,2013-02-16 15:56,admin,admin
500186,6359,124378,13662,0,N,N,N,CP_Drtn,TT_Task,DT_FixedDUR2,TK_NotStart,DUKHPROGEN00MTAP2870,Irrigation Controller_2nd_App,,296,0,240,0,0,0,240,0,0,0,,,,2013-11-25 08:00,2013-12-30 17:00,,2013-10-10 08:00,2013-11-16 17:00,2013-10-10 08:00,2013-11-16 17:00,2013-10-10 08:00,2013-11-16 17:00,2013-11-25 08:00,2013-12-30 17:00,,PT_Normal,,,,,C+tA+rOTRKiEGKlWe85eCA,,,,N,0,0,,,2013-02-16 15:52,2013-02-16 15:56,admin,admin
500187,6359,124378,13662,0,N,N,N,CP_Drtn,TT_Task,DT_FixedDUR2,TK_NotStart,DUKHPROGEN00MTAP2850,Fences_2nd_App,,1008,0,240,0,0,0,240,0,0,0,,,,2014-01-16 08:00,2014-02-20 17:00,,2013-08-19 08:00,2013-09-22 17:00,2013-08-19 08:00,2013-09-22 17:00,2013-08-19 08:00,2013-09-22 17:00,2014-01-16 08:00,2014-02-20 17:00,,PT_Normal,,,,,6U0yXXFzTZaxFWePU06CzA,,,,N,0,0,,,2013-02-16 15:52,2013-02-16 16:47,admin,admin
500188,6359,124378,13662,0,N,N,N,CP_Drtn,TT_Task,DT_FixedDUR2,TK_NotStart,DUKHPROGEN00MTAP2040,Plastering & Accessories_2nd_App,,920,248,240,0,0,0,240,0,0,0,,,,2013-06-15 08:00,2013-07-18 17:00,,2013-01-30 08:00,2013-03-06 17:00,2013-01-30 08:00,2013-03-06 17:00,2013-01-30 08:00,2013-03-06 17:00,2013-06-15 08:00,2013-07-18 17:00,,PT_Normal,,,,,414q0rViT+2S+09VgzDD2w,,,,N,0,0,,,2013-02-16 15:52,2013-02-16 15:56,admin,admin
500189,6359,124378,13662,0,N,N,N,CP_Drtn,TT_Task,DT_FixedDUR2,TK_NotStart,DUKHPROGEN00MTAP2050,Thermal Insulation_2nd_App,,928,56,240,0,0,0,240,0,0,0,,,,2013-07-22 08:00,2013-08-28 17:00,,2013-03-09 08:00,2013-04-11 17:00,2013-03-09 08:00,2013-04-11 17:00,2013-03-09 08:00,2013-04-11 17:00,2013-07-22 08:00,2013-08-28 17:00,,PT_Normal,,,,,BGVsirkCRd+5Eu/t4gkCpQ,,,,N,0,0,,,2013-02-16 15:52,2013-02-16 15:56,admin,admin
500190,6359,124378,13662,0,N,N,N,CP_Drtn,TT_Task,DT_FixedDUR2,TK_NotStart,DUKHPROGEN00MTAP2140,Pitch roofing_2nd_App,,696,0,240,0,0,0,240,0,0,0,,,,2013-07-06 08:00,2013-08-08 17:00,,2013-03-26 08:00,2013-04-29 17:00,2013-03-26 08:00,2013-04-29 17:00,2013-03-26 08:00,2013-04-29 17:00,2013-07-06 08:00,2013-08-08 17:00,,PT_Normal,,,,,fXtrdwnnRrWVzFqCPT+Dww,,,,N,0,0,,,2013-02-16 15:52,2013-02-16 15:56,admin,admin
500191,6359,124378,13662,0,N,N,N,CP_Drtn,TT_Task,DT_FixedDUR2,TK_NotStart,DUKHPROGEN00MTAP2490,Wooden Doors_2nd_App,,208,0,240,0,0,0,240,0,0,0,,,,2013-06-17 08:00,2013-07-21 17:00,,2013-05-18 08:00,2013-06-20 17:00,2013-05-18 08:00,2013-06-20 17:00,2013-05-18 08:00,2013-06-20 17:00,2013-06-17 08:00,2013-07-21 17:00,,PT_Normal,,,,,v6y6eoJkSv21vBPP7snIQQ,,,,N,0,0,,,2013-02-16 15:52,2013-02-16 15:56,admin,admin
500192,6359,124378,13662,0,N,N,N,CP_Drtn,TT_Task,DT_FixedDUR2,TK_NotStart,DUKHPROGEN00MTAP2440,PVC Doors_2nd_App,,736,0,240,0,0,0,240,0,0,0,,,,2013-09-05 08:00,2013-10-09 17:00,,2013-05-18 08:00,2013-06-20 17:00,2013-05-18 08:00,2013-06-20 17:00,2013-05-18 08:00,2013-06-20 17:00,2013-09-05 08:00,2013-10-09 17:00,,PT_Normal,,,,,/Dcpy6igS2WDev0C4OyS5A,,,,N,0,0,,,2013-02-16 15:52,2013-02-16 15:56,admin,admin
500193,6359,124378,13662,0,N,N,N,CP_Drtn,TT_Task,DT_FixedDUR2,TK_NotStart,DUKHPROGEN00MTAP2550,Closets /wardrobe& Pelmets_2nd_App,,344,0,240,0,0,0,240,0,0,0,,,,2013-07-30 08:00,2013-09-05 17:00,,2013-06-10 08:00,2013-07-14 17:00,2013-06-10 08:00,2013-07-14 17:00,2013-06-10 08:00,2013-07-14 17:00,2013-07-30 08:00,2013-09-05 17:00,,PT_Normal,,,,,7XPaMuIcQR6gTGXnTp4kcA,,,,N,0,0,,,2013-02-16 15:52,2013-02-16 15:56,admin,admin
500194,6359,124378,13662,0,N,N,N,CP_Drtn,TT_Task,DT_FixedDUR2,TK_NotStart,DUKHPROGEN00MTAP2560,"Counters, Cabinets & Shelves_2nd_App",,344,0,240,0,0,0,240,0,0,0,,,,2013-07-30 08:00,2013-09-05 17:00,,2013-06-10 08:00,2013-07-14 17:00,2013-06-10 08:00,2013-07-14 17:00,2013-06-10 08:00,2013-07-14 17:00,2013-07-30 08:00,2013-09-05 17:00,,PT_Normal,,,,,wbJWJi1mTduyWCaTgex8cQ,,,,N,0,0,,,2013-02-16 15:52,2013-02-16 15:56,admin,admin
500195,6359,124378,13662,0,N,N,N,CP_Drtn,TT_Task,DT_FixedDUR2,TK_NotStart,DUKHPROGEN00MTAP2570,Wooden Hand Rails _2nd_App,,488,0,240,0,0,0,240,0,0,0,,,,2013-08-24 08:00,2013-09-26 17:00,,2013-06-10 08:00,2013-07-14 17:00,2013-06-10 08:00,2013-07-14 17:00,2013-06-10 08:00,2013-07-14 17:00,2013-08-24 08:00,2013-09-26 17:00,,PT_Normal,,,,,PDO9yURSSVCyefbPtT6/BA,,,,N,0,0,,,2013-02-16 15:52,2013-02-16 15:56,admin,admin
500196,6359,124378,13662,0,N,N,N,CP_Drtn,TT_Task,DT_FixedDUR2,TK_NotStart,DUKHPROGEN00MTAP2780,Gazebo Structure_2nd_App,,536,56,240,0,0,0,240,0,0,0,,,,2013-10-21 08:00,2013-11-24 17:00,,2013-07-29 08:00,2013-09-04 17:00,2013-07-29 08:00,2013-09-04 17:00,2013-07-29 08:00,2013-09-04 17:00,2013-10-21 08:00,2013-11-24 17:00,,PT_Normal,,,,,8d6Q1CI7R8i/ItewYbvXRA,,,,N,0,0,,,2013-02-16 15:52,2013-02-16 15:56,admin,admin
500197,6359,124378,13662,0,N,N,N,CP_Drtn,TT_Task,DT_FixedDUR2,TK_NotStart,DUKHPROGEN00MTAP2450,Ironmongeries_2nd_App,,208,0,240,0,0,0,240,0,0,0,,,,2013-06-17 08:00,2013-07-21 17:00,,2013-05-18 08:00,2013-06-20 17:00,2013-05-18 08:00,2013-06-20 17:00,2013-05-18 08:00,2013-06-20 17:00,2013-06-17 08:00,2013-07-21 17:00,,PT_Normal,,,,,jF+d3f3TRXSvMVF6AEPyBQ,,,,N,0,0,,,2013-02-16 15:52,2013-02-16 15:56,admin,admin
500198,6359,124378,13662,0,N,N,N,CP_Drtn,TT_Task,DT_FixedDUR2,TK_NotStart,DUKHPROGEN00MTAP2460,Aluminum Doors_2nd_App,,520,0,240,0,0,0,240,0,0,0,,,,2013-08-01 08:00,2013-09-08 17:00,,2013-05-18 08:00,2013-06-20 17:00,2013-05-18 08:00,2013-06-20 17:00,2013-05-18 08:00,2013-06-20 17:00,2013-08-01 08:00,2013-09-08 17:00,,PT_Normal,,,,,OJqAkjcCQwCG2J3vng1T7A,,,,N,0,0,,,2013-02-16 15:52,2013-02-16 15:56,admin,admin
500199,6359,124378,13662,0,N,N,N,CP_Drtn,TT_Task,DT_FixedDUR2,TK_NotStart,DUKHPROGEN00MTAP2470,Aluminum  Windows_2nd_App,,568,0,240,0,0,0,240,0,0,0,,,,2013-08-08 08:00,2013-09-15 17:00,,2013-05-18 08:00,2013-06-20 17:00,2013-05-18 08:00,2013-06-20 17:00,2013-05-18 08:00,2013-06-20 17:00,2013-08-08 08:00,2013-09-15 17:00,,PT_Normal,,,,,uhXTqvHlQsiOg6Sd4PFNbA,,,,N,0,0,,,2013-02-16 15:52,2013-02-16 15:56,admin,admin
500200,6359,124378,13662,0,N,N,N,CP_Drtn,TT_Task,DT_FixedDUR2,TK_NotStart,DUKHPROGEN00MTAP2480,Granite_2nd_App,,368,0,240,0,0,0,240,0,0,0,,,,2013-07-10 08:00,2013-08-17 17:00,,2013-05-18 08:00,2013-06-20 17:00,2013-05-18 08:00,2013-06-20 17:00,2013-05-18 08:00,2013-06-20 17:00,2013-07-10 08:00,2013-08-17 17:00,,PT_Normal,,,,,n7qpvLRFSKiRV/d1o/4zkg,,,,N,0,0,,,2013-02-16 15:52,2013-02-16 15:56,admin,admin
500201,6359,124378,13662,0,N,N,N,CP_Drtn,TT_Task,DT_FixedDUR2,TK_NotStart,DUKHPROGEN00MTAP2090,Cobble stone finish _2nd_App,,904,248,240,0,0,0,240,0,0,0,,,,2013-06-30 08:00,2013-08-03 17:00,,2013-02-18 08:00,2013-03-24 17:00,2013-02-18 08:00,2013-03-24 17:00,2013-02-18 08:00,2013-03-24 17:00,2013-06-30 08:00,2013-08-03 17:00,,PT_Normal,,,,,lxR70aF3TFCjJfK4Z73niw,,,,N,0,0,,,2013-02-16 15:52,2013-02-16 15:56,admin,admin
500202,6359,124378,13662,0,N,N,N,CP_Drtn,TT_Task,DT_FixedDUR2,TK_NotStart,DUKHPROGEN00MTAP2100,Slate Tile_2nd_App,,944,248,240,0,0,0,240,0,0,0,,,,2013-07-06 08:00,2013-08-08 17:00,,2013-02-18 08:00,2013-03-24 17:00,2013-02-18 08:00,2013-03-24 17:00,2013-02-18 08:00,2013-03-24 17:00,2013-07-06 08:00,2013-08-08 17:00,,PT_Normal,,,,,RIVRkkorRg+UHie2Sf0rtQ,,,,N,0,0,,,2013-02-16 15:52,2013-02-16 15:56,admin,admin
500203,6359,124378,13662,0,N,N,N,CP_Drtn,TT_Task,DT_FixedDUR2,TK_NotStart,DUKHPROGEN00MTAP2110,Stone Cladding_2nd_App,,1000,72,240,0,0,0,240,0,0,0,,,,2013-07-14 08:00,2013-08-20 17:00,,2013-02-18 08:00,2013-03-24 17:00,2013-02-18 08:00,2013-03-24 17:00,2013-02-18 08:00,2013-03-24 17:00,2013-07-14 08:00,2013-08-20 17:00,,PT_Normal,,,,,6CwcV4A9TueDY6ZV1cxQAA,,,,N,0,0,,,2013-02-16 15:52,2013-02-16 15:56,admin,admin
500204,6359,124378,13662,0,N,N,N,CP_Drtn,TT_Task,DT_FixedDUR2,TK_NotStart,DUKHPROGEN00MTAP2300,Gypsum Board false ceiling_2nd_App,,256,0,240,0,0,0,240,0,0,0,,,,2013-06-18 08:00,2013-07-22 17:00,,2013-05-12 08:00,2013-06-15 17:00,2013-05-12 08:00,2013-06-15 17:00,2013-05-12 08:00,2013-06-15 17:00,2013-06-18 08:00,2013-07-22 17:00,,PT_Normal,,,,,rF/9RSRKSs2cD76Pq9MlFw,,,,N,0,0,,,2013-02-16 15:52,2013-02-16 15:56,admin,admin
500205,6359,124378,13662,0,N,N,N,CP_Drtn,TT_Task,DT_FixedDUR2,TK_NotStart,DUKHPROGEN00MTAP2310,Aluminum Tile false ceiling_2nd_App,,336,0,240,0,0,0,240,0,0,0,,,,2013-07-06 08:00,2013-08-08 17:00,,2013-05-18 08:00,2013-06-20 17:00,2013-05-18 08:00,2013-06-20 17:00,2013-05-18 08:00,2013-06-20 17:00,2013-07-06 08:00,2013-08-08 17:00,,PT_Normal,,,,,lT3EPEvgTXOL6prV7sIWvA,,,,N,0,0,,,2013-02-16 15:52,2013-02-16 15:56,admin,admin
500206,6359,124378,13662,0,N,N,N,CP_Drtn,TT_Task,DT_FixedDUR2,TK_NotStart,DUKHPROGEN00MTAP2390,GRC Panels_2nd_App,,592,0,240,0,0,0,240,0,0,0,,,,2013-08-06 08:00,2013-09-12 17:00,,2013-05-12 08:00,2013-06-15 17:00,2013-05-12 08:00,2013-06-15 17:00,2013-05-12 08:00,2013-06-15 17:00,2013-08-06 08:00,2013-09-12 17:00,,PT_Normal,,,,,9LPSaM38SJCtZ/b4gWtvMQ,,,,N,0,0,,,2013-02-16 15:52,2013-02-16 15:56,admin,admin
500207,6359,124378,13662,0,N,N,N,CP_Drtn,TT_Task,DT_FixedDUR2,TK_NotStart,DUKHPROGEN00MTAP2320,Paints_2nd_App,,80,0,240,0,0,0,240,0,0,0,,,,2013-06-04 08:00,2013-07-08 17:00,,2013-05-23 08:00,2013-06-26 17:00,2013-05-23 08:00,2013-06-26 17:00,2013-05-23 08:00,2013-06-26 17:00,2013-06-04 08:00,2013-07-08 17:00,,PT_Normal,,,,,Zwk/qSBrTm+T2Qghqf4iVg,,,,N,0,0,,,2013-02-16 15:52,2013-02-16 15:56,admin,admin
500208,6359,124378,13662,0,N,N,N,CP_Drtn,TT_Task,DT_FixedDUR2,TK_NotStart,DUKHPROGEN00MTAP2420,Epoxy_2nd_App,,1072,0,240,0,0,0,240,0,0,0,,,,2013-11-19 08:00,2013-12-24 17:00,,2013-06-10 08:00,2013-07-14 17:00,2013-06-10 08:00,2013-07-14 17:00,2013-06-10 08:00,2013-07-14 17:00,2013-11-19 08:00,2013-12-24 17:00,,PT_Normal,,,,,EnxhFaoJQZmZWAwrd00BjQ,,,,N,0,0,,,2013-02-16 15:52,2013-02-16 15:56,admin,admin
500209,6359,124378,13662,0,N,N,N,CP_Drtn,TT_Task,DT_FixedDUR2,TK_NotStart,DUKHPROGEN00MTAP2430,Roller Shutter_2nd_App,,1744,0,240,0,0,0,240,0,0,0,,,,2014-01-30 08:00,2014-03-06 17:00,,2013-05-14 08:00,2013-06-17 17:00,2013-05-14 08:00,2013-06-17 17:00,2013-05-14 08:00,2013-06-17 17:00,2014-01-30 08:00,2014-03-06 17:00,,PT_Normal,,,,,pZDgRZEzTIuRw5BdyBjLOQ,,,,N,0,0,,,2013-02-16 15:52,2013-02-16 15:56,admin,admin
500210,6359,124378,13662,0,N,N,N,CP_Drtn,TT_Task,DT_FixedDUR2,TK_NotStart,DUKHPROGEN00MTAP2700,Road Works Materials_2nd_App,,1512,0,240,0,0,0,240,0,0,0,,,,2014-02-25 08:00,2014-03-31 17:00,,2013-07-11 08:00,2013-08-18 17:00,2013-07-11 08:00,2013-08-18 17:00,2013-07-11 08:00,2013-08-18 17:00,2014-02-25 08:00,2014-03-31 17:00,,PT_Normal,,,,,iFf+BvPSQ+ex9GUf+r14wQ,,,,N,0,0,,,2013-02-16 15:52,2013-02-16 15:56,admin,admin
500211,6359,124378,13662,0,N,N,N,CP_Drtn,TT_Task,DT_FixedDUR2,TK_NotStart,DUKHPROGEN00MTAP2710,External signage _2nd_App,,1376,0,240,0,0,0,240,0,0,0,,,,2014-02-04 08:00,2014-03-11 17:00,,2013-07-11 08:00,2013-08-18 17:00,2013-07-11 08:00,2013-08-18 17:00,2013-07-11 08:00,2013-08-18 17:00,2014-02-04 08:00,2014-03-11 17:00,,PT_Normal,,,,,wpK999nTSGm+BESUt812BA,,,,N,0,0,,,2013-02-16 15:52,2013-02-16 15:56,admin,admin
500212,6359,124378,13662,0,N,N,N,CP_Drtn,TT_Task,DT_FixedDUR2,TK_NotStart,DUKHPROGEN00MTAP2720,Road Marking_2nd_App,,1376,0,240,0,0,0,240,0,0,0,,,,2014-02-04 08:00,2014-03-11 17:00,,2013-07-11 08:00,2013-08-18 17:00,2013-07-11 08:00,2013-08-18 17:00,2013-07-11 08:00,2013-08-18 17:00,2014-02-04 08:00,2014-03-11 17:00,,PT_Normal,,,,,nJ3FX5IFTkmxwXSlJcgObA,,,,N,0,0,,,2013-02-16 15:52,2013-02-16 15:56,admin,admin
500213,6359,124378,13662,0,N,N,N,CP_Drtn,TT_Task,DT_FixedDUR2,TK_NotStart,DUKHPROGEN00MTAP2600,kerb works_2nd_App,,624,0,240,0,0,0,240,0,0,0,,,,2013-09-09 08:00,2013-10-13 17:00,,2013-06-06 08:00,2013-07-10 17:00,2013-06-06 08:00,2013-07-10 17:00,2013-06-06 08:00,2013-07-10 17:00,2013-09-09 08:00,2013-10-13 17:00,,PT_Normal,,,,,HBiGnNkVSAGTjqZ4CGgajQ,,,,N,0,0,,,2013-02-16 15:52,2013-02-16 15:56,admin,admin
500214,6359,124378,13662,0,N,N,N,CP_Drtn,TT_Task,DT_FixedDUR2,TK_NotStart,DUKHPROGEN00MTAP2660,Interlock works_2nd_App,,680,0,240,0,0,0,240,0,0,0,,,,2013-10-05 08:00,2013-11-10 17:00,,2013-06-24 08:00,2013-07-28 17:00,2013-06-24 08:00,2013-07-28 17:00,2013-06-24 08:00,2013-07-28 17:00,2013-10-05 08:00,2013-11-10 17:00,,PT_Normal,,,,,7TsKFbd+S/m9Duto2GRP3A,,,,N,0,0,,,2013-02-16 15:52,2013-02-16 15:56,admin,admin
500215,6359,124378,13662,0,N,N,N,CP_Drtn,TT_Task,DT_FixedDUR2,TK_NotStart,DUKHPROGEN00MTAP2730,Car Parking Shed_2nd_App,,1016,0,240,0,0,0,240,0,0,0,,,,2013-12-12 08:00,2014-01-16 17:00,,2013-07-11 08:00,2013-08-18 17:00,2013-07-11 08:00,2013-08-18 17:00,2013-07-11 08:00,2013-08-18 17:00,2013-12-12 08:00,2014-01-16 17:00,,PT_Normal,,,,,siHQXrnFSjqCgA7dN24T5Q,,,,N,0,0,,,2013-02-16 15:52,2013-02-16 15:56,admin,admin
500216,6359,124378,13662,0,N,N,N,CP_Drtn,TT_Task,DT_FixedDUR2,TK_NotStart,DUKHPROGEN00MTAP2740,Stone Boulders_2nd_App,,1016,0,240,0,0,0,240,0,0,0,,,,2013-12-12 08:00,2014-01-16 17:00,,2013-07-11 08:00,2013-08-18 17:00,2013-07-11 08:00,2013-08-18 17:00,2013-07-11 08:00,2013-08-18 17:00,2013-12-12 08:00,2014-01-16 17:00,,PT_Normal,,,,,/0mayk3lQMmisW64+CaUag,,,,N,0,0,,,2013-02-16 15:52,2013-02-16 15:56,admin,admin
500217,6359,124378,13662,0,N,N,N,CP_Drtn,TT_Task,DT_FixedDUR2,TK_NotStart,DUKHPROGEN00MTAP2750,Speed Humps _2nd_App,,1008,0,240,0,0,0,240,0,0,0,,,,2013-12-11 08:00,2014-01-15 17:00,,2013-07-11 08:00,2013-08-18 17:00,2013-07-11 08:00,2013-08-18 17:00,2013-07-11 08:00,2013-08-18 17:00,2013-12-11 08:00,2014-01-15 17:00,,PT_Normal,,,,,beHZu5nkSTm/Lr3AUCmleg,,,,N,0,0,,,2013-02-16 15:52,2013-02-16 15:56,admin,admin
500218,6359,124378,13662,0,N,N,N,CP_Drtn,TT_Task,DT_FixedDUR2,TK_NotStart,DUKHPROGEN00MTAP2790,"Plantation(Grass,Trees)_2nd_App",,176,0,240,0,0,0,240,0,0,0,,,,2013-08-27 08:00,2013-09-30 17:00,,2013-07-29 08:00,2013-09-04 17:00,2013-07-29 08:00,2013-09-04 17:00,2013-07-29 08:00,2013-09-04 17:00,2013-08-27 08:00,2013-09-30 17:00,,PT_Normal,,,,,Cw6P2ER5QvmM2r0LJe/R0w,,,,N,0,0,,,2013-02-16 15:52,2013-02-16 15:56,admin,admin
500219,6359,124378,13662,0,N,N,N,CP_Drtn,TT_Task,DT_FixedDUR2,TK_NotStart,DUKHPROGEN00MTAP2820,Pre-cast Boundary Wall _2nd_App,,320,0,240,0,0,0,240,0,0,0,,,,2013-09-17 08:00,2013-10-23 17:00,,2013-07-29 08:00,2013-09-04 17:00,2013-07-29 08:00,2013-09-04 17:00,2013-07-29 08:00,2013-09-04 17:00,2013-09-17 08:00,2013-10-23 17:00,,PT_Normal,,,,,hqDO0hCNSZaIvLg8C9lX7Q,,,,N,0,0,,,2013-02-16 15:52,2013-02-16 16:45,admin,admin
500220,6359,124378,13662,0,N,N,N,CP_Drtn,TT_Task,DT_FixedDUR2,TK_NotStart,DUKHPROGEN00MTAP2800,Steel Gate & Barrier gates_2nd_App,,504,0,240,0,0,0,240,0,0,0,,,,2013-10-14 08:00,2013-11-19 17:00,,2013-07-29 08:00,2013-09-04 17:00,2013-07-29 08:00,2013-09-04 17:00,2013-07-29 08:00,2013-09-04 17:00,2013-10-14 08:00,2013-11-19 17:00,,PT_Normal,,,,,nw+PCnT9RIaslju/pUWR0A,,,,N,0,0,,,2013-02-16 15:52,2013-02-16 15:56,admin,admin
500221,6359,124378,13662,0,N,N,N,CP_Drtn,TT_Task,DT_FixedDUR2,TK_NotStart,DUKHPROGEN00MTAP2630,Steel Ladder_2nd_App,,288,0,240,0,0,0,240,0,0,0,,,,2013-07-30 08:00,2013-09-05 17:00,,2013-06-18 08:00,2013-07-22 17:00,2013-06-18 08:00,2013-07-22 17:00,2013-06-18 08:00,2013-07-22 17:00,2013-07-30 08:00,2013-09-05 17:00,,PT_Normal,,,,,QZX1NzXVRnqDmzkwD/76cg,,,,N,0,0,,,2013-02-16 15:52,2013-02-16 15:56,admin,admin
500222,6359,124378,13662,0,N,N,N,CP_Drtn,TT_Task,DT_FixedDUR2,TK_NotStart,DUKHPROGEN00MTAP2590,Manhole Covers  and Frames_2nd_App,,504,112,240,0,0,0,240,0,0,0,,,,2013-08-14 08:00,2013-09-17 17:00,,2013-05-29 08:00,2013-07-02 17:00,2013-05-29 08:00,2013-07-02 17:00,2013-05-29 08:00,2013-07-02 17:00,2013-08-14 08:00,2013-09-17 17:00,,PT_Normal,,,,,npBhwQhfTai+10v9/lb42w,,,,N,0,0,,,2013-02-16 15:52,2013-02-16 15:56,admin,admin
500223,6359,124378,13662,0,N,N,N,CP_Drtn,TT_Task,DT_FixedDUR2,TK_NotStart,DUKHPROGEN00MTAP2400,Access Ladder_2nd_App,,728,0,240,0,0,0,240,0,0,0,,,,2013-08-29 08:00,2013-10-02 17:00,,2013-05-12 08:00,2013-06-15 17:00,2013-05-12 08:00,2013-06-15 17:00,2013-05-12 08:00,2013-06-15 17:00,2013-08-29 08:00,2013-10-02 17:00,,PT_Normal,,,,,WF/R++AiToqscXXGy4ppWw,,,,N,0,0,,,2013-02-16 15:52,2013-02-16 15:56,admin,admin
500224,6359,124378,13662,0,N,N,N,CP_Drtn,TT_Task,DT_FixedDUR2,TK_NotStart,DUKHPROGEN00MTAP2500,Steel Door_2nd_App,,232,0,240,0,0,0,240,0,0,0,,,,2013-06-29 08:00,2013-08-01 17:00,,2013-05-26 08:00,2013-06-29 17:00,2013-05-26 08:00,2013-06-29 17:00,2013-05-26 08:00,2013-06-29 17:00,2013-06-29 08:00,2013-08-01 17:00,,PT_Normal,,,,,pfvsdkO4Rl6R5hQ9M3AobA,,,,N,0,0,,,2013-02-16 15:52,2013-02-16 15:56,admin,admin
500225,6359,124378,13662,0,N,N,N,CP_Drtn,TT_Task,DT_FixedDUR2,TK_NotStart,DUKHPROGEN00MTAP2580,Stainless Steel Handrail_2nd_App,,488,0,240,0,0,0,240,0,0,0,,,,2013-08-24 08:00,2013-09-26 17:00,,2013-06-10 08:00,2013-07-14 17:00,2013-06-10 08:00,2013-07-14 17:00,2013-06-10 08:00,2013-07-14 17:00,2013-08-24 08:00,2013-09-26 17:00,,PT_Normal,,,,,iYnRv5UuR6SncNoluC6Tbw,,,,N,0,0,,,2013-02-16 15:52,2013-02-16 15:56,admin,admin
500226,6359,124379,13662,0,N,N,N,CP_Drtn,TT_Task,DT_FixedDUR2,TK_NotStart,DUKHPROGEN00MTAP1150,Sanitary Fittings_1st_App,,408,0,240,0,0,0,240,0,0,0,,,,2013-05-09 08:00,2013-06-12 17:00,,2013-03-11 08:00,2013-04-14 17:00,2013-03-11 08:00,2013-04-14 17:00,2013-03-11 08:00,2013-04-14 17:00,2013-05-09 08:00,2013-06-12 17:00,,PT_Normal,,,,,1hbRc7eWQSWZWM42uRv4iA,,,,N,0,0,,,2013-02-16 15:52,2013-02-16 15:56,admin,admin
500227,6359,124379,13662,0,N,N,N,CP_Drtn,TT_Task,DT_FixedDUR2,TK_NotStart,DUKHPROGEN00MTAP1230,Water Heater_1st_App,,472,0,240,0,0,0,240,0,0,0,,,,2013-06-05 08:00,2013-07-09 17:00,,2013-03-28 08:00,2013-05-01 17:00,2013-03-28 08:00,2013-05-01 17:00,2013-03-28 08:00,2013-05-01 17:00,2013-06-05 08:00,2013-07-09 17:00,,PT_Normal,,,,,+G1ywzN4SAKK8E/D/18qYw,,,,N,0,0,,,2013-02-16 15:52,2013-02-16 15:56,admin,admin
500228,6359,124379,13662,0,N,N,N,CP_Drtn,TT_Task,DT_FixedDUR2,TK_NotStart,DUKHPROGEN00MTAP1080,Polyethylene Pipes_1st_App,,440,0,240,0,0,0,240,0,0,0,,,,2013-03-26 08:00,2013-04-29 17:00,,2013-01-20 08:00,2013-02-24 17:00,2013-01-20 08:00,2013-02-24 17:00,2013-01-20 08:00,2013-02-24 17:00,2013-03-26 08:00,2013-04-29 17:00,,PT_Normal,,,,,+79Fi16oT9GDoJ463R3lfA,,,,N,0,0,,,2013-02-16 15:52,2013-02-16 15:56,admin,admin
500229,6359,124379,13662,0,N,N,N,CP_Drtn,TT_Task,DT_FixedDUR2,TK_NotStart,DUKHPROGEN00MTAP1160,Copper Pipes_1st_App,,432,0,240,0,0,0,240,0,0,0,,,,2013-05-13 08:00,2013-06-16 17:00,,2013-03-11 08:00,2013-04-14 17:00,2013-03-11 08:00,2013-04-14 17:00,2013-03-11 08:00,2013-04-14 17:00,2013-05-13 08:00,2013-06-16 17:00,,PT_Normal,,,,,LmW4JqiIR72c00vCjYR5vg,,,,N,0,0,,,2013-02-16 15:52,2013-02-16 15:56,admin,admin
500230,6359,124379,13662,0,N,N,N,CP_Drtn,TT_Task,DT_FixedDUR2,TK_NotStart,DUKHPROGEN00MTAP1240,Split AC_1st_App,,672,0,240,0,0,0,240,0,0,0,,,,2013-07-04 08:00,2013-08-07 17:00,,2013-03-28 08:00,2013-05-01 17:00,2013-03-28 08:00,2013-05-01 17:00,2013-03-28 08:00,2013-05-01 17:00,2013-07-04 08:00,2013-08-07 17:00,,PT_Normal,,,,,liQ3RHz3Qg+xTxZVU9mHpA,,,,N,0,0,,,2013-02-16 15:52,2013-02-16 15:56,admin,admin
500231,6359,124379,13662,0,N,N,N,CP_Drtn,TT_Task,DT_FixedDUR2,TK_NotStart,DUKHPROGEN00MTAP1340,Exhaust Air louver_1st_App,,608,0,240,0,0,0,240,0,0,0,,,,2013-07-13 08:00,2013-08-19 17:00,,2013-04-15 08:00,2013-05-19 17:00,2013-04-15 08:00,2013-05-19 17:00,2013-04-15 08:00,2013-05-19 17:00,2013-07-13 08:00,2013-08-19 17:00,,PT_Normal,,,,,yR5Fivu5Qq6fbcg6LrfsHg,,,,N,0,0,,,2013-02-16 15:52,2013-02-16 15:56,admin,admin
500232,6359,124379,13662,0,N,N,N,CP_Drtn,TT_Task,DT_FixedDUR2,TK_NotStart,DUKHPROGEN00MTAP1530,Exhaust Fan_1st_App,,488,0,240,0,0,0,240,0,0,0,,,,2013-07-13 08:00,2013-08-19 17:00,,2013-05-02 08:00,2013-06-05 17:00,2013-05-02 08:00,2013-06-05 17:00,2013-05-02 08:00,2013-06-05 17:00,2013-07-13 08:00,2013-08-19 17:00,,PT_Normal,,,,,fTdnY9H1RqyQTqap6I9hXA,,,,N,0,0,,,2013-02-16 15:52,2013-02-16 15:56,admin,admin
500233,6359,124379,13662,0,N,N,N,CP_Drtn,TT_Task,DT_FixedDUR2,TK_NotStart,DUKHPROGEN00MTAP1170,SMDB_1st_App,,600,0,240,0,0,0,240,0,0,0,,,,2013-06-06 08:00,2013-07-10 17:00,,2013-03-11 08:00,2013-04-14 17:00,2013-03-11 08:00,2013-04-14 17:00,2013-03-11 08:00,2013-04-14 17:00,2013-06-06 08:00,2013-07-10 17:00,,PT_Normal,,,,,ZHvna+w9TsCAo9lplLoWlw,,,,N,0,0,,,2013-02-16 15:52,2013-02-16 15:56,admin,admin
500234,6359,124379,13662,0,N,N,N,CP_Drtn,TT_Task,DT_FixedDUR2,TK_NotStart,DUKHPROGEN00MTAP1180,Cables & Wires_1st_App,,512,40,240,0,0,0,240,0,0,0,,,,2013-05-25 08:00,2013-06-27 17:00,,2013-03-11 08:00,2013-04-14 17:00,2013-03-11 08:00,2013-04-14 17:00,2013-03-11 08:00,2013-04-14 17:00,2013-05-25 08:00,2013-06-27 17:00,,PT_Normal,,,,,A1Mx8hTKS+64sbADmO0wXA,,,,N,0,0,,,2013-02-16 15:52,2013-02-16 15:56,admin,admin
500235,6359,124379,13662,0,N,N,N,CP_Drtn,TT_Task,DT_FixedDUR2,TK_NotStart,DUKHPROGEN00MTAP1190,Lights & Fixtures_1st_App,,696,0,240,0,0,0,240,0,0,0,,,,2013-06-20 08:00,2013-07-24 17:00,,2013-03-11 08:00,2013-04-14 17:00,2013-03-11 08:00,2013-04-14 17:00,2013-03-11 08:00,2013-04-14 17:00,2013-06-20 08:00,2013-07-24 17:00,,PT_Normal,,,,,mIcQBx51RFO69kGtgypBUg,,,,N,0,0,,,2013-02-16 15:52,2013-02-16 15:56,admin,admin
500236,6359,124379,13662,0,N,N,N,CP_Drtn,TT_Task,DT_FixedDUR2,TK_NotStart,DUKHPROGEN00MTAP1200,Isolators_1st_App,,864,0,240,0,0,0,240,0,0,0,,,,2013-07-15 08:00,2013-08-21 17:00,,2013-03-11 08:00,2013-04-14 17:00,2013-03-11 08:00,2013-04-14 17:00,2013-03-11 08:00,2013-04-14 17:00,2013-07-15 08:00,2013-08-21 17:00,,PT_Normal,,,,,MhJLWD7bSyK0GCtznWXgcQ,,,,N,0,0,,,2013-02-16 15:52,2013-02-16 15:56,admin,admin
500237,6359,124379,13662,0,N,N,N,CP_Drtn,TT_Task,DT_FixedDUR2,TK_NotStart,DUKHPROGEN00MTAP1250,Street Light Post Set_1st_App,,1000,0,240,0,0,0,240,0,0,0,,,,2013-08-25 08:00,2013-09-28 17:00,,2013-03-28 08:00,2013-05-01 17:00,2013-03-28 08:00,2013-05-01 17:00,2013-03-28 08:00,2013-05-01 17:00,2013-08-25 08:00,2013-09-28 17:00,,PT_Normal,,,,,nY/yCUi5TVKKigIU8ICCJA,,,,N,0,0,,,2013-02-16 15:52,2013-02-16 15:56,admin,admin
500238,6359,124379,13662,0,N,N,N,CP_Drtn,TT_Task,DT_FixedDUR2,TK_NotStart,DUKHPROGEN00MTAP1350,Bollard Lamp_1st_App,,880,0,240,0,0,0,240,0,0,0,,,,2013-08-25 08:00,2013-09-28 17:00,,2013-04-15 08:00,2013-05-19 17:00,2013-04-15 08:00,2013-05-19 17:00,2013-04-15 08:00,2013-05-19 17:00,2013-08-25 08:00,2013-09-28 17:00,,PT_Normal,,,,,FXe9fnVVQNqEb1bkngdYYw,,,,N,0,0,,,2013-02-16 15:52,2013-02-16 15:56,admin,admin
500239,6359,124379,13662,0,N,N,N,CP_Drtn,TT_Task,DT_FixedDUR2,TK_NotStart,DUKHPROGEN00MTAP1210,Fire Resistant Cables_1st_App,,840,0,240,0,0,0,240,0,0,0,,,,2013-07-11 08:00,2013-08-18 17:00,,2013-03-11 08:00,2013-04-14 17:00,2013-03-11 08:00,2013-04-14 17:00,2013-03-11 08:00,2013-04-14 17:00,2013-07-11 08:00,2013-08-18 17:00,,PT_Normal,,,,,GtYfDRTwTsyZBEjN1Ne+Xw,,,,N,0,0,,,2013-02-16 15:52,2013-02-16 15:56,admin,admin
500240,6359,124379,13662,0,N,N,N,CP_Drtn,TT_Task,DT_FixedDUR2,TK_NotStart,DUKHPROGEN00MTAP1260,Smoke Detector_1st_App,,720,0,240,0,0,0,240,0,0,0,,,,2013-07-11 08:00,2013-08-18 17:00,,2013-03-28 08:00,2013-05-01 17:00,2013-03-28 08:00,2013-05-01 17:00,2013-03-28 08:00,2013-05-01 17:00,2013-07-11 08:00,2013-08-18 17:00,,PT_Normal,,,,,frr3CB7iSuWa2rp4lzIwcA,,,,N,0,0,,,2013-02-16 15:52,2013-02-16 15:56,admin,admin
500241,6359,124379,13662,0,N,N,N,CP_Drtn,TT_Task,DT_FixedDUR2,TK_NotStart,DUKHPROGEN00MTAP1360,Digital Alarm Communicator Panel_1st_App,,392,0,240,0,0,0,240,0,0,0,,,,2013-06-11 08:00,2013-07-15 17:00,,2013-04-15 08:00,2013-05-19 17:00,2013-04-15 08:00,2013-05-19 17:00,2013-04-15 08:00,2013-05-19 17:00,2013-06-11 08:00,2013-07-15 17:00,,PT_Normal,,,,,TbCj3u2lSbSipVqBBZkN5g,,,,N,0,0,,,2013-02-16 15:52,2013-02-16 15:56,admin,admin
500242,6359,124379,13662,0,N,N,N,CP_Drtn,TT_Task,DT_FixedDUR2,TK_NotStart,DUKHPROGEN00MTAP1370,Fire Blanket_1st_App,,784,0,240,0,0,0,240,0,0,0,,,,2013-08-07 08:00,2013-09-14 17:00,,2013-04-15 08:00,2013-05-19 17:00,2013-04-15 08:00,2013-05-19 17:00,2013-04-15 08:00,2013-05-19 17:00,2013-08-07 08:00,2013-09-14 17:00,,PT_Normal,,,,,uejjuo9eSn+C79d+jLawvQ,,,,N,0,0,,,2013-02-16 15:52,2013-02-16 15:56,admin,admin
500243,6359,124379,13662,0,N,N,N,CP_Drtn,TT_Task,DT_FixedDUR2,TK_NotStart,DUKHPROGEN00MTAP1380,Fire Extinguisher_1st_App,,720,0,240,0,0,0,240,0,0,0,,,,2013-07-29 08:00,2013-09-04 17:00,,2013-04-15 08:00,2013-05-19 17:00,2013-04-15 08:00,2013-05-19 17:00,2013-04-15 08:00,2013-05-19 17:00,2013-07-29 08:00,2013-09-04 17:00,,PT_Normal,,,,,E1ACDW13TvqnV5y1SI2BYg,,,,N,0,0,,,2013-02-16 15:52,2013-02-16 15:56,admin,admin
500244,6359,124379,13662,0,N,N,N,CP_Drtn,TT_Task,DT_FixedDUR2,TK_NotStart,DUKHPROGEN00MTAP1540,Ductile Iron Pipes_1st_App,,40,0,240,0,0,0,240,0,0,0,,,,2013-05-08 08:00,2013-06-11 17:00,,2013-05-02 08:00,2013-06-05 17:00,2013-05-02 08:00,2013-06-05 17:00,2013-05-02 08:00,2013-06-05 17:00,2013-05-08 08:00,2013-06-11 17:00,,PT_Normal,,,,,1XK20PqLQzC+rgUvOb3CLg,,,,N,0,0,,,2013-02-16 15:52,2013-02-16 16:17,admin,admin
500245,6359,124379,13662,0,N,N,N,CP_Drtn,TT_Task,DT_FixedDUR2,TK_NotStart,DUKHPROGEN00MTAP1650,Isolating Values_1st_App,,32,0,240,0,0,0,240,0,0,0,,,,2013-05-25 08:00,2013-06-27 17:00,,2013-05-20 08:00,2013-06-23 17:00,2013-05-20 08:00,2013-06-23 17:00,2013-05-20 08:00,2013-06-23 17:00,2013-05-25 08:00,2013-06-27 17:00,,PT_Normal,,,,,iL7FhCTsSf6JQqB+jSIa4Q,,,,N,0,0,,,2013-02-16 15:52,2013-02-16 16:22,admin,admin
500246,6359,124379,13662,0,N,N,N,CP_Drtn,TT_Task,DT_FixedDUR2,TK_NotStart,DUKHPROGEN00MTAP1690,Fire Hydrant_1st_App,,120,0,240,0,0,0,240,0,0,0,,,,2013-06-24 08:00,2013-07-28 17:00,,2013-06-06 08:00,2013-07-10 17:00,2013-06-06 08:00,2013-07-10 17:00,2013-06-06 08:00,2013-07-10 17:00,2013-06-24 08:00,2013-07-28 17:00,,PT_Normal,,,,,IJBiJ7cnRha1WuMnzZP7mw,,,,N,0,0,,,2013-02-16 15:52,2013-02-16 16:35,admin,admin
500247,6359,124379,13662,0,N,N,N,CP_Drtn,TT_Task,DT_FixedDUR2,TK_NotStart,DUKHPROGEN00MTAP1270,Video Com System_1st_App,,560,0,240,0,0,0,240,0,0,0,,,,2013-06-18 08:00,2013-07-22 17:00,,2013-03-28 08:00,2013-05-01 17:00,2013-03-28 08:00,2013-05-01 17:00,2013-03-28 08:00,2013-05-01 17:00,2013-06-18 08:00,2013-07-22 17:00,,PT_Normal,,,,,tHL13z+kTnCScPUwAIE1Kg,,,,N,0,0,,,2013-02-16 15:52,2013-02-16 15:56,admin,admin
500248,6359,124379,13662,0,N,N,N,CP_Drtn,TT_Task,DT_FixedDUR2,TK_NotStart,DUKHPROGEN00MTAP1280,Telephone Fittings & Accessories_1st_App,,560,0,240,0,0,0,240,0,0,0,,,,2013-06-18 08:00,2013-07-22 17:00,,2013-03-28 08:00,2013-05-01 17:00,2013-03-28 08:00,2013-05-01 17:00,2013-03-28 08:00,2013-05-01 17:00,2013-06-18 08:00,2013-07-22 17:00,,PT_Normal,,,,,K8Mgq9EvTKGK4b3YQKupdA,,,,N,0,0,,,2013-02-16 15:52,2013-02-16 15:56,admin,admin
500249,6359,124379,13662,0,N,N,N,CP_Drtn,TT_Task,DT_FixedDUR2,TK_NotStart,DUKHPROGEN00MTAP1290,"Television devices,Fittings & Access._1st_App",,792,0,240,0,0,0,240,0,0,0,,,,2013-07-22 08:00,2013-08-28 17:00,,2013-03-28 08:00,2013-05-01 17:00,2013-03-28 08:00,2013-05-01 17:00,2013-03-28 08:00,2013-05-01 17:00,2013-07-22 08:00,2013-08-28 17:00,,PT_Normal,,,,,tZSHDNzZTmeTBUEWnodOGw,,,,N,0,0,,,2013-02-16 15:52,2013-02-16 15:56,admin,admin
500250,6359,124379,13662,0,N,N,N,CP_Drtn,TT_Task,DT_FixedDUR2,TK_NotStart,DUKHPROGEN00MTAP1670,Irrigation Pipes_1st_App,,608,0,240,0,0,0,240,0,0,0,,,,2013-08-05 08:00,2013-09-11 17:00,,2013-05-08 08:00,2013-06-11 17:00,2013-05-08 08:00,2013-06-11 17:00,2013-05-08 08:00,2013-06-11 17:00,2013-08-05 08:00,2013-09-11 17:00,,PT_Normal,,,,,XjSAgrihRLSmoG4wDOXzQQ,,,,N,0,0,,,2013-02-16 15:52,2013-02-16 15:56,admin,admin
500251,6359,124379,13662,0,N,N,N,CP_Drtn,TT_Task,DT_FixedDUR2,TK_NotStart,DUKHPROGEN00MTAP1760,Sprinklers_1st_App,,1104,0,240,0,0,0,240,0,0,0,,,,2013-11-09 08:00,2013-12-12 17:00,,2013-05-26 08:00,2013-06-29 17:00,2013-05-26 08:00,2013-06-29 17:00,2013-05-26 08:00,2013-06-29 17:00,2013-11-09 08:00,2013-12-12 17:00,,PT_Normal,,,,,wzsUduygQJC32t9E/Z1TBA,,,,N,0,0,,,2013-02-16 15:52,2013-02-16 15:56,admin,admin
500252,6359,124379,13662,0,N,N,N,CP_Drtn,TT_Task,DT_FixedDUR2,TK_NotStart,DUKHPROGEN00MTAP1810,Nozzle Jet_1st_App,,776,0,240,0,0,0,240,0,0,0,,,,2013-10-07 08:00,2013-11-12 17:00,,2013-06-12 08:00,2013-07-16 17:00,2013-06-12 08:00,2013-07-16 17:00,2013-06-12 08:00,2013-07-16 17:00,2013-10-07 08:00,2013-11-12 17:00,,PT_Normal,,,,,Pw88qm66TFWMGZvuWDBwcQ,,,,N,0,0,,,2013-02-16 15:52,2013-02-16 15:56,admin,admin
500253,6359,124379,13662,0,N,N,N,CP_Drtn,TT_Task,DT_FixedDUR2,TK_NotStart,DUKHPROGEN00MTAP1830,Solenoid Values_1st_App,,656,0,240,0,0,0,240,0,0,0,,,,2013-10-07 08:00,2013-11-12 17:00,,2013-06-30 08:00,2013-08-03 17:00,2013-06-30 08:00,2013-08-03 17:00,2013-06-30 08:00,2013-08-03 17:00,2013-10-07 08:00,2013-11-12 17:00,,PT_Normal,,,,,FT3BwrssRCeYW5j3wAamvA,,,,N,0,0,,,2013-02-16 15:52,2013-02-16 15:56,admin,admin
500254,6359,124379,13662,0,N,N,N,CP_Drtn,TT_Task,DT_FixedDUR2,TK_NotStart,DUKHPROGEN00MTAP1840,Gate Values_1st_App,,536,0,240,0,0,0,240,0,0,0,,,,2013-10-07 08:00,2013-11-12 17:00,,2013-07-17 08:00,2013-08-24 17:00,2013-07-17 08:00,2013-08-24 17:00,2013-07-17 08:00,2013-08-24 17:00,2013-10-07 08:00,2013-11-12 17:00,,PT_Normal,,,,,lz6vdASRTOmrU5liaWYU/Q,,,,N,0,0,,,2013-02-16 15:52,2013-02-16 15:56,admin,admin
500255,6359,124379,13662,0,N,N,N,CP_Drtn,TT_Task,DT_FixedDUR2,TK_NotStart,DUKHPROGEN00MTAP1860,Remote Control Value_1st_App,,416,0,240,0,0,0,240,0,0,0,,,,2013-10-07 08:00,2013-11-12 17:00,,2013-08-04 08:00,2013-09-10 17:00,2013-08-04 08:00,2013-09-10 17:00,2013-08-04 08:00,2013-09-10 17:00,2013-10-07 08:00,2013-11-12 17:00,,PT_Normal,,,,,s0/2Ugv5RQCFovzS6LRjzQ,,,,N,0,0,,,2013-02-16 15:52,2013-02-16 15:56,admin,admin
500256,6359,124379,13662,0,N,N,N,CP_Drtn,TT_Task,DT_FixedDUR2,TK_NotStart,DUKHPROGEN00MTAP1870,Irrigation Controller_1st_App,,296,0,240,0,0,0,240,0,0,0,,,,2013-10-07 08:00,2013-11-12 17:00,,2013-08-25 08:00,2013-09-28 17:00,2013-08-25 08:00,2013-09-28 17:00,2013-08-25 08:00,2013-09-28 17:00,2013-10-07 08:00,2013-11-12 17:00,,PT_Normal,,,,,GvEJn70HSB66JL0ataLz+g,,,,N,0,0,,,2013-02-16 15:52,2013-02-16 15:56,admin,admin
500257,6359,124379,13662,0,N,N,N,CP_Drtn,TT_Task,DT_FixedDUR2,TK_NotStart,DUKHPROGEN00MTAP1850,Fences_1st_App,,1008,0,240,0,0,0,240,0,0,0,,,,2013-11-30 08:00,2014-01-04 17:00,,2013-06-30 08:00,2013-08-03 17:00,2013-06-30 08:00,2013-08-03 17:00,2013-06-30 08:00,2013-08-03 17:00,2013-11-30 08:00,2014-01-04 17:00,,PT_Normal,,,,,+eam6+gyS0adkC5MKHsLUQ,,,,N,0,0,,,2013-02-16 15:52,2013-02-16 16:47,admin,admin
500258,6359,124379,13662,0,N,N,N,CP_Drtn,TT_Task,DT_FixedDUR2,TK_NotStart,DUKHPROGEN00MTAP1000,Anti Termite _1st_App,,360,0,120,0,0,0,120,0,0,0,,,,2013-01-31 08:00,2013-02-18 17:00,,2012-12-09 08:00,2012-12-26 17:00,2012-12-09 08:00,2012-12-26 17:00,2012-12-09 08:00,2012-12-26 17:00,2013-01-31 08:00,2013-02-18 17:00,,PT_Normal,,,,,cYpzNU/kTPSm9Y6boNf+Gg,,,,N,0,0,,,2013-02-16 15:52,2013-02-16 15:56,admin,admin
500259,6359,124379,13662,0,N,N,N,CP_Drtn,TT_Task,DT_FixedDUR2,TK_NotStart,DUKHPROGEN00MTAP1020,Concrete_1st_App,,312,0,120,0,0,0,120,0,0,0,,,,2013-01-26 08:00,2013-02-11 17:00,,2012-12-10 08:00,2012-12-27 17:00,2012-12-10 08:00,2012-12-27 17:00,2012-12-10 08:00,2012-12-27 17:00,2013-01-26 08:00,2013-02-11 17:00,,PT_Normal,,,,,15O9KZRETpSuLTsLXvwPpg,,,,N,0,0,,,2013-02-16 15:52,2013-02-16 15:56,admin,admin
500260,6359,124379,13662,0,N,N,N,CP_Drtn,TT_Task,DT_FixedDUR2,TK_NotStart,DUKHPROGEN00MTAP1030,Waterproofing_1st_App,,304,0,120,0,0,0,120,0,0,0,,,,2013-02-10 08:00,2013-02-27 17:00,,2012-12-27 08:00,2013-01-13 17:00,2012-12-27 08:00,2013-01-13 17:00,2012-12-27 08:00,2013-01-13 17:00,2013-02-10 08:00,2013-02-27 17:00,,PT_Normal,,,,,JQS1Gm/VS/iyuppTGLSnag,,,,N,0,0,,,2013-02-16 15:52,2013-02-16 15:56,admin,admin
500261,6359,124379,13662,0,N,N,N,CP_Drtn,TT_Task,DT_FixedDUR2,TK_NotStart,DUKHPROGEN00MTAP1010,Block Work_1st_App,,472,0,200,0,0,0,200,0,0,0,,,,2013-02-11 08:00,2013-03-12 17:00,,2012-12-03 08:00,2013-01-01 17:00,2012-12-03 08:00,2013-01-01 17:00,2012-12-03 08:00,2013-01-01 17:00,2013-02-11 08:00,2013-03-12 17:00,,PT_Normal,,,,,FU+LDhTQTNqtePpCrM2Hog,,,,N,0,0,,,2013-02-16 15:52,2013-02-16 15:56,admin,admin
500262,6359,124379,13662,0,N,N,N,CP_Drtn,TT_Task,DT_FixedDUR2,TK_NotStart,DUKHPROGEN00MTAP1040,Plastering & Accessories_1st_App,,920,0,240,0,0,0,240,0,0,0,,,,2013-04-29 08:00,2013-06-02 17:00,,2012-12-13 08:00,2013-01-17 17:00,2012-12-13 08:00,2013-01-17 17:00,2012-12-13 08:00,2013-01-17 17:00,2013-04-29 08:00,2013-06-02 17:00,,PT_Normal,,,,,L9s9p5ozQPW9yxxSFOkaOw,,,,N,0,0,,,2013-02-16 15:52,2013-02-16 15:56,admin,admin
500263,6359,124379,13662,0,N,N,N,CP_Drtn,TT_Task,DT_FixedDUR2,TK_NotStart,DUKHPROGEN00MTAP1050,Thermal Insulation_1st_App,,928,0,240,0,0,0,240,0,0,0,,,,2013-05-30 08:00,2013-07-03 17:00,,2013-01-14 08:00,2013-02-18 17:00,2013-01-14 08:00,2013-02-18 17:00,2013-01-14 08:00,2013-02-18 17:00,2013-05-30 08:00,2013-07-03 17:00,,PT_Normal,,,,,sRrOTOWeRQO6nDXncgWaRA,,,,N,0,0,,,2013-02-16 15:52,2013-02-16 15:56,admin,admin
500264,6359,124379,13662,0,N,N,N,CP_Drtn,TT_Task,DT_FixedDUR2,TK_NotStart,DUKHPROGEN00MTAP1140,Pitch roofing_1st_App,,696,0,240,0,0,0,240,0,0,0,,,,2013-05-14 08:00,2013-06-17 17:00,,2013-01-31 08:00,2013-03-07 17:00,2013-01-31 08:00,2013-03-07 17:00,2013-01-31 08:00,2013-03-07 17:00,2013-05-14 08:00,2013-06-17 17:00,,PT_Normal,,,,,jorN5OFSR6epsOPn99bb0w,,,,N,0,0,,,2013-02-16 15:52,2013-02-16 15:56,admin,admin
500265,6359,124379,13662,0,N,N,N,CP_Drtn,TT_Task,DT_FixedDUR2,TK_NotStart,DUKHPROGEN00MTAP1490,Wooden Doors_1st_App,,208,0,240,0,0,0,240,0,0,0,,,,2013-05-01 08:00,2013-06-04 17:00,,2013-04-01 08:00,2013-05-05 17:00,2013-04-01 08:00,2013-05-05 17:00,2013-04-01 08:00,2013-05-05 17:00,2013-05-01 08:00,2013-06-04 17:00,,PT_Normal,,,,,uylFb0eXSHCi5sLJc4fj5Q,,,,N,0,0,,,2013-02-16 15:52,2013-02-16 15:56,admin,admin
500266,6359,124379,13662,0,N,N,N,CP_Drtn,TT_Task,DT_FixedDUR2,TK_NotStart,DUKHPROGEN00MTAP1440,PVC Doors_1st_App,,736,0,240,0,0,0,240,0,0,0,,,,2013-07-17 08:00,2013-08-24 17:00,,2013-04-01 08:00,2013-05-05 17:00,2013-04-01 08:00,2013-05-05 17:00,2013-04-01 08:00,2013-05-05 17:00,2013-07-17 08:00,2013-08-24 17:00,,PT_Normal,,,,,HFBw77i6QbKlm8zW2YRMyA,,,,N,0,0,,,2013-02-16 15:52,2013-02-16 15:56,admin,admin
500267,6359,124379,13662,0,N,N,N,CP_Drtn,TT_Task,DT_FixedDUR2,TK_NotStart,DUKHPROGEN00MTAP1550,Closets /wardrobe& Pelmets_1st_App,,344,0,240,0,0,0,240,0,0,0,,,,2013-06-13 08:00,2013-07-17 17:00,,2013-04-24 08:00,2013-05-28 17:00,2013-04-24 08:00,2013-05-28 17:00,2013-04-24 08:00,2013-05-28 17:00,2013-06-13 08:00,2013-07-17 17:00,,PT_Normal,,,,,uL+JbQZXSbuBCndxEufBug,,,,N,0,0,,,2013-02-16 15:52,2013-02-16 15:56,admin,admin
500268,6359,124379,13662,0,N,N,N,CP_Drtn,TT_Task,DT_FixedDUR2,TK_NotStart,DUKHPROGEN00MTAP1560,"Counters, Cabinets & Shelves_1st_App",,344,0,240,0,0,0,240,0,0,0,,,,2013-06-13 08:00,2013-07-17 17:00,,2013-04-24 08:00,2013-05-28 17:00,2013-04-24 08:00,2013-05-28 17:00,2013-04-24 08:00,2013-05-28 17:00,2013-06-13 08:00,2013-07-17 17:00,,PT_Normal,,,,,JXQIhkHuS5myn/z4sRYAXw,,,,N,0,0,,,2013-02-16 15:52,2013-02-16 15:56,admin,admin
500269,6359,124379,13662,0,N,N,N,CP_Drtn,TT_Task,DT_FixedDUR2,TK_NotStart,DUKHPROGEN00MTAP1570,Wooden Hand Rails _1st_App,,488,0,240,0,0,0,240,0,0,0,,,,2013-07-04 08:00,2013-08-07 17:00,,2013-04-24 08:00,2013-05-28 17:00,2013-04-24 08:00,2013-05-28 17:00,2013-04-24 08:00,2013-05-28 17:00,2013-07-04 08:00,2013-08-07 17:00,,PT_Normal,,,,,5NP181ttQjiUGdPwNpiWoQ,,,,N,0,0,,,2013-02-16 15:52,2013-02-16 15:56,admin,admin
500270,6359,124379,13662,0,N,N,N,CP_Drtn,TT_Task,DT_FixedDUR2,TK_NotStart,DUKHPROGEN00MTAP1780,Gazebo Structure_1st_App,,536,0,240,0,0,0,240,0,0,0,,,,2013-09-02 08:00,2013-10-06 17:00,,2013-06-12 08:00,2013-07-16 17:00,2013-06-12 08:00,2013-07-16 17:00,2013-06-12 08:00,2013-07-16 17:00,2013-09-02 08:00,2013-10-06 17:00,,PT_Normal,,,,,jik5fqMcRbmii0VQjElcGA,,,,N,0,0,,,2013-02-16 15:52,2013-02-16 15:56,admin,admin
500271,6359,124379,13662,0,N,N,N,CP_Drtn,TT_Task,DT_FixedDUR2,TK_NotStart,DUKHPROGEN00MTAP1450,Ironmongeries_1st_App,,208,0,240,0,0,0,240,0,0,0,,,,2013-05-01 08:00,2013-06-04 17:00,,2013-04-01 08:00,2013-05-05 17:00,2013-04-01 08:00,2013-05-05 17:00,2013-04-01 08:00,2013-05-05 17:00,2013-05-01 08:00,2013-06-04 17:00,,PT_Normal,,,,,GXdXEFPtT8SLEtufga67rw,,,,N,0,0,,,2013-02-16 15:52,2013-02-16 15:56,admin,admin
500272,6359,124379,13662,0,N,N,N,CP_Drtn,TT_Task,DT_FixedDUR2,TK_NotStart,DUKHPROGEN00MTAP1460,Aluminum Doors_1st_App,,520,0,240,0,0,0,240,0,0,0,,,,2013-06-16 08:00,2013-07-20 17:00,,2013-04-01 08:00,2013-05-05 17:00,2013-04-01 08:00,2013-05-05 17:00,2013-04-01 08:00,2013-05-05 17:00,2013-06-16 08:00,2013-07-20 17:00,,PT_Normal,,,,,Aa4BWtTaT0aVbw0VhYu6rw,,,,N,0,0,,,2013-02-16 15:52,2013-02-16 15:56,admin,admin
500273,6359,124379,13662,0,N,N,N,CP_Drtn,TT_Task,DT_FixedDUR2,TK_NotStart,DUKHPROGEN00MTAP1470,Aluminum  Windows_1st_App,,568,0,240,0,0,0,240,0,0,0,,,,2013-06-23 08:00,2013-07-27 17:00,,2013-04-01 08:00,2013-05-05 17:00,2013-04-01 08:00,2013-05-05 17:00,2013-04-01 08:00,2013-05-05 17:00,2013-06-23 08:00,2013-07-27 17:00,,PT_Normal,,,,,yso1x3m1QWyftH9WHUmreg,,,,N,0,0,,,2013-02-16 15:52,2013-02-16 15:56,admin,admin
500274,6359,124379,13662,0,N,N,N,CP_Drtn,TT_Task,DT_FixedDUR2,TK_NotStart,DUKHPROGEN00MTAP1480,Granite_1st_App,,368,0,240,0,0,0,240,0,0,0,,,,2013-05-25 08:00,2013-06-27 17:00,,2013-04-01 08:00,2013-05-05 17:00,2013-04-01 08:00,2013-05-05 17:00,2013-04-01 08:00,2013-05-05 17:00,2013-05-25 08:00,2013-06-27 17:00,,PT_Normal,,,,,s4JFi8BzQMy/HwDTJrB3TA,,,,N,0,0,,,2013-02-16 15:52,2013-02-16 15:56,admin,admin
500275,6359,124379,13662,0,N,N,N,CP_Drtn,TT_Task,DT_FixedDUR2,TK_NotStart,DUKHPROGEN00MTAP1090,Cobble stone finish _1st_App,,904,0,240,0,0,0,240,0,0,0,,,,2013-05-14 08:00,2013-06-17 17:00,,2013-01-01 08:00,2013-02-04 17:00,2013-01-01 08:00,2013-02-04 17:00,2013-01-01 08:00,2013-02-04 17:00,2013-05-14 08:00,2013-06-17 17:00,,PT_Normal,,,,,JIyXWrqKT0apo7n7E+m6XA,,,,N,0,0,,,2013-02-16 15:52,2013-02-16 15:56,admin,admin
500276,6359,124379,13662,0,N,N,N,CP_Drtn,TT_Task,DT_FixedDUR2,TK_NotStart,DUKHPROGEN00MTAP1100,Slate Tile_1st_App,,944,0,240,0,0,0,240,0,0,0,,,,2013-05-20 08:00,2013-06-23 17:00,,2013-01-01 08:00,2013-02-04 17:00,2013-01-01 08:00,2013-02-04 17:00,2013-01-01 08:00,2013-02-04 17:00,2013-05-20 08:00,2013-06-23 17:00,,PT_Normal,,,,,fmSx2mFWThen0NcrMPqB0g,,,,N,0,0,,,2013-02-16 15:52,2013-02-16 15:56,admin,admin
500277,6359,124379,13662,0,N,N,N,CP_Drtn,TT_Task,DT_FixedDUR2,TK_NotStart,DUKHPROGEN00MTAP1110,Stone Cladding_1st_App,,1000,0,240,0,0,0,240,0,0,0,,,,2013-05-28 08:00,2013-07-01 17:00,,2013-01-01 08:00,2013-02-04 17:00,2013-01-01 08:00,2013-02-04 17:00,2013-01-01 08:00,2013-02-04 17:00,2013-05-28 08:00,2013-07-01 17:00,,PT_Normal,,,,,sA2lehVPROmAQagYBoD47A,,,,N,0,0,,,2013-02-16 15:52,2013-02-16 15:56,admin,admin
500278,6359,124379,13662,0,N,N,N,CP_Drtn,TT_Task,DT_FixedDUR2,TK_NotStart,DUKHPROGEN00MTAP1300,Gypsum Board false ceiling_1st_App,,256,0,240,0,0,0,240,0,0,0,,,,2013-05-02 08:00,2013-06-05 17:00,,2013-03-26 08:00,2013-04-29 17:00,2013-03-26 08:00,2013-04-29 17:00,2013-03-26 08:00,2013-04-29 17:00,2013-05-02 08:00,2013-06-05 17:00,,PT_Normal,,,,,eS9dYdgtRHuj1WKsFkgMBA,,,,N,0,0,,,2013-02-16 15:52,2013-02-16 15:56,admin,admin
500279,6359,124379,13662,0,N,N,N,CP_Drtn,TT_Task,DT_FixedDUR2,TK_NotStart,DUKHPROGEN00MTAP1310,Aluminum Tile false ceiling_1st_App,,336,0,240,0,0,0,240,0,0,0,,,,2013-05-20 08:00,2013-06-23 17:00,,2013-04-01 08:00,2013-05-05 17:00,2013-04-01 08:00,2013-05-05 17:00,2013-04-01 08:00,2013-05-05 17:00,2013-05-20 08:00,2013-06-23 17:00,,PT_Normal,,,,,PbaSAxrUT3SkfsdRoLiaGw,,,,N,0,0,,,2013-02-16 15:52,2013-02-16 15:56,admin,admin
500280,6359,124379,13662,0,N,N,N,CP_Drtn,TT_Task,DT_FixedDUR2,TK_NotStart,DUKHPROGEN00MTAP1390,GRC Panels_1st_App,,592,0,240,0,0,0,240,0,0,0,,,,2013-06-20 08:00,2013-07-24 17:00,,2013-03-26 08:00,2013-04-29 17:00,2013-03-26 08:00,2013-04-29 17:00,2013-03-26 08:00,2013-04-29 17:00,2013-06-20 08:00,2013-07-24 17:00,,PT_Normal,,,,,gD68u/98RBOJoB26sHZWHQ,,,,N,0,0,,,2013-02-16 15:52,2013-02-16 15:56,admin,admin
500281,6359,124379,13662,0,N,N,N,CP_Drtn,TT_Task,DT_FixedDUR2,TK_NotStart,DUKHPROGEN00MTAP1320,Paints_1st_App,,80,0,240,0,0,0,240,0,0,0,,,,2013-04-18 08:00,2013-05-22 17:00,,2013-04-07 08:00,2013-05-11 17:00,2013-04-07 08:00,2013-05-11 17:00,2013-04-07 08:00,2013-05-11 17:00,2013-04-18 08:00,2013-05-22 17:00,,PT_Normal,,,,,IiSb053EQtGRGjOpkHd9WQ,,,,N,0,0,,,2013-02-16 15:52,2013-02-16 15:56,admin,admin
500282,6359,124379,13662,0,N,N,N,CP_Drtn,TT_Task,DT_FixedDUR2,TK_NotStart,DUKHPROGEN00MTAP1420,Epoxy_1st_App,,1072,0,240,0,0,0,240,0,0,0,,,,2013-10-01 08:00,2013-11-06 17:00,,2013-04-24 08:00,2013-05-28 17:00,2013-04-24 08:00,2013-05-28 17:00,2013-04-24 08:00,2013-05-28 17:00,2013-10-01 08:00,2013-11-06 17:00,,PT_Normal,,,,,dFqvhtjlR7a31FUFLSyOKA,,,,N,0,0,,,2013-02-16 15:52,2013-02-16 15:56,admin,admin
500283,6359,124379,13662,0,N,N,N,CP_Drtn,TT_Task,DT_FixedDUR2,TK_NotStart,DUKHPROGEN00MTAP1430,Roller Shutter_1st_App,,1744,0,240,0,0,0,240,0,0,0,,,,2013-12-14 08:00,2014-01-18 17:00,,2013-03-28 08:00,2013-05-01 17:00,2013-03-28 08:00,2013-05-01 17:00,2013-03-28 08:00,2013-05-01 17:00,2013-12-14 08:00,2014-01-18 17:00,,PT_Normal,,,,,BezmeZhVTSmtCaqa90G0Jw,,,,N,0,0,,,2013-02-16 15:52,2013-02-16 15:56,admin,admin
500284,6359,124379,13662,0,N,N,N,CP_Drtn,TT_Task,DT_FixedDUR2,TK_NotStart,DUKHPROGEN00MTAP1700,Road Works Materials _1st_App,,1512,0,240,0,0,0,240,0,0,0,,,,2014-01-08 08:00,2014-02-12 17:00,,2013-05-26 08:00,2013-06-29 17:00,2013-05-26 08:00,2013-06-29 17:00,2013-05-26 08:00,2013-06-29 17:00,2014-01-08 08:00,2014-02-12 17:00,,PT_Normal,,,,,2T1rGqU9S5yqTkpRnE7mXA,,,,N,0,0,,,2013-02-16 15:52,2013-02-16 15:56,admin,admin
500285,6359,124379,13662,0,N,N,N,CP_Drtn,TT_Task,DT_FixedDUR2,TK_NotStart,DUKHPROGEN00MTAP1710,External signage _1st_App,,1376,0,240,0,0,0,240,0,0,0,,,,2013-12-19 08:00,2014-01-22 17:00,,2013-05-26 08:00,2013-06-29 17:00,2013-05-26 08:00,2013-06-29 17:00,2013-05-26 08:00,2013-06-29 17:00,2013-12-19 08:00,2014-01-22 17:00,,PT_Normal,,,,,+J+RQgmLT6CKGBz7TDBLGw,,,,N,0,0,,,2013-02-16 15:52,2013-02-16 15:56,admin,admin
500286,6359,124379,13662,0,N,N,N,CP_Drtn,TT_Task,DT_FixedDUR2,TK_NotStart,DUKHPROGEN00MTAP1720,Road Marking_1st_App,,1376,0,240,0,0,0,240,0,0,0,,,,2013-12-19 08:00,2014-01-22 17:00,,2013-05-26 08:00,2013-06-29 17:00,2013-05-26 08:00,2013-06-29 17:00,2013-05-26 08:00,2013-06-29 17:00,2013-12-19 08:00,2014-01-22 17:00,,PT_Normal,,,,,RCJlbrhMRtKeb3TauYF7aQ,,,,N,0,0,,,2013-02-16 15:52,2013-02-16 15:56,admin,admin
500287,6359,124379,13662,0,N,N,N,CP_Drtn,TT_Task,DT_FixedDUR2,TK_NotStart,DUKHPROGEN00MTAP1600,kerb works_1st_App,,624,0,240,0,0,0,240,0,0,0,,,,2013-07-21 08:00,2013-08-27 17:00,,2013-04-21 08:00,2013-05-25 17:00,2013-04-21 08:00,2013-05-25 17:00,2013-04-21 08:00,2013-05-25 17:00,2013-07-21 08:00,2013-08-27 17:00,,PT_Normal,,,,,0NEYRbXDTICQkmzVxgmtpg,,,,N,0,0,,,2013-02-16 15:52,2013-02-16 15:56,admin,admin
500288,6359,124379,13662,0,N,N,N,CP_Drtn,TT_Task,DT_FixedDUR2,TK_NotStart,DUKHPROGEN00MTAP1660,Interlock works_1st_App,,680,0,240,0,0,0,240,0,0,0,,,,2013-08-19 08:00,2013-09-22 17:00,,2013-05-08 08:00,2013-06-11 17:00,2013-05-08 08:00,2013-06-11 17:00,2013-05-08 08:00,2013-06-11 17:00,2013-08-19 08:00,2013-09-22 17:00,,PT_Normal,,,,,rhgD1kr/Sj2vEa7NXX+jlw,,,,N,0,0,,,2013-02-16 15:52,2013-02-16 15:56,admin,admin
500289,6359,124379,13662,0,N,N,N,CP_Drtn,TT_Task,DT_FixedDUR2,TK_NotStart,DUKHPROGEN00MTAP1730,Car Parking Shed_1st_App,,1016,0,240,0,0,0,240,0,0,0,,,,2013-10-27 08:00,2013-11-30 17:00,,2013-05-26 08:00,2013-06-29 17:00,2013-05-26 08:00,2013-06-29 17:00,2013-05-26 08:00,2013-06-29 17:00,2013-10-27 08:00,2013-11-30 17:00,,PT_Normal,,,,,Gs1iNxOfRwm4+lUHWjTZ+w,,,,N,0,0,,,2013-02-16 15:52,2013-02-16 15:56,admin,admin
500290,6359,124379,13662,0,N,N,N,CP_Drtn,TT_Task,DT_FixedDUR2,TK_NotStart,DUKHPROGEN00MTAP1740,Stone Boulders_1st_App,,1016,0,240,0,0,0,240,0,0,0,,,,2013-10-27 08:00,2013-11-30 17:00,,2013-05-26 08:00,2013-06-29 17:00,2013-05-26 08:00,2013-06-29 17:00,2013-05-26 08:00,2013-06-29 17:00,2013-10-27 08:00,2013-11-30 17:00,,PT_Normal,,,,,WIL5WrKOQ7KEDc2RI64rUA,,,,N,0,0,,,2013-02-16 15:52,2013-02-16 15:56,admin,admin
500291,6359,124379,13662,0,N,N,N,CP_Drtn,TT_Task,DT_FixedDUR2,TK_NotStart,DUKHPROGEN00MTAP1750,Speed Humps _1st_App,,1008,0,240,0,0,0,240,0,0,0,,,,2013-10-26 08:00,2013-11-28 17:00,,2013-05-26 08:00,2013-06-29 17:00,2013-05-26 08:00,2013-06-29 17:00,2013-05-26 08:00,2013-06-29 17:00,2013-10-26 08:00,2013-11-28 17:00,,PT_Normal,,,,,evBPpckpTOOBT+ZH/XEtOw,,,,N,0,0,,,2013-02-16 15:52,2013-02-16 15:56,admin,admin
500292,6359,124379,13662,0,N,N,N,CP_Drtn,TT_Task,DT_FixedDUR2,TK_NotStart,DUKHPROGEN00MTAP1790,"Plantation(Grass,Trees)_1st_App",,176,0,240,0,0,0,240,0,0,0,,,,2013-07-08 08:00,2013-08-14 17:00,,2013-06-12 08:00,2013-07-16 17:00,2013-06-12 08:00,2013-07-16 17:00,2013-06-12 08:00,2013-07-16 17:00,2013-07-08 08:00,2013-08-14 17:00,,PT_Normal,,,,,7Qjum07gRzOligimvo8Zew,,,,N,0,0,,,2013-02-16 15:52,2013-02-16 15:56,admin,admin
500293,6359,124379,13662,0,N,N,N,CP_Drtn,TT_Task,DT_FixedDUR2,TK_NotStart,DUKHPROGEN00MTAP1820,Pre-cast Boundary Wall _1st_App,,320,0,240,0,0,0,240,0,0,0,,,,2013-07-29 08:00,2013-09-04 17:00,,2013-06-12 08:00,2013-07-16 17:00,2013-06-12 08:00,2013-07-16 17:00,2013-06-12 08:00,2013-07-16 17:00,2013-07-29 08:00,2013-09-04 17:00,,PT_Normal,,,,,9dsj+33xQVuIQNYCqu67Mw,,,,N,0,0,,,2013-02-16 15:52,2013-02-16 16:45,admin,admin
500294,6359,124379,13662,0,N,N,N,CP_Drtn,TT_Task,DT_FixedDUR2,TK_NotStart,DUKHPROGEN00MTAP1800,Steel Gate & Barrier gates_1st_App,,504,0,240,0,0,0,240,0,0,0,,,,2013-08-28 08:00,2013-10-01 17:00,,2013-06-12 08:00,2013-07-16 17:00,2013-06-12 08:00,2013-07-16 17:00,2013-06-12 08:00,2013-07-16 17:00,2013-08-28 08:00,2013-10-01 17:00,,PT_Normal,,,,,1/l6f9wkQDOLtsHjvoI6Nw,,,,N,0,0,,,2013-02-16 15:52,2013-02-16 15:56,admin,admin
500295,6359,124379,13662,0,N,N,N,CP_Drtn,TT_Task,DT_FixedDUR2,TK_NotStart,DUKHPROGEN00MTAP1630,Steel Ladder_1st_App,,288,0,240,0,0,0,240,0,0,0,,,,2013-06-13 08:00,2013-07-17 17:00,,2013-05-02 08:00,2013-06-05 17:00,2013-05-02 08:00,2013-06-05 17:00,2013-05-02 08:00,2013-06-05 17:00,2013-06-13 08:00,2013-07-17 17:00,,PT_Normal,,,,,F7l6A9exR7yEpvhmgYPTRg,,,,N,0,0,,,2013-02-16 15:52,2013-02-16 15:56,admin,admin
500296,6359,124379,13662,0,N,N,N,CP_Drtn,TT_Task,DT_FixedDUR2,TK_NotStart,DUKHPROGEN00MTAP1590,Manhole Covers  and Frames_1st_App,,504,0,240,0,0,0,240,0,0,0,,,,2013-06-25 08:00,2013-07-29 17:00,,2013-04-13 08:00,2013-05-16 17:00,2013-04-13 08:00,2013-05-16 17:00,2013-04-13 08:00,2013-05-16 17:00,2013-06-25 08:00,2013-07-29 17:00,,PT_Normal,,,,,daa3IH/8R+aq2yaEro+t8Q,,,,N,0,0,,,2013-02-16 15:52,2013-02-16 15:56,admin,admin
500297,6359,124379,13662,0,N,N,N,CP_Drtn,TT_Task,DT_FixedDUR2,TK_NotStart,DUKHPROGEN00MTAP1400,Access Ladder_1st_App,,728,0,240,0,0,0,240,0,0,0,,,,2013-07-10 08:00,2013-08-17 17:00,,2013-03-26 08:00,2013-04-29 17:00,2013-03-26 08:00,2013-04-29 17:00,2013-03-26 08:00,2013-04-29 17:00,2013-07-10 08:00,2013-08-17 17:00,,PT_Normal,,,,,5jr7xix3RS2Ymmy1cH0+yw,,,,N,0,0,,,2013-02-16 15:52,2013-02-16 15:56,admin,admin
500298,6359,124379,13662,0,N,N,N,CP_Drtn,TT_Task,DT_FixedDUR2,TK_NotStart,DUKHPROGEN00MTAP1500,Steel Door_1st_App,,232,0,240,0,0,0,240,0,0,0,,,,2013-05-13 08:00,2013-06-16 17:00,,2013-04-09 08:00,2013-05-13 17:00,2013-04-09 08:00,2013-05-13 17:00,2013-04-09 08:00,2013-05-13 17:00,2013-05-13 08:00,2013-06-16 17:00,,PT_Normal,,,,,vPpV6dx2Sg6k7fvQZepZAQ,,,,N,0,0,,,2013-02-16 15:52,2013-02-16 15:56,admin,admin
500299,6359,124379,13662,0,N,N,N,CP_Drtn,TT_Task,DT_FixedDUR2,TK_NotStart,DUKHPROGEN00MTAP1580,Stainless Steel Handrail_1st_App,,488,0,240,0,0,0,240,0,0,0,,,,2013-07-04 08:00,2013-08-07 17:00,,2013-04-24 08:00,2013-05-28 17:00,2013-04-24 08:00,2013-05-28 17:00,2013-04-24 08:00,2013-05-28 17:00,2013-07-04 08:00,2013-08-07 17:00,,PT_Normal,,,,,dlnWQ3jHSKGN1f89af2ojw,,,,N,0,0,,,2013-02-16 15:52,2013-02-16 15:56,admin,admin
500300,6359,124379,13662,0,N,N,N,CP_Drtn,TT_Task,DT_FixedDUR2,TK_NotStart,DUKHPROGEN00MTAP1120,Ceramic Tile_1st_App,,584,0,240,0,0,0,240,0,0,0,,,,2013-03-28 08:00,2013-05-01 17:00,,2013-01-01 08:00,2013-02-04 17:00,2013-01-01 08:00,2013-02-04 17:00,2013-01-01 08:00,2013-02-04 17:00,2013-03-28 08:00,2013-05-01 17:00,,PT_Normal,,,,,mHS6yjx+QrOB0B5oTYdeAw,,,,N,0,0,,,2013-02-16 15:52,2013-02-16 15:56,admin,admin
500301,6359,124379,13662,0,N,N,N,CP_Drtn,TT_Task,DT_FixedDUR2,TK_NotStart,DUKHPROGEN00MTAP1130,Porcelain Tile_1st_App,,656,0,240,0,0,0,240,0,0,0,,,,2013-04-08 08:00,2013-05-12 17:00,,2013-01-01 08:00,2013-02-04 17:00,2013-01-01 08:00,2013-02-04 17:00,2013-01-01 08:00,2013-02-04 17:00,2013-04-08 08:00,2013-05-12 17:00,,PT_Normal,,,,,odSub0RDQpmp+Rx4KL7Evw,,,,N,0,0,,,2013-02-16 15:52,2013-02-16 15:56,admin,admin
500302,6359,124379,13662,0,N,N,N,CP_Drtn,TT_Task,DT_FixedDUR2,TK_NotStart,DUKHPROGEN00MTAP1410,Aluminum Slat Screen_1st_App,,648,0,240,0,0,0,240,0,0,0,,,,2013-06-29 08:00,2013-08-01 17:00,,2013-03-26 08:00,2013-04-29 17:00,2013-03-26 08:00,2013-04-29 17:00,2013-03-26 08:00,2013-04-29 17:00,2013-06-29 08:00,2013-08-01 17:00,,PT_Normal,,,,,LFIlOOp0R6GXkFaROHOV0g,,,,N,0,0,,,2013-02-16 15:52,2013-02-16 15:56,admin,admin
500303,6359,124379,13662,0,N,N,N,CP_Drtn,TT_Task,DT_FixedDUR2,TK_NotStart,DUKHPROGEN00MTAP1510,Stainless Steel Cover_1st_App,,232,0,240,0,0,0,240,0,0,0,,,,2013-05-13 08:00,2013-06-16 17:00,,2013-04-09 08:00,2013-05-13 17:00,2013-04-09 08:00,2013-05-13 17:00,2013-04-09 08:00,2013-05-13 17:00,2013-05-13 08:00,2013-06-16 17:00,,PT_Normal,,,,,u0WFLRYVSVC48//XKmzSeg,,,,N,0,0,,,2013-02-16 15:52,2013-02-16 15:56,admin,admin
500304,6359,124379,13662,0,N,N,N,CP_Drtn,TT_Task,DT_FixedDUR2,TK_NotStart,DUKHPROGEN00MTAP1610,PVC Tent_1st_App,,240,0,240,0,0,0,240,0,0,0,,,,2013-05-20 08:00,2013-06-23 17:00,,2013-04-15 08:00,2013-05-19 17:00,2013-04-15 08:00,2013-05-19 17:00,2013-04-15 08:00,2013-05-19 17:00,2013-05-20 08:00,2013-06-23 17:00,,PT_Normal,,,,,HZJwfjyUTe29RJhJD44Afg,,,,N,0,0,,,2013-02-16 15:52,2013-02-16 15:56,admin,admin
500305,6359,124379,13662,0,N,N,N,CP_Drtn,TT_Task,DT_FixedDUR2,TK_NotStart,DUKHPROGEN00MTAP1620,Structural Steel_1st_App,,224,0,240,0,0,0,240,0,0,0,,,,2013-05-18 08:00,2013-06-20 17:00,,2013-04-15 08:00,2013-05-19 17:00,2013-04-15 08:00,2013-05-19 17:00,2013-04-15 08:00,2013-05-19 17:00,2013-05-18 08:00,2013-06-20 17:00,,PT_Normal,,,,,eAuRS+tGSeef/PZz3//swQ,,,,N,0,0,,,2013-02-16 15:52,2013-02-16 15:56,admin,admin
500306,6359,124379,13662,0,N,N,N,CP_Drtn,TT_Task,DT_FixedDUR2,TK_NotStart,DUKHPROGEN00MTAP1220,Water Chiller_1st_App,,400,0,240,0,0,0,240,0,0,0,,,,2013-05-26 08:00,2013-06-29 17:00,,2013-03-28 08:00,2013-05-01 17:00,2013-03-28 08:00,2013-05-01 17:00,2013-03-28 08:00,2013-05-01 17:00,2013-05-26 08:00,2013-06-29 17:00,,PT_Normal,,,,,icxwO0noRgijCTGFDFakiQ,,,,N,0,0,,,2013-02-16 15:52,2013-02-16 15:56,admin,admin
500307,6359,124379,13662,0,N,N,N,CP_Drtn,TT_Task,DT_FixedDUR2,TK_NotStart,DUKHPROGEN00MTAP1330,Booster Pump_1st_App,,280,0,240,0,0,0,240,0,0,0,,,,2013-05-26 08:00,2013-06-29 17:00,,2013-04-15 08:00,2013-05-19 17:00,2013-04-15 08:00,2013-05-19 17:00,2013-04-15 08:00,2013-05-19 17:00,2013-05-26 08:00,2013-06-29 17:00,,PT_Normal,,,,,I3quOoDITeCQXdjAx7J45A,,,,N,0,0,,,2013-02-16 15:52,2013-02-16 15:56,admin,admin
500308,6359,124379,13662,0,N,N,N,CP_Drtn,TT_Task,DT_FixedDUR2,TK_NotStart,DUKHPROGEN00MTAP1520,Lift Pump_1st_App,,160,0,240,0,0,0,240,0,0,0,,,,2013-05-26 08:00,2013-06-29 17:00,,2013-05-02 08:00,2013-06-05 17:00,2013-05-02 08:00,2013-06-05 17:00,2013-05-02 08:00,2013-06-05 17:00,2013-05-26 08:00,2013-06-29 17:00,,PT_Normal,,,,,KWLsJE9oQA+hp19w+YvjNw,,,,N,0,0,,,2013-02-16 15:52,2013-02-16 15:56,admin,admin
500309,6359,124379,13662,0,N,N,N,CP_Drtn,TT_Task,DT_FixedDUR2,TK_NotStart,DUKHPROGEN00MTAP1640,Water meter_1st_App,,448,0,240,0,0,0,240,0,0,0,,,,2013-07-24 08:00,2013-08-31 17:00,,2013-05-20 08:00,2013-06-23 17:00,2013-05-20 08:00,2013-06-23 17:00,2013-05-20 08:00,2013-06-23 17:00,2013-07-24 08:00,2013-08-31 17:00,,PT_Normal,,,,,w/y2jXbDQ/qRqeNw848nfQ,,,,N,0,0,,,2013-02-16 15:52,2013-02-16 15:56,admin,admin
500310,6359,124379,13662,0,N,N,N,CP_Drtn,TT_Task,DT_FixedDUR2,TK_NotStart,DUKHPROGEN00MTAP1680,Water Tank_1st_App,,328,0,240,0,0,0,240,0,0,0,,,,2013-07-24 08:00,2013-08-31 17:00,,2013-06-06 08:00,2013-07-10 17:00,2013-06-06 08:00,2013-07-10 17:00,2013-06-06 08:00,2013-07-10 17:00,2013-07-24 08:00,2013-08-31 17:00,,PT_Normal,,,,,Aq7gunLTTdq/HVXRN2V+IQ,,,,N,0,0,,,2013-02-16 15:52,2013-02-16 15:56,admin,admin
500311,6359,124379,13662,0,N,N,N,CP_Drtn,TT_Task,DT_FixedDUR2,TK_NotStart,DUKHPROGEN00MTAP1770,Kitchen Water Filter_1st_App,,72,0,240,0,0,0,240,0,0,0,,,,2013-07-04 08:00,2013-08-07 17:00,,2013-06-24 08:00,2013-07-28 17:00,2013-06-24 08:00,2013-07-28 17:00,2013-06-24 08:00,2013-07-28 17:00,2013-07-04 08:00,2013-08-07 17:00,,PT_Normal,,,,,V0fFK02sRZO11Q0gksB8oA,,,,N,0,0,,,2013-02-16 15:52,2013-02-16 15:56,admin,admin
500312,6359,124379,13662,0,N,N,N,CP_Drtn,TT_Task,DT_FixedDUR2,TK_NotStart,DUKHPROGEN00MTAP1060,UPVC  Pipes_1st_App,,224,0,240,0,0,0,240,0,0,0,,,,2013-02-23 08:00,2013-03-28 17:00,,2013-01-20 08:00,2013-02-24 17:00,2013-01-20 08:00,2013-02-24 17:00,2013-01-20 08:00,2013-02-24 17:00,2013-02-23 08:00,2013-03-28 17:00,,PT_Normal,,,,,vUO6E/+BQRm98HfoDCReaw,,,,N,0,0,,,2013-02-16 15:52,2013-02-16 15:56,admin,admin
500313,6359,124379,13662,0,N,N,N,CP_Drtn,TT_Task,DT_FixedDUR2,TK_NotStart,DUKHPROGEN00MTAP1070,Floor drains & Cleanouts_1st_App,,224,0,240,0,0,0,240,0,0,0,,,,2013-02-23 08:00,2013-03-28 17:00,,2013-01-20 08:00,2013-02-24 17:00,2013-01-20 08:00,2013-02-24 17:00,2013-01-20 08:00,2013-02-24 17:00,2013-02-23 08:00,2013-03-28 17:00,,PT_Normal,,,,,ApAQi1xIRG2DsuwWR5mg7g,,,,N,0,0,,,2013-02-16 15:52,2013-02-16 15:56,admin,admin
500314,6359,124385,13662,0,N,N,N,CP_Drtn,TT_Task,DT_FixedDUR2,TK_NotStart,DUKHCONP1BZ2AREL3665,External Plastering,8169,600,0,200,0,12200,12200,200,0,0,0,,,,2014-05-18 08:00,2014-06-15 17:00,,2014-02-19 08:00,2014-03-19 17:00,2014-02-19 08:00,2014-03-19 17:00,2014-02-19 08:00,2014-03-19 17:00,2014-05-18 08:00,2014-06-15 17:00,,PT_Normal,,,,,Ix7uNJoFQ8aWxvYzEa/llA,,,,N,0,0,,,2013-02-16 15:52,2013-02-16 15:56,admin,admin
500315,6359,124385,13662,0,N,N,N,CP_Drtn,TT_Task,DT_FixedDUR2,TK_NotStart,DUKHCONP1BZ2AREL3670,External stone cladding works,8170,608,0,160,0,936,936,160,0,0,0,,,,2014-06-05 08:00,2014-06-28 17:00,,2014-03-09 08:00,2014-03-31 17:00,2014-03-09 08:00,2014-03-31 17:00,2014-03-09 08:00,2014-03-31 17:00,2014-06-05 08:00,2014-06-28 17:00,,PT_Normal,,,,,dNGlV3TrRdSSJj/IeJ9gyg,,,,N,0,0,,,2013-02-16 15:52,2013-02-16 15:56,admin,admin
500316,6359,124385,13662,0,N,N,N,CP_Drtn,TT_Task,DT_FixedDUR2,TK_NotStart,DUKHCONP1BZ2AREL3675,GRC works,8178,608,0,160,0,550,550,160,0,0,0,,,,2014-06-11 08:00,2014-07-03 17:00,,2014-03-15 08:00,2014-04-06 17:00,2014-03-15 08:00,2014-04-06 17:00,2014-03-15 08:00,2014-04-06 17:00,2014-06-11 08:00,2014-07-03 17:00,,PT_Normal,,,,,BbsU1diOSXqcLeYqFtlePw,,,,N,0,0,,,2013-02-16 15:52,2013-02-16 15:56,admin,admin
500317,6359,124385,13662,0,N,N,N,CP_Drtn,TT_Task,DT_FixedDUR2,TK_NotStart,DUKHCONP1BZ2AREL3680,External Painting,8178,608,40,160,0,4224,4224,160,0,0,0,,,,2014-06-23 08:00,2014-07-15 17:00,,2014-03-26 08:00,2014-04-17 17:00,2014-03-26 08:00,2014-04-17 17:00,2014-03-26 08:00,2014-04-17 17:00,2014-06-23 08:00,2014-07-15 17:00,,PT_Normal,,,,,86PXAQ23QtaZMFgVh+D38g,,,,N,0,0,,,2013-02-16 15:52,2013-02-16 15:56,admin,admin
500318,6359,124386,13662,0,N,N,N,CP_Drtn,TT_Task,DT_FixedDUR2,TK_NotStart,DUKHCONP1BZ2ARRF3630,Leveling Screed for Waterproofing,8164,624,0,200,0,711.5,711.5,200,0,0,0,,,,2014-05-06 08:00,2014-06-03 17:00,,2014-02-03 08:00,2014-03-04 17:00,2014-02-03 08:00,2014-03-04 17:00,2014-02-03 08:00,2014-03-04 17:00,2014-05-06 08:00,2014-06-03 17:00,,PT_Normal,,,,,DfTkKs84TmGXhK4iKOHvzg,,,,N,0,0,,,2013-02-16 15:52,2013-02-16 15:56,admin,admin
500319,6359,124386,13662,0,N,N,N,CP_Drtn,TT_Task,DT_FixedDUR2,TK_NotStart,DUKHCONP1BZ2ARRF3635,Laying of Waterproofing Membrane,8178,624,0,200,0,986.25,986.25,200,0,0,0,,,,2014-05-10 08:00,2014-06-07 17:00,,2014-02-06 08:00,2014-03-08 17:00,2014-02-06 08:00,2014-03-08 17:00,2014-02-06 08:00,2014-03-08 17:00,2014-05-10 08:00,2014-06-07 17:00,,PT_Normal,,,,,z0uzmhh0SdSdXLYejfgIZQ,,,,N,0,0,,,2013-02-16 15:52,2013-02-16 15:56,admin,admin
500320,6359,124386,13662,0,N,N,N,CP_Drtn,TT_Task,DT_FixedDUR2,TK_NotStart,DUKHCONP1BZ2ARRF3640,Installation of Insulation & Protection,8178,624,0,200,0,1250.25,1250.25,200,0,0,0,,,,2014-05-14 08:00,2014-06-11 17:00,,2014-02-12 08:00,2014-03-12 17:00,2014-02-12 08:00,2014-03-12 17:00,2014-02-12 08:00,2014-03-12 17:00,2014-05-14 08:00,2014-06-11 17:00,,PT_Normal,,,,,KKKG2b4mSVm/lVYVtqOBBQ,,,,N,0,0,,,2013-02-16 15:52,2013-02-16 15:56,admin,admin
500321,6359,124386,13662,0,N,N,N,CP_Drtn,TT_Task,DT_FixedDUR2,TK_NotStart,DUKHCONP1BZ2ARRF3645,Lime Stone Chips & Paving slab Installation,8170,624,0,200,0,626,626,200,0,0,0,,,,2014-05-19 08:00,2014-06-16 17:00,,2014-02-17 08:00,2014-03-17 17:00,2014-02-17 08:00,2014-03-17 17:00,2014-02-17 08:00,2014-03-17 17:00,2014-05-19 08:00,2014-06-16 17:00,,PT_Normal,,,,,GzgQmBdOQ/KX3h7bfszs0Q,,,,N,0,0,,,2013-02-16 15:52,2013-02-16 15:56,admin,admin
500322,6359,124386,13662,0,N,N,N,CP_Drtn,TT_Task,DT_FixedDUR2,TK_NotStart,DUKHCONP1BZ2ARRF3655,Installation of Pumps Protection cabinets,8178,624,0,160,0,616,616,160,0,0,0,,,,2014-06-11 08:00,2014-07-03 17:00,,2014-03-12 08:00,2014-04-03 17:00,2014-03-12 08:00,2014-04-03 17:00,2014-03-12 08:00,2014-04-03 17:00,2014-06-11 08:00,2014-07-03 17:00,,PT_Normal,,,,,sF3KtWfHSdefqR7c/e6RUg,,,,N,0,0,,,2013-02-16 15:52,2013-02-16 15:56,admin,admin
500323,6359,124386,13662,0,N,N,N,CP_Drtn,TT_Task,DT_FixedDUR2,TK_NotStart,DUKHCONP1BZ2ARRF3650,Install. of Gal. Frame & Aluminum Slat Screen,8178,624,0,200,0,859.25,859.25,200,0,0,0,,,,2014-05-27 08:00,2014-06-24 17:00,,2014-02-25 08:00,2014-03-25 17:00,2014-02-25 08:00,2014-03-25 17:00,2014-02-25 08:00,2014-03-25 17:00,2014-05-27 08:00,2014-06-24 17:00,,PT_Normal,,,,,Lyp7fURxTH+2fZq0jMTwMA,,,,N,0,0,,,2013-02-16 15:52,2013-02-16 15:56,admin,admin
500324,6359,124386,13662,0,N,N,N,CP_Drtn,TT_Task,DT_FixedDUR2,TK_NotStart,DUKHCONP1BZ2ARRF3660,Installation of Access Ladder,8178,648,624,120,0,352,352,120,0,0,0,,,,2014-06-29 08:00,2014-07-15 17:00,,2014-03-26 08:00,2014-04-12 17:00,2014-03-26 08:00,2014-04-12 17:00,2014-03-26 08:00,2014-04-12 17:00,2014-06-29 08:00,2014-07-15 17:00,,PT_Normal,,,,,yd301RMSRBykLcTcVo7k9A,,,,N,0,0,,,2013-02-16 15:52,2013-02-16 15:56,admin,admin
500325,6359,124388,13662,0,N,N,N,CP_Drtn,TT_Task,DT_FixedDUR2,TK_NotStart,DUKHCONP1BZ2ARGF3075,Carpentry & Joinery Works,8178,464,0,160,0,528,528,160,0,0,0,,,,2014-05-26 08:00,2014-06-17 17:00,,2014-03-19 08:00,2014-04-10 17:00,2014-03-19 08:00,2014-04-10 17:00,2014-03-19 08:00,2014-04-10 17:00,2014-05-26 08:00,2014-06-17 17:00,,PT_Normal,,,,,6COMGC9QTY+CaDzXA1M3qg,,,,N,0,0,,,2013-02-16 15:52,2013-02-16 15:56,admin,admin
500326,6359,124388,13662,0,N,N,N,CP_Drtn,TT_Task,DT_FixedDUR2,TK_NotStart,DUKHCONP1BZ2ARGF3090,Installation of Granite Counter Top,8171,464,0,120,0,242,242,120,0,0,0,,,,2014-06-08 08:00,2014-06-24 17:00,,2014-04-01 08:00,2014-04-17 17:00,2014-04-01 08:00,2014-04-17 17:00,2014-04-01 08:00,2014-04-17 17:00,2014-06-08 08:00,2014-06-24 17:00,,PT_Normal,,,,,WAMoYK+HREWsuSuAyQL4UQ,,,,N,0,0,,,2013-02-16 15:52,2013-02-16 15:56,admin,admin
500327,6359,124388,13662,0,N,N,N,CP_Drtn,TT_Task,DT_FixedDUR2,TK_NotStart,DUKHCONP1BZ2ARGF3085,S.S.Balustrade,8178,504,40,160,0,175,175,160,0,0,0,,,,2014-06-09 08:00,2014-07-01 17:00,,2014-03-27 08:00,2014-04-19 17:00,2014-03-27 08:00,2014-04-19 17:00,2014-03-27 08:00,2014-04-19 17:00,2014-06-09 08:00,2014-07-01 17:00,,PT_Normal,,,,,Zeh3yLVGQ32Uqz68G72/vg,,,,N,0,0,,,2013-02-16 15:52,2013-02-16 15:56,admin,admin
500328,6359,124388,13662,0,N,N,N,CP_Drtn,TT_Task,DT_FixedDUR2,TK_NotStart,DUKHCONP1BZ2ARGF3095,Final Painting,8178,464,8,200,0,5936.25,5936.25,200,0,0,0,,,,2014-06-17 08:00,2014-07-15 17:00,,2014-04-10 08:00,2014-05-08 17:00,2014-04-10 08:00,2014-05-08 17:00,2014-04-10 08:00,2014-05-08 17:00,2014-06-17 08:00,2014-07-15 17:00,,PT_Normal,,,,,JpiYGHr+TBmT3aHKxs5++g,,,,N,0,0,,,2013-02-16 15:52,2013-02-16 15:56,admin,admin
500329,6359,124388,13662,0,N,N,N,CP_Drtn,TT_Task,DT_FixedDUR2,TK_NotStart,DUKHCONP1BZ2ARGF3070,Aluminum doors,8178,464,0,120,0,88,88,120,0,0,0,,,,2014-05-20 08:00,2014-06-05 17:00,,2014-03-13 08:00,2014-03-30 17:00,2014-03-13 08:00,2014-03-30 17:00,2014-03-13 08:00,2014-03-30 17:00,2014-05-20 08:00,2014-06-05 17:00,,PT_Normal,,,,,hYkJvpfdQJee+gWehJyNOQ,,,,N,0,0,,,2013-02-16 15:52,2013-02-16 15:56,admin,admin
500330,6359,124388,13662,0,N,N,N,CP_Drtn,TT_Task,DT_FixedDUR2,TK_NotStart,DUKHCONP1BZ2ARGF3000,Block work,8168,400,0,200,0,9262.5,9262.5,200,0,0,0,,,,2014-01-23 08:00,2014-02-22 17:00,,2013-11-25 08:00,2013-12-24 17:00,2013-11-25 08:00,2013-12-24 17:00,2013-11-25 08:00,2013-12-24 17:00,2014-01-23 08:00,2014-02-22 17:00,,PT_Normal,,,,,3C8il6vZSmCHzBQDCTKm+A,,,,N,0,0,,,2013-02-16 15:52,2013-02-16 15:56,admin,admin
500331,6359,124388,13662,0,N,N,N,CP_Drtn,TT_Task,DT_FixedDUR2,TK_NotStart,DUKHCONP1BZ2ARGF3005,Plastering work,8169,400,0,200,0,11350,11350,200,0,0,0,,,,2014-02-16 08:00,2014-03-16 17:00,,2013-12-17 08:00,2014-01-15 17:00,2013-12-17 08:00,2014-01-15 17:00,2013-12-17 08:00,2014-01-15 17:00,2014-02-16 08:00,2014-03-16 17:00,,PT_Normal,,,,,riwYtON0QPOAbpiDdWKS6w,,,,N,0,0,,,2013-02-16 15:52,2013-02-16 15:56,admin,admin
500332,6359,124388,13662,0,N,N,N,CP_Drtn,TT_Task,DT_FixedDUR2,TK_NotStart,DUKHCONP1BZ2ARGF3010,Flooring screed,8164,464,64,168,0,2171.5,2171.5,168,0,0,0,,,,2014-03-05 08:00,2014-03-29 17:00,,2013-12-26 08:00,2014-01-19 17:00,2013-12-26 08:00,2014-01-19 17:00,2013-12-26 08:00,2014-01-19 17:00,2014-03-05 08:00,2014-03-29 17:00,,PT_Normal,,,,,EuEScuY1Q4S76rb9yu7aZw,,,,N,0,0,,,2013-02-16 15:52,2013-02-16 15:56,admin,admin
500333,6359,124388,13662,0,N,N,N,CP_Drtn,TT_Task,DT_FixedDUR2,TK_NotStart,DUKHCONP1BZ2ARGF3015,Wet area waterproofing & Protection Screed,8178,400,0,120,0,423.5,423.5,120,0,0,0,,,,2014-03-05 08:00,2014-03-22 17:00,,2014-01-05 08:00,2014-01-21 17:00,2014-01-05 08:00,2014-01-21 17:00,2014-01-05 08:00,2014-01-21 17:00,2014-03-05 08:00,2014-03-22 17:00,,PT_Normal,,,,,jc4pez+6RTWsiwCMkZd8JQ,,,,N,0,0,,,2013-02-16 15:52,2013-02-16 15:56,admin,admin
500334,6359,124388,13662,0,N,N,N,CP_Drtn,TT_Task,DT_FixedDUR2,TK_NotStart,DUKHCONP1BZ2ARGF3030,Paint First coat,8178,512,8,200,0,5936.25,5936.25,200,0,0,0,,,,2014-03-20 08:00,2014-04-17 17:00,,2014-01-04 08:00,2014-02-01 17:00,2014-01-04 08:00,2014-02-01 17:00,2014-01-04 08:00,2014-02-01 17:00,2014-03-20 08:00,2014-04-17 17:00,,PT_Normal,,,,,caRKOwozQ1CiUZX2w+hw0A,,,,N,0,0,,,2013-02-16 15:52,2013-02-16 15:56,admin,admin
500335,6359,124388,13662,0,N,N,N,CP_Drtn,TT_Task,DT_FixedDUR2,TK_NotStart,DUKHCONP1BZ2ARGF3020,Ceramic Wall Tiling,8170,400,0,200,0,3534.75,3534.75,200,0,0,0,,,,2014-03-11 08:00,2014-04-08 17:00,,2014-01-11 08:00,2014-02-08 17:00,2014-01-11 08:00,2014-02-08 17:00,2014-01-11 08:00,2014-02-08 17:00,2014-03-11 08:00,2014-04-08 17:00,,PT_Normal,,,,,JUt2q+nhRZuQ5JR0WVRWiQ,,,,N,0,0,,,2013-02-16 15:52,2013-02-16 15:56,admin,admin
500336,6359,124388,13662,0,N,N,N,CP_Drtn,TT_Task,DT_FixedDUR2,TK_NotStart,DUKHCONP1BZ2ARGF3025,Porcelain Tile flooring,8170,400,0,200,0,1918.75,1918.75,200,0,0,0,,,,2014-03-17 08:00,2014-04-14 17:00,,2014-01-16 08:00,2014-02-15 17:00,2014-01-16 08:00,2014-02-15 17:00,2014-01-16 08:00,2014-02-15 17:00,2014-03-17 08:00,2014-04-14 17:00,,PT_Normal,,,,,DMgERKChQn6VZsMYt31Flw,,,,N,0,0,,,2013-02-16 15:52,2013-02-16 15:56,admin,admin
500337,6359,124388,13662,0,N,N,N,CP_Drtn,TT_Task,DT_FixedDUR2,TK_NotStart,DUKHCONP1BZ2ARGF3040,Cobble Tile flooring,8170,464,0,120,0,700,700,120,0,0,0,,,,2014-04-22 08:00,2014-05-08 17:00,,2014-02-13 08:00,2014-03-02 17:00,2014-02-13 08:00,2014-03-02 17:00,2014-02-13 08:00,2014-03-02 17:00,2014-04-22 08:00,2014-05-08 17:00,,PT_Normal,,,,,P1Tr/6yQQheXOdFwlTtqVw,,,,N,0,0,,,2013-02-16 15:52,2013-02-16 15:56,admin,admin
500338,6359,124388,13662,0,N,N,N,CP_Drtn,TT_Task,DT_FixedDUR2,TK_NotStart,DUKHCONP1BZ2ARGF3035,Slate Tile Flooring & Skirting,8170,480,16,120,0,931.25,931.25,120,0,0,0,,,,2014-04-17 08:00,2014-05-04 17:00,,2014-02-05 08:00,2014-02-23 17:00,2014-02-05 08:00,2014-02-23 17:00,2014-02-05 08:00,2014-02-23 17:00,2014-04-17 08:00,2014-05-04 17:00,,PT_Normal,,,,,Aa312uBOSlqLrDwPNFBd5w,,,,N,0,0,,,2013-02-16 15:52,2013-02-16 15:56,admin,admin
500339,6359,124388,13662,0,N,N,N,CP_Drtn,TT_Task,DT_FixedDUR2,TK_NotStart,DUKHCONP1BZ2ARGF3050,Granite - Stair case flooring & Skirting,8171,464,0,160,0,850,850,160,0,0,0,,,,2014-04-30 08:00,2014-05-22 17:00,,2014-02-22 08:00,2014-03-16 17:00,2014-02-22 08:00,2014-03-16 17:00,2014-02-22 08:00,2014-03-16 17:00,2014-04-30 08:00,2014-05-22 17:00,,PT_Normal,,,,,MTe8BGxMQzyFj4+v+8tuCQ,,,,N,0,0,,,2013-02-16 15:52,2013-02-16 15:56,admin,admin
500340,6359,124388,13662,0,N,N,N,CP_Drtn,TT_Task,DT_FixedDUR2,TK_NotStart,DUKHCONP1BZ2ARGF3045,Fixing of Suspension systems,8178,400,0,160,0,1320.5,1320.5,160,0,0,0,,,,2014-04-03 08:00,2014-04-26 17:00,,2014-02-03 08:00,2014-02-26 17:00,2014-02-03 08:00,2014-02-26 17:00,2014-02-03 08:00,2014-02-26 17:00,2014-04-03 08:00,2014-04-26 17:00,,PT_Normal,,,,,JrRiwpjSSE6NB2tT9WkmwA,,,,N,0,0,,,2013-02-16 15:52,2013-02-16 15:56,admin,admin
500341,6359,124388,13662,0,N,N,N,CP_Drtn,TT_Task,DT_FixedDUR2,TK_NotStart,DUKHCONP1BZ2ARGF3055,Aluminum tile false ceiling,8178,424,24,200,0,130,130,200,0,0,0,,,,2014-04-15 08:00,2014-05-13 17:00,,2014-02-12 08:00,2014-03-12 17:00,2014-02-12 08:00,2014-03-12 17:00,2014-02-12 08:00,2014-03-12 17:00,2014-04-15 08:00,2014-05-13 17:00,,PT_Normal,,,,,5kG7XdUMSquB4lrbxQ7atg,,,,N,0,0,,,2013-02-16 15:52,2013-02-16 15:56,admin,admin
500342,6359,124388,13662,0,N,N,N,CP_Drtn,TT_Task,DT_FixedDUR2,TK_NotStart,DUKHCONP1BZ2ARGF3060,Gypsum board false ceiling,8178,400,0,200,0,1216.3,1216.3,200,0,0,0,,,,2014-04-15 08:00,2014-05-13 17:00,,2014-02-16 08:00,2014-03-16 17:00,2014-02-16 08:00,2014-03-16 17:00,2014-02-16 08:00,2014-03-16 17:00,2014-04-15 08:00,2014-05-13 17:00,,PT_Normal,,,,,2UFDUysySzekibEcpP2cPw,,,,N,0,0,,,2013-02-16 15:52,2013-02-23 09:03,admin,admin
500343,6359,124388,13662,0,N,N,N,CP_Drtn,TT_Task,DT_FixedDUR2,TK_NotStart,DUKHCONP1BZ2ARGF3065,Wooden door & PVC Door,8178,464,0,120,0,660,660,120,0,0,0,,,,2014-05-14 08:00,2014-05-31 17:00,,2014-03-08 08:00,2014-03-24 17:00,2014-03-08 08:00,2014-03-24 17:00,2014-03-08 08:00,2014-03-24 17:00,2014-05-14 08:00,2014-05-31 17:00,,PT_Normal,,,,,twS5nov0QKeBF4556M+13Q,,,,N,0,0,,,2013-02-16 15:52,2013-02-16 15:56,admin,admin
500344,6359,124388,13662,0,N,N,N,CP_Drtn,TT_Task,DT_FixedDUR2,TK_NotStart,DUKHCONP1BZ2ARGF3080,Aluminum windows,8178,544,48,160,0,257.5,257.5,160,0,0,0,,,,2014-06-08 08:00,2014-06-30 17:00,,2014-03-20 08:00,2014-04-12 17:00,2014-03-20 08:00,2014-04-12 17:00,2014-03-20 08:00,2014-04-12 17:00,2014-06-08 08:00,2014-06-30 17:00,,PT_Normal,,,,,rcrPDOtVTPW1dX6qRwiUyg,,,,N,0,0,,,2013-02-16 15:52,2013-02-16 15:56,admin,admin
500345,6359,124389,13662,0,N,N,N,CP_Drtn,TT_Task,DT_FixedDUR2,TK_NotStart,DUKHCONP1BZ2ARRF3600,Block work,8168,640,0,160,0,697.25,697.25,160,0,0,0,,,,2014-05-01 08:00,2014-05-24 17:00,,2014-01-27 08:00,2014-02-19 17:00,2014-01-27 08:00,2014-02-19 17:00,2014-01-27 08:00,2014-02-19 17:00,2014-05-01 08:00,2014-05-24 17:00,,PT_Normal,,,,,s7KmfUlIR+y4y1Yjgu7ktQ,,,,N,0,0,,,2013-02-16 15:52,2013-02-16 15:56,admin,admin
500346,6359,124389,13662,0,N,N,N,CP_Drtn,TT_Task,DT_FixedDUR2,TK_NotStart,DUKHCONP1BZ2ARRF3605,Plastering work,8169,640,0,160,0,3833,3833,160,0,0,0,,,,2014-05-10 08:00,2014-06-01 17:00,,2014-02-04 08:00,2014-02-27 17:00,2014-02-04 08:00,2014-02-27 17:00,2014-02-04 08:00,2014-02-27 17:00,2014-05-10 08:00,2014-06-01 17:00,,PT_Normal,,,,,czL5PPjTStCwHPrrtCPI7A,,,,N,0,0,,,2013-02-16 15:52,2013-02-16 15:56,admin,admin
500347,6359,124389,13662,0,N,N,N,CP_Drtn,TT_Task,DT_FixedDUR2,TK_NotStart,DUKHCONP1BZ2ARRF3610,Flooring screed,8164,648,0,120,0,154,154,120,0,0,0,,,,2014-05-29 08:00,2014-06-15 17:00,,2014-02-24 08:00,2014-03-12 17:00,2014-02-24 08:00,2014-03-12 17:00,2014-02-24 08:00,2014-03-12 17:00,2014-05-29 08:00,2014-06-15 17:00,,PT_Normal,,,,,qskJ/r+8RQ+Cy8zq3CWbyA,,,,N,0,0,,,2013-02-16 15:52,2013-02-16 15:56,admin,admin
500348,6359,124389,13662,0,N,N,N,CP_Drtn,TT_Task,DT_FixedDUR2,TK_NotStart,DUKHCONP1BZ2ARRF3695,Painting -Storage area,8178,648,0,160,0,1640,1640,160,0,0,0,,,,2014-06-11 08:00,2014-07-03 17:00,,2014-03-09 08:00,2014-03-31 17:00,2014-03-09 08:00,2014-03-31 17:00,2014-03-09 08:00,2014-03-31 17:00,2014-06-11 08:00,2014-07-03 17:00,,PT_Normal,,,,,cGqH764hRyaQBtG7SgARkg,,,,N,0,0,,,2013-02-16 15:52,2013-02-16 15:56,admin,admin
500349,6359,124389,13662,0,N,N,N,CP_Drtn,TT_Task,DT_FixedDUR2,TK_NotStart,DUKHCONP1BZ2ARRF3620,Epoxy Painting -Storage area,8178,648,624,120,0,48.5,48.5,120,0,0,0,,,,2014-06-29 08:00,2014-07-15 17:00,,2014-03-26 08:00,2014-04-12 17:00,2014-03-26 08:00,2014-04-12 17:00,2014-03-26 08:00,2014-04-12 17:00,2014-06-29 08:00,2014-07-15 17:00,,PT_Normal,,,,,t8qxa4F9TI2Kb7vN4Iz1AA,,,,N,0,0,,,2013-02-16 15:52,2013-02-16 15:56,admin,admin
500350,6359,124390,13662,0,N,N,N,CP_Drtn,TT_Task,DT_FixedDUR2,TK_NotStart,DUKHCONP1BZ2ARFF3300,Block work,8168,24,0,200,0,7341,7341,200,0,0,0,,,,2014-01-11 08:00,2014-02-08 17:00,,2014-01-07 08:00,2014-02-04 17:00,2014-01-07 08:00,2014-02-04 17:00,2014-01-07 08:00,2014-02-04 17:00,2014-01-11 08:00,2014-02-08 17:00,,PT_Normal,,,,,pbMElWq1QQiGa430PhvvTQ,,,,N,0,0,,,2013-02-16 15:52,2013-02-16 15:56,admin,admin
500351,6359,124390,13662,0,N,N,N,CP_Drtn,TT_Task,DT_FixedDUR2,TK_NotStart,DUKHCONP1BZ2ARFF3305,Plastering work,8169,24,0,200,0,7518.75,7518.75,200,0,0,0,,,,2014-02-06 08:00,2014-03-08 17:00,,2014-02-03 08:00,2014-03-04 17:00,2014-02-03 08:00,2014-03-04 17:00,2014-02-03 08:00,2014-03-04 17:00,2014-02-06 08:00,2014-03-08 17:00,,PT_Normal,,,,,qqU+o9g5QDCVrHCSPP1IWg,,,,N,0,0,,,2013-02-16 15:52,2013-02-16 15:56,admin,admin
500352,6359,124390,13662,0,N,N,N,CP_Drtn,TT_Task,DT_FixedDUR2,TK_NotStart,DUKHCONP1BZ2ARFF3310,Flooring screed,8164,160,136,168,0,1082.5,1082.5,168,0,0,0,,,,2014-03-08 08:00,2014-03-31 17:00,,2014-02-12 08:00,2014-03-08 17:00,2014-02-12 08:00,2014-03-08 17:00,2014-02-12 08:00,2014-03-08 17:00,2014-03-08 08:00,2014-03-31 17:00,,PT_Normal,,,,,33rUDvj5Qgqgxb/8D+WDEg,,,,N,0,0,,,2013-02-16 15:52,2013-02-16 15:56,admin,admin
500353,6359,124390,13662,0,N,N,N,CP_Drtn,TT_Task,DT_FixedDUR2,TK_NotStart,DUKHCONP1BZ2ARFF3315,Wet area waterproofing,8178,24,0,120,0,1374,1374,120,0,0,0,,,,2014-03-01 08:00,2014-03-17 17:00,,2014-02-25 08:00,2014-03-13 17:00,2014-02-25 08:00,2014-03-13 17:00,2014-02-25 08:00,2014-03-13 17:00,2014-03-01 08:00,2014-03-17 17:00,,PT_Normal,,,,,Gnec1da6SVOt3zwG6LA/SQ,,,,N,0,0,,,2013-02-16 15:52,2013-02-16 15:56,admin,admin
500354,6359,124390,13662,0,N,N,N,CP_Drtn,TT_Task,DT_FixedDUR2,TK_NotStart,DUKHCONP1BZ2ARFF3330,Paint First coat,8178,232,208,200,0,5256.25,5256.25,200,0,0,0,,,,2014-03-26 08:00,2014-04-23 17:00,,2014-02-20 08:00,2014-03-20 17:00,2014-02-20 08:00,2014-03-20 17:00,2014-02-20 08:00,2014-03-20 17:00,2014-03-26 08:00,2014-04-23 17:00,,PT_Normal,,,,,VtF8GgBCToa5Ji0uhl6jDw,,,,N,0,0,,,2013-02-16 15:52,2013-02-16 15:56,admin,admin
500355,6359,124390,13662,0,N,N,N,CP_Drtn,TT_Task,DT_FixedDUR2,TK_NotStart,DUKHCONP1BZ2ARFF3320,Ceramic Wall Tiling,8170,24,0,200,0,1516,1516,200,0,0,0,,,,2014-03-10 08:00,2014-04-07 17:00,,2014-03-06 08:00,2014-04-03 17:00,2014-03-06 08:00,2014-04-03 17:00,2014-03-06 08:00,2014-04-03 17:00,2014-03-10 08:00,2014-04-07 17:00,,PT_Normal,,,,,2tlRdRLWTT+7RA73ljRbxw,,,,N,0,0,,,2013-02-16 15:52,2013-02-16 15:56,admin,admin
500356,6359,124390,13662,0,N,N,N,CP_Drtn,TT_Task,DT_FixedDUR2,TK_NotStart,DUKHCONP1BZ2ARFF3325,Porcelain Tile flooring,8170,24,0,200,0,1341,1341,200,0,0,0,,,,2014-03-19 08:00,2014-04-16 17:00,,2014-03-16 08:00,2014-04-13 17:00,2014-03-16 08:00,2014-04-13 17:00,2014-03-16 08:00,2014-04-13 17:00,2014-03-19 08:00,2014-04-16 17:00,,PT_Normal,,,,,JI6OHA3RQAmz/qs1Den2gA,,,,N,0,0,,,2013-02-16 15:52,2013-02-16 15:56,admin,admin
500357,6359,124390,13662,0,N,N,N,CP_Drtn,TT_Task,DT_FixedDUR2,TK_NotStart,DUKHCONP1BZ2ARFF3335,Slate Tile Flooring & Skirting,8170,176,152,120,0,931.25,931.25,120,0,0,0,,,,2014-04-28 08:00,2014-05-14 17:00,,2014-04-02 08:00,2014-04-19 17:00,2014-04-02 08:00,2014-04-19 17:00,2014-04-02 08:00,2014-04-19 17:00,2014-04-28 08:00,2014-05-14 17:00,,PT_Normal,,,,,xJzJfdu4TcqOjDSypVWLrQ,,,,N,0,0,,,2013-02-16 15:52,2013-02-16 15:56,admin,admin
500358,6359,124390,13662,0,N,N,N,CP_Drtn,TT_Task,DT_FixedDUR2,TK_NotStart,DUKHCONP1BZ2ARFF3350,Granite - Stair case flooring & Skirting,8171,112,88,160,0,850,850,160,0,0,0,,,,2014-04-22 08:00,2014-05-14 17:00,,2014-04-06 08:00,2014-04-28 17:00,2014-04-06 08:00,2014-04-28 17:00,2014-04-06 08:00,2014-04-28 17:00,2014-04-22 08:00,2014-05-14 17:00,,PT_Normal,,,,,niuouaAIRpCtmhQO/YGvDw,,,,N,0,0,,,2013-02-16 15:52,2013-02-16 15:56,admin,admin
500359,6359,124390,13662,0,N,N,N,CP_Drtn,TT_Task,DT_FixedDUR2,TK_NotStart,DUKHCONP1BZ2ARFF3345,Fixing of Suspension systems,8178,24,0,160,0,1191,1191,160,0,0,0,,,,2014-04-09 08:00,2014-05-01 17:00,,2014-04-06 08:00,2014-04-28 17:00,2014-04-06 08:00,2014-04-28 17:00,2014-04-06 08:00,2014-04-28 17:00,2014-04-09 08:00,2014-05-01 17:00,,PT_Normal,,,,,989iypIsRGOVlIgC7E6vQg,,,,N,0,0,,,2013-02-16 15:52,2013-02-16 15:56,admin,admin
500360,6359,124390,13662,0,N,N,N,CP_Drtn,TT_Task,DT_FixedDUR2,TK_NotStart,DUKHCONP1BZ2ARFF3360,Gypsum board false ceiling,8178,24,0,200,0,1191,1191,200,0,0,0,,,,2014-04-21 08:00,2014-05-19 17:00,,2014-04-17 08:00,2014-05-15 17:00,2014-04-17 08:00,2014-05-15 17:00,2014-04-17 08:00,2014-05-15 17:00,2014-04-21 08:00,2014-05-19 17:00,,PT_Normal,,,,,EaFT5ou/QTSdRWsTxKTaaA,,,,N,0,0,,,2013-02-16 15:52,2013-02-16 15:56,admin,admin
500361,6359,124390,13662,0,N,N,N,CP_Drtn,TT_Task,DT_FixedDUR2,TK_NotStart,DUKHCONP1BZ2ARFF3365,Wooden door,8178,24,0,120,0,176,176,120,0,0,0,,,,2014-05-06 08:00,2014-05-22 17:00,,2014-05-03 08:00,2014-05-19 17:00,2014-05-03 08:00,2014-05-19 17:00,2014-05-03 08:00,2014-05-19 17:00,2014-05-06 08:00,2014-05-22 17:00,,PT_Normal,,,,,AgboszbMR5mHqw0h9n8cEQ,,,,N,0,0,,,2013-02-16 15:52,2013-02-16 15:56,admin,admin
500362,6359,124390,13662,0,N,N,N,CP_Drtn,TT_Task,DT_FixedDUR2,TK_NotStart,DUKHCONP1BZ2ARFF3370,Aluminum Door,8178,24,0,160,0,132,132,160,0,0,0,,,,2014-05-14 08:00,2014-06-05 17:00,,2014-05-11 08:00,2014-06-02 17:00,2014-05-11 08:00,2014-06-02 17:00,2014-05-11 08:00,2014-06-02 17:00,2014-05-14 08:00,2014-06-05 17:00,,PT_Normal,,,,,DXo89LDaSIGXbjzWwZXwtg,,,,N,0,0,,,2013-02-16 15:52,2013-02-16 15:56,admin,admin
500363,6359,124390,13662,0,N,N,N,CP_Drtn,TT_Task,DT_FixedDUR2,TK_NotStart,DUKHCONP1BZ2ARFF3380,Aluminum windows,8178,128,104,160,0,272.25,272.25,160,0,0,0,,,,2014-06-05 08:00,2014-06-28 17:00,,2014-05-18 08:00,2014-06-09 17:00,2014-05-18 08:00,2014-06-09 17:00,2014-05-18 08:00,2014-06-09 17:00,2014-06-05 08:00,2014-06-28 17:00,,PT_Normal,,,,,IIqfkr6QTVK9dEGszVXHBA,,,,N,0,0,,,2013-02-16 15:52,2013-02-16 15:56,admin,admin
500364,6359,124390,13662,0,N,N,N,CP_Drtn,TT_Task,DT_FixedDUR2,TK_NotStart,DUKHCONP1BZ2ARFF3375,Carpentry & Joinery Works,8178,24,0,200,0,704,704,200,0,0,0,,,,2014-05-22 08:00,2014-06-19 17:00,,2014-05-19 08:00,2014-06-16 17:00,2014-05-19 08:00,2014-06-16 17:00,2014-05-19 08:00,2014-06-16 17:00,2014-05-22 08:00,2014-06-19 17:00,,PT_Normal,,,,,MJsmfN2tQ4W4Pc0jqwDkiQ,,,,N,0,0,,,2013-02-16 15:52,2013-02-16 15:56,admin,admin
500365,6359,124390,13662,0,N,N,N,CP_Drtn,TT_Task,DT_FixedDUR2,TK_NotStart,DUKHCONP1BZ2ARFF3390,Installation of Granite Counter Top,8171,40,16,160,0,110,110,160,0,0,0,,,,2014-06-08 08:00,2014-06-30 17:00,,2014-06-02 08:00,2014-06-24 17:00,2014-06-02 08:00,2014-06-24 17:00,2014-06-02 08:00,2014-06-24 17:00,2014-06-08 08:00,2014-06-30 17:00,,PT_Normal,,,,,7rcLzK5uQuqHdQ9DagbVTg,,,,N,0,0,,,2013-02-16 15:52,2013-02-16 15:56,admin,admin
500366,6359,124390,13662,0,N,N,N,CP_Drtn,TT_Task,DT_FixedDUR2,TK_NotStart,DUKHCONP1BZ2ARFF3385,Handrail &  Balustrade,8178,24,0,160,0,175,175,160,0,0,0,,,,2014-06-05 08:00,2014-06-28 17:00,,2014-06-02 08:00,2014-06-24 17:00,2014-06-02 08:00,2014-06-24 17:00,2014-06-02 08:00,2014-06-24 17:00,2014-06-05 08:00,2014-06-28 17:00,,PT_Normal,,,,,IktJ2/UuSt2Ha/lb5A5A3Q,,,,N,0,0,,,2013-02-16 15:52,2013-02-16 15:56,admin,admin
500367,6359,124390,13662,0,N,N,N,CP_Drtn,TT_Task,DT_FixedDUR2,TK_NotStart,DUKHCONP1BZ2ARFF3395,Final Painting,8178,24,0,200,0,5256.25,5256.25,200,0,0,0,,,,2014-06-17 08:00,2014-07-15 17:00,,2014-06-14 08:00,2014-07-12 17:00,2014-06-14 08:00,2014-07-12 17:00,2014-06-14 08:00,2014-07-12 17:00,2014-06-17 08:00,2014-07-15 17:00,,PT_Normal,,,,,+cyP5DWCSR6qs0b5pgqmTQ,,,,N,0,0,,,2013-02-16 15:52,2013-02-16 15:56,admin,admin
500368,6359,124393,13662,0,N,N,N,CP_Drtn,TT_Task,DT_FixedDUR2,TK_NotStart,DUKHCONP1BZ2ELFF4035,Fixing of wall conduits & switch socket boxes,8178,128,0,200,0,2579.2,2579.2,200,0,0,0,,,,2014-02-01 08:00,2014-03-02 17:00,,2014-01-13 08:00,2014-02-10 17:00,2014-01-13 08:00,2014-02-10 17:00,2014-01-13 08:00,2014-02-10 17:00,2014-02-01 08:00,2014-03-02 17:00,,PT_Normal,,,,,ozoIjuD3SCSiogIEsQiIRQ,,,,N,0,0,,,2013-02-16 15:52,2013-02-16 15:56,admin,admin
500369,6359,124393,13662,0,N,N,N,CP_Drtn,TT_Task,DT_FixedDUR2,TK_NotStart,DUKHCONP1BZ2ELFF4040,Cable tray & trunking installation,8178,368,0,160,0,3180.8,3180.8,160,0,0,0,,,,2014-03-20 08:00,2014-04-12 17:00,,2014-01-25 08:00,2014-02-17 17:00,2014-01-25 08:00,2014-02-17 17:00,2014-01-25 08:00,2014-02-17 17:00,2014-03-20 08:00,2014-04-12 17:00,,PT_Normal,,,,,qgRe/a8eQIqAzHOUmxrFHA,,,,N,0,0,,,2013-02-16 15:52,2013-02-16 15:56,admin,admin
500370,6359,124393,13662,0,N,N,N,CP_Drtn,TT_Task,DT_FixedDUR2,TK_NotStart,DUKHCONP1BZ2ELFF4045,Installation of wiring & Main Cabling,8178,368,0,200,0,636.8,636.8,200,0,0,0,,,,2014-03-29 08:00,2014-04-26 17:00,,2014-02-02 08:00,2014-03-03 17:00,2014-02-02 08:00,2014-03-03 17:00,2014-02-02 08:00,2014-03-03 17:00,2014-03-29 08:00,2014-04-26 17:00,,PT_Normal,,,,,wWz/q/GHRbWHwJZQV9SRiQ,,,,N,0,0,,,2013-02-16 15:52,2013-02-23 09:03,admin,admin
500371,6359,124393,13662,0,N,N,N,CP_Drtn,TT_Task,DT_FixedDUR2,TK_NotStart,DUKHCONP1BZ2ELFF4060,"Installation  of DBS,MCCB Accessories.",8178,24,0,160,0,454.4,454.4,160,0,0,0,,,,2014-05-06 08:00,2014-05-28 17:00,,2014-05-03 08:00,2014-05-25 17:00,2014-05-03 08:00,2014-05-25 17:00,2014-05-03 08:00,2014-05-25 17:00,2014-05-06 08:00,2014-05-28 17:00,,PT_Normal,,,,,XQ+DSftAS6aQKgU0yuzDZQ,,,,N,0,0,,,2013-02-16 15:52,2013-02-16 15:56,admin,admin
500372,6359,124393,13662,0,N,N,N,CP_Drtn,TT_Task,DT_FixedDUR2,TK_NotStart,DUKHCONP1BZ2ELFF4065,Installation of Lighting fixtures & Accessories,8178,24,0,200,0,3302.4,3302.4,200,0,0,0,,,,2014-05-19 08:00,2014-06-16 17:00,,2014-05-15 08:00,2014-06-12 17:00,2014-05-15 08:00,2014-06-12 17:00,2014-05-15 08:00,2014-06-12 17:00,2014-05-19 08:00,2014-06-16 17:00,,PT_Normal,,,,,msIjlEimRjKB9SI+HzWtAg,,,,N,0,0,,,2013-02-16 15:52,2013-02-16 15:56,admin,admin
500373,6359,124393,13662,0,N,N,N,CP_Drtn,TT_Task,DT_FixedDUR2,TK_NotStart,DUKHCONP1BZ2ELFF4055,Install. of CAMS & Fire Fighting Accessories,8178,360,0,200,0,4569.6,4569.6,200,0,0,0,,,,2014-06-17 08:00,2014-07-15 17:00,,2014-04-26 08:00,2014-05-24 17:00,2014-04-26 08:00,2014-05-24 17:00,2014-04-26 08:00,2014-05-24 17:00,2014-06-17 08:00,2014-07-15 17:00,,PT_Normal,,,,,nkQZr5yQQDuOnsB+E0ejUg,,,,N,0,0,,,2013-02-16 15:52,2013-02-16 15:56,admin,admin
500374,6359,124393,13662,0,N,N,N,CP_Drtn,TT_Task,DT_FixedDUR2,TK_NotStart,DUKHCONP1BZ2ELFF4050,Installation of Telephone System,8178,200,176,200,0,1422.4,1422.4,200,0,0,0,,,,2014-05-22 08:00,2014-06-19 17:00,,2014-04-23 08:00,2014-05-21 17:00,2014-04-23 08:00,2014-05-21 17:00,2014-04-23 08:00,2014-05-21 17:00,2014-05-22 08:00,2014-06-19 17:00,,PT_Normal,,,,,eggNDnWrT+ePaSp2cLDb/g,,,,N,0,0,,,2013-02-16 15:52,2013-02-16 15:56,admin,admin
500375,6359,124394,13662,0,N,N,N,CP_Drtn,TT_Task,DT_FixedDUR2,TK_NotStart,DUKHCONP1BZ2ELRF4070,Installation of Isolator,8178,24,0,144,0,825.6,825.6,144,0,0,0,,,,2014-06-08 08:00,2014-06-28 17:00,,2014-06-04 08:00,2014-06-24 17:00,2014-06-04 08:00,2014-06-24 17:00,2014-06-04 08:00,2014-06-24 17:00,2014-06-08 08:00,2014-06-28 17:00,,PT_Normal,,,,,QZEpc7uzQoS2SgkAqpIJBg,,,,N,0,0,,,2013-02-16 15:52,2013-02-16 15:56,admin,admin
500376,6359,124394,13662,0,N,N,N,CP_Drtn,TT_Task,DT_FixedDUR2,TK_NotStart,DUKHCONP1BZ2ELRF4075,Installation of TV Dish Antenna,8178,24,0,184,0,1830.4,1830.4,184,0,0,0,,,,2014-06-19 08:00,2014-07-15 17:00,,2014-06-16 08:00,2014-07-12 17:00,2014-06-16 08:00,2014-07-12 17:00,2014-06-16 08:00,2014-07-12 17:00,2014-06-19 08:00,2014-07-15 17:00,,PT_Normal,,,,,IpO8AF1NSCy/EecxZclwlA,,,,N,0,0,,,2013-02-16 15:52,2013-02-16 15:56,admin,admin
500377,6359,124395,13662,0,N,N,N,CP_Drtn,TT_Task,DT_FixedDUR2,TK_NotStart,DUKHCONP1BZ2ELGF4000,Fixing of wall conduits & switch socket boxes,8178,472,0,200,0,2579.2,2579.2,200,0,0,0,,,,2014-02-09 08:00,2014-03-10 17:00,,2013-12-01 08:00,2013-12-30 17:00,2013-12-01 08:00,2013-12-30 17:00,2013-12-01 08:00,2013-12-30 17:00,2014-02-09 08:00,2014-03-10 17:00,,PT_Normal,,,,,x9GDgInmQnyGPG/pQg3mdA,,,,N,0,0,,,2013-02-16 15:52,2013-02-16 15:56,admin,admin
500378,6359,124395,13662,0,N,N,N,CP_Drtn,TT_Task,DT_FixedDUR2,TK_NotStart,DUKHCONP1BZ2ELGF4005,Cable tray & trunking installation,8178,616,0,160,0,3180.8,3180.8,160,0,0,0,,,,2014-03-15 08:00,2014-04-06 17:00,,2013-12-12 08:00,2014-01-05 17:00,2013-12-12 08:00,2014-01-05 17:00,2013-12-12 08:00,2014-01-05 17:00,2014-03-15 08:00,2014-04-06 17:00,,PT_Normal,,,,,REhagBxIRXurnaSmDupshg,,,,N,0,0,,,2013-02-16 15:52,2013-02-16 15:56,admin,admin
500379,6359,124395,13662,0,N,N,N,CP_Drtn,TT_Task,DT_FixedDUR2,TK_NotStart,DUKHCONP1BZ2ELGF4010,Installation of wiring & Main Cabling,8178,616,216,200,0,636.8,636.8,200,0,0,0,,,,2014-03-23 08:00,2014-04-20 17:00,,2013-12-22 08:00,2014-01-19 17:00,2013-12-22 08:00,2014-01-19 17:00,2013-12-22 08:00,2014-01-19 17:00,2014-03-23 08:00,2014-04-20 17:00,,PT_Normal,,,,,qu+SKHBwSpmByr6XUYmR9A,,,,N,0,0,,,2013-02-16 15:52,2013-02-23 09:03,admin,admin
500380,6359,124395,13662,0,N,N,N,CP_Drtn,TT_Task,DT_FixedDUR2,TK_NotStart,DUKHCONP1BZ2ELGF4020,"Installation  of DBS,MCCB Accessories.",8178,400,0,160,0,454.4,454.4,160,0,0,0,,,,2014-04-29 08:00,2014-05-21 17:00,,2014-03-02 08:00,2014-03-24 17:00,2014-03-02 08:00,2014-03-24 17:00,2014-03-02 08:00,2014-03-24 17:00,2014-04-29 08:00,2014-05-21 17:00,,PT_Normal,,,,,QEqN78iZRkWP65jJQnuEWg,,,,N,0,0,,,2013-02-16 15:52,2013-02-16 15:56,admin,admin
500381,6359,124395,13662,0,N,N,N,CP_Drtn,TT_Task,DT_FixedDUR2,TK_NotStart,DUKHCONP1BZ2ELGF4025,Installation of Lighting fixtures & Accessories,8178,416,8,200,0,3302.4,3302.4,200,0,0,0,,,,2014-05-13 08:00,2014-06-10 17:00,,2014-03-13 08:00,2014-04-10 17:00,2014-03-13 08:00,2014-04-10 17:00,2014-03-13 08:00,2014-04-10 17:00,2014-05-13 08:00,2014-06-10 17:00,,PT_Normal,,,,,Wv5DNA95SrqRFODdnjHdwA,,,,N,0,0,,,2013-02-16 15:52,2013-02-16 15:56,admin,admin
500382,6359,124395,13662,0,N,N,N,CP_Drtn,TT_Task,DT_FixedDUR2,TK_NotStart,DUKHCONP1BZ2ELGF4015,Install. of CAMS & Fire Fighting Accessories,8178,576,8,200,0,4569.6,4569.6,200,0,0,0,,,,2014-05-19 08:00,2014-06-16 17:00,,2014-02-24 08:00,2014-03-24 17:00,2014-02-24 08:00,2014-03-24 17:00,2014-02-24 08:00,2014-03-24 17:00,2014-05-19 08:00,2014-06-16 17:00,,PT_Normal,,,,,gpoNLW5ZTXar/NIMnPpNXA,,,,N,0,0,,,2013-02-16 15:52,2013-02-16 15:56,admin,admin
500383,6359,124395,13662,0,N,N,N,CP_Drtn,TT_Task,DT_FixedDUR2,TK_NotStart,DUKHCONP1BZ2ELGF4030,Installation of Telephone System,8178,400,48,160,0,1422.4,1422.4,160,0,0,0,,,,2014-05-11 08:00,2014-06-02 17:00,,2014-03-13 08:00,2014-04-05 17:00,2014-03-13 08:00,2014-04-05 17:00,2014-03-13 08:00,2014-04-05 17:00,2014-05-11 08:00,2014-06-02 17:00,,PT_Normal,,,,,FJcR+hOjSQaBFpSfFmBU5A,,,,N,0,0,,,2013-02-16 15:52,2013-02-16 15:56,admin,admin
500384,6359,124397,13662,0,N,N,N,CP_Drtn,TT_Task,DT_FixedDUR2,TK_NotStart,DUKHCONP1BZ2ACRF4630,Installation of Refrigerant Pipes,8178,696,0,200,0,795.2,795.2,200,0,0,0,,,,2014-06-11 08:00,2014-07-09 17:00,,2014-03-02 08:00,2014-03-30 17:00,2014-03-02 08:00,2014-03-30 17:00,2014-03-02 08:00,2014-03-30 17:00,2014-06-11 08:00,2014-07-09 17:00,,PT_Normal,,,,,+HfVtm/eQWy5xzdAhWu4UQ,,,,N,0,0,,,2013-02-16 15:52,2013-02-16 15:56,admin,admin
500385,6359,124397,13662,0,N,N,N,CP_Drtn,TT_Task,DT_FixedDUR2,TK_NotStart,DUKHCONP1BZ2ACRF4635,Installation of Condensing Unit,8178,176,0,200,0,1136,1136,200,0,0,0,,,,2014-06-17 08:00,2014-07-15 17:00,,2014-05-22 08:00,2014-06-19 17:00,2014-05-22 08:00,2014-06-19 17:00,2014-05-22 08:00,2014-06-19 17:00,2014-06-17 08:00,2014-07-15 17:00,,PT_Normal,,,,,a5swIpA/T7eo7I1vvHvPLg,,,,N,0,0,,,2013-02-16 15:52,2013-02-16 15:56,admin,admin
500386,6359,124398,13662,0,N,N,N,CP_Drtn,TT_Task,DT_FixedDUR2,TK_NotStart,DUKHCONP1BZ2ACGF4600,Installation AC Pipes,8178,648,48,160,0,1886.4,1886.4,160,0,0,0,,,,2014-04-07 08:00,2014-04-29 17:00,,2014-01-01 08:00,2014-01-23 17:00,2014-01-01 08:00,2014-01-23 17:00,2014-01-01 08:00,2014-01-23 17:00,2014-04-07 08:00,2014-04-29 17:00,,PT_Normal,,,,,VO2cOoy3SOWTkrq0O0dMEA,,,,N,0,0,,,2013-02-16 15:52,2013-02-16 15:56,admin,admin
500387,6359,124398,13662,0,N,N,N,CP_Drtn,TT_Task,DT_FixedDUR2,TK_NotStart,DUKHCONP1BZ2ACGF4605,Fixing of Ventilation Equipments,8178,552,0,200,0,296,296,200,0,0,0,,,,2014-05-15 08:00,2014-06-12 17:00,,2014-02-24 08:00,2014-03-24 17:00,2014-02-24 08:00,2014-03-24 17:00,2014-02-24 08:00,2014-03-24 17:00,2014-05-15 08:00,2014-06-12 17:00,,PT_Normal,,,,,e/lREGRrTlW33XtfRPLcxg,,,,N,0,0,,,2013-02-16 15:52,2013-02-16 15:56,admin,admin
500388,6359,124398,13662,0,N,N,N,CP_Drtn,TT_Task,DT_FixedDUR2,TK_NotStart,DUKHCONP1BZ2ACGF4610,Fixing of Split AC,8178,552,48,160,0,568,568,160,0,0,0,,,,2014-06-05 08:00,2014-06-28 17:00,,2014-03-17 08:00,2014-04-08 17:00,2014-03-17 08:00,2014-04-08 17:00,2014-03-17 08:00,2014-04-08 17:00,2014-06-05 08:00,2014-06-28 17:00,,PT_Normal,,,,,EYjC1g+zQUy8tOoEt38OYg,,,,N,0,0,,,2013-02-16 15:52,2013-02-16 15:56,admin,admin
500389,6359,124399,13662,0,N,N,N,CP_Drtn,TT_Task,DT_FixedDUR2,TK_NotStart,DUKHCONP1BZ2ACFF4615,Installation AC Pipes,8178,368,24,160,0,1886.4,1886.4,160,0,0,0,,,,2014-04-13 08:00,2014-05-05 17:00,,2014-02-18 08:00,2014-03-12 17:00,2014-02-18 08:00,2014-03-12 17:00,2014-02-18 08:00,2014-03-12 17:00,2014-04-13 08:00,2014-05-05 17:00,,PT_Normal,,,,,AN/4lmFQTkGFXC0gnB7snQ,,,,N,0,0,,,2013-02-16 15:52,2013-02-16 15:56,admin,admin
500390,6359,124399,13662,0,N,N,N,CP_Drtn,TT_Task,DT_FixedDUR2,TK_NotStart,DUKHCONP1BZ2ACFF4620,Fixing of Ventilation Equipments,8178,136,0,200,0,182.4,182.4,200,0,0,0,,,,2014-05-15 08:00,2014-06-12 17:00,,2014-04-26 08:00,2014-05-24 17:00,2014-04-26 08:00,2014-05-24 17:00,2014-04-26 08:00,2014-05-24 17:00,2014-05-15 08:00,2014-06-12 17:00,,PT_Normal,,,,,nLCbpP9aTAmhwMdKXOKSNw,,,,N,0,0,,,2013-02-16 15:52,2013-02-16 15:56,admin,admin
500391,6359,124399,13662,0,N,N,N,CP_Drtn,TT_Task,DT_FixedDUR2,TK_NotStart,DUKHCONP1BZ2ACFF4625,Fixing of Split AC,8178,136,0,160,0,568,568,160,0,0,0,,,,2014-06-05 08:00,2014-06-28 17:00,,2014-05-17 08:00,2014-06-08 17:00,2014-05-17 08:00,2014-06-08 17:00,2014-05-17 08:00,2014-06-08 17:00,2014-06-05 08:00,2014-06-28 17:00,,PT_Normal,,,,,kMeEx5xNTduKGERnu6hBCg,,,,N,0,0,,,2013-02-16 15:52,2013-02-16 15:56,admin,admin
500392,6359,124401,13662,0,N,N,N,CP_Drtn,TT_Task,DT_FixedDUR2,TK_NotStart,DUKHCONP1BZ2PLGF4305,Installation of Plumbing pipes & testing,8178,400,0,144,0,883.2,883.2,144,0,0,0,,,,2014-02-09 08:00,2014-03-02 17:00,,2013-12-11 08:00,2014-01-01 17:00,2013-12-11 08:00,2014-01-01 17:00,2013-12-11 08:00,2014-01-01 17:00,2014-02-09 08:00,2014-03-02 17:00,,PT_Normal,,,,,6KXjEl57TDmg0M0tMzJ6qA,,,,N,0,0,,,2013-02-16 15:52,2013-02-16 15:56,admin,admin
500393,6359,124401,13662,0,N,N,N,CP_Drtn,TT_Task,DT_FixedDUR2,TK_NotStart,DUKHCONP1BZ2PLGF4310,Installation of Drainage pipes &testing,8178,424,128,144,0,331.2,331.2,144,0,0,0,,,,2014-02-13 08:00,2014-03-05 17:00,,2013-12-11 08:00,2014-01-01 17:00,2013-12-11 08:00,2014-01-01 17:00,2013-12-11 08:00,2014-01-01 17:00,2014-02-13 08:00,2014-03-05 17:00,,PT_Normal,,,,,H47O9oTzTcaar3lIFa/qEw,,,,N,0,0,,,2013-02-16 15:52,2013-02-16 15:56,admin,admin
500394,6359,124401,13662,0,N,N,N,CP_Drtn,TT_Task,DT_FixedDUR2,TK_NotStart,DUKHCONP1BZ2PLGF4315,Sanitary Fittings & Accessories,8178,656,0,160,0,201.6,201.6,160,0,0,0,,,,2014-06-17 08:00,2014-07-09 17:00,,2014-03-13 08:00,2014-04-05 17:00,2014-03-13 08:00,2014-04-05 17:00,2014-03-13 08:00,2014-04-05 17:00,2014-06-17 08:00,2014-07-09 17:00,,PT_Normal,,,,,WBYR+1aNR6qA1eR2MqGuoQ,,,,N,0,0,,,2013-02-16 15:52,2013-02-16 15:56,admin,admin
500395,6359,124401,13662,0,N,N,N,CP_Drtn,TT_Task,DT_FixedDUR2,TK_NotStart,DUKHCONP1BZ2PLGF4320,Installation of Water Heater,8178,656,88,120,0,201.6,201.6,120,0,0,0,,,,2014-06-29 08:00,2014-07-15 17:00,,2014-03-25 08:00,2014-04-10 17:00,2014-03-25 08:00,2014-04-10 17:00,2014-03-25 08:00,2014-04-10 17:00,2014-06-29 08:00,2014-07-15 17:00,,PT_Normal,,,,,IwsMHap/TqeH4/5CD08leg,,,,N,0,0,,,2013-02-16 15:52,2013-02-16 15:56,admin,admin
500396,6359,124401,13662,0,N,N,N,CP_Drtn,TT_Task,DT_FixedDUR2,TK_NotStart,DUKHCONP1BZ2PLUG4300,Drainage / Storm Pipes in Grade Slab,8178,0,0,160,0,110.4,110.4,160,0,0,0,,,,2013-08-25 08:00,2013-09-16 17:00,,2013-08-25 08:00,2013-09-16 17:00,2013-08-25 08:00,2013-09-16 17:00,2013-08-25 08:00,2013-09-16 17:00,2013-08-25 08:00,2013-09-16 17:00,,PT_Normal,,,,,+Mb/kODlRoGM4MBK6hd+pQ,,,,Y,0,0,,,2013-02-16 15:52,2013-02-16 15:56,admin,admin
500397,6359,124402,13662,0,N,N,N,CP_Drtn,TT_Task,DT_FixedDUR2,TK_NotStart,DUKHCONP1BZ2PLFF4340,Installation of Water Heater,8178,152,0,120,0,134.4,134.4,120,0,0,0,,,,2014-06-11 08:00,2014-06-28 17:00,,2014-05-20 08:00,2014-06-05 17:00,2014-05-20 08:00,2014-06-05 17:00,2014-05-20 08:00,2014-06-05 17:00,2014-06-11 08:00,2014-06-28 17:00,,PT_Normal,,,,,MBVJC5WARlypB8ignkxcvw,,,,N,0,0,,,2013-02-16 15:52,2013-02-16 15:56,admin,admin
500398,6359,124402,13662,0,N,N,N,CP_Drtn,TT_Task,DT_FixedDUR2,TK_NotStart,DUKHCONP1BZ2PLFF4325,Installation of Plumbing pipes & testing,8178,24,0,144,0,883.2,883.2,144,0,0,0,,,,2014-01-28 08:00,2014-02-18 17:00,,2014-01-25 08:00,2014-02-15 17:00,2014-01-25 08:00,2014-02-15 17:00,2014-01-25 08:00,2014-02-15 17:00,2014-01-28 08:00,2014-02-18 17:00,,PT_Normal,,,,,OLY83K8hQUahIzScXWoWOQ,,,,N,0,0,,,2013-02-16 15:52,2013-02-16 15:56,admin,admin
500399,6359,124402,13662,0,N,N,N,CP_Drtn,TT_Task,DT_FixedDUR2,TK_NotStart,DUKHCONP1BZ2PLFF4330,Installation of Drainage pipes & testing,8178,240,56,144,0,331.2,331.2,144,0,0,0,,,,2014-03-02 08:00,2014-03-22 17:00,,2014-01-25 08:00,2014-02-15 17:00,2014-01-25 08:00,2014-02-15 17:00,2014-01-25 08:00,2014-02-15 17:00,2014-03-02 08:00,2014-03-22 17:00,,PT_Normal,,,,,xfGOc0yuRxOf3N7neWnR7w,,,,N,0,0,,,2013-02-16 15:52,2013-02-16 15:56,admin,admin
500400,6359,124402,13662,0,N,N,N,CP_Drtn,TT_Task,DT_FixedDUR2,TK_NotStart,DUKHCONP1BZ2PLFF4335,Sanitary Fittings & Accessories,8178,152,0,160,0,201.6,201.6,160,0,0,0,,,,2014-05-31 08:00,2014-06-22 17:00,,2014-05-08 08:00,2014-05-31 17:00,2014-05-08 08:00,2014-05-31 17:00,2014-05-08 08:00,2014-05-31 17:00,2014-05-31 08:00,2014-06-22 17:00,,PT_Normal,,,,,Mc/QHEyqQM2ZOa/fXKk0Rw,,,,N,0,0,,,2013-02-16 15:52,2013-02-16 15:56,admin,admin
500401,6359,124403,13662,0,N,N,N,CP_Drtn,TT_Task,DT_FixedDUR2,TK_NotStart,DUKHCONP1BZ2PLRF4345,Installation of Plumbing pipes & fittings,8178,672,72,112,0,288,288,112,0,0,0,,,,2014-05-31 08:00,2014-06-15 17:00,,2014-02-22 08:00,2014-03-09 17:00,2014-02-22 08:00,2014-03-09 17:00,2014-02-22 08:00,2014-03-09 17:00,2014-05-31 08:00,2014-06-15 17:00,,PT_Normal,,,,,VjEtgyr6SYqy6Cxr1smOBg,,,,N,0,0,,,2013-02-16 15:52,2013-02-16 15:56,admin,admin
500402,6359,124403,13662,0,N,N,N,CP_Drtn,TT_Task,DT_FixedDUR2,TK_NotStart,DUKHCONP1BZ2PLRF4350,Installation of Rain water Pipes,,600,32,120,0,0,0,120,0,0,0,,,,2014-06-11 08:00,2014-06-28 17:00,,2014-03-16 08:00,2014-04-01 17:00,2014-03-16 08:00,2014-04-01 17:00,2014-03-16 08:00,2014-04-01 17:00,2014-06-11 08:00,2014-06-28 17:00,,PT_Normal,,,,,LIZ2ssDWQIC0dyliTm9UMg,,,,N,0,0,,,2013-02-16 15:52,2013-02-16 15:56,admin,admin
500403,6359,124403,13662,0,N,N,N,CP_Drtn,TT_Task,DT_FixedDUR2,TK_NotStart,DUKHCONP1BZ2PLRF4355,Roof  Water Tank Installation & Connections,8178,152,0,200,0,672,672,200,0,0,0,,,,2014-06-17 08:00,2014-07-15 17:00,,2014-05-26 08:00,2014-06-23 17:00,2014-05-26 08:00,2014-06-23 17:00,2014-05-26 08:00,2014-06-23 17:00,2014-06-17 08:00,2014-07-15 17:00,,PT_Normal,,,,,xFtUpkeLRyurVTm8SScyGQ,,,,N,0,0,,,2013-02-16 15:52,2013-02-16 15:56,admin,admin
500404,6359,124404,13662,0,N,N,N,CP_Drtn,TT_Task,DT_FixedDUR2,TK_NotStart,DUKHCONP1BZ2PLTC8005,Pre-Commissioning & Testing of Plumbing Works,8178,24,0,200,0,3000,3000,200,0,0,0,,,,2014-07-16 08:00,2014-08-17 17:00,,2014-07-13 08:00,2014-08-13 17:00,2014-07-13 08:00,2014-08-13 17:00,2014-07-13 08:00,2014-08-13 17:00,2014-07-16 08:00,2014-08-17 17:00,,PT_Normal,,,,,rhn4dgQrSZim+IglX9U7eQ,,,,N,0,0,,,2013-02-16 15:52,2013-02-16 15:56,admin,admin
500405,6359,124404,13662,0,N,N,N,CP_Drtn,TT_Task,DT_FixedDUR2,TK_NotStart,DUKHCONP1BZ2ACTC8000,Pre-Commissioning & Testing of AC Works,8178,24,0,200,0,1500,1500,200,0,0,0,,,,2014-07-16 08:00,2014-08-17 17:00,,2014-07-13 08:00,2014-08-13 17:00,2014-07-13 08:00,2014-08-13 17:00,2014-07-13 08:00,2014-08-13 17:00,2014-07-16 08:00,2014-08-17 17:00,,PT_Normal,,,,,k83pbsmBR8y+j3b94MoDKg,,,,N,0,0,,,2013-02-16 15:52,2013-02-16 15:56,admin,admin
500406,6359,124404,13662,0,N,N,N,CP_Drtn,TT_Task,DT_FixedDUR2,TK_NotStart,DUKHCONP1BZ2ELTC8010,Pre-Commissioning & Testing of Electrical Works,8178,24,0,200,0,3000,3000,200,0,0,0,,,,2014-07-16 08:00,2014-08-17 17:00,,2014-07-13 08:00,2014-08-13 17:00,2014-07-13 08:00,2014-08-13 17:00,2014-07-13 08:00,2014-08-13 17:00,2014-07-16 08:00,2014-08-17 17:00,,PT_Normal,,,,,9VW/ZU2BQ5Gj33nMTsdRzw,,,,N,0,0,,,2013-02-16 15:52,2013-02-16 15:56,admin,admin
500407,6359,124407,13662,0,N,N,N,CP_Drtn,TT_Task,DT_FixedDUR2,TK_NotStart,DUKHCONP1BZ2STUG1000,Footing Excavation,8177,0,0,200,0,1433,1433,200,675,0,675,,,,2013-05-13 08:00,2013-06-10 17:00,,2013-05-13 08:00,2013-06-10 17:00,2013-05-13 08:00,2013-06-10 17:00,2013-05-13 08:00,2013-06-10 17:00,2013-05-13 08:00,2013-06-10 17:00,,PT_Normal,,,,,m0yx60U0Q3KF5XTNxGGdHw,,,,Y,0,0,,,2013-02-16 15:52,2013-02-16 15:56,admin,admin
500408,6359,124407,13662,0,N,N,N,CP_Drtn,TT_Task,DT_FixedDUR2,TK_NotStart,DUKHCONP1BZ2STUG1005,Footing Antitermite,8178,0,0,184,0,1861.75,1861.75,184,0,0,0,,,,2013-05-25 08:00,2013-06-19 17:00,,2013-05-25 08:00,2013-06-19 17:00,2013-05-25 08:00,2013-06-19 17:00,2013-05-25 08:00,2013-06-19 17:00,2013-05-25 08:00,2013-06-19 17:00,,PT_Normal,,,,,LEdC1ReBR4Cuu/xJOUUgQw,,,,Y,0,0,,,2013-02-16 15:52,2013-02-16 15:56,admin,admin
500409,6359,124407,13662,0,N,N,N,CP_Drtn,TT_Task,DT_FixedDUR2,TK_NotStart,DUKHCONP1BZ2STUG1010,Footing Blinding,8163,0,0,184,0,1048.25,1048.25,184,0,0,0,,,,2013-05-28 08:00,2013-06-23 17:00,,2013-05-28 08:00,2013-06-23 17:00,2013-05-28 08:00,2013-06-23 17:00,2013-05-28 08:00,2013-06-23 17:00,2013-05-28 08:00,2013-06-23 17:00,,PT_Normal,,,,,C4X8Mjo0Qjmw30JXmI1LPQ,,,,Y,0,0,,,2013-02-16 15:52,2013-02-16 15:56,admin,admin
500410,6359,124407,13662,0,N,N,N,CP_Drtn,TT_Task,DT_FixedDUR2,TK_NotStart,DUKHCONP1BZ2STUG1015,Footing Waterproofing & Screed,8164,0,0,200,0,825,825,200,0,0,0,,,,2013-06-03 08:00,2013-07-01 17:00,,2013-06-03 08:00,2013-07-01 17:00,2013-06-03 08:00,2013-07-01 17:00,2013-06-03 08:00,2013-07-01 17:00,2013-06-03 08:00,2013-07-01 17:00,,PT_Normal,,,,,qhJb+lqWTK2119QJhPCpdg,,,,Y,0,0,,,2013-02-16 15:52,2013-02-16 15:56,admin,admin
500411,6359,124407,13662,0,N,N,N,CP_Drtn,TT_Task,DT_FixedDUR2,TK_NotStart,DUKHCONP1BZ2STUG1020,Construction of foundations,8165,0,0,160,0,7969.5,7969.5,160,0,0,0,,,,2013-06-18 08:00,2013-07-10 17:00,,2013-06-18 08:00,2013-07-10 17:00,2013-06-18 08:00,2013-07-10 17:00,2013-06-18 08:00,2013-07-10 17:00,2013-06-18 08:00,2013-07-10 17:00,,PT_Normal,,,,,Bqo+yGeNT1KQmHfn54r9uw,,,,Y,0,0,,,2013-02-16 15:52,2013-02-16 15:56,admin,admin
500412,6359,124407,13662,0,N,N,N,CP_Drtn,TT_Task,DT_FixedDUR2,TK_NotStart,DUKHCONP1BZ2STUG1030,Waterproofing Footing & Neck Column,8178,0,0,200,0,535.25,535.25,200,0,0,0,,,,2013-07-07 08:00,2013-08-04 17:00,,2013-07-07 08:00,2013-08-04 17:00,2013-07-07 08:00,2013-08-04 17:00,2013-07-07 08:00,2013-08-04 17:00,2013-07-07 08:00,2013-08-04 17:00,,PT_Normal,,,,,5XcFbc7qTJKiPLGJMdtW3A,,,,Y,0,0,,,2013-02-16 15:52,2013-02-16 15:56,admin,admin
500413,6359,124407,13662,0,N,N,N,CP_Drtn,TT_Task,DT_FixedDUR2,TK_NotStart,DUKHCONP1BZ2STUG1035,Backfilling Upto Grade Beam Bottom,8177,0,0,200,0,1436,1436,200,1100,0,1100,,,,2013-07-18 08:00,2013-08-19 17:00,,2013-07-18 08:00,2013-08-19 17:00,2013-07-18 08:00,2013-08-19 17:00,2013-07-18 08:00,2013-08-19 17:00,2013-07-18 08:00,2013-08-19 17:00,,PT_Normal,,,,,pkUfrKknQRWb/tJJ7HG2jw,,,,Y,0,0,,,2013-02-16 15:52,2013-02-16 15:56,admin,admin
500414,6359,124407,13662,0,N,N,N,CP_Drtn,TT_Task,DT_FixedDUR2,TK_NotStart,DUKHCONP1BZ2STUG1040,Construction of Grade Beams,8163,0,0,200,0,8096.25,8096.25,200,0,0,0,,,,2013-08-04 08:00,2013-09-04 17:00,,2013-08-04 08:00,2013-09-04 17:00,2013-08-04 08:00,2013-09-04 17:00,2013-08-04 08:00,2013-09-04 17:00,2013-08-04 08:00,2013-09-04 17:00,,PT_Normal,,,,,jgsiV4KlT569E9enl6aY0A,,,,Y,0,0,,,2013-02-16 15:52,2013-02-16 15:56,admin,admin
500415,6359,124407,13662,0,N,N,N,CP_Drtn,TT_Task,DT_FixedDUR2,TK_NotStart,DUKHCONP1BZ2STUG1045,Construction of slab on grade,8163,0,0,200,0,5538.75,5538.75,200,0,0,0,,,,2013-09-03 08:00,2013-10-01 17:00,,2013-09-03 08:00,2013-10-01 17:00,2013-09-03 08:00,2013-10-01 17:00,2013-09-03 08:00,2013-10-01 17:00,2013-09-03 08:00,2013-10-01 17:00,,PT_Normal,,,,,6KAY7i1nRuiJkVn+jU1EfA,,,,Y,0,0,,,2013-02-16 15:52,2013-02-16 15:56,admin,admin
500416,6359,124407,13662,0,N,N,N,CP_Drtn,TT_Task,DT_FixedDUR2,TK_NotStart,DUKHCONP1BZ2STUG1025,Construction of neck of columns,8165,0,0,200,0,1946,1946,200,0,0,0,,,,2013-06-27 08:00,2013-07-25 17:00,,2013-06-27 08:00,2013-07-25 17:00,2013-06-27 08:00,2013-07-25 17:00,2013-06-27 08:00,2013-07-25 17:00,2013-06-27 08:00,2013-07-25 17:00,,PT_Normal,,,,,aAg5mEvMQtOBCXln0LG6pA,,,,Y,0,0,,,2013-02-16 15:52,2013-02-16 15:56,admin,admin
500417,6359,124409,13662,0,N,N,N,CP_Drtn,TT_Task,DT_FixedDUR2,TK_NotStart,DUKHCONP1BZ2STRF2040,Column-Rebar & Formwork,8166,296,0,144,0,1176,1176,144,0,0,0,,,,2014-01-23 08:00,2014-02-13 17:00,,2013-12-10 08:00,2013-12-31 17:00,2013-12-10 08:00,2013-12-31 17:00,2013-12-10 08:00,2013-12-31 17:00,2014-01-23 08:00,2014-02-13 17:00,,PT_Normal,,,,,lhybsTpnSx6Sp67p1uE04w,,,,N,0,0,,,2013-02-16 15:52,2013-02-16 15:56,admin,admin
500418,6359,124409,13662,0,N,N,N,CP_Drtn,TT_Task,DT_FixedDUR2,TK_NotStart,DUKHCONP1BZ2STRF2045,Column-Concrete,8167,296,0,136,0,80.5,80.5,136,0,0,0,,,,2014-01-27 08:00,2014-02-16 17:00,,2013-12-14 08:00,2014-01-02 17:00,2013-12-14 08:00,2014-01-02 17:00,2013-12-14 08:00,2014-01-02 17:00,2014-01-27 08:00,2014-02-16 17:00,,PT_Normal,,,,,0frnIIvTTKqpxCJ8YOLHwg,,,,N,0,0,,,2013-02-16 15:52,2013-02-16 15:56,admin,admin
500419,6359,124409,13662,0,N,N,N,CP_Drtn,TT_Task,DT_FixedDUR2,TK_NotStart,DUKHCONP1BZ2STRF2050,Slab-Rebar & Formwork - Head Room,8165,296,0,160,0,3444,3444,160,0,0,0,,,,2014-01-29 08:00,2014-02-22 17:00,,2013-12-16 08:00,2014-01-08 17:00,2013-12-16 08:00,2014-01-08 17:00,2013-12-16 08:00,2014-01-08 17:00,2014-01-29 08:00,2014-02-22 17:00,,PT_Normal,,,,,bkEFW8fpTuGk3NJ/zW8LaQ,,,,N,0,0,,,2013-02-16 15:52,2013-02-16 15:56,admin,admin
500420,6359,124409,13662,0,N,N,N,CP_Drtn,TT_Task,DT_FixedDUR2,TK_NotStart,DUKHCONP1BZ2STRF2055,Slab-Concrete-Head room,8167,296,0,104,0,280,280,104,0,0,0,,,,2014-02-13 08:00,2014-02-27 17:00,,2013-12-31 08:00,2014-01-14 17:00,2013-12-31 08:00,2014-01-14 17:00,2013-12-31 08:00,2014-01-14 17:00,2014-02-13 08:00,2014-02-27 17:00,,PT_Normal,,,,,1U8Sp4PvQKqdRELg0akV2g,,,,N,0,0,,,2013-02-16 15:52,2013-02-16 15:56,admin,admin
500421,6359,124409,13662,0,N,N,N,CP_Drtn,TT_Task,DT_FixedDUR2,TK_NotStart,DUKHCONP1BZ2STRF2060,Construction of Parapets,8168,488,0,200,0,1175,1175,200,0,0,0,,,,2014-03-16 08:00,2014-04-13 17:00,,2014-01-02 08:00,2014-01-30 17:00,2014-01-02 08:00,2014-01-30 17:00,2014-01-02 08:00,2014-01-30 17:00,2014-03-16 08:00,2014-04-13 17:00,,PT_Normal,,,,,NWzMSFFJRrqaWDBJ93VHtQ,,,,N,0,0,,,2013-02-16 15:52,2013-02-16 15:56,admin,admin
500422,6359,124409,13662,0,N,N,N,CP_Drtn,TT_Task,DT_FixedDUR2,TK_NotStart,DUKHCONP1BZ2STRF2065,Construction of up stands/Plinth,8165,624,0,200,0,549.5,549.5,200,0,0,0,,,,2014-04-24 08:00,2014-05-22 17:00,,2014-01-22 08:00,2014-02-20 17:00,2014-01-22 08:00,2014-02-20 17:00,2014-01-22 08:00,2014-02-20 17:00,2014-04-24 08:00,2014-05-22 17:00,,PT_Normal,,,,,JngciILPSo65iOgUpeI1Pw,,,,N,0,0,,,2013-02-16 15:52,2013-02-16 15:56,admin,admin
500423,6359,124410,13662,0,N,N,N,CP_Drtn,TT_Task,DT_FixedDUR2,TK_NotStart,DUKHCONP1BZ2STFF2020,Column-Rebar & Formwork,8166,0,0,200,0,3418,3418,200,0,0,0,,,,2013-11-03 08:00,2013-12-01 17:00,,2013-11-03 08:00,2013-12-01 17:00,2013-11-03 08:00,2013-12-01 17:00,2013-11-03 08:00,2013-12-01 17:00,2013-11-03 08:00,2013-12-01 17:00,,PT_Normal,,,,,4aQNymIcSXGGj++nu6adhQ,,,,Y,0,0,,,2013-02-16 15:52,2013-02-16 15:56,admin,admin
500424,6359,124410,13662,0,N,N,N,CP_Drtn,TT_Task,DT_FixedDUR2,TK_NotStart,DUKHCONP1BZ2STFF2025,Column-Concrete,8167,0,0,184,0,339.5,339.5,184,0,0,0,,,,2013-11-12 08:00,2013-12-08 17:00,,2013-11-12 08:00,2013-12-08 17:00,2013-11-12 08:00,2013-12-08 17:00,2013-11-12 08:00,2013-12-08 17:00,2013-11-12 08:00,2013-12-08 17:00,,PT_Normal,,,,,AvWSHubUQX6c1odDk2e5zQ,,,,Y,0,0,,,2013-02-16 15:52,2013-02-16 15:56,admin,admin
500425,6359,124410,13662,0,N,N,N,CP_Drtn,TT_Task,DT_FixedDUR2,TK_NotStart,DUKHCONP1BZ2STFF2030,"Beam, Stairs ,Slab-Rebar & Formwork",8165,96,0,200,0,19080.25,19080.25,200,0,0,0,,,,2013-11-30 08:00,2013-12-29 17:00,,2013-11-16 08:00,2013-12-14 17:00,2013-11-16 08:00,2013-12-14 17:00,2013-11-16 08:00,2013-12-14 17:00,2013-11-30 08:00,2013-12-29 17:00,,PT_Normal,,,,,eq/1cijJSlenkWr5jqepxw,,,,N,0,0,,,2013-02-16 15:52,2013-02-16 15:56,admin,admin
500426,6359,124410,13662,0,N,N,N,CP_Drtn,TT_Task,DT_FixedDUR2,TK_NotStart,DUKHCONP1BZ2STFF2035,"Beam, Stairs ,Slab-Concrete",8167,96,16,112,0,1288,1288,112,0,0,0,,,,2013-12-16 08:00,2014-01-01 17:00,,2013-12-02 08:00,2013-12-17 17:00,2013-12-02 08:00,2013-12-17 17:00,2013-12-02 08:00,2013-12-17 17:00,2013-12-16 08:00,2014-01-01 17:00,,PT_Normal,,,,,WvB8cA/5T4W66laQvUvi8g,,,,N,0,0,,,2013-02-16 15:52,2013-02-16 15:56,admin,admin
500427,6359,124411,13662,0,N,N,N,CP_Drtn,TT_Task,DT_FixedDUR2,TK_NotStart,DUKHCONP1BZ2STGF2000,Column-Rebar & Formwork,8165,0,0,200,0,4984,4984,200,0,0,0,,,,2013-09-19 08:00,2013-10-20 17:00,,2013-09-19 08:00,2013-10-20 17:00,2013-09-19 08:00,2013-10-20 17:00,2013-09-19 08:00,2013-10-20 17:00,2013-09-19 08:00,2013-10-20 17:00,,PT_Normal,,,,,l8V7u8R7QFO+4FgFoD0SYQ,,,,Y,0,0,,,2013-02-16 15:52,2013-02-16 15:56,admin,admin
500428,6359,124411,13662,0,N,N,N,CP_Drtn,TT_Task,DT_FixedDUR2,TK_NotStart,DUKHCONP1BZ2STGF2005,Column-Concrete,8167,0,0,184,0,388.5,388.5,184,0,0,0,,,,2013-09-29 08:00,2013-10-27 17:00,,2013-09-29 08:00,2013-10-27 17:00,2013-09-29 08:00,2013-10-27 17:00,2013-09-29 08:00,2013-10-27 17:00,2013-09-29 08:00,2013-10-27 17:00,,PT_Normal,,,,,MKFmBnefSzycO0y2Q6k9GQ,,,,Y,0,0,,,2013-02-16 15:52,2013-02-16 15:56,admin,admin
500429,6359,124411,13662,0,N,N,N,CP_Drtn,TT_Task,DT_FixedDUR2,TK_NotStart,DUKHCONP1BZ2STGF2010,"Beam, Stairs ,Slab-Rebar & Formwork",8165,0,0,200,0,18721.5,18721.5,200,0,0,0,,,,2013-10-13 08:00,2013-11-12 17:00,,2013-10-13 08:00,2013-11-12 17:00,2013-10-13 08:00,2013-11-12 17:00,2013-10-13 08:00,2013-11-12 17:00,2013-10-13 08:00,2013-11-12 17:00,,PT_Normal,,,,,dSWmb4eFSje9ZwpkG7cXdw,,,,Y,0,0,,,2013-02-16 15:52,2013-02-16 15:56,admin,admin
500430,6359,124411,13662,0,N,N,N,CP_Drtn,TT_Task,DT_FixedDUR2,TK_NotStart,DUKHCONP1BZ2STGF2015,"Beam, Stairs ,Slab-Concrete",8167,0,0,112,0,1456,1456,112,0,0,0,,,,2013-10-31 08:00,2013-11-16 17:00,,2013-10-31 08:00,2013-11-16 17:00,2013-10-31 08:00,2013-11-16 17:00,2013-10-31 08:00,2013-11-16 17:00,2013-10-31 08:00,2013-11-16 17:00,,PT_Normal,,,,,3q/MvI9kQEaVrY6m/yU74A,,,,Y,0,0,,,2013-02-16 15:52,2013-02-16 15:56,admin,admin
500431,6359,124413,13662,0,N,N,N,CP_Drtn,TT_Task,DT_FixedDUR2,TK_NotStart,DUKHCONP1BZ2SLEX5105,Laying of Grass/ green area,8178,552,0,200,0,5488,5488,200,0,0,0,,,,2014-06-05 08:00,2014-07-03 17:00,,2014-03-17 08:00,2014-04-14 17:00,2014-03-17 08:00,2014-04-14 17:00,2014-03-17 08:00,2014-04-14 17:00,2014-06-05 08:00,2014-07-03 17:00,,PT_Normal,,,,,dIOvtSH/SF+OS2OM9RO7og,,,,N,0,0,,,2013-02-16 15:52,2013-02-16 15:56,admin,admin
500432,6359,124413,13662,0,N,N,N,CP_Drtn,TT_Task,DT_FixedDUR2,TK_NotStart,DUKHCONP1BZ2SLEX5110,Laying of Palm tree,8178,552,528,200,0,336,336,200,0,0,0,,,,2014-06-17 08:00,2014-07-15 17:00,,2014-03-29 08:00,2014-04-26 17:00,2014-03-29 08:00,2014-04-26 17:00,2014-03-29 08:00,2014-04-26 17:00,2014-06-17 08:00,2014-07-15 17:00,,PT_Normal,,,,,TAhPToLdSye0sTs1eVnsgQ,,,,N,0,0,,,2013-02-16 15:52,2013-02-16 15:56,admin,admin
500433,6359,124414,13662,0,N,N,N,CP_Drtn,TT_Task,DT_FixedDUR2,TK_NotStart,DUKHCONP1BZ2MSEX5335,Aluminum Roll-up Shutter with 2m Wall,8178,200,0,200,0,400,400,200,0,0,0,,,,2014-07-16 08:00,2014-08-17 17:00,,2014-06-17 08:00,2014-07-15 17:00,2014-06-17 08:00,2014-07-15 17:00,2014-06-17 08:00,2014-07-15 17:00,2014-07-16 08:00,2014-08-17 17:00,,PT_Normal,,,,,XTspQdqjT/OEvXzZbRX/+g,,,,N,0,0,,,2013-02-16 15:52,2013-02-16 15:56,admin,admin
500434,6359,124414,13662,0,N,N,N,CP_Drtn,TT_Task,DT_FixedDUR2,TK_NotStart,DUKHCONP1BZ2MSEX5020,Construction Entrance Ramp,8164,552,0,200,0,1288,1288,200,0,0,0,,,,2014-03-31 08:00,2014-04-28 17:00,,2014-01-08 08:00,2014-02-05 17:00,2014-01-08 08:00,2014-02-05 17:00,2014-01-08 08:00,2014-02-05 17:00,2014-03-31 08:00,2014-04-28 17:00,,PT_Normal,,,,,KwQS8i34QrSHgbPK4q3eUQ,,,,N,0,0,,,2013-02-16 15:52,2013-02-16 15:56,admin,admin
500435,6359,124414,13662,0,N,N,N,CP_Drtn,TT_Task,DT_FixedDUR2,TK_NotStart,DUKHCONP1BZ2MSEX5025,SS.Handrails and Balustrades,8178,552,0,160,0,400,400,160,0,0,0,,,,2014-04-20 08:00,2014-05-12 17:00,,2014-01-28 08:00,2014-02-20 17:00,2014-01-28 08:00,2014-02-20 17:00,2014-01-28 08:00,2014-02-20 17:00,2014-04-20 08:00,2014-05-12 17:00,,PT_Normal,,,,,+9u9AQpXRGm5nlAV7JJXOg,,,,N,0,0,,,2013-02-16 15:52,2013-02-16 15:56,admin,admin
500436,6359,124414,13662,0,N,N,N,CP_Drtn,TT_Task,DT_FixedDUR2,TK_NotStart,DUKHCONP1BZ2MSEX5015,Construction of grease Trap,8178,296,0,160,0,88,88,160,0,0,0,,,,2014-03-31 08:00,2014-04-22 17:00,,2014-02-16 08:00,2014-03-10 17:00,2014-02-16 08:00,2014-03-10 17:00,2014-02-16 08:00,2014-03-10 17:00,2014-03-31 08:00,2014-04-22 17:00,,PT_Normal,,,,,Nnn0cuPkTEOC+ffNt8X3TA,,,,N,0,0,,,2013-02-16 15:52,2013-02-16 15:56,admin,admin
500437,6359,124414,13662,0,N,N,N,CP_Drtn,TT_Task,DT_FixedDUR2,TK_NotStart,DUKHCONP1BZ2MSEX5000,Construction of Manholes,8172,296,0,200,0,880,880,200,0,0,0,,,,2014-02-25 08:00,2014-03-25 17:00,,2014-01-12 08:00,2014-02-09 17:00,2014-01-12 08:00,2014-02-09 17:00,2014-01-12 08:00,2014-02-09 17:00,2014-02-25 08:00,2014-03-25 17:00,,PT_Normal,,,,,VVj6vEiMRwqqu3KaWbaarg,,,,N,0,0,,,2013-02-16 15:52,2013-02-16 15:56,admin,admin
500438,6359,124414,13662,0,N,N,N,CP_Drtn,TT_Task,DT_FixedDUR2,TK_NotStart,DUKHCONP1BZ2MSEX5010,Telephone cable laying,8177,296,96,200,0,500,500,200,0,0,0,,,,2014-04-23 08:00,2014-05-21 17:00,,2014-03-11 08:00,2014-04-08 17:00,2014-03-11 08:00,2014-04-08 17:00,2014-03-11 08:00,2014-04-08 17:00,2014-04-23 08:00,2014-05-21 17:00,,PT_Normal,,,,,0vN4B8arQz+5W+OLBMrK6w,,,,N,0,0,,,2013-02-16 15:52,2013-02-16 15:56,admin,admin
500439,6359,124414,13662,0,N,N,N,CP_Drtn,TT_Task,DT_FixedDUR2,TK_NotStart,DUKHCONP1BZ2MSEX5005,"Construction  of Soak pit, Chambers",8172,296,0,200,0,176,176,200,0,0,0,,,,2014-03-11 08:00,2014-04-08 17:00,,2014-01-26 08:00,2014-02-24 17:00,2014-01-26 08:00,2014-02-24 17:00,2014-01-26 08:00,2014-02-24 17:00,2014-03-11 08:00,2014-04-08 17:00,,PT_Normal,,,,,sn5IsH91To6HIlg6EvO7xw,,,,N,0,0,,,2013-02-16 15:52,2013-02-16 15:56,admin,admin
500440,6359,124415,13662,0,N,N,N,CP_Drtn,TT_Task,DT_FixedDUR2,TK_NotStart,DUKHCONP1BZ2WEEX5030,Excavation,8177,408,0,160,0,128,128,160,80,0,80,,,,2014-03-18 08:00,2014-04-09 17:00,,2014-01-16 08:00,2014-02-08 17:00,2014-01-16 08:00,2014-02-08 17:00,2014-01-16 08:00,2014-02-08 17:00,2014-03-18 08:00,2014-04-09 17:00,,PT_Normal,,,,,96tG1NC2TYeQexTQco0hpg,,,,N,0,0,,,2013-02-16 15:52,2013-02-16 15:56,admin,admin
500441,6359,124415,13662,0,N,N,N,CP_Drtn,TT_Task,DT_FixedDUR2,TK_NotStart,DUKHCONP1BZ2WEEX5035,Construction of Raft,8165,408,0,200,0,1624,1624,200,0,0,0,,,,2014-03-24 08:00,2014-04-21 17:00,,2014-01-22 08:00,2014-02-20 17:00,2014-01-22 08:00,2014-02-20 17:00,2014-01-22 08:00,2014-02-20 17:00,2014-03-24 08:00,2014-04-21 17:00,,PT_Normal,,,,,2JSmjWFQSnWlSwobW58Jpw,,,,N,0,0,,,2013-02-16 15:52,2013-02-16 15:56,admin,admin
500442,6359,124415,13662,0,N,N,N,CP_Drtn,TT_Task,DT_FixedDUR2,TK_NotStart,DUKHCONP1BZ2WEEX5040,Block works & Plastering,8168,592,0,200,0,888,888,200,0,0,0,,,,2014-05-01 08:00,2014-05-29 17:00,,2014-02-03 08:00,2014-03-04 17:00,2014-02-03 08:00,2014-03-04 17:00,2014-02-03 08:00,2014-03-04 17:00,2014-05-01 08:00,2014-05-29 17:00,,PT_Normal,,,,,Nh6InJk7T3ib0zOWIb5E3A,,,,N,0,0,,,2013-02-16 15:52,2013-02-16 15:56,admin,admin
500443,6359,124415,13662,0,N,N,N,CP_Drtn,TT_Task,DT_FixedDUR2,TK_NotStart,DUKHCONP1BZ2WEEX5045,Flooring & Painting,8178,592,0,200,0,408,408,200,0,0,0,,,,2014-05-13 08:00,2014-06-10 17:00,,2014-02-16 08:00,2014-03-16 17:00,2014-02-16 08:00,2014-03-16 17:00,2014-02-16 08:00,2014-03-16 17:00,2014-05-13 08:00,2014-06-10 17:00,,PT_Normal,,,,,WFTnNFadT8SeuaOtkWVWMA,,,,N,0,0,,,2013-02-16 15:52,2013-02-16 15:56,admin,admin
500444,6359,124415,13662,0,N,N,N,CP_Drtn,TT_Task,DT_FixedDUR2,TK_NotStart,DUKHCONP1BZ2WEEX5050,Installation of Steel Gate,8178,592,24,160,0,112,112,160,0,0,0,,,,2014-05-31 08:00,2014-06-22 17:00,,2014-03-05 08:00,2014-03-27 17:00,2014-03-05 08:00,2014-03-27 17:00,2014-03-05 08:00,2014-03-27 17:00,2014-05-31 08:00,2014-06-22 17:00,,PT_Normal,,,,,Y4w3FF1iQH6S5Elh/a1BZw,,,,N,0,0,,,2013-02-16 15:52,2013-02-16 15:56,admin,admin
500445,6359,124415,13662,0,N,N,N,CP_Drtn,TT_Task,DT_FixedDUR2,TK_NotStart,DUKHCONP1BZ2WEEX5060,Structural steel &  SS Shed cover installation,8178,568,0,200,0,616,616,200,0,0,0,,,,2014-06-05 08:00,2014-07-03 17:00,,2014-03-15 08:00,2014-04-12 17:00,2014-03-15 08:00,2014-04-12 17:00,2014-03-15 08:00,2014-04-12 17:00,2014-06-05 08:00,2014-07-03 17:00,,PT_Normal,,,,,i1f1QLx2QNCCQw/2PhscsQ,,,,N,0,0,,,2013-02-16 15:52,2013-02-16 15:56,admin,admin
500446,6359,124415,13662,0,N,N,N,CP_Drtn,TT_Task,DT_FixedDUR2,TK_NotStart,DUKHCONP1BZ2WEEX5065,"Install. of Water Tank,Chiller,Pump & Meter",8178,568,40,200,0,382.4,382.4,200,0,0,0,,,,2014-06-17 08:00,2014-07-15 17:00,,2014-03-26 08:00,2014-04-23 17:00,2014-03-26 08:00,2014-04-23 17:00,2014-03-26 08:00,2014-04-23 17:00,2014-06-17 08:00,2014-07-15 17:00,,PT_Normal,,,,,6jGwHW7cQ2mVIjOrk/Auyw,,,,N,0,0,,,2013-02-16 15:52,2013-02-16 15:56,admin,admin
500447,6359,124416,13662,0,N,N,N,CP_Drtn,TT_Task,DT_FixedDUR2,TK_NotStart,DUKHCONP1BZ2HDEX5090,kerb works,8173,552,0,160,0,712,712,160,0,0,0,,,,2014-04-28 08:00,2014-05-20 17:00,,2014-02-05 08:00,2014-03-01 17:00,2014-02-05 08:00,2014-03-01 17:00,2014-02-05 08:00,2014-03-01 17:00,2014-04-28 08:00,2014-05-20 17:00,,PT_Normal,,,,,6fjKgGPgQcOF/gdxQ6Q1Dg,,,,N,0,0,,,2013-02-16 15:52,2013-02-16 15:56,admin,admin
500448,6359,124416,13662,0,N,N,N,CP_Drtn,TT_Task,DT_FixedDUR2,TK_NotStart,DUKHCONP1BZ2HDEX5095,Cobble Stone Works,8170,552,0,160,0,456,456,160,0,0,0,,,,2014-05-10 08:00,2014-06-01 17:00,,2014-02-18 08:00,2014-03-12 17:00,2014-02-18 08:00,2014-03-12 17:00,2014-02-18 08:00,2014-03-12 17:00,2014-05-10 08:00,2014-06-01 17:00,,PT_Normal,,,,,8T3PriC6Sl6gJ5rm4flWKg,,,,N,0,0,,,2013-02-16 15:52,2013-02-16 15:56,admin,admin
500449,6359,124416,13662,0,N,N,N,CP_Drtn,TT_Task,DT_FixedDUR2,TK_NotStart,DUKHCONP1BZ2HDEX5100,Interlock works,8174,552,0,160,0,408,408,160,0,0,0,,,,2014-05-25 08:00,2014-06-16 17:00,,2014-03-05 08:00,2014-03-27 17:00,2014-03-05 08:00,2014-03-27 17:00,2014-03-05 08:00,2014-03-27 17:00,2014-05-25 08:00,2014-06-16 17:00,,PT_Normal,,,,,M+fSENB3QJO1H82YwcGB2Q,,,,N,0,0,,,2013-02-16 15:52,2013-02-16 15:56,admin,admin
500450,6359,124417,13662,0,N,N,N,CP_Drtn,TT_Task,DT_FixedDUR2,TK_NotStart,DUKHCONP1BGNSP001000,"Survey works,",8175,296,0,160,0,87.5,87.5,160,0,0,0,,,,2013-01-14 08:00,2013-02-05 17:00,,2012-12-01 08:00,2012-12-24 17:00,2012-12-01 08:00,2012-12-24 17:00,2012-12-01 08:00,2012-12-24 17:00,2013-01-14 08:00,2013-02-05 17:00,,PT_Normal,,,,,x6xKApHAQSOTzR7gfBU2Ow,,,,N,0,0,,,2013-02-16 15:52,2013-02-16 15:56,admin,admin
500451,6359,124417,13662,0,N,N,N,CP_Drtn,TT_Task,DT_FixedDUR2,TK_NotStart,DUKHCONP1BGNSP002000,Scanning for Existing Services for rerouting,8180,296,0,80,0,325,325,80,0,0,0,,,,2013-01-20 08:00,2013-01-30 17:00,,2012-12-06 08:00,2012-12-17 17:00,2012-12-06 08:00,2012-12-17 17:00,2012-12-06 08:00,2012-12-17 17:00,2013-01-20 08:00,2013-01-30 17:00,,PT_Normal,,,,,8ioC8kigRASnvkd8X+Ehfw,,,,N,0,0,,,2013-02-16 15:52,2013-02-16 15:56,admin,admin
500452,6359,124417,13662,0,N,N,N,CP_Drtn,TT_Task,DT_FixedDUR2,TK_NotStart,DUKHCONP1BGNSP004000,Demolition of Existing building & landscaping,8177,696,0,160,0,2687.5,2687.5,160,1750,0,1750,,,,2013-04-02 08:00,2013-04-24 17:00,,2012-12-20 08:00,2013-01-12 17:00,2012-12-20 08:00,2013-01-12 17:00,2012-12-20 08:00,2013-01-12 17:00,2013-04-02 08:00,2013-04-24 17:00,,PT_Normal,,,,,s3GZzjTZRbuAVTEGLWEIkQ,,,,N,0,0,,,2013-02-16 15:52,2013-02-16 15:56,admin,admin
500453,6359,124417,13662,0,N,N,N,CP_Drtn,TT_Task,DT_FixedDUR2,TK_NotStart,DUKHCONP1BGNSP005000,Demolition of existing services works,8177,696,696,160,0,775,775,160,400,0,400,,,,2013-04-08 08:00,2013-04-30 17:00,,2012-12-26 08:00,2013-01-17 17:00,2012-12-26 08:00,2013-01-17 17:00,2012-12-26 08:00,2013-01-17 17:00,2013-04-08 08:00,2013-04-30 17:00,,PT_Normal,,,,,injzK6tpRyCsOHmv8LTDRw,,,,N,0,0,,,2013-02-16 15:52,2013-02-16 15:56,admin,admin
500454,6359,124417,13662,0,N,N,N,CP_Drtn,TT_Task,DT_FixedDUR2,TK_NotStart,DUKHCONP1BGNSP003000,Site stripping,8177,696,0,160,0,675,675,160,300,0,300,,,,2013-03-27 08:00,2013-04-18 17:00,,2012-12-13 08:00,2013-01-06 17:00,2012-12-13 08:00,2013-01-06 17:00,2012-12-13 08:00,2013-01-06 17:00,2013-03-27 08:00,2013-04-18 17:00,,PT_Normal,,,,,3fgfuo7nSXq0iCUItedqlw,,,,N,0,0,,,2013-02-16 15:52,2013-02-16 15:56,admin,admin
500455,6359,124417,13662,0,N,N,N,CP_Drtn,TT_Task,DT_FixedDUR2,TK_NotStart,DUKHCONP1BGNSP002100,Submission of Scanning Reports,12515,296,0,40,0,40,40,40,0,0,0,,,,2013-01-31 08:00,2013-02-05 17:00,,2012-12-19 08:00,2012-12-24 17:00,2012-12-19 08:00,2012-12-24 17:00,2012-12-19 08:00,2012-12-24 17:00,2013-01-31 08:00,2013-02-05 17:00,,PT_Normal,,,,,3cXxqHQWR721YRNCyXe0Tg,JRFiGGBnTCaUtxRsMC9IFg,,,N,0,0,,,2013-02-16 15:52,2013-02-16 15:56,admin,admin
500456,6359,124417,13662,0,N,N,N,CP_Drtn,TT_Task,DT_FixedDUR2,TK_NotStart,DUKHCONP1BGNSP002200,Information Required for  Rerouting,,296,0,112,0,0,0,112,0,0,0,,,,2013-02-06 08:00,2013-02-23 17:00,,2012-12-25 08:00,2013-01-09 17:00,2012-12-25 08:00,2013-01-09 17:00,2012-12-25 08:00,2013-01-09 17:00,2013-02-06 08:00,2013-02-23 17:00,,PT_Normal,,,,,FBR1ZwgcT9Kw4sl4ax7kjA,JRFiGGBnTCaUtxRsMC9IFg,,,N,0,0,,,2013-02-16 15:52,2013-02-16 15:56,admin,admin
500457,6359,124417,13662,0,N,N,N,CP_Drtn,TT_Task,DT_FixedDUR2,TK_NotStart,DUKHCONP1BGNSP002300,Preparation & Submission for new Layout for rerouting,,296,0,56,0,40,40,56,0,0,0,,,,2013-02-24 08:00,2013-03-03 17:00,,2013-01-10 08:00,2013-01-17 17:00,2013-01-10 08:00,2013-01-17 17:00,2013-01-10 08:00,2013-01-17 17:00,2013-02-24 08:00,2013-03-03 17:00,,PT_Normal,,,,,hRwoBKjDQJSDpAQFycC4bA,1UOtSVyUzUukS/S9jaCffQ,,,N,0,0,,,2013-02-16 15:52,2013-02-16 15:56,admin,admin
500458,6359,124417,13662,0,N,N,N,CP_Drtn,TT_Task,DT_FixedDUR2,TK_NotStart,DUKHCONP1BGNSP002400,Approval for new Layout for rerouting,,296,0,80,0,0,0,80,0,0,0,,,,2013-03-04 08:00,2013-03-14 17:00,,2013-01-19 08:00,2013-01-29 17:00,2013-01-19 08:00,2013-01-29 17:00,2013-01-19 08:00,2013-01-29 17:00,2013-03-04 08:00,2013-03-14 17:00,,PT_Normal,,,,,d8osTHRqS6q0rHBxUEIYqw,JuGELodzY0efmuSLH0uRig,,,N,0,0,,,2013-02-16 15:52,2013-02-16 15:56,admin,admin
500459,6359,124417,13662,0,N,N,N,CP_Drtn,TT_Task,DT_FixedDUR2,TK_NotStart,DUKHCONP1BGNSP002500,Rerouting Works,8180,296,296,200,0,325,325,200,0,0,0,,,,2013-03-16 08:00,2013-04-13 17:00,,2013-01-30 08:00,2013-02-28 17:00,2013-01-30 08:00,2013-02-28 17:00,2013-01-30 08:00,2013-02-28 17:00,2013-03-16 08:00,2013-04-13 17:00,,PT_Normal,,,,,1ZluaTpFTEOvNLefMBGnxw,vmi+KZyKMUahQKTW6dbRhg,,,N,0,0,,,2013-02-16 15:52,2013-02-16 15:56,admin,admin
500460,6359,124421,13662,0,N,N,N,CP_Drtn,TT_Task,DT_FixedDUR2,TK_NotStart,DUKHCONP1BZ5ACFF4615,Installation AC Pipes,8178,368,24,160,0,2358,2358,160,0,0,0,,,,2014-07-09 08:00,2014-07-31 17:00,,2014-05-17 08:00,2014-06-08 17:00,2014-05-17 08:00,2014-06-08 17:00,2014-05-17 08:00,2014-06-08 17:00,2014-07-09 08:00,2014-07-31 17:00,,PT_Normal,,,,,HvvnKNERTaqDlwJx3iox2g,,,,N,0,0,,,2013-02-16 15:52,2013-02-16 15:56,admin,admin
500461,6359,124421,13662,0,N,N,N,CP_Drtn,TT_Task,DT_FixedDUR2,TK_NotStart,DUKHCONP1BZ5ACFF4620,Fixing of Ventilation Equipments,8178,136,0,200,0,228,228,200,0,0,0,,,,2014-08-14 08:00,2014-09-11 17:00,,2014-07-22 08:00,2014-08-23 17:00,2014-07-22 08:00,2014-08-23 17:00,2014-07-22 08:00,2014-08-23 17:00,2014-08-14 08:00,2014-09-11 17:00,,PT_Normal,,,,,fOxOr+GDRUatgrhc1BaMzg,,,,N,0,0,,,2013-02-16 15:52,2013-02-16 15:56,admin,admin
500462,6359,124421,13662,0,N,N,N,CP_Drtn,TT_Task,DT_FixedDUR2,TK_NotStart,DUKHCONP1BZ5ACFF4625,Fixing of Split AC,8178,136,0,160,0,710,710,160,0,0,0,,,,2014-09-04 08:00,2014-09-27 17:00,,2014-08-16 08:00,2014-09-07 17:00,2014-08-16 08:00,2014-09-07 17:00,2014-08-16 08:00,2014-09-07 17:00,2014-09-04 08:00,2014-09-27 17:00,,PT_Normal,,,,,LcQqXfK/RvO7pIM+jcBDZw,,,,N,0,0,,,2013-02-16 15:52,2013-02-16 15:56,admin,admin
500463,6359,124422,13662,0,N,N,N,CP_Drtn,TT_Task,DT_FixedDUR2,TK_NotStart,DUKHCONP1BZ5ACRF4630,Installation of Refrigerant Pipes,8178,696,0,200,0,994,994,200,0,0,0,,,,2014-09-10 08:00,2014-10-08 17:00,,2014-05-28 08:00,2014-06-25 17:00,2014-05-28 08:00,2014-06-25 17:00,2014-05-28 08:00,2014-06-25 17:00,2014-09-10 08:00,2014-10-08 17:00,,PT_Normal,,,,,IoWLfgk4Tw+YJA6VK1uxdA,,,,N,0,0,,,2013-02-16 15:52,2013-02-16 15:56,admin,admin
500464,6359,124422,13662,0,N,N,N,CP_Drtn,TT_Task,DT_FixedDUR2,TK_NotStart,DUKHCONP1BZ5ACRF4635,Installation of Condensing Unit,8178,176,0,200,0,1420,1420,200,0,0,0,,,,2014-09-16 08:00,2014-10-16 17:00,,2014-08-21 08:00,2014-09-18 17:00,2014-08-21 08:00,2014-09-18 17:00,2014-08-21 08:00,2014-09-18 17:00,2014-09-16 08:00,2014-10-16 17:00,,PT_Normal,,,,,o/V59/2iRc2AFygEporbxg,,,,N,0,0,,,2013-02-16 15:52,2013-02-16 15:56,admin,admin
500465,6359,124423,13662,0,N,N,N,CP_Drtn,TT_Task,DT_FixedDUR2,TK_NotStart,DUKHCONP1BZ5ACGF4600,Installation AC Pipes,8178,640,40,160,0,2358,2358,160,0,0,0,,,,2014-07-03 08:00,2014-07-26 17:00,,2014-04-01 08:00,2014-04-23 17:00,2014-04-01 08:00,2014-04-23 17:00,2014-04-01 08:00,2014-04-23 17:00,2014-07-03 08:00,2014-07-26 17:00,,PT_Normal,,,,,4GYg+uGbSES/xRhE+ONhkQ,,,,N,0,0,,,2013-02-16 15:52,2013-02-16 15:56,admin,admin
500466,6359,124423,13662,0,N,N,N,CP_Drtn,TT_Task,DT_FixedDUR2,TK_NotStart,DUKHCONP1BZ5ACGF4605,Fixing of Ventilation Equipments,8178,544,0,200,0,370,370,200,0,0,0,,,,2014-08-14 08:00,2014-09-11 17:00,,2014-05-24 08:00,2014-06-21 17:00,2014-05-24 08:00,2014-06-21 17:00,2014-05-24 08:00,2014-06-21 17:00,2014-08-14 08:00,2014-09-11 17:00,,PT_Normal,,,,,BNU3d5fgSGKHewjSf5SqqA,,,,N,0,0,,,2013-02-16 15:52,2013-02-16 15:56,admin,admin
500467,6359,124423,13662,0,N,N,N,CP_Drtn,TT_Task,DT_FixedDUR2,TK_NotStart,DUKHCONP1BZ5ACGF4610,Fixing of Split AC,8178,544,40,160,0,710,710,160,0,0,0,,,,2014-09-04 08:00,2014-09-27 17:00,,2014-06-14 08:00,2014-07-06 17:00,2014-06-14 08:00,2014-07-06 17:00,2014-06-14 08:00,2014-07-06 17:00,2014-09-04 08:00,2014-09-27 17:00,,PT_Normal,,,,,NoMZf4ifR7CAkLD0Jz+3/A,,,,N,0,0,,,2013-02-16 15:52,2013-02-16 15:56,admin,admin
500468,6359,124425,13662,0,N,N,N,CP_Drtn,TT_Task,DT_FixedDUR2,TK_NotStart,DUKHCONP1BZ5ELRF4070,Installation of Isolator,8178,24,0,144,0,1032,1032,144,0,0,0,,,,2014-09-07 08:00,2014-09-27 17:00,,2014-09-03 08:00,2014-09-23 17:00,2014-09-03 08:00,2014-09-23 17:00,2014-09-03 08:00,2014-09-23 17:00,2014-09-07 08:00,2014-09-27 17:00,,PT_Normal,,,,,gtJcQ/LmTJyHJeJkQVwnQw,,,,N,0,0,,,2013-02-16 15:52,2013-02-16 15:56,admin,admin
500469,6359,124425,13662,0,N,N,N,CP_Drtn,TT_Task,DT_FixedDUR2,TK_NotStart,DUKHCONP1BZ5ELRF4075,Installation of TV Dish Antenna,8178,24,0,184,0,2288,2288,184,0,0,0,,,,2014-09-18 08:00,2014-10-16 17:00,,2014-09-15 08:00,2014-10-13 17:00,2014-09-15 08:00,2014-10-13 17:00,2014-09-15 08:00,2014-10-13 17:00,2014-09-18 08:00,2014-10-16 17:00,,PT_Normal,,,,,DwVKC+/YQ9GhE3XKSKAacg,,,,N,0,0,,,2013-02-16 15:52,2013-02-16 15:56,admin,admin
500470,6359,124426,13662,0,N,N,N,CP_Drtn,TT_Task,DT_FixedDUR2,TK_NotStart,DUKHCONP1BZ5ELGF4000,Fixing of wall conduits & switch socket boxes,8178,464,0,200,0,3224,3224,200,0,0,0,,,,2014-05-08 08:00,2014-06-05 17:00,,2014-03-02 08:00,2014-03-30 17:00,2014-03-02 08:00,2014-03-30 17:00,2014-03-02 08:00,2014-03-30 17:00,2014-05-08 08:00,2014-06-05 17:00,,PT_Normal,,,,,bLEuKto4RbK02aPzKwJjfQ,,,,N,0,0,,,2013-02-16 15:52,2013-02-16 15:56,admin,admin
500471,6359,124426,13662,0,N,N,N,CP_Drtn,TT_Task,DT_FixedDUR2,TK_NotStart,DUKHCONP1BZ5ELGF4005,Cable tray & trunking installation,8178,608,0,160,0,3976,3976,160,0,0,0,,,,2014-06-10 08:00,2014-07-02 17:00,,2014-03-13 08:00,2014-04-05 17:00,2014-03-13 08:00,2014-04-05 17:00,2014-03-13 08:00,2014-04-05 17:00,2014-06-10 08:00,2014-07-02 17:00,,PT_Normal,,,,,447Yjrx5Qsu+jyhVcieG3w,,,,N,0,0,,,2013-02-16 15:52,2013-02-16 15:56,admin,admin
500472,6359,124426,13662,0,N,N,N,CP_Drtn,TT_Task,DT_FixedDUR2,TK_NotStart,DUKHCONP1BZ5ELGF4020,"Installation  of DBS,MCCB Accessories.",8178,392,0,160,0,568,568,160,0,0,0,,,,2014-07-26 08:00,2014-08-20 17:00,,2014-05-29 08:00,2014-06-21 17:00,2014-05-29 08:00,2014-06-21 17:00,2014-05-29 08:00,2014-06-21 17:00,2014-07-26 08:00,2014-08-20 17:00,,PT_Normal,,,,,CKUAqAzPQFOjNLeJsyoPxw,,,,N,0,0,,,2013-02-16 15:52,2013-02-16 15:56,admin,admin
500473,6359,124426,13662,0,N,N,N,CP_Drtn,TT_Task,DT_FixedDUR2,TK_NotStart,DUKHCONP1BZ5ELGF4025,Installation of Lighting fixtures & Accessories,8178,408,0,200,0,4128,4128,200,0,0,0,,,,2014-08-12 08:00,2014-09-09 17:00,,2014-06-10 08:00,2014-07-08 17:00,2014-06-10 08:00,2014-07-08 17:00,2014-06-10 08:00,2014-07-08 17:00,2014-08-12 08:00,2014-09-09 17:00,,PT_Normal,,,,,YAVUebhgQCmaPaKY/ZEB2g,,,,N,0,0,,,2013-02-16 15:52,2013-02-16 15:56,admin,admin
500474,6359,124426,13662,0,N,N,N,CP_Drtn,TT_Task,DT_FixedDUR2,TK_NotStart,DUKHCONP1BZ5ELGF4015,Install. of CAMS & Fire Fighting Accessories,8178,568,0,200,0,5712,5712,200,0,0,0,,,,2014-08-18 08:00,2014-09-15 17:00,,2014-05-24 08:00,2014-06-21 17:00,2014-05-24 08:00,2014-06-21 17:00,2014-05-24 08:00,2014-06-21 17:00,2014-08-18 08:00,2014-09-15 17:00,,PT_Normal,,,,,0OCJSATjQ3CXf9S0sDGgGA,,,,N,0,0,,,2013-02-16 15:52,2013-02-16 15:56,admin,admin
500475,6359,124426,13662,0,N,N,N,CP_Drtn,TT_Task,DT_FixedDUR2,TK_NotStart,DUKHCONP1BZ5ELGF4030,Installation of Telephone System,8178,392,40,160,0,1778,1778,160,0,0,0,,,,2014-08-10 08:00,2014-09-01 17:00,,2014-06-10 08:00,2014-07-02 17:00,2014-06-10 08:00,2014-07-02 17:00,2014-06-10 08:00,2014-07-02 17:00,2014-08-10 08:00,2014-09-01 17:00,,PT_Normal,,,,,kuIxR4IWQZyBNsSQKDrLmg,,,,N,0,0,,,2013-02-16 15:52,2013-02-16 15:56,admin,admin
500476,6359,124426,13662,0,N,N,N,CP_Drtn,TT_Task,DT_FixedDUR2,TK_NotStart,DUKHCONP1BZ5ELGF4010,Installation of wiring & Main Cabling,8178,608,216,200,0,796,796,200,0,0,0,,,,2014-06-18 08:00,2014-07-16 17:00,,2014-03-22 08:00,2014-04-19 17:00,2014-03-22 08:00,2014-04-19 17:00,2014-03-22 08:00,2014-04-19 17:00,2014-06-18 08:00,2014-07-16 17:00,,PT_Normal,,,,,0VjRCH2HSMmMWEn098n+Hw,,,,N,0,0,,,2013-02-16 15:52,2013-02-16 15:56,admin,admin
500477,6359,124427,13662,0,N,N,N,CP_Drtn,TT_Task,DT_FixedDUR2,TK_NotStart,DUKHCONP1BZ5ELFF4035,Fixing of wall conduits & switch socket boxes,8178,128,0,200,0,3224,3224,200,0,0,0,,,,2014-04-30 08:00,2014-05-28 17:00,,2014-04-12 08:00,2014-05-10 17:00,2014-04-12 08:00,2014-05-10 17:00,2014-04-12 08:00,2014-05-10 17:00,2014-04-30 08:00,2014-05-28 17:00,,PT_Normal,,,,,hxs+5OfYTNyh+LEmWRv2nA,,,,N,0,0,,,2013-02-16 15:52,2013-02-16 15:56,admin,admin
500478,6359,124427,13662,0,N,N,N,CP_Drtn,TT_Task,DT_FixedDUR2,TK_NotStart,DUKHCONP1BZ5ELFF4040,Cable tray & trunking installation,8178,368,0,160,0,3976,3976,160,0,0,0,,,,2014-06-16 08:00,2014-07-08 17:00,,2014-04-23 08:00,2014-05-15 17:00,2014-04-23 08:00,2014-05-15 17:00,2014-04-23 08:00,2014-05-15 17:00,2014-06-16 08:00,2014-07-08 17:00,,PT_Normal,,,,,WJ0yraXpTFmzYWXeQtNpBQ,,,,N,0,0,,,2013-02-16 15:52,2013-02-16 15:56,admin,admin
500479,6359,124427,13662,0,N,N,N,CP_Drtn,TT_Task,DT_FixedDUR2,TK_NotStart,DUKHCONP1BZ5ELFF4045,Installation of wiring & Main Cabling,8178,368,0,200,0,796,796,200,0,0,0,,,,2014-06-24 08:00,2014-07-22 17:00,,2014-05-01 08:00,2014-05-29 17:00,2014-05-01 08:00,2014-05-29 17:00,2014-05-01 08:00,2014-05-29 17:00,2014-06-24 08:00,2014-07-22 17:00,,PT_Normal,,,,,e5O7Sqf2SIum5If8eJAE4w,,,,N,0,0,,,2013-02-16 15:52,2013-02-16 15:56,admin,admin
500480,6359,124427,13662,0,N,N,N,CP_Drtn,TT_Task,DT_FixedDUR2,TK_NotStart,DUKHCONP1BZ5ELFF4060,"Installation  of DBS,MCCB Accessories.",8178,24,0,160,0,568,568,160,0,0,0,,,,2014-08-05 08:00,2014-08-27 17:00,,2014-07-29 08:00,2014-08-24 17:00,2014-07-29 08:00,2014-08-24 17:00,2014-07-29 08:00,2014-08-24 17:00,2014-08-05 08:00,2014-08-27 17:00,,PT_Normal,,,,,FS2sLllYQW22ZHeLyPEFIA,,,,N,0,0,,,2013-02-16 15:52,2013-02-16 15:56,admin,admin
500481,6359,124427,13662,0,N,N,N,CP_Drtn,TT_Task,DT_FixedDUR2,TK_NotStart,DUKHCONP1BZ5ELFF4065,Installation of Lighting fixtures & Accessories,8178,24,0,200,0,4128,4128,200,0,0,0,,,,2014-08-18 08:00,2014-09-15 17:00,,2014-08-14 08:00,2014-09-11 17:00,2014-08-14 08:00,2014-09-11 17:00,2014-08-14 08:00,2014-09-11 17:00,2014-08-18 08:00,2014-09-15 17:00,,PT_Normal,,,,,BmN7pR+oTniFnOyh8ymdLQ,,,,N,0,0,,,2013-02-16 15:52,2013-02-16 15:56,admin,admin
500482,6359,124427,13662,0,N,N,N,CP_Drtn,TT_Task,DT_FixedDUR2,TK_NotStart,DUKHCONP1BZ5ELFF4055,Install. of CAMS & Fire Fighting Accessories,8178,360,0,200,0,5712,5712,200,0,0,0,,,,2014-09-16 08:00,2014-10-16 17:00,,2014-07-22 08:00,2014-08-23 17:00,2014-07-22 08:00,2014-08-23 17:00,2014-07-22 08:00,2014-08-23 17:00,2014-09-16 08:00,2014-10-16 17:00,,PT_Normal,,,,,1ObXva20Q+KvBSIxcPRaQg,,,,N,0,0,,,2013-02-16 15:52,2013-02-16 15:56,admin,admin
500483,6359,124427,13662,0,N,N,N,CP_Drtn,TT_Task,DT_FixedDUR2,TK_NotStart,DUKHCONP1BZ5ELFF4050,Installation of Telephone System,8178,200,176,200,0,1778,1778,200,0,0,0,,,,2014-08-21 08:00,2014-09-18 17:00,,2014-07-20 08:00,2014-08-20 17:00,2014-07-20 08:00,2014-08-20 17:00,2014-07-20 08:00,2014-08-20 17:00,2014-08-21 08:00,2014-09-18 17:00,,PT_Normal,,,,,GnQ6+VqtQmWrZ2X+PbGn5w,,,,N,0,0,,,2013-02-16 15:52,2013-02-16 15:56,admin,admin
500484,6359,124429,13662,0,N,N,N,CP_Drtn,TT_Task,DT_FixedDUR2,TK_NotStart,DUKHCONP1BZ5PLGF4305,Installation of Plumbing pipes & testing,8178,392,0,144,0,1104,1104,144,0,0,0,,,,2014-05-08 08:00,2014-05-28 17:00,,2014-03-12 08:00,2014-04-01 17:00,2014-03-12 08:00,2014-04-01 17:00,2014-03-12 08:00,2014-04-01 17:00,2014-05-08 08:00,2014-05-28 17:00,,PT_Normal,,,,,datvyTzOSb2xWCffoEL5vg,,,,N,0,0,,,2013-02-16 15:52,2013-02-16 15:56,admin,admin
500485,6359,124429,13662,0,N,N,N,CP_Drtn,TT_Task,DT_FixedDUR2,TK_NotStart,DUKHCONP1BZ5PLGF4310,Installation of Drainage pipes &testing,8178,416,72,144,0,414,414,144,0,0,0,,,,2014-05-12 08:00,2014-06-01 17:00,,2014-03-12 08:00,2014-04-01 17:00,2014-03-12 08:00,2014-04-01 17:00,2014-03-12 08:00,2014-04-01 17:00,2014-05-12 08:00,2014-06-01 17:00,,PT_Normal,,,,,bmuPArNDRgyLTTRwN7SwSw,,,,N,0,0,,,2013-02-16 15:52,2013-02-16 15:56,admin,admin
500486,6359,124429,13662,0,N,N,N,CP_Drtn,TT_Task,DT_FixedDUR2,TK_NotStart,DUKHCONP1BZ5PLGF4315,Sanitary Fittings & Accessories,8178,648,0,160,0,252,252,160,0,0,0,,,,2014-09-16 08:00,2014-10-08 17:00,,2014-06-10 08:00,2014-07-02 17:00,2014-06-10 08:00,2014-07-02 17:00,2014-06-10 08:00,2014-07-02 17:00,2014-09-16 08:00,2014-10-08 17:00,,PT_Normal,,,,,mYBVsy26Qea0Tpst1mYQIw,,,,N,0,0,,,2013-02-16 15:52,2013-02-16 15:56,admin,admin
500487,6359,124429,13662,0,N,N,N,CP_Drtn,TT_Task,DT_FixedDUR2,TK_NotStart,DUKHCONP1BZ5PLGF4320,Installation of Water Heater,8178,648,80,120,0,252,252,120,0,0,0,,,,2014-09-28 08:00,2014-10-16 17:00,,2014-06-22 08:00,2014-07-08 17:00,2014-06-22 08:00,2014-07-08 17:00,2014-06-22 08:00,2014-07-08 17:00,2014-09-28 08:00,2014-10-16 17:00,,PT_Normal,,,,,LK32xj94QGa4LPJXwnDRQA,,,,N,0,0,,,2013-02-16 15:52,2013-02-16 15:56,admin,admin
500488,6359,124429,13662,0,N,N,N,CP_Drtn,TT_Task,DT_FixedDUR2,TK_NotStart,DUKHCONP1BZ5PLUG4300,Drainage / Storm Pipes in Grade Slab,8178,88,0,160,0,138,138,160,0,0,0,,,,2013-12-07 08:00,2013-12-30 17:00,,2013-11-24 08:00,2013-12-16 17:00,2013-11-24 08:00,2013-12-16 17:00,2013-11-24 08:00,2013-12-16 17:00,2013-12-07 08:00,2013-12-30 17:00,,PT_Normal,,,,,BtHBFkrsSm6be6SWwN2a7w,,,,N,0,0,,,2013-02-16 15:52,2013-02-16 15:56,admin,admin
500489,6359,124430,13662,0,N,N,N,CP_Drtn,TT_Task,DT_FixedDUR2,TK_NotStart,DUKHCONP1BZ5PLFF4325,Installation of Plumbing pipes & testing,8178,24,0,144,0,1104,1104,144,0,0,0,,,,2014-04-27 08:00,2014-05-17 17:00,,2014-04-23 08:00,2014-05-13 17:00,2014-04-23 08:00,2014-05-13 17:00,2014-04-23 08:00,2014-05-13 17:00,2014-04-27 08:00,2014-05-17 17:00,,PT_Normal,,,,,xg97YbxgQRG+8MV0Zluwig,,,,N,0,0,,,2013-02-16 15:52,2013-02-16 15:56,admin,admin
500490,6359,124430,13662,0,N,N,N,CP_Drtn,TT_Task,DT_FixedDUR2,TK_NotStart,DUKHCONP1BZ5PLFF4330,Installation of Drainage pipes & testing,8178,240,56,144,0,414,414,144,0,0,0,,,,2014-05-28 08:00,2014-06-17 17:00,,2014-04-23 08:00,2014-05-13 17:00,2014-04-23 08:00,2014-05-13 17:00,2014-04-23 08:00,2014-05-13 17:00,2014-05-28 08:00,2014-06-17 17:00,,PT_Normal,,,,,Hf1H/i6uQ9uaoBCrSL44CA,,,,N,0,0,,,2013-02-16 15:52,2013-02-16 15:56,admin,admin
500491,6359,124430,13662,0,N,N,N,CP_Drtn,TT_Task,DT_FixedDUR2,TK_NotStart,DUKHCONP1BZ5PLFF4335,Sanitary Fittings & Accessories,8178,152,0,160,0,252,252,160,0,0,0,,,,2014-08-30 08:00,2014-09-21 17:00,,2014-08-07 08:00,2014-08-30 17:00,2014-08-07 08:00,2014-08-30 17:00,2014-08-07 08:00,2014-08-30 17:00,2014-08-30 08:00,2014-09-21 17:00,,PT_Normal,,,,,d6BJlXuxSaubhrSSUsR0iQ,,,,N,0,0,,,2013-02-16 15:52,2013-02-16 15:56,admin,admin
500492,6359,124430,13662,0,N,N,N,CP_Drtn,TT_Task,DT_FixedDUR2,TK_NotStart,DUKHCONP1BZ5PLFF4340,Installation of Water Heater,8178,152,0,120,0,168,168,120,0,0,0,,,,2014-09-10 08:00,2014-09-27 17:00,,2014-08-19 08:00,2014-09-04 17:00,2014-08-19 08:00,2014-09-04 17:00,2014-08-19 08:00,2014-09-04 17:00,2014-09-10 08:00,2014-09-27 17:00,,PT_Normal,,,,,QVscYScGQEik7LlHp1GKsg,,,,N,0,0,,,2013-02-16 15:52,2013-02-16 15:56,admin,admin
500493,6359,124431,13662,0,N,N,N,CP_Drtn,TT_Task,DT_FixedDUR2,TK_NotStart,DUKHCONP1BZ5PLRF4345,Installation of Plumbing pipes & fittings,8178,688,56,112,0,360,360,112,0,0,0,,,,2014-09-01 08:00,2014-09-16 17:00,,2014-05-20 08:00,2014-06-04 17:00,2014-05-20 08:00,2014-06-04 17:00,2014-05-20 08:00,2014-06-04 17:00,2014-09-01 08:00,2014-09-16 17:00,,PT_Normal,,,,,EyeypzCYSMySZtfIYd27FA,,,,N,0,0,,,2013-02-16 15:52,2013-02-16 15:56,admin,admin
500494,6359,124431,13662,0,N,N,N,CP_Drtn,TT_Task,DT_FixedDUR2,TK_NotStart,DUKHCONP1BZ5PLRF4350,Installation of Rain water Pipes,,632,80,120,0,0,0,120,0,0,0,,,,2014-09-10 08:00,2014-09-27 17:00,,2014-06-07 08:00,2014-06-23 17:00,2014-06-07 08:00,2014-06-23 17:00,2014-06-07 08:00,2014-06-23 17:00,2014-09-10 08:00,2014-09-27 17:00,,PT_Normal,,,,,PCa1r9RsT8GNuhkypaTGgQ,,,,N,0,0,,,2013-02-16 15:52,2013-02-16 15:56,admin,admin
500495,6359,124431,13662,0,N,N,N,CP_Drtn,TT_Task,DT_FixedDUR2,TK_NotStart,DUKHCONP1BZ5PLRF4355,Roof  Water Tank Installation & Connections,8178,152,0,200,0,840,840,200,0,0,0,,,,2014-09-16 08:00,2014-10-16 17:00,,2014-08-25 08:00,2014-09-22 17:00,2014-08-25 08:00,2014-09-22 17:00,2014-08-25 08:00,2014-09-22 17:00,2014-09-16 08:00,2014-10-16 17:00,,PT_Normal,,,,,6GFkKPVdQcyikB6Igd6dzw,,,,N,0,0,,,2013-02-16 15:52,2013-02-16 15:56,admin,admin
500496,6359,124433,13662,0,N,N,N,CP_Drtn,TT_Task,DT_FixedDUR2,TK_NotStart,DUKHCONP1BZ5MSEX5335,Aluminum Roll-up Shutter with 2m Wall,8178,200,0,200,0,400,400,200,0,0,0,,,,2014-10-18 08:00,2014-11-15 17:00,,2014-09-16 08:00,2014-10-16 17:00,2014-09-16 08:00,2014-10-16 17:00,2014-09-16 08:00,2014-10-16 17:00,2014-10-18 08:00,2014-11-15 17:00,,PT_Normal,,,,,K8UKCMk/SgitpFxdXZ8C6g,,,,N,0,0,,,2013-02-16 15:52,2013-02-16 15:56,admin,admin
500497,6359,124433,13662,0,N,N,N,CP_Drtn,TT_Task,DT_FixedDUR2,TK_NotStart,DUKHCONP1BZ5MSEX5020,Construction Entrance Ramp,8164,552,0,200,0,1610,1610,200,0,0,0,,,,2014-06-26 08:00,2014-07-24 17:00,,2014-04-07 08:00,2014-05-05 17:00,2014-04-07 08:00,2014-05-05 17:00,2014-04-07 08:00,2014-05-05 17:00,2014-06-26 08:00,2014-07-24 17:00,,PT_Normal,,,,,T440paxnTo2faga40YDu4A,,,,N,0,0,,,2013-02-16 15:52,2013-02-16 15:56,admin,admin
500498,6359,124433,13662,0,N,N,N,CP_Drtn,TT_Task,DT_FixedDUR2,TK_NotStart,DUKHCONP1BZ5MSEX5025,SS.Handrails and Balustrades,8178,568,0,160,0,500,500,160,0,0,0,,,,2014-07-16 08:00,2014-08-11 17:00,,2014-04-24 08:00,2014-05-17 17:00,2014-04-24 08:00,2014-05-17 17:00,2014-04-24 08:00,2014-05-17 17:00,2014-07-16 08:00,2014-08-11 17:00,,PT_Normal,,,,,UtjayQ9lRU2E2aqg94FptA,,,,N,0,0,,,2013-02-16 15:52,2013-02-16 15:56,admin,admin
500499,6359,124433,13662,0,N,N,N,CP_Drtn,TT_Task,DT_FixedDUR2,TK_NotStart,DUKHCONP1BZ5MSEX5015,Construction of grease Trap,8178,344,0,160,0,110,110,160,0,0,0,,,,2014-06-26 08:00,2014-07-19 17:00,,2014-05-07 08:00,2014-05-29 17:00,2014-05-07 08:00,2014-05-29 17:00,2014-05-07 08:00,2014-05-29 17:00,2014-06-26 08:00,2014-07-19 17:00,,PT_Normal,,,,,M+HpzSTZQTi/oHsfNRGPaw,,,,N,0,0,,,2013-02-16 15:52,2013-02-16 15:56,admin,admin
500500,6359,124433,13662,0,N,N,N,CP_Drtn,TT_Task,DT_FixedDUR2,TK_NotStart,DUKHCONP1BZ5MSEX5000,Construction of Manholes,8172,344,0,200,0,1100,1100,200,0,0,0,,,,2014-05-24 08:00,2014-06-21 17:00,,2014-04-03 08:00,2014-05-01 17:00,2014-04-03 08:00,2014-05-01 17:00,2014-04-03 08:00,2014-05-01 17:00,2014-05-24 08:00,2014-06-21 17:00,,PT_Normal,,,,,3Pz1goMGQEiPy3hySsi3eA,,,,N,0,0,,,2013-02-16 15:52,2013-02-16 15:56,admin,admin
500501,6359,124433,13662,0,N,N,N,CP_Drtn,TT_Task,DT_FixedDUR2,TK_NotStart,DUKHCONP1BZ5MSEX5005,"Construction  of Soak pit, Chambers",8172,344,0,200,0,220,220,200,0,0,0,,,,2014-06-07 08:00,2014-07-05 17:00,,2014-04-17 08:00,2014-05-15 17:00,2014-04-17 08:00,2014-05-15 17:00,2014-04-17 08:00,2014-05-15 17:00,2014-06-07 08:00,2014-07-05 17:00,,PT_Normal,,,,,mGlY4wQYSAqWL8nMG8yaSg,,,,N,0,0,,,2013-02-16 15:52,2013-02-16 15:56,admin,admin
500502,6359,124433,13662,0,N,N,N,CP_Drtn,TT_Task,DT_FixedDUR2,TK_NotStart,DUKHCONP1BZ5MSEX5010,Telephone cable laying,8177,344,144,200,0,500,500,200,0,0,0,,,,2014-07-20 08:00,2014-08-20 17:00,,2014-05-31 08:00,2014-06-28 17:00,2014-05-31 08:00,2014-06-28 17:00,2014-05-31 08:00,2014-06-28 17:00,2014-07-20 08:00,2014-08-20 17:00,,PT_Normal,,,,,DI+AkW7sSq6YRHK2j/tPgA,,,,N,0,0,,,2013-02-16 15:52,2013-02-16 15:56,admin,admin
500503,6359,124434,13662,0,N,N,N,CP_Drtn,TT_Task,DT_FixedDUR2,TK_NotStart,DUKHCONP1BZ5SLEX5105,Laying of Grass/ green area,8178,568,0,200,0,6860,6860,200,0,0,0,,,,2014-09-04 08:00,2014-10-02 17:00,,2014-06-10 08:00,2014-07-08 17:00,2014-06-10 08:00,2014-07-08 17:00,2014-06-10 08:00,2014-07-08 17:00,2014-09-04 08:00,2014-10-02 17:00,,PT_Normal,,,,,EGbh3b0oQBWTLdJkSVUgTw,,,,N,0,0,,,2013-02-16 15:52,2013-02-16 15:56,admin,admin
500504,6359,124434,13662,0,N,N,N,CP_Drtn,TT_Task,DT_FixedDUR2,TK_NotStart,DUKHCONP1BZ5SLEX5110,Laying of Palm tree,8178,568,544,200,0,420,420,200,0,0,0,,,,2014-09-16 08:00,2014-10-16 17:00,,2014-06-22 08:00,2014-07-20 17:00,2014-06-22 08:00,2014-07-20 17:00,2014-06-22 08:00,2014-07-20 17:00,2014-09-16 08:00,2014-10-16 17:00,,PT_Normal,,,,,bYfr5jrmSeOTRgZ2h+bvDg,,,,N,0,0,,,2013-02-16 15:52,2013-02-16 15:56,admin,admin
500505,6359,124435,13662,0,N,N,N,CP_Drtn,TT_Task,DT_FixedDUR2,TK_NotStart,DUKHCONP1BZ5WEEX5030,Excavation,8177,408,0,160,0,140,140,160,80,0,80,,,,2014-06-25 08:00,2014-07-17 17:00,,2014-04-27 08:00,2014-05-19 17:00,2014-04-27 08:00,2014-05-19 17:00,2014-04-27 08:00,2014-05-19 17:00,2014-06-25 08:00,2014-07-17 17:00,,PT_Normal,,,,,+vso7Tf/QX6GrObDvOEAzQ,,,,N,0,0,,,2013-02-16 15:52,2013-02-16 15:56,admin,admin
500506,6359,124435,13662,0,N,N,N,CP_Drtn,TT_Task,DT_FixedDUR2,TK_NotStart,DUKHCONP1BZ5WEEX5035,Construction of Raft,8165,408,0,200,0,2030,2030,200,0,0,0,,,,2014-07-07 08:00,2014-08-07 17:00,,2014-05-08 08:00,2014-06-05 17:00,2014-05-08 08:00,2014-06-05 17:00,2014-05-08 08:00,2014-06-05 17:00,2014-07-07 08:00,2014-08-07 17:00,,PT_Normal,,,,,xxR1l9MvSleoPIkqQbctsA,,,,N,0,0,,,2013-02-16 15:52,2013-02-16 15:56,admin,admin
500507,6359,124435,13662,0,N,N,N,CP_Drtn,TT_Task,DT_FixedDUR2,TK_NotStart,DUKHCONP1BZ5WEEX5040,Block works & Plastering,8168,472,0,200,0,1110,1110,200,0,0,0,,,,2014-07-28 08:00,2014-08-28 17:00,,2014-05-20 08:00,2014-06-17 17:00,2014-05-20 08:00,2014-06-17 17:00,2014-05-20 08:00,2014-06-17 17:00,2014-07-28 08:00,2014-08-28 17:00,,PT_Normal,,,,,L0gsXLDZScmlX30eUTkNPw,,,,N,0,0,,,2013-02-16 15:52,2013-02-16 15:56,admin,admin
500508,6359,124435,13662,0,N,N,N,CP_Drtn,TT_Task,DT_FixedDUR2,TK_NotStart,DUKHCONP1BZ5WEEX5045,Flooring & Painting,8178,472,0,200,0,510,510,200,0,0,0,,,,2014-08-12 08:00,2014-09-09 17:00,,2014-06-01 08:00,2014-06-29 17:00,2014-06-01 08:00,2014-06-29 17:00,2014-06-01 08:00,2014-06-29 17:00,2014-08-12 08:00,2014-09-09 17:00,,PT_Normal,,,,,gpsWh60eT3G0e/G+2060uA,,,,N,0,0,,,2013-02-16 15:52,2013-02-16 15:56,admin,admin
500509,6359,124435,13662,0,N,N,N,CP_Drtn,TT_Task,DT_FixedDUR2,TK_NotStart,DUKHCONP1BZ5WEEX5050,Installation of Steel Gate,8178,472,40,160,0,140,140,160,0,0,0,,,,2014-08-30 08:00,2014-09-21 17:00,,2014-06-18 08:00,2014-07-10 17:00,2014-06-18 08:00,2014-07-10 17:00,2014-06-18 08:00,2014-07-10 17:00,2014-08-30 08:00,2014-09-21 17:00,,PT_Normal,,,,,svytQr+LQ3yuoQdYP8BONQ,,,,N,0,0,,,2013-02-16 15:52,2013-02-16 15:56,admin,admin
500510,6359,124435,13662,0,N,N,N,CP_Drtn,TT_Task,DT_FixedDUR2,TK_NotStart,DUKHCONP1BZ5WEEX5060,Structural steel &  SS Shed cover installation,8178,432,0,200,0,770,770,200,0,0,0,,,,2014-09-04 08:00,2014-10-02 17:00,,2014-06-30 08:00,2014-07-28 17:00,2014-06-30 08:00,2014-07-28 17:00,2014-06-30 08:00,2014-07-28 17:00,2014-09-04 08:00,2014-10-02 17:00,,PT_Normal,,,,,uEOYWOnARsKVUzlvZnIgdA,,,,N,0,0,,,2013-02-16 15:52,2013-02-16 15:56,admin,admin
500511,6359,124435,13662,0,N,N,N,CP_Drtn,TT_Task,DT_FixedDUR2,TK_NotStart,DUKHCONP1BZ5WEEX5065,"Install. of Water Tank,Chiller,Pump & Meter",8178,432,24,200,0,478,478,200,0,0,0,,,,2014-09-16 08:00,2014-10-16 17:00,,2014-07-12 08:00,2014-08-12 17:00,2014-07-12 08:00,2014-08-12 17:00,2014-07-12 08:00,2014-08-12 17:00,2014-09-16 08:00,2014-10-16 17:00,,PT_Normal,,,,,gamxbDTfSHWi4ISQ7P8qPg,,,,N,0,0,,,2013-02-16 15:52,2013-02-16 15:56,admin,admin
500512,6359,124436,13662,0,N,N,N,CP_Drtn,TT_Task,DT_FixedDUR2,TK_NotStart,DUKHCONP1BZ5HDEX5090,kerb works,8173,568,0,160,0,890,890,160,0,0,0,,,,2014-07-24 08:00,2014-08-19 17:00,,2014-05-03 08:00,2014-05-25 17:00,2014-05-03 08:00,2014-05-25 17:00,2014-05-03 08:00,2014-05-25 17:00,2014-07-24 08:00,2014-08-19 17:00,,PT_Normal,,,,,RTz3eq9NSBuYXx7a80xebw,,,,N,0,0,,,2013-02-16 15:52,2013-02-16 15:56,admin,admin
500513,6359,124436,13662,0,N,N,N,CP_Drtn,TT_Task,DT_FixedDUR2,TK_NotStart,DUKHCONP1BZ5HDEX5095,Cobble Stone Works,8170,568,0,160,0,570,570,160,0,0,0,,,,2014-08-09 08:00,2014-08-31 17:00,,2014-05-14 08:00,2014-06-05 17:00,2014-05-14 08:00,2014-06-05 17:00,2014-05-14 08:00,2014-06-05 17:00,2014-08-09 08:00,2014-08-31 17:00,,PT_Normal,,,,,ZYt7xHOvQwKSmF1EypWGtw,,,,N,0,0,,,2013-02-16 15:52,2013-02-16 15:56,admin,admin
500514,6359,124436,13662,0,N,N,N,CP_Drtn,TT_Task,DT_FixedDUR2,TK_NotStart,DUKHCONP1BZ5HDEX5100,Interlock works,8174,568,0,160,0,510,510,160,0,0,0,,,,2014-08-24 08:00,2014-09-15 17:00,,2014-05-29 08:00,2014-06-21 17:00,2014-05-29 08:00,2014-06-21 17:00,2014-05-29 08:00,2014-06-21 17:00,2014-08-24 08:00,2014-09-15 17:00,,PT_Normal,,,,,z6RIrxTbRJCIh9ImDymytg,,,,N,0,0,,,2013-02-16 15:52,2013-02-16 15:56,admin,admin
500515,6359,124439,13662,0,N,N,N,CP_Drtn,TT_Task,DT_FixedDUR2,TK_NotStart,DUKHCONP1BZ5ARFF3300,Block work,8168,24,0,200,0,9175,9175,200,0,0,0,,,,2014-04-09 08:00,2014-05-07 17:00,,2014-04-06 08:00,2014-05-04 17:00,2014-04-06 08:00,2014-05-04 17:00,2014-04-06 08:00,2014-05-04 17:00,2014-04-09 08:00,2014-05-07 17:00,,PT_Normal,,,,,177APofTTKCZucwWJCJIoQ,,,,N,0,0,,,2013-02-16 15:52,2013-02-16 15:56,admin,admin
500516,6359,124439,13662,0,N,N,N,CP_Drtn,TT_Task,DT_FixedDUR2,TK_NotStart,DUKHCONP1BZ5ARFF3305,Plastering work,8169,24,0,200,0,9399,9399,200,0,0,0,,,,2014-05-06 08:00,2014-06-03 17:00,,2014-05-03 08:00,2014-05-31 17:00,2014-05-03 08:00,2014-05-31 17:00,2014-05-03 08:00,2014-05-31 17:00,2014-05-06 08:00,2014-06-03 17:00,,PT_Normal,,,,,VGCw+kl3R8+pk3eDU6OgOg,,,,N,0,0,,,2013-02-16 15:52,2013-02-16 15:56,admin,admin
500517,6359,124439,13662,0,N,N,N,CP_Drtn,TT_Task,DT_FixedDUR2,TK_NotStart,DUKHCONP1BZ5ARFF3310,Flooring screed,8164,160,136,168,0,1352,1352,168,0,0,0,,,,2014-06-03 08:00,2014-06-26 17:00,,2014-05-11 08:00,2014-06-03 17:00,2014-05-11 08:00,2014-06-03 17:00,2014-05-11 08:00,2014-06-03 17:00,2014-06-03 08:00,2014-06-26 17:00,,PT_Normal,,,,,+osOaAr0QAmWFQDiN7KQhA,,,,N,0,0,,,2013-02-16 15:52,2013-02-16 15:56,admin,admin
500518,6359,124439,13662,0,N,N,N,CP_Drtn,TT_Task,DT_FixedDUR2,TK_NotStart,DUKHCONP1BZ5ARFF3315,Wet area waterproofing,8178,24,0,120,0,1716,1716,120,0,0,0,,,,2014-05-27 08:00,2014-06-12 17:00,,2014-05-24 08:00,2014-06-09 17:00,2014-05-24 08:00,2014-06-09 17:00,2014-05-24 08:00,2014-06-09 17:00,2014-05-27 08:00,2014-06-12 17:00,,PT_Normal,,,,,KIIHBLbzQgaGV2/79WdSuw,,,,N,0,0,,,2013-02-16 15:52,2013-02-16 15:56,admin,admin
500519,6359,124439,13662,0,N,N,N,CP_Drtn,TT_Task,DT_FixedDUR2,TK_NotStart,DUKHCONP1BZ5ARFF3330,Paint First coat,8178,232,208,200,0,6570.3,6570.3,200,0,0,0,,,,2014-06-22 08:00,2014-07-20 17:00,,2014-05-19 08:00,2014-06-16 17:00,2014-05-19 08:00,2014-06-16 17:00,2014-05-19 08:00,2014-06-16 17:00,2014-06-22 08:00,2014-07-20 17:00,,PT_Normal,,,,,wXEuYgylTFyx6r8QL+SKig,,,,N,0,0,,,2013-02-16 15:52,2013-02-23 09:03,admin,admin
500520,6359,124439,13662,0,N,N,N,CP_Drtn,TT_Task,DT_FixedDUR2,TK_NotStart,DUKHCONP1BZ5ARFF3320,Ceramic Wall Tiling,8170,24,0,200,0,1893.75,1893.75,200,0,0,0,,,,2014-06-05 08:00,2014-07-03 17:00,,2014-06-02 08:00,2014-06-30 17:00,2014-06-02 08:00,2014-06-30 17:00,2014-06-02 08:00,2014-06-30 17:00,2014-06-05 08:00,2014-07-03 17:00,,PT_Normal,,,,,mCLvfV1uRMmGvitPe45lgQ,,,,N,0,0,,,2013-02-16 15:52,2013-02-16 15:56,admin,admin
500521,6359,124439,13662,0,N,N,N,CP_Drtn,TT_Task,DT_FixedDUR2,TK_NotStart,DUKHCONP1BZ5ARFF3325,Porcelain Tile flooring,8170,24,0,200,0,1675,1675,200,0,0,0,,,,2014-06-15 08:00,2014-07-13 17:00,,2014-06-11 08:00,2014-07-09 17:00,2014-06-11 08:00,2014-07-09 17:00,2014-06-11 08:00,2014-07-09 17:00,2014-06-15 08:00,2014-07-13 17:00,,PT_Normal,,,,,iUlItKvoQwCnQPsQo5z2Hg,,,,N,0,0,,,2013-02-16 15:52,2013-02-16 15:56,admin,admin
500522,6359,124439,13662,0,N,N,N,CP_Drtn,TT_Task,DT_FixedDUR2,TK_NotStart,DUKHCONP1BZ5ARFF3335,Slate Tile Flooring & Skirting,8170,176,152,120,0,1162.5,1162.5,120,0,0,0,,,,2014-07-24 08:00,2014-08-13 17:00,,2014-06-29 08:00,2014-07-15 17:00,2014-06-29 08:00,2014-07-15 17:00,2014-06-29 08:00,2014-07-15 17:00,2014-07-24 08:00,2014-08-13 17:00,,PT_Normal,,,,,9niuUe1UQI6h6QgJWfl/3w,,,,N,0,0,,,2013-02-16 15:52,2013-02-16 15:56,admin,admin
500523,6359,124439,13662,0,N,N,N,CP_Drtn,TT_Task,DT_FixedDUR2,TK_NotStart,DUKHCONP1BZ5ARFF3350,Granite - Stair case flooring & Skirting,8171,112,88,160,0,1062.5,1062.5,160,0,0,0,,,,2014-07-19 08:00,2014-08-13 17:00,,2014-07-02 08:00,2014-07-24 17:00,2014-07-02 08:00,2014-07-24 17:00,2014-07-02 08:00,2014-07-24 17:00,2014-07-19 08:00,2014-08-13 17:00,,PT_Normal,,,,,d5b2hnGkQEiG1m/CGboZBA,,,,N,0,0,,,2013-02-16 15:52,2013-02-16 15:56,admin,admin
500524,6359,124439,13662,0,N,N,N,CP_Drtn,TT_Task,DT_FixedDUR2,TK_NotStart,DUKHCONP1BZ5ARFF3345,Fixing of Suspension systems,8178,24,0,160,0,1487.5,1487.5,160,0,0,0,,,,2014-07-06 08:00,2014-07-28 17:00,,2014-07-02 08:00,2014-07-24 17:00,2014-07-02 08:00,2014-07-24 17:00,2014-07-02 08:00,2014-07-24 17:00,2014-07-06 08:00,2014-07-28 17:00,,PT_Normal,,,,,YneQdNU7TkGiEyi7gCuNqQ,,,,N,0,0,,,2013-02-16 15:52,2013-02-16 15:56,admin,admin
500525,6359,124439,13662,0,N,N,N,CP_Drtn,TT_Task,DT_FixedDUR2,TK_NotStart,DUKHCONP1BZ5ARFF3360,Gypsum board false ceiling,8178,24,0,200,0,1487.5,1487.5,200,0,0,0,,,,2014-07-17 08:00,2014-08-18 17:00,,2014-07-14 08:00,2014-08-14 17:00,2014-07-14 08:00,2014-08-14 17:00,2014-07-14 08:00,2014-08-14 17:00,2014-07-17 08:00,2014-08-18 17:00,,PT_Normal,,,,,z7tYs7raSqqb7aS8cnyZlg,,,,N,0,0,,,2013-02-16 15:52,2013-02-16 15:56,admin,admin
500526,6359,124439,13662,0,N,N,N,CP_Drtn,TT_Task,DT_FixedDUR2,TK_NotStart,DUKHCONP1BZ5ARFF3365,Wooden door,8178,24,0,120,0,220,220,120,0,0,0,,,,2014-08-05 08:00,2014-08-21 17:00,,2014-07-29 08:00,2014-08-18 17:00,2014-07-29 08:00,2014-08-18 17:00,2014-07-29 08:00,2014-08-18 17:00,2014-08-05 08:00,2014-08-21 17:00,,PT_Normal,,,,,VKiT5qUbRaWHySHPvY7STg,,,,N,0,0,,,2013-02-16 15:52,2013-02-16 15:56,admin,admin
500527,6359,124439,13662,0,N,N,N,CP_Drtn,TT_Task,DT_FixedDUR2,TK_NotStart,DUKHCONP1BZ5ARFF3370,Aluminum Door,8178,24,0,160,0,165,165,160,0,0,0,,,,2014-08-13 08:00,2014-09-04 17:00,,2014-08-10 08:00,2014-09-01 17:00,2014-08-10 08:00,2014-09-01 17:00,2014-08-10 08:00,2014-09-01 17:00,2014-08-13 08:00,2014-09-04 17:00,,PT_Normal,,,,,vSAKN8QqRtyjzuJtiE+MEg,,,,N,0,0,,,2013-02-16 15:52,2013-02-16 15:56,admin,admin
500528,6359,124439,13662,0,N,N,N,CP_Drtn,TT_Task,DT_FixedDUR2,TK_NotStart,DUKHCONP1BZ5ARFF3380,Aluminum windows,8178,128,104,160,0,338.25,338.25,160,0,0,0,,,,2014-09-04 08:00,2014-09-27 17:00,,2014-08-17 08:00,2014-09-08 17:00,2014-08-17 08:00,2014-09-08 17:00,2014-08-17 08:00,2014-09-08 17:00,2014-09-04 08:00,2014-09-27 17:00,,PT_Normal,,,,,Fgti9eooSUqMoqCbMf9tqg,,,,N,0,0,,,2013-02-16 15:52,2013-02-16 15:56,admin,admin
500529,6359,124439,13662,0,N,N,N,CP_Drtn,TT_Task,DT_FixedDUR2,TK_NotStart,DUKHCONP1BZ5ARFF3375,Carpentry & Joinery Works,8178,24,0,200,0,880,880,200,0,0,0,,,,2014-08-21 08:00,2014-09-18 17:00,,2014-08-18 08:00,2014-09-15 17:00,2014-08-18 08:00,2014-09-15 17:00,2014-08-18 08:00,2014-09-15 17:00,2014-08-21 08:00,2014-09-18 17:00,,PT_Normal,,,,,PC5suabyRH28G2qQwdG89w,,,,N,0,0,,,2013-02-16 15:52,2013-02-16 15:56,admin,admin
500530,6359,124439,13662,0,N,N,N,CP_Drtn,TT_Task,DT_FixedDUR2,TK_NotStart,DUKHCONP1BZ5ARFF3390,Installation of Granite Counter Top,8171,40,16,160,0,137.5,137.5,160,0,0,0,,,,2014-09-07 08:00,2014-09-29 17:00,,2014-09-01 08:00,2014-09-23 17:00,2014-09-01 08:00,2014-09-23 17:00,2014-09-01 08:00,2014-09-23 17:00,2014-09-07 08:00,2014-09-29 17:00,,PT_Normal,,,,,SSKw50f9SO6CaH6fRmSf9g,,,,N,0,0,,,2013-02-16 15:52,2013-02-16 15:56,admin,admin
500531,6359,124439,13662,0,N,N,N,CP_Drtn,TT_Task,DT_FixedDUR2,TK_NotStart,DUKHCONP1BZ5ARFF3385,Handrail &  Balustrade,8178,24,0,160,0,218.75,218.75,160,0,0,0,,,,2014-09-04 08:00,2014-09-27 17:00,,2014-09-01 08:00,2014-09-23 17:00,2014-09-01 08:00,2014-09-23 17:00,2014-09-01 08:00,2014-09-23 17:00,2014-09-04 08:00,2014-09-27 17:00,,PT_Normal,,,,,hAGSSjTgTCiBKpsNWg9yiQ,,,,N,0,0,,,2013-02-16 15:52,2013-02-16 15:56,admin,admin
500532,6359,124439,13662,0,N,N,N,CP_Drtn,TT_Task,DT_FixedDUR2,TK_NotStart,DUKHCONP1BZ5ARFF3395,Final Painting,8178,24,0,200,0,6570.3,6570.3,200,0,0,0,,,,2014-09-16 08:00,2014-10-16 17:00,,2014-09-13 08:00,2014-10-13 17:00,2014-09-13 08:00,2014-10-13 17:00,2014-09-13 08:00,2014-10-13 17:00,2014-09-16 08:00,2014-10-16 17:00,,PT_Normal,,,,,kPp7+SP4S2S94h//yedXug,,,,N,0,0,,,2013-02-16 15:52,2013-02-23 09:03,admin,admin
500533,6359,124440,13662,0,N,N,N,CP_Drtn,TT_Task,DT_FixedDUR2,TK_NotStart,DUKHCONP1BZ5ARGF3000,Block work,8168,392,0,200,0,11578.5,11578.5,200,0,0,0,,,,2014-04-22 08:00,2014-05-20 17:00,,2014-02-24 08:00,2014-03-24 17:00,2014-02-24 08:00,2014-03-24 17:00,2014-02-24 08:00,2014-03-24 17:00,2014-04-22 08:00,2014-05-20 17:00,,PT_Normal,,,,,qn70zUGGRQ2iwNpTUG1q6g,,,,N,0,0,,,2013-02-16 15:52,2013-02-16 15:56,admin,admin
500534,6359,124440,13662,0,N,N,N,CP_Drtn,TT_Task,DT_FixedDUR2,TK_NotStart,DUKHCONP1BZ5ARGF3005,Plastering work,8169,392,0,200,0,14187.5,14187.5,200,0,0,0,,,,2014-05-14 08:00,2014-06-11 17:00,,2014-03-18 08:00,2014-04-15 17:00,2014-03-18 08:00,2014-04-15 17:00,2014-03-18 08:00,2014-04-15 17:00,2014-05-14 08:00,2014-06-11 17:00,,PT_Normal,,,,,8uj/COaJSlCL20bLkOehTQ,,,,N,0,0,,,2013-02-16 15:52,2013-02-16 15:56,admin,admin
500535,6359,124440,13662,0,N,N,N,CP_Drtn,TT_Task,DT_FixedDUR2,TK_NotStart,DUKHCONP1BZ5ARGF3010,Flooring screed,8164,456,64,168,0,2713.25,2713.25,168,0,0,0,,,,2014-06-01 08:00,2014-06-24 17:00,,2014-03-26 08:00,2014-04-19 17:00,2014-03-26 08:00,2014-04-19 17:00,2014-03-26 08:00,2014-04-19 17:00,2014-06-01 08:00,2014-06-24 17:00,,PT_Normal,,,,,Pfwu4nfCTZO9wQaJzUWKFA,,,,N,0,0,,,2013-02-16 15:52,2013-02-16 15:56,admin,admin
500536,6359,124440,13662,0,N,N,N,CP_Drtn,TT_Task,DT_FixedDUR2,TK_NotStart,DUKHCONP1BZ5ARGF3015,Wet area waterproofing & Protection Screed,8178,392,0,120,0,528,528,120,0,0,0,,,,2014-06-01 08:00,2014-06-17 17:00,,2014-04-05 08:00,2014-04-21 17:00,2014-04-05 08:00,2014-04-21 17:00,2014-04-05 08:00,2014-04-21 17:00,2014-06-01 08:00,2014-06-17 17:00,,PT_Normal,,,,,qzKhW/GMT2Or/B3vkhP5og,,,,N,0,0,,,2013-02-16 15:52,2013-02-16 15:56,admin,admin
500537,6359,124440,13662,0,N,N,N,CP_Drtn,TT_Task,DT_FixedDUR2,TK_NotStart,DUKHCONP1BZ5ARGF3030,Paint First coat,8178,504,0,200,0,7419.5,7419.5,200,0,0,0,,,,2014-06-16 08:00,2014-07-14 17:00,,2014-04-03 08:00,2014-05-01 17:00,2014-04-03 08:00,2014-05-01 17:00,2014-04-03 08:00,2014-05-01 17:00,2014-06-16 08:00,2014-07-14 17:00,,PT_Normal,,,,,XyJ3Is2qRp2z/tF1AaQ12A,,,,N,0,0,,,2013-02-16 15:52,2013-02-16 15:56,admin,admin
500538,6359,124440,13662,0,N,N,N,CP_Drtn,TT_Task,DT_FixedDUR2,TK_NotStart,DUKHCONP1BZ5ARGF3020,Ceramic Wall Tiling,8170,392,0,200,0,4418.75,4418.75,200,0,0,0,,,,2014-06-07 08:00,2014-07-05 17:00,,2014-04-10 08:00,2014-05-08 17:00,2014-04-10 08:00,2014-05-08 17:00,2014-04-10 08:00,2014-05-08 17:00,2014-06-07 08:00,2014-07-05 17:00,,PT_Normal,,,,,DU4l+x4iSy6VE793k60aQw,,,,N,0,0,,,2013-02-16 15:52,2013-02-16 15:56,admin,admin
500539,6359,124440,13662,0,N,N,N,CP_Drtn,TT_Task,DT_FixedDUR2,TK_NotStart,DUKHCONP1BZ5ARGF3025,Porcelain Tile flooring,8170,392,0,200,0,2397.25,2397.25,200,0,0,0,,,,2014-06-12 08:00,2014-07-10 17:00,,2014-04-16 08:00,2014-05-14 17:00,2014-04-16 08:00,2014-05-14 17:00,2014-04-16 08:00,2014-05-14 17:00,2014-06-12 08:00,2014-07-10 17:00,,PT_Normal,,,,,1yCgDN4mTCKDPzPrJhK5Ig,,,,N,0,0,,,2013-02-16 15:52,2013-02-16 15:56,admin,admin
500540,6359,124440,13662,0,N,N,N,CP_Drtn,TT_Task,DT_FixedDUR2,TK_NotStart,DUKHCONP1BZ5ARGF3040,Cobble Tile flooring,8170,456,0,120,0,875,875,120,0,0,0,,,,2014-07-19 08:00,2014-08-07 17:00,,2014-05-13 08:00,2014-05-29 17:00,2014-05-13 08:00,2014-05-29 17:00,2014-05-13 08:00,2014-05-29 17:00,2014-07-19 08:00,2014-08-07 17:00,,PT_Normal,,,,,pJsQIVDHRlW1sEnWNNOEdw,,,,N,0,0,,,2013-02-16 15:52,2013-02-16 15:56,admin,admin
500541,6359,124440,13662,0,N,N,N,CP_Drtn,TT_Task,DT_FixedDUR2,TK_NotStart,DUKHCONP1BZ5ARGF3035,Slate Tile Flooring & Skirting,8170,472,16,120,0,1162.5,1162.5,120,0,0,0,,,,2014-07-14 08:00,2014-07-30 17:00,,2014-05-06 08:00,2014-05-22 17:00,2014-05-06 08:00,2014-05-22 17:00,2014-05-06 08:00,2014-05-22 17:00,2014-07-14 08:00,2014-07-30 17:00,,PT_Normal,,,,,L8SkyMFWR8SzqLEy1qTvGg,,,,N,0,0,,,2013-02-16 15:52,2013-02-16 15:56,admin,admin
500542,6359,124440,13662,0,N,N,N,CP_Drtn,TT_Task,DT_FixedDUR2,TK_NotStart,DUKHCONP1BZ5ARGF3050,Granite - Stair case flooring & Skirting,8171,456,0,160,0,1062.5,1062.5,160,0,0,0,,,,2014-07-27 08:00,2014-08-21 17:00,,2014-05-21 08:00,2014-06-12 17:00,2014-05-21 08:00,2014-06-12 17:00,2014-05-21 08:00,2014-06-12 17:00,2014-07-27 08:00,2014-08-21 17:00,,PT_Normal,,,,,x+UMC6d7Ti2JqyppTeY0Gw,,,,N,0,0,,,2013-02-16 15:52,2013-02-16 15:56,admin,admin
500543,6359,124440,13662,0,N,N,N,CP_Drtn,TT_Task,DT_FixedDUR2,TK_NotStart,DUKHCONP1BZ5ARGF3045,Fixing of Suspension systems,8178,392,0,160,0,1650,1650,160,0,0,0,,,,2014-06-30 08:00,2014-07-22 17:00,,2014-05-04 08:00,2014-05-26 17:00,2014-05-04 08:00,2014-05-26 17:00,2014-05-04 08:00,2014-05-26 17:00,2014-06-30 08:00,2014-07-22 17:00,,PT_Normal,,,,,uJ/idgY/RPOrK6t9qiePEw,,,,N,0,0,,,2013-02-16 15:52,2013-02-16 15:56,admin,admin
500544,6359,124440,13662,0,N,N,N,CP_Drtn,TT_Task,DT_FixedDUR2,TK_NotStart,DUKHCONP1BZ5ARGF3055,Aluminum tile false ceiling,8178,416,24,200,0,162.5,162.5,200,0,0,0,,,,2014-07-12 08:00,2014-08-12 17:00,,2014-05-12 08:00,2014-06-09 17:00,2014-05-12 08:00,2014-06-09 17:00,2014-05-12 08:00,2014-06-09 17:00,2014-07-12 08:00,2014-08-12 17:00,,PT_Normal,,,,,nSRRXCoFSpOKl2yq22lo0Q,,,,N,0,0,,,2013-02-16 15:52,2013-02-16 15:56,admin,admin
500545,6359,124440,13662,0,N,N,N,CP_Drtn,TT_Task,DT_FixedDUR2,TK_NotStart,DUKHCONP1BZ5ARGF3060,Gypsum board false ceiling,8178,392,0,200,0,1520.5,1520.5,200,0,0,0,,,,2014-07-12 08:00,2014-08-12 17:00,,2014-05-15 08:00,2014-06-12 17:00,2014-05-15 08:00,2014-06-12 17:00,2014-05-15 08:00,2014-06-12 17:00,2014-07-12 08:00,2014-08-12 17:00,,PT_Normal,,,,,N6PXhZqfSTaZ/FrRz3ZTAA,,,,N,0,0,,,2013-02-16 15:52,2013-02-16 15:56,admin,admin
500546,6359,124440,13662,0,N,N,N,CP_Drtn,TT_Task,DT_FixedDUR2,TK_NotStart,DUKHCONP1BZ5ARGF3065,Wooden door & PVC Door,8178,456,0,120,0,825,825,120,0,0,0,,,,2014-08-13 08:00,2014-08-30 17:00,,2014-06-04 08:00,2014-06-21 17:00,2014-06-04 08:00,2014-06-21 17:00,2014-06-04 08:00,2014-06-21 17:00,2014-08-13 08:00,2014-08-30 17:00,,PT_Normal,,,,,K80B4MxSRu6I+EOdVgzdLQ,,,,N,0,0,,,2013-02-16 15:52,2013-02-16 15:56,admin,admin
500547,6359,124440,13662,0,N,N,N,CP_Drtn,TT_Task,DT_FixedDUR2,TK_NotStart,DUKHCONP1BZ5ARGF3070,Aluminum doors,8178,456,0,120,0,110,110,120,0,0,0,,,,2014-08-19 08:00,2014-09-04 17:00,,2014-06-10 08:00,2014-06-26 17:00,2014-06-10 08:00,2014-06-26 17:00,2014-06-10 08:00,2014-06-26 17:00,2014-08-19 08:00,2014-09-04 17:00,,PT_Normal,,,,,99Yh6RoURt2sVprY5GBTUQ,,,,N,0,0,,,2013-02-16 15:52,2013-02-16 15:56,admin,admin
500548,6359,124440,13662,0,N,N,N,CP_Drtn,TT_Task,DT_FixedDUR2,TK_NotStart,DUKHCONP1BZ5ARGF3080,Aluminum windows,8178,536,40,160,0,323.5,323.5,160,0,0,0,,,,2014-09-07 08:00,2014-09-29 17:00,,2014-06-17 08:00,2014-07-09 17:00,2014-06-17 08:00,2014-07-09 17:00,2014-06-17 08:00,2014-07-09 17:00,2014-09-07 08:00,2014-09-29 17:00,,PT_Normal,,,,,zNe1gRN9SX+YQCjEtdLg7A,,,,N,0,0,,,2013-02-16 15:52,2013-02-16 15:56,admin,admin
500549,6359,124440,13662,0,N,N,N,CP_Drtn,TT_Task,DT_FixedDUR2,TK_NotStart,DUKHCONP1BZ5ARGF3075,Carpentry & Joinery Works,8178,456,0,160,0,660,660,160,0,0,0,,,,2014-08-25 08:00,2014-09-16 17:00,,2014-06-16 08:00,2014-07-08 17:00,2014-06-16 08:00,2014-07-08 17:00,2014-06-16 08:00,2014-07-08 17:00,2014-08-25 08:00,2014-09-16 17:00,,PT_Normal,,,,,1uheY805S2ex7R+Oh9zETw,,,,N,0,0,,,2013-02-16 15:52,2013-02-16 15:56,admin,admin
500550,6359,124440,13662,0,N,N,N,CP_Drtn,TT_Task,DT_FixedDUR2,TK_NotStart,DUKHCONP1BZ5ARGF3090,Installation of Granite Counter Top,8171,456,0,120,0,302.5,302.5,120,0,0,0,,,,2014-09-07 08:00,2014-09-23 17:00,,2014-06-29 08:00,2014-07-15 17:00,2014-06-29 08:00,2014-07-15 17:00,2014-06-29 08:00,2014-07-15 17:00,2014-09-07 08:00,2014-09-23 17:00,,PT_Normal,,,,,9L4c+KmaQeG2WfqsW1B5Sw,,,,N,0,0,,,2013-02-16 15:52,2013-02-16 15:56,admin,admin
500551,6359,124440,13662,0,N,N,N,CP_Drtn,TT_Task,DT_FixedDUR2,TK_NotStart,DUKHCONP1BZ5ARGF3085,S.S.Balustrade,8178,496,40,160,0,218.75,218.75,160,0,0,0,,,,2014-09-08 08:00,2014-09-30 17:00,,2014-06-24 08:00,2014-07-16 17:00,2014-06-24 08:00,2014-07-16 17:00,2014-06-24 08:00,2014-07-16 17:00,2014-09-08 08:00,2014-09-30 17:00,,PT_Normal,,,,,7wGpWM7MTWKMJrUFbI7+iw,,,,N,0,0,,,2013-02-16 15:52,2013-02-16 15:56,admin,admin
500552,6359,124440,13662,0,N,N,N,CP_Drtn,TT_Task,DT_FixedDUR2,TK_NotStart,DUKHCONP1BZ5ARGF3095,Final Painting,8178,456,0,200,0,7419.5,7419.5,200,0,0,0,,,,2014-09-16 08:00,2014-10-16 17:00,,2014-07-08 08:00,2014-08-09 17:00,2014-07-08 08:00,2014-08-09 17:00,2014-07-08 08:00,2014-08-09 17:00,2014-09-16 08:00,2014-10-16 17:00,,PT_Normal,,,,,pwgAfEFcQKSa2LHBqqNK/A,,,,N,0,0,,,2013-02-16 15:52,2013-02-16 15:56,admin,admin
500553,6359,124441,13662,0,N,N,N,CP_Drtn,TT_Task,DT_FixedDUR2,TK_NotStart,DUKHCONP1BZ5ARRF3605,Plastering work,8169,624,0,160,0,4791,4791,160,0,0,0,,,,2014-08-06 08:00,2014-08-28 17:00,,2014-05-04 08:00,2014-05-26 17:00,2014-05-04 08:00,2014-05-26 17:00,2014-05-04 08:00,2014-05-26 17:00,2014-08-06 08:00,2014-08-28 17:00,,PT_Normal,,,,,NvaMHS7dSCePQVZ2DetGAw,,,,N,0,0,,,2013-02-16 15:52,2013-02-16 15:56,admin,admin
500554,6359,124441,13662,0,N,N,N,CP_Drtn,TT_Task,DT_FixedDUR2,TK_NotStart,DUKHCONP1BZ5ARRF3610,Flooring screed,8164,624,0,120,0,192.5,192.5,120,0,0,0,,,,2014-08-24 08:00,2014-09-09 17:00,,2014-05-21 08:00,2014-06-07 17:00,2014-05-21 08:00,2014-06-07 17:00,2014-05-21 08:00,2014-06-07 17:00,2014-08-24 08:00,2014-09-09 17:00,,PT_Normal,,,,,Q5YVmw7+SxOeoNVrexh09Q,,,,N,0,0,,,2013-02-16 15:52,2013-02-16 15:56,admin,admin
500555,6359,124441,13662,0,N,N,N,CP_Drtn,TT_Task,DT_FixedDUR2,TK_NotStart,DUKHCONP1BZ5ARRF3695,Painting -Storage area,8178,624,0,160,0,2050,2050,160,0,0,0,,,,2014-09-04 08:00,2014-09-27 17:00,,2014-06-02 08:00,2014-06-24 17:00,2014-06-02 08:00,2014-06-24 17:00,2014-06-02 08:00,2014-06-24 17:00,2014-09-04 08:00,2014-09-27 17:00,,PT_Normal,,,,,X4jw2gyDSoCAoBMJEowxQw,,,,N,0,0,,,2013-02-16 15:52,2013-02-16 15:56,admin,admin
500556,6359,124441,13662,0,N,N,N,CP_Drtn,TT_Task,DT_FixedDUR2,TK_NotStart,DUKHCONP1BZ5ARRF3620,Epoxy Painting -Storage area,8178,624,0,120,0,59.5,59.5,120,0,0,0,,,,2014-09-22 08:00,2014-10-08 17:00,,2014-06-19 08:00,2014-07-06 17:00,2014-06-19 08:00,2014-07-06 17:00,2014-06-19 08:00,2014-07-06 17:00,2014-09-22 08:00,2014-10-08 17:00,,PT_Normal,,,,,ulE4ejwvQleYw3MhigdQWA,,,,N,0,0,,,2013-02-16 15:52,2013-02-16 15:56,admin,admin
500557,6359,124441,13662,0,N,N,N,CP_Drtn,TT_Task,DT_FixedDUR2,TK_NotStart,DUKHCONP1BZ5ARRF3600,Block work,8168,624,0,160,0,872.25,872.25,160,0,0,0,,,,2014-07-22 08:00,2014-08-17 17:00,,2014-04-22 08:00,2014-05-14 17:00,2014-04-22 08:00,2014-05-14 17:00,2014-04-22 08:00,2014-05-14 17:00,2014-07-22 08:00,2014-08-17 17:00,,PT_Normal,,,,,1kSMH4OVRdWbaUTtL/S2Mw,,,,N,0,0,,,2013-02-16 15:52,2013-02-16 15:56,admin,admin
500558,6359,124443,13662,0,N,N,N,CP_Drtn,TT_Task,DT_FixedDUR2,TK_NotStart,DUKHCONP1BZ5ARRF3630,Leveling Screed for Waterproofing,8164,624,0,200,0,887.5,887.5,200,0,0,0,,,,2014-08-05 08:00,2014-09-02 17:00,,2014-05-03 08:00,2014-05-31 17:00,2014-05-03 08:00,2014-05-31 17:00,2014-05-03 08:00,2014-05-31 17:00,2014-08-05 08:00,2014-09-02 17:00,,PT_Normal,,,,,YcpVCHl+SSeZLVlq8EOZ3w,,,,N,0,0,,,2013-02-16 15:52,2013-02-16 15:56,admin,admin
500559,6359,124443,13662,0,N,N,N,CP_Drtn,TT_Task,DT_FixedDUR2,TK_NotStart,DUKHCONP1BZ5ARRF3635,Laying of Waterproofing Membrane,8178,624,0,200,0,1232,1232,200,0,0,0,,,,2014-08-09 08:00,2014-09-06 17:00,,2014-05-06 08:00,2014-06-03 17:00,2014-05-06 08:00,2014-06-03 17:00,2014-05-06 08:00,2014-06-03 17:00,2014-08-09 08:00,2014-09-06 17:00,,PT_Normal,,,,,M+vR8gXdTcq+ytLOgXG4qA,,,,N,0,0,,,2013-02-16 15:52,2013-02-16 15:56,admin,admin
500560,6359,124443,13662,0,N,N,N,CP_Drtn,TT_Task,DT_FixedDUR2,TK_NotStart,DUKHCONP1BZ5ARRF3640,Installation of Insulation & Protection,8178,624,0,200,0,1562,1562,200,0,0,0,,,,2014-08-13 08:00,2014-09-10 17:00,,2014-05-11 08:00,2014-06-08 17:00,2014-05-11 08:00,2014-06-08 17:00,2014-05-11 08:00,2014-06-08 17:00,2014-08-13 08:00,2014-09-10 17:00,,PT_Normal,,,,,HDMUkM0kTD6SyYhYkPxkTQ,,,,N,0,0,,,2013-02-16 15:52,2013-02-16 15:56,admin,admin
500561,6359,124443,13662,0,N,N,N,CP_Drtn,TT_Task,DT_FixedDUR2,TK_NotStart,DUKHCONP1BZ5ARRF3645,Lime Stone Chips & Paving slab Installation,8170,624,0,200,0,781,781,200,0,0,0,,,,2014-08-18 08:00,2014-09-15 17:00,,2014-05-15 08:00,2014-06-12 17:00,2014-05-15 08:00,2014-06-12 17:00,2014-05-15 08:00,2014-06-12 17:00,2014-08-18 08:00,2014-09-15 17:00,,PT_Normal,,,,,m6dttc/BQkaL4T5HgwYGlg,,,,N,0,0,,,2013-02-16 15:52,2013-02-16 15:56,admin,admin
500562,6359,124443,13662,0,N,N,N,CP_Drtn,TT_Task,DT_FixedDUR2,TK_NotStart,DUKHCONP1BZ5ARRF3655,Installation of Pumps Protection cabinets,8178,624,0,160,0,770,770,160,0,0,0,,,,2014-09-10 08:00,2014-10-02 17:00,,2014-06-08 08:00,2014-06-30 17:00,2014-06-08 08:00,2014-06-30 17:00,2014-06-08 08:00,2014-06-30 17:00,2014-09-10 08:00,2014-10-02 17:00,,PT_Normal,,,,,Ii5uVblHSletO9kK+NEQng,,,,N,0,0,,,2013-02-16 15:52,2013-02-16 15:56,admin,admin
500563,6359,124443,13662,0,N,N,N,CP_Drtn,TT_Task,DT_FixedDUR2,TK_NotStart,DUKHCONP1BZ5ARRF3650,Install. of Gal. Frame & Aluminum Slat Screen,8178,624,0,200,0,1074.5,1074.5,200,0,0,0,,,,2014-08-26 08:00,2014-09-23 17:00,,2014-05-24 08:00,2014-06-21 17:00,2014-05-24 08:00,2014-06-21 17:00,2014-05-24 08:00,2014-06-21 17:00,2014-08-26 08:00,2014-09-23 17:00,,PT_Normal,,,,,eoFpC3mkRVC+jJNDyQQEoA,,,,N,0,0,,,2013-02-16 15:52,2013-02-16 15:56,admin,admin
500564,6359,124443,13662,0,N,N,N,CP_Drtn,TT_Task,DT_FixedDUR2,TK_NotStart,DUKHCONP1BZ5ARRF3660,Installation of Access Ladder,8178,624,600,120,0,440,440,120,0,0,0,,,,2014-09-28 08:00,2014-10-16 17:00,,2014-06-25 08:00,2014-07-12 17:00,2014-06-25 08:00,2014-07-12 17:00,2014-06-25 08:00,2014-07-12 17:00,2014-09-28 08:00,2014-10-16 17:00,,PT_Normal,,,,,XA41wJRkRZiw1yeGCcmSFg,,,,N,0,0,,,2013-02-16 15:52,2013-02-16 15:56,admin,admin
500565,6359,124444,13662,0,N,N,N,CP_Drtn,TT_Task,DT_FixedDUR2,TK_NotStart,DUKHCONP1BZ5AREL3665,External Plastering,8169,608,0,200,0,15250,15250,200,0,0,0,,,,2014-08-18 08:00,2014-09-15 17:00,,2014-05-18 08:00,2014-06-15 17:00,2014-05-18 08:00,2014-06-15 17:00,2014-05-18 08:00,2014-06-15 17:00,2014-08-18 08:00,2014-09-15 17:00,,PT_Normal,,,,,QscvOd2GS/mzpQIPYRAGRQ,,,,N,0,0,,,2013-02-16 15:52,2013-02-16 15:56,admin,admin
500566,6359,124444,13662,0,N,N,N,CP_Drtn,TT_Task,DT_FixedDUR2,TK_NotStart,DUKHCONP1BZ5AREL3670,External stone cladding works,8170,608,0,160,0,1170,1170,160,0,0,0,,,,2014-09-04 08:00,2014-09-27 17:00,,2014-06-04 08:00,2014-06-26 17:00,2014-06-04 08:00,2014-06-26 17:00,2014-06-04 08:00,2014-06-26 17:00,2014-09-04 08:00,2014-09-27 17:00,,PT_Normal,,,,,/YPlRtzUT6CffRsYjfe5tQ,,,,N,0,0,,,2013-02-16 15:52,2013-02-16 15:56,admin,admin
500567,6359,124444,13662,0,N,N,N,CP_Drtn,TT_Task,DT_FixedDUR2,TK_NotStart,DUKHCONP1BZ5AREL3675,GRC works,8178,608,0,160,0,550,550,160,0,0,0,,,,2014-09-10 08:00,2014-10-02 17:00,,2014-06-10 08:00,2014-07-02 17:00,2014-06-10 08:00,2014-07-02 17:00,2014-06-10 08:00,2014-07-02 17:00,2014-09-10 08:00,2014-10-02 17:00,,PT_Normal,,,,,oaOdbfwPSXi8BdEbVx3u0g,,,,N,0,0,,,2013-02-16 15:52,2013-02-16 15:56,admin,admin
500568,6359,124444,13662,0,N,N,N,CP_Drtn,TT_Task,DT_FixedDUR2,TK_NotStart,DUKHCONP1BZ5AREL3680,External Painting,8178,608,40,160,0,5280,5280,160,0,0,0,,,,2014-09-22 08:00,2014-10-16 17:00,,2014-06-22 08:00,2014-07-14 17:00,2014-06-22 08:00,2014-07-14 17:00,2014-06-22 08:00,2014-07-14 17:00,2014-09-22 08:00,2014-10-16 17:00,,PT_Normal,,,,,kSGUM2XcQQeOedpaI2omCw,,,,N,0,0,,,2013-02-16 15:52,2013-02-16 15:56,admin,admin
500569,6359,124445,13662,0,N,N,N,CP_Drtn,TT_Task,DT_FixedDUR2,TK_NotStart,DUKHCONP1BZ5ACTC8000,Pre-Commissioning & Testing of AC Works,8178,24,0,200,0,1500,1500,200,0,0,0,,,,2014-10-18 08:00,2014-11-15 17:00,,2014-10-14 08:00,2014-11-11 17:00,2014-10-14 08:00,2014-11-11 17:00,2014-10-14 08:00,2014-11-11 17:00,2014-10-18 08:00,2014-11-15 17:00,,PT_Normal,,,,,NcPOJWz+RdqHSIY4cntkNQ,,,,N,0,0,,,2013-02-16 15:52,2013-02-16 15:56,admin,admin
500570,6359,124445,13662,0,N,N,N,CP_Drtn,TT_Task,DT_FixedDUR2,TK_NotStart,DUKHCONP1BZ5ELTC8010,Pre-Commissioning & Testing of Electrical Works,8178,24,0,200,0,3000,3000,200,0,0,0,,,,2014-10-18 08:00,2014-11-15 17:00,,2014-10-14 08:00,2014-11-11 17:00,2014-10-14 08:00,2014-11-11 17:00,2014-10-14 08:00,2014-11-11 17:00,2014-10-18 08:00,2014-11-15 17:00,,PT_Normal,,,,,09XCXSu6QDWrekfvDnHISw,,,,N,0,0,,,2013-02-16 15:52,2013-02-16 15:56,admin,admin
500571,6359,124445,13662,0,N,N,N,CP_Drtn,TT_Task,DT_FixedDUR2,TK_NotStart,DUKHCONP1BZ5PLTC8005,Pre-Commissioning & Testing of Plumbing Works,8178,24,0,200,0,3000,3000,200,0,0,0,,,,2014-10-18 08:00,2014-11-15 17:00,,2014-10-14 08:00,2014-11-11 17:00,2014-10-14 08:00,2014-11-11 17:00,2014-10-14 08:00,2014-11-11 17:00,2014-10-18 08:00,2014-11-15 17:00,,PT_Normal,,,,,3kvAPnAMSE+jHhThTr+h3w,,,,N,0,0,,,2013-02-16 15:52,2013-02-16 15:56,admin,admin
500572,6359,124448,13662,0,N,N,N,CP_Drtn,TT_Task,DT_FixedDUR2,TK_NotStart,DUKHCONP1BZ5STFF2020,Column-Rebar & Formwork,8166,88,0,200,0,4272,4272,200,0,0,0,,,,2014-02-15 08:00,2014-03-15 17:00,,2014-02-01 08:00,2014-03-02 17:00,2014-02-01 08:00,2014-03-02 17:00,2014-02-01 08:00,2014-03-02 17:00,2014-02-15 08:00,2014-03-15 17:00,,PT_Normal,,,,,tyj9aCI+RX6W0g72K4UQlw,,,,N,0,0,,,2013-02-16 15:52,2013-02-16 15:56,admin,admin
500573,6359,124448,13662,0,N,N,N,CP_Drtn,TT_Task,DT_FixedDUR2,TK_NotStart,DUKHCONP1BZ5STFF2025,Column-Concrete,8167,88,0,184,0,427,427,184,0,0,0,,,,2014-02-24 08:00,2014-03-22 17:00,,2014-02-10 08:00,2014-03-09 17:00,2014-02-10 08:00,2014-03-09 17:00,2014-02-10 08:00,2014-03-09 17:00,2014-02-24 08:00,2014-03-22 17:00,,PT_Normal,,,,,WNkj5dF7TpuHYaajkbgfkg,,,,N,0,0,,,2013-02-16 15:52,2013-02-16 15:56,admin,admin
500574,6359,124448,13662,0,N,N,N,CP_Drtn,TT_Task,DT_FixedDUR2,TK_NotStart,DUKHCONP1BZ5STFF2030,"Beam, Stairs ,Slab-Rebar & Formwork",8165,88,0,200,0,23850.75,23850.75,200,0,0,0,,,,2014-02-27 08:00,2014-03-27 17:00,,2014-02-15 08:00,2014-03-15 17:00,2014-02-15 08:00,2014-03-15 17:00,2014-02-15 08:00,2014-03-15 17:00,2014-02-27 08:00,2014-03-27 17:00,,PT_Normal,,,,,MZOe6IZyQ3CyO3MbWKVXBw,,,,N,0,0,,,2013-02-16 15:52,2013-02-16 15:56,admin,admin
500575,6359,124448,13662,0,N,N,N,CP_Drtn,TT_Task,DT_FixedDUR2,TK_NotStart,DUKHCONP1BZ5STFF2035,"Beam, Stairs ,Slab-Concrete",8167,88,0,112,0,1610,1610,112,0,0,0,,,,2014-03-16 08:00,2014-03-31 17:00,,2014-03-03 08:00,2014-03-18 17:00,2014-03-03 08:00,2014-03-18 17:00,2014-03-03 08:00,2014-03-18 17:00,2014-03-16 08:00,2014-03-31 17:00,,PT_Normal,,,,,4EGHcykOQcirkMmWg+4qXg,,,,N,0,0,,,2013-02-16 15:52,2013-02-16 15:56,admin,admin
500576,6359,124449,13662,0,N,N,N,CP_Drtn,TT_Task,DT_FixedDUR2,TK_NotStart,DUKHCONP1BZ5STRF2040,Column-Rebar & Formwork,8166,160,0,144,0,1470,1470,144,0,0,0,,,,2014-04-01 08:00,2014-04-21 17:00,,2014-03-09 08:00,2014-03-29 17:00,2014-03-09 08:00,2014-03-29 17:00,2014-03-09 08:00,2014-03-29 17:00,2014-04-01 08:00,2014-04-21 17:00,,PT_Normal,,,,,SpXo4BIdSkyxPTefxjR4Rg,,,,N,0,0,,,2013-02-16 15:52,2013-02-16 15:56,admin,admin
500577,6359,124449,13662,0,N,N,N,CP_Drtn,TT_Task,DT_FixedDUR2,TK_NotStart,DUKHCONP1BZ5STRF2045,Column-Concrete,8167,200,0,136,0,101.5,101.5,136,0,0,0,,,,2014-04-10 08:00,2014-04-29 17:00,,2014-03-12 08:00,2014-03-31 17:00,2014-03-12 08:00,2014-03-31 17:00,2014-03-12 08:00,2014-03-31 17:00,2014-04-10 08:00,2014-04-29 17:00,,PT_Normal,,,,,mNwpx3VIT0u7Rt1zfUCbjQ,,,,N,0,0,,,2013-02-16 15:52,2013-02-16 15:56,admin,admin
500578,6359,124449,13662,0,N,N,N,CP_Drtn,TT_Task,DT_FixedDUR2,TK_NotStart,DUKHCONP1BZ5STRF2050,Slab-Rebar & Formwork - Head Room,8165,200,0,160,0,4303.25,4303.25,160,0,0,0,,,,2014-04-13 08:00,2014-05-05 17:00,,2014-03-15 08:00,2014-04-06 17:00,2014-03-15 08:00,2014-04-06 17:00,2014-03-15 08:00,2014-04-06 17:00,2014-04-13 08:00,2014-05-05 17:00,,PT_Normal,,,,,4QPM5gOBQI6hEMwd5iuzYA,,,,N,0,0,,,2013-02-16 15:52,2013-02-16 15:56,admin,admin
500579,6359,124449,13662,0,N,N,N,CP_Drtn,TT_Task,DT_FixedDUR2,TK_NotStart,DUKHCONP1BZ5STRF2055,Slab-Concrete-Head room,8167,200,0,104,0,350,350,104,0,0,0,,,,2014-04-27 08:00,2014-05-11 17:00,,2014-03-29 08:00,2014-04-12 17:00,2014-03-29 08:00,2014-04-12 17:00,2014-03-29 08:00,2014-04-12 17:00,2014-04-27 08:00,2014-05-11 17:00,,PT_Normal,,,,,2kEdEXobRliKyzZwO9RRfA,,,,N,0,0,,,2013-02-16 15:52,2013-02-16 15:56,admin,admin
500580,6359,124449,13662,0,N,N,N,CP_Drtn,TT_Task,DT_FixedDUR2,TK_NotStart,DUKHCONP1BZ5STRF2060,Construction of Parapets,8168,584,0,200,0,1468.75,1468.75,200,0,0,0,,,,2014-06-29 08:00,2014-07-27 17:00,,2014-04-05 08:00,2014-05-03 17:00,2014-04-05 08:00,2014-05-03 17:00,2014-04-05 08:00,2014-05-03 17:00,2014-06-29 08:00,2014-07-27 17:00,,PT_Normal,,,,,guAWYa9bTSK48aDqJ13oJw,,,,N,0,0,,,2013-02-16 15:52,2013-02-16 15:56,admin,admin
500581,6359,124449,13662,0,N,N,N,CP_Drtn,TT_Task,DT_FixedDUR2,TK_NotStart,DUKHCONP1BZ5STRF2065,Construction of up stands/Plinth,8165,624,0,200,0,687.75,687.75,200,0,0,0,,,,2014-07-21 08:00,2014-08-21 17:00,,2014-04-21 08:00,2014-05-19 17:00,2014-04-21 08:00,2014-05-19 17:00,2014-04-21 08:00,2014-05-19 17:00,2014-07-21 08:00,2014-08-21 17:00,,PT_Normal,,,,,Us27K7GER22PC7Yo2PZv/g,,,,N,0,0,,,2013-02-16 15:52,2013-02-16 15:56,admin,admin
500582,6359,124450,13662,0,N,N,N,CP_Drtn,TT_Task,DT_FixedDUR2,TK_NotStart,DUKHCONP1BZ5STGF2000,Column-Rebar & Formwork,8165,88,0,200,0,6230,6230,200,0,0,0,,,,2014-01-02 08:00,2014-01-30 17:00,,2013-12-21 08:00,2014-01-18 17:00,2013-12-21 08:00,2014-01-18 17:00,2013-12-21 08:00,2014-01-18 17:00,2014-01-02 08:00,2014-01-30 17:00,,PT_Normal,,,,,CC/eZ0tHTKKE07ic//DHzQ,,,,N,0,0,,,2013-02-16 15:52,2013-02-16 15:56,admin,admin
500583,6359,124450,13662,0,N,N,N,CP_Drtn,TT_Task,DT_FixedDUR2,TK_NotStart,DUKHCONP1BZ5STGF2005,Column-Concrete,8167,88,0,184,0,486.5,486.5,184,0,0,0,,,,2014-01-12 08:00,2014-02-06 17:00,,2013-12-30 08:00,2014-01-25 17:00,2013-12-30 08:00,2014-01-25 17:00,2013-12-30 08:00,2014-01-25 17:00,2014-01-12 08:00,2014-02-06 17:00,,PT_Normal,,,,,zX7WtsPkSwSUKTZybwNbJw,,,,N,0,0,,,2013-02-16 15:52,2013-02-16 15:56,admin,admin
500584,6359,124450,13662,0,N,N,N,CP_Drtn,TT_Task,DT_FixedDUR2,TK_NotStart,DUKHCONP1BZ5STGF2010,"Beam, Stairs ,Slab-Rebar & Formwork",8165,88,0,200,0,23402.75,23402.75,200,0,0,0,,,,2014-01-26 08:00,2014-02-24 17:00,,2014-01-13 08:00,2014-02-10 17:00,2014-01-13 08:00,2014-02-10 17:00,2014-01-13 08:00,2014-02-10 17:00,2014-01-26 08:00,2014-02-24 17:00,,PT_Normal,,,,,FhK7Sa9MQYmOtyDtMFYLVQ,,,,N,0,0,,,2013-02-16 15:52,2013-02-16 15:56,admin,admin
500585,6359,124450,13662,0,N,N,N,CP_Drtn,TT_Task,DT_FixedDUR2,TK_NotStart,DUKHCONP1BZ5STGF2015,"Beam, Stairs ,Slab-Concrete",8167,88,0,112,0,1820,1820,112,0,0,0,,,,2014-02-12 08:00,2014-02-27 17:00,,2014-01-29 08:00,2014-02-15 17:00,2014-01-29 08:00,2014-02-15 17:00,2014-01-29 08:00,2014-02-15 17:00,2014-02-12 08:00,2014-02-27 17:00,,PT_Normal,,,,,Mawzh5giSR+Vk4khwlNNUg,,,,N,0,0,,,2013-02-16 15:52,2013-02-16 15:56,admin,admin
500586,6359,124452,13662,0,N,N,N,CP_Drtn,TT_Task,DT_FixedDUR2,TK_NotStart,DUKHCONP1BZ5STUG1000,Footing Excavation,8177,88,0,200,0,1791,1791,200,843,0,843,,,,2013-08-25 08:00,2013-09-22 17:00,,2013-08-08 08:00,2013-09-09 17:00,2013-08-08 08:00,2013-09-09 17:00,2013-08-08 08:00,2013-09-09 17:00,2013-08-25 08:00,2013-09-22 17:00,,PT_Normal,,,,,h9d6VlBLRE6B3ujlfueSGA,,,,N,0,0,,,2013-02-16 15:52,2013-02-16 15:56,admin,admin
500587,6359,124452,13662,0,N,N,N,CP_Drtn,TT_Task,DT_FixedDUR2,TK_NotStart,DUKHCONP1BZ5STUG1005,Footing Antitermite,8178,88,0,184,0,2326.5,2326.5,184,0,0,0,,,,2013-09-05 08:00,2013-10-01 17:00,,2013-08-24 08:00,2013-09-18 17:00,2013-08-24 08:00,2013-09-18 17:00,2013-08-24 08:00,2013-09-18 17:00,2013-09-05 08:00,2013-10-01 17:00,,PT_Normal,,,,,akNW9QnpRAC1XZF/Xh5aLQ,,,,N,0,0,,,2013-02-16 15:52,2013-02-16 15:56,admin,admin
500588,6359,124452,13662,0,N,N,N,CP_Drtn,TT_Task,DT_FixedDUR2,TK_NotStart,DUKHCONP1BZ5STUG1010,Footing Blinding,8163,88,0,184,0,1309,1309,184,0,0,0,,,,2013-09-10 08:00,2013-10-06 17:00,,2013-08-28 08:00,2013-09-23 17:00,2013-08-28 08:00,2013-09-23 17:00,2013-08-28 08:00,2013-09-23 17:00,2013-09-10 08:00,2013-10-06 17:00,,PT_Normal,,,,,jype2wwCQKKtZjuMNVJHfQ,,,,N,0,0,,,2013-02-16 15:52,2013-02-16 15:56,admin,admin
500589,6359,124452,13662,0,N,N,N,CP_Drtn,TT_Task,DT_FixedDUR2,TK_NotStart,DUKHCONP1BZ5STUG1015,Footing Waterproofing & Screed,8164,88,0,200,0,1030.25,1030.25,200,0,0,0,,,,2013-09-16 08:00,2013-10-14 17:00,,2013-09-03 08:00,2013-10-01 17:00,2013-09-03 08:00,2013-10-01 17:00,2013-09-03 08:00,2013-10-01 17:00,2013-09-16 08:00,2013-10-14 17:00,,PT_Normal,,,,,DsB90iJLQyGXot9HDm1S3w,,,,N,0,0,,,2013-02-16 15:52,2013-02-16 15:56,admin,admin
500590,6359,124452,13662,0,N,N,N,CP_Drtn,TT_Task,DT_FixedDUR2,TK_NotStart,DUKHCONP1BZ5STUG1020,Construction of foundations,8165,88,0,160,0,9962.75,9962.75,160,0,0,0,,,,2013-10-01 08:00,2013-10-26 17:00,,2013-09-18 08:00,2013-10-10 17:00,2013-09-18 08:00,2013-10-10 17:00,2013-09-18 08:00,2013-10-10 17:00,2013-10-01 08:00,2013-10-26 17:00,,PT_Normal,,,,,KuKVV9GTTnqWTd51EnQeiA,,,,N,0,0,,,2013-02-16 15:52,2013-02-16 15:56,admin,admin
500591,6359,124452,13662,0,N,N,N,CP_Drtn,TT_Task,DT_FixedDUR2,TK_NotStart,DUKHCONP1BZ5STUG1025,Construction of neck of columns,8165,88,0,200,0,2430.75,2430.75,200,0,0,0,,,,2013-10-10 08:00,2013-11-10 17:00,,2013-09-28 08:00,2013-10-28 17:00,2013-09-28 08:00,2013-10-28 17:00,2013-09-28 08:00,2013-10-28 17:00,2013-10-10 08:00,2013-11-10 17:00,,PT_Normal,,,,,6m/N3qOYQMW42+rUTX9zjQ,,,,N,0,0,,,2013-02-16 15:52,2013-02-16 15:56,admin,admin
500592,6359,124452,13662,0,N,N,N,CP_Drtn,TT_Task,DT_FixedDUR2,TK_NotStart,DUKHCONP1BZ5STUG1030,Waterproofing Footing & Neck Column,8178,88,0,200,0,670,670,200,0,0,0,,,,2013-10-22 08:00,2013-11-19 17:00,,2013-10-07 08:00,2013-11-06 17:00,2013-10-07 08:00,2013-11-06 17:00,2013-10-07 08:00,2013-11-06 17:00,2013-10-22 08:00,2013-11-19 17:00,,PT_Normal,,,,,SlzR+IiVTke6AxlGY+TyPg,,,,N,0,0,,,2013-02-16 15:52,2013-02-16 15:56,admin,admin
500593,6359,124452,13662,0,N,N,N,CP_Drtn,TT_Task,DT_FixedDUR2,TK_NotStart,DUKHCONP1BZ5STUG1035,Backfilling Upto Grade Beam Bottom,8177,88,0,200,0,1520,1520,200,1100,0,1100,,,,2013-11-03 08:00,2013-12-01 17:00,,2013-10-21 08:00,2013-11-18 17:00,2013-10-21 08:00,2013-11-18 17:00,2013-10-21 08:00,2013-11-18 17:00,2013-11-03 08:00,2013-12-01 17:00,,PT_Normal,,,,,ryGkajWBSj6truRGT4Av4Q,,,,N,0,0,,,2013-02-16 15:52,2013-02-16 15:56,admin,admin
500594,6359,124452,13662,0,N,N,N,CP_Drtn,TT_Task,DT_FixedDUR2,TK_NotStart,DUKHCONP1BZ5STUG1040,Construction of Grade Beams,8163,88,0,200,0,10120.75,10120.75,200,0,0,0,,,,2013-11-19 08:00,2013-12-17 17:00,,2013-11-06 08:00,2013-12-04 17:00,2013-11-06 08:00,2013-12-04 17:00,2013-11-06 08:00,2013-12-04 17:00,2013-11-19 08:00,2013-12-17 17:00,,PT_Normal,,,,,qW1TNilHQk6mTLT4eMU5Qw,,,,N,0,0,,,2013-02-16 15:52,2013-02-16 15:56,admin,admin
500595,6359,124452,13662,0,N,N,N,CP_Drtn,TT_Task,DT_FixedDUR2,TK_NotStart,DUKHCONP1BZ5STUG1045,Construction of slab on grade,8163,88,0,200,0,6924.5,6924.5,200,0,0,0,,,,2013-12-16 08:00,2014-01-14 17:00,,2013-12-03 08:00,2014-01-01 17:00,2013-12-03 08:00,2014-01-01 17:00,2013-12-03 08:00,2014-01-01 17:00,2013-12-16 08:00,2014-01-14 17:00,,PT_Normal,,,,,VJ8PWD2jS4y50OS2sUHOgQ,,,,N,0,0,,,2013-02-16 15:52,2013-02-16 15:56,admin,admin
500596,6359,124456,13662,0,N,N,N,CP_Drtn,TT_Task,DT_FixedDUR2,TK_NotStart,DUKHCONP1BZ4STUG1000,Footing Excavation,8177,88,0,200,0,1433,1433,200,675,0,675,,,,2013-07-23 08:00,2013-08-24 17:00,,2013-07-10 08:00,2013-08-07 17:00,2013-07-10 08:00,2013-08-07 17:00,2013-07-10 08:00,2013-08-07 17:00,2013-07-23 08:00,2013-08-24 17:00,,PT_Normal,,,,,s47SsjeoSh+NYGLcXUSg1g,,,,N,0,0,,,2013-02-16 15:52,2013-02-16 15:56,admin,admin
500597,6359,124456,13662,0,N,N,N,CP_Drtn,TT_Task,DT_FixedDUR2,TK_NotStart,DUKHCONP1BZ4STUG1005,Footing Antitermite,8178,88,0,184,0,1861.75,1861.75,184,0,0,0,,,,2013-08-04 08:00,2013-09-02 17:00,,2013-07-22 08:00,2013-08-20 17:00,2013-07-22 08:00,2013-08-20 17:00,2013-07-22 08:00,2013-08-20 17:00,2013-08-04 08:00,2013-09-02 17:00,,PT_Normal,,,,,rWoQhsybQTazigKI84c3/g,,,,N,0,0,,,2013-02-16 15:52,2013-02-16 15:56,admin,admin
500598,6359,124456,13662,0,N,N,N,CP_Drtn,TT_Task,DT_FixedDUR2,TK_NotStart,DUKHCONP1BZ4STUG1010,Footing Blinding,8163,88,0,184,0,1048.25,1048.25,184,0,0,0,,,,2013-08-08 08:00,2013-09-07 17:00,,2013-07-27 08:00,2013-08-25 17:00,2013-07-27 08:00,2013-08-25 17:00,2013-07-27 08:00,2013-08-25 17:00,2013-08-08 08:00,2013-09-07 17:00,,PT_Normal,,,,,63em0Km7TxysK3yab/Vyaw,,,,N,0,0,,,2013-02-16 15:52,2013-02-16 15:56,admin,admin
500599,6359,124456,13662,0,N,N,N,CP_Drtn,TT_Task,DT_FixedDUR2,TK_NotStart,DUKHCONP1BZ4STUG1015,Footing Waterproofing & Screed,8164,88,0,200,0,825,825,200,0,0,0,,,,2013-08-18 08:00,2013-09-15 17:00,,2013-08-01 08:00,2013-09-02 17:00,2013-08-01 08:00,2013-09-02 17:00,2013-08-01 08:00,2013-09-02 17:00,2013-08-18 08:00,2013-09-15 17:00,,PT_Normal,,,,,QA/hlKteTlmz6ucKk++vBQ,,,,N,0,0,,,2013-02-16 15:52,2013-02-16 15:56,admin,admin
500600,6359,124456,13662,0,N,N,N,CP_Drtn,TT_Task,DT_FixedDUR2,TK_NotStart,DUKHCONP1BZ4STUG1020,Construction of foundations,8165,88,0,160,0,7969.5,7969.5,160,0,0,0,,,,2013-09-02 08:00,2013-09-24 17:00,,2013-08-20 08:00,2013-09-11 17:00,2013-08-20 08:00,2013-09-11 17:00,2013-08-20 08:00,2013-09-11 17:00,2013-09-02 08:00,2013-09-24 17:00,,PT_Normal,,,,,aa7UevHqSx++LOf0pLJT7w,,,,N,0,0,,,2013-02-16 15:52,2013-02-16 15:56,admin,admin
500601,6359,124456,13662,0,N,N,N,CP_Drtn,TT_Task,DT_FixedDUR2,TK_NotStart,DUKHCONP1BZ4STUG1025,Construction of neck of columns,8165,88,0,200,0,1946,1946,200,0,0,0,,,,2013-09-11 08:00,2013-10-09 17:00,,2013-08-29 08:00,2013-09-26 17:00,2013-08-29 08:00,2013-09-26 17:00,2013-08-29 08:00,2013-09-26 17:00,2013-09-11 08:00,2013-10-09 17:00,,PT_Normal,,,,,TfOeMTutT7CcyQ3oZJEzPQ,,,,N,0,0,,,2013-02-16 15:52,2013-02-16 15:56,admin,admin
500602,6359,124456,13662,0,N,N,N,CP_Drtn,TT_Task,DT_FixedDUR2,TK_NotStart,DUKHCONP1BZ4STUG1030,Waterproofing Footing & Neck Column,8178,88,0,200,0,535.25,535.25,200,0,0,0,,,,2013-09-21 08:00,2013-10-21 17:00,,2013-09-08 08:00,2013-10-06 17:00,2013-09-08 08:00,2013-10-06 17:00,2013-09-08 08:00,2013-10-06 17:00,2013-09-21 08:00,2013-10-21 17:00,,PT_Normal,,,,,ab/RlcksTaCZovyrudDTvg,,,,N,0,0,,,2013-02-16 15:52,2013-02-16 15:56,admin,admin
500603,6359,124456,13662,0,N,N,N,CP_Drtn,TT_Task,DT_FixedDUR2,TK_NotStart,DUKHCONP1BZ4STUG1035,Backfilling Upto Grade Beam Bottom,8177,88,0,200,0,1436,1436,200,1100,0,1100,,,,2013-10-02 08:00,2013-11-02 17:00,,2013-09-19 08:00,2013-10-20 17:00,2013-09-19 08:00,2013-10-20 17:00,2013-09-19 08:00,2013-10-20 17:00,2013-10-02 08:00,2013-11-02 17:00,,PT_Normal,,,,,8wKSXxqXTje0rQcPIKOvJw,,,,N,0,0,,,2013-02-16 15:52,2013-02-16 15:56,admin,admin
500604,6359,124456,13662,0,N,N,N,CP_Drtn,TT_Task,DT_FixedDUR2,TK_NotStart,DUKHCONP1BZ4STUG1040,Construction of Grade Beams,8163,88,0,200,0,8096.25,8096.25,200,0,0,0,,,,2013-10-21 08:00,2013-11-18 17:00,,2013-10-06 08:00,2013-11-05 17:00,2013-10-06 08:00,2013-11-05 17:00,2013-10-06 08:00,2013-11-05 17:00,2013-10-21 08:00,2013-11-18 17:00,,PT_Normal,,,,,nZbkWT+DTTGlX5OFW6NjpQ,,,,N,0,0,,,2013-02-16 15:52,2013-02-16 15:56,admin,admin
500605,6359,124456,13662,0,N,N,N,CP_Drtn,TT_Task,DT_FixedDUR2,TK_NotStart,DUKHCONP1BZ4STUG1045,Construction of slab on grade,8163,88,0,200,0,5538.75,5538.75,200,0,0,0,,,,2013-11-17 08:00,2013-12-15 17:00,,2013-11-04 08:00,2013-12-02 17:00,2013-11-04 08:00,2013-12-02 17:00,2013-11-04 08:00,2013-12-02 17:00,2013-11-17 08:00,2013-12-15 17:00,,PT_Normal,,,,,PW+PFsjlRkiG5l1WlKCt4A,,,,N,0,0,,,2013-02-16 15:52,2013-02-16 15:56,admin,admin
500606,6359,124458,13662,0,N,N,N,CP_Drtn,TT_Task,DT_FixedDUR2,TK_NotStart,DUKHCONP1BZ4STFF2020,Column-Rebar & Formwork,8166,88,0,200,0,3418,3418,200,0,0,0,,,,2014-01-15 08:00,2014-02-13 17:00,,2014-01-02 08:00,2014-01-30 17:00,2014-01-02 08:00,2014-01-30 17:00,2014-01-02 08:00,2014-01-30 17:00,2014-01-15 08:00,2014-02-13 17:00,,PT_Normal,,,,,Xf3obMd0QUyPvigncC+o1Q,,,,N,0,0,,,2013-02-16 15:52,2013-02-16 15:56,admin,admin
500607,6359,124458,13662,0,N,N,N,CP_Drtn,TT_Task,DT_FixedDUR2,TK_NotStart,DUKHCONP1BZ4STFF2025,Column-Concrete,8167,88,0,184,0,339.5,339.5,184,0,0,0,,,,2014-01-25 08:00,2014-02-20 17:00,,2014-01-12 08:00,2014-02-06 17:00,2014-01-12 08:00,2014-02-06 17:00,2014-01-12 08:00,2014-02-06 17:00,2014-01-25 08:00,2014-02-20 17:00,,PT_Normal,,,,,ujMZqO5uRGeb582HRrxaOA,,,,N,0,0,,,2013-02-16 15:52,2013-02-16 15:56,admin,admin
500608,6359,124458,13662,0,N,N,N,CP_Drtn,TT_Task,DT_FixedDUR2,TK_NotStart,DUKHCONP1BZ4STFF2030,"Beam, Stairs ,Slab-Rebar & Formwork",8165,88,0,200,0,19080.25,19080.25,200,0,0,0,,,,2014-01-28 08:00,2014-02-26 17:00,,2014-01-15 08:00,2014-02-13 17:00,2014-01-15 08:00,2014-02-13 17:00,2014-01-15 08:00,2014-02-13 17:00,2014-01-28 08:00,2014-02-26 17:00,,PT_Normal,,,,,KgaJ2s2jR8GZMVmvgX3rTA,,,,N,0,0,,,2013-02-16 15:52,2013-02-16 15:56,admin,admin
500609,6359,124458,13662,0,N,N,N,CP_Drtn,TT_Task,DT_FixedDUR2,TK_NotStart,DUKHCONP1BZ4STFF2035,"Beam, Stairs ,Slab-Concrete",8167,88,0,112,0,1288,1288,112,0,0,0,,,,2014-02-15 08:00,2014-03-02 17:00,,2014-02-01 08:00,2014-02-17 17:00,2014-02-01 08:00,2014-02-17 17:00,2014-02-01 08:00,2014-02-17 17:00,2014-02-15 08:00,2014-03-02 17:00,,PT_Normal,,,,,/e5XBcK1TfK42Bd1m0tHyw,,,,N,0,0,,,2013-02-16 15:52,2013-02-16 15:56,admin,admin
500610,6359,124459,13662,0,N,N,N,CP_Drtn,TT_Task,DT_FixedDUR2,TK_NotStart,DUKHCONP1BZ4STRF2040,Column-Rebar & Formwork,8166,216,0,144,0,1176,1176,144,0,0,0,,,,2014-03-11 08:00,2014-03-31 17:00,,2014-02-06 08:00,2014-02-27 17:00,2014-02-06 08:00,2014-02-27 17:00,2014-02-06 08:00,2014-02-27 17:00,2014-03-11 08:00,2014-03-31 17:00,,PT_Normal,,,,,wJvH1wueRo+s7OYgPYzX8g,,,,N,0,0,,,2013-02-16 15:52,2013-02-16 15:56,admin,admin
500611,6359,124459,13662,0,N,N,N,CP_Drtn,TT_Task,DT_FixedDUR2,TK_NotStart,DUKHCONP1BZ4STRF2045,Column-Concrete,8167,296,0,136,0,80.5,80.5,136,0,0,0,,,,2014-03-26 08:00,2014-04-14 17:00,,2014-02-10 08:00,2014-03-02 17:00,2014-02-10 08:00,2014-03-02 17:00,2014-02-10 08:00,2014-03-02 17:00,2014-03-26 08:00,2014-04-14 17:00,,PT_Normal,,,,,bZH9NkUQQp6EAiG5w0Ms0A,,,,N,0,0,,,2013-02-16 15:52,2013-02-16 15:56,admin,admin
500612,6359,124459,13662,0,N,N,N,CP_Drtn,TT_Task,DT_FixedDUR2,TK_NotStart,DUKHCONP1BZ4STRF2050,Slab-Rebar & Formwork - Head Room,8165,296,0,160,0,3444,3444,160,0,0,0,,,,2014-03-29 08:00,2014-04-20 17:00,,2014-02-13 08:00,2014-03-08 17:00,2014-02-13 08:00,2014-03-08 17:00,2014-02-13 08:00,2014-03-08 17:00,2014-03-29 08:00,2014-04-20 17:00,,PT_Normal,,,,,pyv4b6f5Rc6+YZs54CwHRQ,,,,N,0,0,,,2013-02-16 15:52,2013-02-16 15:56,admin,admin
500613,6359,124459,13662,0,N,N,N,CP_Drtn,TT_Task,DT_FixedDUR2,TK_NotStart,DUKHCONP1BZ4STRF2055,Slab-Concrete-Head room,8167,296,0,104,0,280,280,104,0,0,0,,,,2014-04-12 08:00,2014-04-26 17:00,,2014-02-27 08:00,2014-03-13 17:00,2014-02-27 08:00,2014-03-13 17:00,2014-02-27 08:00,2014-03-13 17:00,2014-04-12 08:00,2014-04-26 17:00,,PT_Normal,,,,,13W7vRYUQ4i545dSGdrE5w,,,,N,0,0,,,2013-02-16 15:52,2013-02-16 15:56,admin,admin
500614,6359,124459,13662,0,N,N,N,CP_Drtn,TT_Task,DT_FixedDUR2,TK_NotStart,DUKHCONP1BZ4STRF2060,Construction of Parapets,8168,584,0,200,0,1175,1175,200,0,0,0,,,,2014-05-31 08:00,2014-06-28 17:00,,2014-03-06 08:00,2014-04-03 17:00,2014-03-06 08:00,2014-04-03 17:00,2014-03-06 08:00,2014-04-03 17:00,2014-05-31 08:00,2014-06-28 17:00,,PT_Normal,,,,,nQ74XpqBSX66Se4f7E/iyA,,,,N,0,0,,,2013-02-16 15:52,2013-02-16 15:56,admin,admin
500615,6359,124459,13662,0,N,N,N,CP_Drtn,TT_Task,DT_FixedDUR2,TK_NotStart,DUKHCONP1BZ4STRF2065,Construction of up stands/Plinth,8165,624,0,200,0,549.5,549.5,200,0,0,0,,,,2014-06-22 08:00,2014-07-20 17:00,,2014-03-23 08:00,2014-04-20 17:00,2014-03-23 08:00,2014-04-20 17:00,2014-03-23 08:00,2014-04-20 17:00,2014-06-22 08:00,2014-07-20 17:00,,PT_Normal,,,,,hVmhsF9XQEq9hyLF6GzKrg,,,,N,0,0,,,2013-02-16 15:52,2013-02-16 15:56,admin,admin
500616,6359,124460,13662,0,N,N,N,CP_Drtn,TT_Task,DT_FixedDUR2,TK_NotStart,DUKHCONP1BZ4STGF2000,Column-Rebar & Formwork,8165,88,0,200,0,4984,4984,200,0,0,0,,,,2013-12-03 08:00,2014-01-01 17:00,,2013-11-20 08:00,2013-12-19 17:00,2013-11-20 08:00,2013-12-19 17:00,2013-11-20 08:00,2013-12-19 17:00,2013-12-03 08:00,2014-01-01 17:00,,PT_Normal,,,,,cDx3Bd+vRjuQSQjZJYnb4Q,,,,N,0,0,,,2013-02-16 15:52,2013-02-16 15:56,admin,admin
500617,6359,124460,13662,0,N,N,N,CP_Drtn,TT_Task,DT_FixedDUR2,TK_NotStart,DUKHCONP1BZ4STGF2005,Column-Concrete,8167,88,0,184,0,388.5,388.5,184,0,0,0,,,,2013-12-12 08:00,2014-01-08 17:00,,2013-11-30 08:00,2013-12-26 17:00,2013-11-30 08:00,2013-12-26 17:00,2013-11-30 08:00,2013-12-26 17:00,2013-12-12 08:00,2014-01-08 17:00,,PT_Normal,,,,,GgR/oT48QKS1vLFvpFbp3Q,,,,N,0,0,,,2013-02-16 15:52,2013-02-16 15:56,admin,admin
500618,6359,124460,13662,0,N,N,N,CP_Drtn,TT_Task,DT_FixedDUR2,TK_NotStart,DUKHCONP1BZ4STGF2010,"Beam, Stairs ,Slab-Rebar & Formwork",8165,88,0,200,0,18721.5,18721.5,200,0,0,0,,,,2013-12-28 08:00,2014-01-25 17:00,,2013-12-14 08:00,2014-01-12 17:00,2013-12-14 08:00,2014-01-12 17:00,2013-12-14 08:00,2014-01-12 17:00,2013-12-28 08:00,2014-01-25 17:00,,PT_Normal,,,,,D9EEZ9RaSwqwabMbb6LttQ,,,,N,0,0,,,2013-02-16 15:52,2013-02-16 15:56,admin,admin
500619,6359,124460,13662,0,N,N,N,CP_Drtn,TT_Task,DT_FixedDUR2,TK_NotStart,DUKHCONP1BZ4STGF2015,"Beam, Stairs ,Slab-Concrete",8167,88,0,112,0,1456,1456,112,0,0,0,,,,2014-01-13 08:00,2014-01-28 17:00,,2013-12-31 08:00,2014-01-15 17:00,2013-12-31 08:00,2014-01-15 17:00,2013-12-31 08:00,2014-01-15 17:00,2014-01-13 08:00,2014-01-28 17:00,,PT_Normal,,,,,jiZHpmbyR+yPR1IcIsFypg,,,,N,0,0,,,2013-02-16 15:52,2013-02-16 15:56,admin,admin
500620,6359,124462,13662,0,N,N,N,CP_Drtn,TT_Task,DT_FixedDUR2,TK_NotStart,DUKHCONP1BZ4SLEX5105,Laying of Grass/ green area,8178,576,0,200,0,5488,5488,200,0,0,0,,,,2014-08-06 08:00,2014-09-03 17:00,,2014-05-11 08:00,2014-06-08 17:00,2014-05-11 08:00,2014-06-08 17:00,2014-05-11 08:00,2014-06-08 17:00,2014-08-06 08:00,2014-09-03 17:00,,PT_Normal,,,,,WdltzlayTxyar0gtBJh1Yw,,,,N,0,0,,,2013-02-16 15:52,2013-02-16 15:56,admin,admin
500621,6359,124462,13662,0,N,N,N,CP_Drtn,TT_Task,DT_FixedDUR2,TK_NotStart,DUKHCONP1BZ4SLEX5110,Laying of Palm tree,8178,576,552,200,0,336,336,200,0,0,0,,,,2014-08-18 08:00,2014-09-15 17:00,,2014-05-22 08:00,2014-06-19 17:00,2014-05-22 08:00,2014-06-19 17:00,2014-05-22 08:00,2014-06-19 17:00,2014-08-18 08:00,2014-09-15 17:00,,PT_Normal,,,,,PLv/UQpoSwSYBNwMQzHjlA,,,,N,0,0,,,2013-02-16 15:52,2013-02-16 15:56,admin,admin
500622,6359,124463,13662,0,N,N,N,CP_Drtn,TT_Task,DT_FixedDUR2,TK_NotStart,DUKHCONP1BZ4HDEX5090,kerb works,8173,576,0,160,0,712,712,160,0,0,0,,,,2014-06-26 08:00,2014-07-19 17:00,,2014-04-03 08:00,2014-04-26 17:00,2014-04-03 08:00,2014-04-26 17:00,2014-04-03 08:00,2014-04-26 17:00,2014-06-26 08:00,2014-07-19 17:00,,PT_Normal,,,,,gNqCje/9TO6E8y5273CJBg,,,,N,0,0,,,2013-02-16 15:52,2013-02-16 15:56,admin,admin
500623,6359,124463,13662,0,N,N,N,CP_Drtn,TT_Task,DT_FixedDUR2,TK_NotStart,DUKHCONP1BZ4HDEX5095,Cobble Stone Works,8170,576,0,160,0,456,456,160,0,0,0,,,,2014-07-08 08:00,2014-07-30 17:00,,2014-04-15 08:00,2014-05-07 17:00,2014-04-15 08:00,2014-05-07 17:00,2014-04-15 08:00,2014-05-07 17:00,2014-07-08 08:00,2014-07-30 17:00,,PT_Normal,,,,,Mgm32q3DSEiKgWLi76FnYw,,,,N,0,0,,,2013-02-16 15:52,2013-02-16 15:56,admin,admin
500624,6359,124463,13662,0,N,N,N,CP_Drtn,TT_Task,DT_FixedDUR2,TK_NotStart,DUKHCONP1BZ4HDEX5100,Interlock works,8174,576,0,160,0,408,408,160,0,0,0,,,,2014-07-22 08:00,2014-08-17 17:00,,2014-04-29 08:00,2014-05-21 17:00,2014-04-29 08:00,2014-05-21 17:00,2014-04-29 08:00,2014-05-21 17:00,2014-07-22 08:00,2014-08-17 17:00,,PT_Normal,,,,,2Rj8Pm0BTMO9p/lfmLMtgA,,,,N,0,0,,,2013-02-16 15:52,2013-02-16 15:56,admin,admin
500625,6359,124464,13662,0,N,N,N,CP_Drtn,TT_Task,DT_FixedDUR2,TK_NotStart,DUKHCONP1BZ4MSEX5020,Construction Entrance Ramp,8164,552,0,200,0,1288,1288,200,0,0,0,,,,2014-05-28 08:00,2014-06-25 17:00,,2014-03-09 08:00,2014-04-06 17:00,2014-03-09 08:00,2014-04-06 17:00,2014-03-09 08:00,2014-04-06 17:00,2014-05-28 08:00,2014-06-25 17:00,,PT_Normal,,,,,nF1XbpDHQvKGdMTnta+LOg,,,,N,0,0,,,2013-02-16 15:52,2013-02-16 15:56,admin,admin
500626,6359,124464,13662,0,N,N,N,CP_Drtn,TT_Task,DT_FixedDUR2,TK_NotStart,DUKHCONP1BZ4MSEX5025,SS.Handrails and Balustrades,8178,576,0,160,0,400,400,160,0,0,0,,,,2014-06-18 08:00,2014-07-10 17:00,,2014-03-26 08:00,2014-04-17 17:00,2014-03-26 08:00,2014-04-17 17:00,2014-03-26 08:00,2014-04-17 17:00,2014-06-18 08:00,2014-07-10 17:00,,PT_Normal,,,,,UqF04bVKRxmloRO66NipAQ,,,,N,0,0,,,2013-02-16 15:52,2013-02-16 15:56,admin,admin
500627,6359,124464,13662,0,N,N,N,CP_Drtn,TT_Task,DT_FixedDUR2,TK_NotStart,DUKHCONP1BZ4MSEX5015,Construction of grease Trap,8178,344,0,160,0,88,88,160,0,0,0,,,,2014-05-28 08:00,2014-06-19 17:00,,2014-04-08 08:00,2014-04-30 17:00,2014-04-08 08:00,2014-04-30 17:00,2014-04-08 08:00,2014-04-30 17:00,2014-05-28 08:00,2014-06-19 17:00,,PT_Normal,,,,,fp1yzCXpRRmiPqGE88Nr1Q,,,,N,0,0,,,2013-02-16 15:52,2013-02-16 15:56,admin,admin
500628,6359,124464,13662,0,N,N,N,CP_Drtn,TT_Task,DT_FixedDUR2,TK_NotStart,DUKHCONP1BZ4MSEX5000,Construction of Manholes,8172,344,0,200,0,880,880,200,0,0,0,,,,2014-04-24 08:00,2014-05-22 17:00,,2014-03-05 08:00,2014-04-02 17:00,2014-03-05 08:00,2014-04-02 17:00,2014-03-05 08:00,2014-04-02 17:00,2014-04-24 08:00,2014-05-22 17:00,,PT_Normal,,,,,2G0yt2GhQem0NqBk17KJYg,,,,N,0,0,,,2013-02-16 15:52,2013-02-16 15:56,admin,admin
500629,6359,124464,13662,0,N,N,N,CP_Drtn,TT_Task,DT_FixedDUR2,TK_NotStart,DUKHCONP1BZ4MSEX5005,"Construction  of Soak pit, Chambers",8172,344,0,200,0,176,176,200,0,0,0,,,,2014-05-08 08:00,2014-06-05 17:00,,2014-03-19 08:00,2014-04-16 17:00,2014-03-19 08:00,2014-04-16 17:00,2014-03-19 08:00,2014-04-16 17:00,2014-05-08 08:00,2014-06-05 17:00,,PT_Normal,,,,,MwtyIz4zQCSOcS9E2iWV+g,,,,N,0,0,,,2013-02-16 15:52,2013-02-16 15:56,admin,admin
500630,6359,124464,13662,0,N,N,N,CP_Drtn,TT_Task,DT_FixedDUR2,TK_NotStart,DUKHCONP1BZ4MSEX5010,Telephone cable laying,8177,344,144,200,0,500,500,200,0,0,0,,,,2014-06-21 08:00,2014-07-19 17:00,,2014-05-01 08:00,2014-05-29 17:00,2014-05-01 08:00,2014-05-29 17:00,2014-05-01 08:00,2014-05-29 17:00,2014-06-21 08:00,2014-07-19 17:00,,PT_Normal,,,,,/udFeMzQQmmRPjDsNOXihg,,,,N,0,0,,,2013-02-16 15:52,2013-02-16 15:56,admin,admin
500631,6359,124464,13662,0,N,N,N,CP_Drtn,TT_Task,DT_FixedDUR2,TK_NotStart,DUKHCONP1BZ4MSEX5335,Aluminum Roll-up Shutter with 2m Wall,8178,200,0,200,0,400,400,200,0,0,0,,,,2014-09-16 08:00,2014-10-16 17:00,,2014-08-18 08:00,2014-09-15 17:00,2014-08-18 08:00,2014-09-15 17:00,2014-08-18 08:00,2014-09-15 17:00,2014-09-16 08:00,2014-10-16 17:00,,PT_Normal,,,,,FNKVu1LiTmOCXEdWRKPg3w,,,,N,0,0,,,2013-02-16 15:52,2013-02-16 15:56,admin,admin
500632,6359,124465,13662,0,N,N,N,CP_Drtn,TT_Task,DT_FixedDUR2,TK_NotStart,DUKHCONP1BZ4WEEX5030,Excavation,8177,408,0,160,0,128,128,160,80,0,80,,,,2014-06-02 08:00,2014-06-24 17:00,,2014-04-03 08:00,2014-04-26 17:00,2014-04-03 08:00,2014-04-26 17:00,2014-04-03 08:00,2014-04-26 17:00,2014-06-02 08:00,2014-06-24 17:00,,PT_Normal,,,,,csgbr9ZETHKeUWwZTbOQ1Q,,,,N,0,0,,,2013-02-16 15:52,2013-02-16 15:56,admin,admin
500633,6359,124465,13662,0,N,N,N,CP_Drtn,TT_Task,DT_FixedDUR2,TK_NotStart,DUKHCONP1BZ4WEEX5035,Construction of Raft,8165,432,0,200,0,1624,1624,200,0,0,0,,,,2014-06-11 08:00,2014-07-09 17:00,,2014-04-09 08:00,2014-05-07 17:00,2014-04-09 08:00,2014-05-07 17:00,2014-04-09 08:00,2014-05-07 17:00,2014-06-11 08:00,2014-07-09 17:00,,PT_Normal,,,,,1oLXyfcsTr292JxpL9mHcw,,,,N,0,0,,,2013-02-16 15:52,2013-02-16 15:56,admin,admin
500634,6359,124465,13662,0,N,N,N,CP_Drtn,TT_Task,DT_FixedDUR2,TK_NotStart,DUKHCONP1BZ4WEEX5040,Block works & Plastering,8168,432,0,200,0,888,888,200,0,0,0,,,,2014-06-23 08:00,2014-07-21 17:00,,2014-04-21 08:00,2014-05-19 17:00,2014-04-21 08:00,2014-05-19 17:00,2014-04-21 08:00,2014-05-19 17:00,2014-06-23 08:00,2014-07-21 17:00,,PT_Normal,,,,,T2ypLfmgR6Kl0d8UZOcc+g,,,,N,0,0,,,2013-02-16 15:52,2013-02-16 15:56,admin,admin
500635,6359,124465,13662,0,N,N,N,CP_Drtn,TT_Task,DT_FixedDUR2,TK_NotStart,DUKHCONP1BZ4WEEX5045,Flooring & Painting,8178,432,0,200,0,408,408,200,0,0,0,,,,2014-07-05 08:00,2014-08-05 17:00,,2014-05-03 08:00,2014-05-31 17:00,2014-05-03 08:00,2014-05-31 17:00,2014-05-03 08:00,2014-05-31 17:00,2014-07-05 08:00,2014-08-05 17:00,,PT_Normal,,,,,IXnv0RSpSgSeM2F217K4qw,,,,N,0,0,,,2013-02-16 15:52,2013-02-16 15:56,admin,admin
500636,6359,124465,13662,0,N,N,N,CP_Drtn,TT_Task,DT_FixedDUR2,TK_NotStart,DUKHCONP1BZ4WEEX5050,Installation of Steel Gate,8178,432,0,160,0,112,112,160,0,0,0,,,,2014-07-22 08:00,2014-08-17 17:00,,2014-05-20 08:00,2014-06-11 17:00,2014-05-20 08:00,2014-06-11 17:00,2014-05-20 08:00,2014-06-11 17:00,2014-07-22 08:00,2014-08-17 17:00,,PT_Normal,,,,,q6r+gLHIT7+MS/U2tziczg,,,,N,0,0,,,2013-02-16 15:52,2013-02-16 15:56,admin,admin
500637,6359,124465,13662,0,N,N,N,CP_Drtn,TT_Task,DT_FixedDUR2,TK_NotStart,DUKHCONP1BZ4WEEX5060,Structural steel &  SS Shed cover installation,8178,432,0,200,0,616,616,200,0,0,0,,,,2014-08-06 08:00,2014-09-03 17:00,,2014-06-01 08:00,2014-06-29 17:00,2014-06-01 08:00,2014-06-29 17:00,2014-06-01 08:00,2014-06-29 17:00,2014-08-06 08:00,2014-09-03 17:00,,PT_Normal,,,,,K35LFHXrQ7qLreLI9WGiBA,,,,N,0,0,,,2013-02-16 15:52,2013-02-16 15:56,admin,admin
500638,6359,124465,13662,0,N,N,N,CP_Drtn,TT_Task,DT_FixedDUR2,TK_NotStart,DUKHCONP1BZ4WEEX5065,"Install. of Water Tank,Chiller,Pump & Meter",8178,432,0,200,0,382.4,382.4,200,0,0,0,,,,2014-08-18 08:00,2014-09-15 17:00,,2014-06-12 08:00,2014-07-10 17:00,2014-06-12 08:00,2014-07-10 17:00,2014-06-12 08:00,2014-07-10 17:00,2014-08-18 08:00,2014-09-15 17:00,,PT_Normal,,,,,IPYCJ39lQxyVk2ArLozDpw,,,,N,0,0,,,2013-02-16 15:52,2013-02-16 15:56,admin,admin
500639,6359,124468,13662,0,N,N,N,CP_Drtn,TT_Task,DT_FixedDUR2,TK_NotStart,DUKHCONP1BZ4AREL3665,External Plastering,8169,608,0,200,0,12200,12200,200,0,0,0,,,,2014-07-16 08:00,2014-08-17 17:00,,2014-04-19 08:00,2014-05-17 17:00,2014-04-19 08:00,2014-05-17 17:00,2014-04-19 08:00,2014-05-17 17:00,2014-07-16 08:00,2014-08-17 17:00,,PT_Normal,,,,,gcdXm43vRuuaYce2d+pW9A,,,,N,0,0,,,2013-02-16 15:52,2013-02-16 15:56,admin,admin
500640,6359,124468,13662,0,N,N,N,CP_Drtn,TT_Task,DT_FixedDUR2,TK_NotStart,DUKHCONP1BZ4AREL3670,External stone cladding works,8170,608,0,160,0,936,936,160,0,0,0,,,,2014-08-06 08:00,2014-08-28 17:00,,2014-05-06 08:00,2014-05-28 17:00,2014-05-06 08:00,2014-05-28 17:00,2014-05-06 08:00,2014-05-28 17:00,2014-08-06 08:00,2014-08-28 17:00,,PT_Normal,,,,,pewgigPqQ6CBAV3HEaX5lg,,,,N,0,0,,,2013-02-16 15:52,2013-02-16 15:56,admin,admin
500641,6359,124468,13662,0,N,N,N,CP_Drtn,TT_Task,DT_FixedDUR2,TK_NotStart,DUKHCONP1BZ4AREL3675,GRC works,8178,608,0,160,0,550,550,160,0,0,0,,,,2014-08-12 08:00,2014-09-03 17:00,,2014-05-12 08:00,2014-06-03 17:00,2014-05-12 08:00,2014-06-03 17:00,2014-05-12 08:00,2014-06-03 17:00,2014-08-12 08:00,2014-09-03 17:00,,PT_Normal,,,,,HqO/jfMsTES0VhxZq7TmzQ,,,,N,0,0,,,2013-02-16 15:52,2013-02-16 15:56,admin,admin
500642,6359,124468,13662,0,N,N,N,CP_Drtn,TT_Task,DT_FixedDUR2,TK_NotStart,DUKHCONP1BZ4AREL3680,External Painting,8178,608,40,160,0,4224,4224,160,0,0,0,,,,2014-08-24 08:00,2014-09-15 17:00,,2014-05-24 08:00,2014-06-15 17:00,2014-05-24 08:00,2014-06-15 17:00,2014-05-24 08:00,2014-06-15 17:00,2014-08-24 08:00,2014-09-15 17:00,,PT_Normal,,,,,JuVqFfOmT++B6mPGga0nJQ,,,,N,0,0,,,2013-02-16 15:52,2013-02-16 15:56,admin,admin
500643,6359,124469,13662,0,N,N,N,CP_Drtn,TT_Task,DT_FixedDUR2,TK_NotStart,DUKHCONP1BZ4ARRF3630,Leveling Screed for Waterproofing,8164,624,0,200,0,711.5,711.5,200,0,0,0,,,,2014-07-03 08:00,2014-07-31 17:00,,2014-04-03 08:00,2014-05-01 17:00,2014-04-03 08:00,2014-05-01 17:00,2014-04-03 08:00,2014-05-01 17:00,2014-07-03 08:00,2014-07-31 17:00,,PT_Normal,,,,,d+n0eZJVSlKyUtFaD5ym1Q,,,,N,0,0,,,2013-02-16 15:52,2013-02-16 15:56,admin,admin
500644,6359,124469,13662,0,N,N,N,CP_Drtn,TT_Task,DT_FixedDUR2,TK_NotStart,DUKHCONP1BZ4ARRF3635,Laying of Waterproofing Membrane,8178,624,0,200,0,986.25,986.25,200,0,0,0,,,,2014-07-07 08:00,2014-08-07 17:00,,2014-04-07 08:00,2014-05-05 17:00,2014-04-07 08:00,2014-05-05 17:00,2014-04-07 08:00,2014-05-05 17:00,2014-07-07 08:00,2014-08-07 17:00,,PT_Normal,,,,,f744MvMDSSO4AmJ5fq516Q,,,,N,0,0,,,2013-02-16 15:52,2013-02-16 15:56,admin,admin
500645,6359,124469,13662,0,N,N,N,CP_Drtn,TT_Task,DT_FixedDUR2,TK_NotStart,DUKHCONP1BZ4ARRF3640,Installation of Insulation & Protection,8178,624,0,200,0,1250.25,1250.25,200,0,0,0,,,,2014-07-12 08:00,2014-08-12 17:00,,2014-04-12 08:00,2014-05-10 17:00,2014-04-12 08:00,2014-05-10 17:00,2014-04-12 08:00,2014-05-10 17:00,2014-07-12 08:00,2014-08-12 17:00,,PT_Normal,,,,,QKBJVfMHR1iLpRuIHa7Kqw,,,,N,0,0,,,2013-02-16 15:52,2013-02-16 15:56,admin,admin
500646,6359,124469,13662,0,N,N,N,CP_Drtn,TT_Task,DT_FixedDUR2,TK_NotStart,DUKHCONP1BZ4ARRF3645,Lime Stone Chips & Paving slab Installation,8170,624,0,200,0,626,626,200,0,0,0,,,,2014-07-16 08:00,2014-08-17 17:00,,2014-04-16 08:00,2014-05-14 17:00,2014-04-16 08:00,2014-05-14 17:00,2014-04-16 08:00,2014-05-14 17:00,2014-07-16 08:00,2014-08-17 17:00,,PT_Normal,,,,,HvnEq0nQRciq1o/0jyY69w,,,,N,0,0,,,2013-02-16 15:52,2013-02-16 15:56,admin,admin
500647,6359,124469,13662,0,N,N,N,CP_Drtn,TT_Task,DT_FixedDUR2,TK_NotStart,DUKHCONP1BZ4ARRF3655,Installation of Pumps Protection cabinets,8178,624,0,160,0,616,616,160,0,0,0,,,,2014-08-12 08:00,2014-09-03 17:00,,2014-05-10 08:00,2014-06-01 17:00,2014-05-10 08:00,2014-06-01 17:00,2014-05-10 08:00,2014-06-01 17:00,2014-08-12 08:00,2014-09-03 17:00,,PT_Normal,,,,,0fBPPpm8TQanEybATzXxhw,,,,N,0,0,,,2013-02-16 15:52,2013-02-16 15:56,admin,admin
500648,6359,124469,13662,0,N,N,N,CP_Drtn,TT_Task,DT_FixedDUR2,TK_NotStart,DUKHCONP1BZ4ARRF3650,Install. of Gal. Frame & Aluminum Slat Screen,8178,624,0,200,0,859.25,859.25,200,0,0,0,,,,2014-07-24 08:00,2014-08-25 17:00,,2014-04-24 08:00,2014-05-22 17:00,2014-04-24 08:00,2014-05-22 17:00,2014-04-24 08:00,2014-05-22 17:00,2014-07-24 08:00,2014-08-25 17:00,,PT_Normal,,,,,LzH6m7oSTZWTkAOojb/xuw,,,,N,0,0,,,2013-02-16 15:52,2013-02-16 15:56,admin,admin
500649,6359,124469,13662,0,N,N,N,CP_Drtn,TT_Task,DT_FixedDUR2,TK_NotStart,DUKHCONP1BZ4ARRF3660,Installation of Access Ladder,8178,624,600,120,0,352,352,120,0,0,0,,,,2014-08-30 08:00,2014-09-15 17:00,,2014-05-27 08:00,2014-06-12 17:00,2014-05-27 08:00,2014-06-12 17:00,2014-05-27 08:00,2014-06-12 17:00,2014-08-30 08:00,2014-09-15 17:00,,PT_Normal,,,,,JzIhv1iKQyqkM2SI0fowOw,,,,N,0,0,,,2013-02-16 15:52,2013-02-16 15:56,admin,admin
500650,6359,124471,13662,0,N,N,N,CP_Drtn,TT_Task,DT_FixedDUR2,TK_NotStart,DUKHCONP1BZ4ARRF3605,Plastering work,8169,624,0,160,0,3833,3833,160,0,0,0,,,,2014-07-05 08:00,2014-07-27 17:00,,2014-04-05 08:00,2014-04-27 17:00,2014-04-05 08:00,2014-04-27 17:00,2014-04-05 08:00,2014-04-27 17:00,2014-07-05 08:00,2014-07-27 17:00,,PT_Normal,,,,,aVWaERVfR1uh0qOcVP5k6Q,,,,N,0,0,,,2013-02-16 15:52,2013-02-16 15:56,admin,admin
500651,6359,124471,13662,0,N,N,N,CP_Drtn,TT_Task,DT_FixedDUR2,TK_NotStart,DUKHCONP1BZ4ARRF3610,Flooring screed,8164,624,0,120,0,154,154,120,0,0,0,,,,2014-07-22 08:00,2014-08-11 17:00,,2014-04-22 08:00,2014-05-08 17:00,2014-04-22 08:00,2014-05-08 17:00,2014-04-22 08:00,2014-05-08 17:00,2014-07-22 08:00,2014-08-11 17:00,,PT_Normal,,,,,6f8ug92BSVSihnO+rsCnkw,,,,N,0,0,,,2013-02-16 15:52,2013-02-16 15:56,admin,admin
500652,6359,124471,13662,0,N,N,N,CP_Drtn,TT_Task,DT_FixedDUR2,TK_NotStart,DUKHCONP1BZ4ARRF3695,Painting -Storage area,8178,624,0,160,0,1640,1640,160,0,0,0,,,,2014-08-06 08:00,2014-08-28 17:00,,2014-05-04 08:00,2014-05-26 17:00,2014-05-04 08:00,2014-05-26 17:00,2014-05-04 08:00,2014-05-26 17:00,2014-08-06 08:00,2014-08-28 17:00,,PT_Normal,,,,,A7tm+76wTViAS9cQOdZjRg,,,,N,0,0,,,2013-02-16 15:52,2013-02-16 15:56,admin,admin
500653,6359,124471,13662,0,N,N,N,CP_Drtn,TT_Task,DT_FixedDUR2,TK_NotStart,DUKHCONP1BZ4ARRF3620,Epoxy Painting -Storage area,8178,624,0,120,0,48.5,48.5,120,0,0,0,,,,2014-08-24 08:00,2014-09-09 17:00,,2014-05-21 08:00,2014-06-07 17:00,2014-05-21 08:00,2014-06-07 17:00,2014-05-21 08:00,2014-06-07 17:00,2014-08-24 08:00,2014-09-09 17:00,,PT_Normal,,,,,OsJ54ZWnSLaE+7Hh1ZKCeg,,,,N,0,0,,,2013-02-16 15:52,2013-02-16 15:56,admin,admin
500654,6359,124471,13662,0,N,N,N,CP_Drtn,TT_Task,DT_FixedDUR2,TK_NotStart,DUKHCONP1BZ4ARRF3600,Block work,8168,624,0,160,0,697.25,697.25,160,0,0,0,,,,2014-06-23 08:00,2014-07-15 17:00,,2014-03-24 08:00,2014-04-15 17:00,2014-03-24 08:00,2014-04-15 17:00,2014-03-24 08:00,2014-04-15 17:00,2014-06-23 08:00,2014-07-15 17:00,,PT_Normal,,,,,s9GN7SxqQManCv5UDLEQwQ,,,,N,0,0,,,2013-02-16 15:52,2013-02-16 15:56,admin,admin
500655,6359,124472,13662,0,N,N,N,CP_Drtn,TT_Task,DT_FixedDUR2,TK_NotStart,DUKHCONP1BZ4ARFF3385,Handrail &  Balustrade,8178,24,0,160,0,175,175,160,0,0,0,,,,2014-08-06 08:00,2014-08-28 17:00,,2014-07-30 08:00,2014-08-25 17:00,2014-07-30 08:00,2014-08-25 17:00,2014-07-30 08:00,2014-08-25 17:00,2014-08-06 08:00,2014-08-28 17:00,,PT_Normal,,,,,v7wjADstTiCCqmtme1iInQ,,,,N,0,0,,,2013-02-16 15:52,2013-02-16 15:56,admin,admin
500656,6359,124472,13662,0,N,N,N,CP_Drtn,TT_Task,DT_FixedDUR2,TK_NotStart,DUKHCONP1BZ4ARFF3300,Block work,8168,24,0,200,0,7341,7341,200,0,0,0,,,,2014-03-11 08:00,2014-04-08 17:00,,2014-03-08 08:00,2014-04-05 17:00,2014-03-08 08:00,2014-04-05 17:00,2014-03-08 08:00,2014-04-05 17:00,2014-03-11 08:00,2014-04-08 17:00,,PT_Normal,,,,,xZ2MXSVIS3OViBkhFLYB8w,,,,N,0,0,,,2013-02-16 15:52,2013-02-16 15:56,admin,admin
500657,6359,124472,13662,0,N,N,N,CP_Drtn,TT_Task,DT_FixedDUR2,TK_NotStart,DUKHCONP1BZ4ARFF3305,Plastering work,8169,24,0,200,0,7518.75,7518.75,200,0,0,0,,,,2014-04-07 08:00,2014-05-05 17:00,,2014-04-03 08:00,2014-05-01 17:00,2014-04-03 08:00,2014-05-01 17:00,2014-04-03 08:00,2014-05-01 17:00,2014-04-07 08:00,2014-05-05 17:00,,PT_Normal,,,,,/qr22ienQFGmFMa9WhLLew,,,,N,0,0,,,2013-02-16 15:52,2013-02-16 15:56,admin,admin
500658,6359,124472,13662,0,N,N,N,CP_Drtn,TT_Task,DT_FixedDUR2,TK_NotStart,DUKHCONP1BZ4ARFF3310,Flooring screed,8164,160,136,168,0,1082.5,1082.5,168,0,0,0,,,,2014-05-05 08:00,2014-05-28 17:00,,2014-04-12 08:00,2014-05-05 17:00,2014-04-12 08:00,2014-05-05 17:00,2014-04-12 08:00,2014-05-05 17:00,2014-05-05 08:00,2014-05-28 17:00,,PT_Normal,,,,,TzEibDnkRMKYGnX7GG53ug,,,,N,0,0,,,2013-02-16 15:52,2013-02-16 15:56,admin,admin
500659,6359,124472,13662,0,N,N,N,CP_Drtn,TT_Task,DT_FixedDUR2,TK_NotStart,DUKHCONP1BZ4ARFF3315,Wet area waterproofing,8178,24,0,120,0,1374,1374,120,0,0,0,,,,2014-04-28 08:00,2014-05-14 17:00,,2014-04-24 08:00,2014-05-11 17:00,2014-04-24 08:00,2014-05-11 17:00,2014-04-24 08:00,2014-05-11 17:00,2014-04-28 08:00,2014-05-14 17:00,,PT_Normal,,,,,SKPhOoM/ReqcGYgm8njtvQ,,,,N,0,0,,,2013-02-16 15:52,2013-02-16 15:56,admin,admin
500660,6359,124472,13662,0,N,N,N,CP_Drtn,TT_Task,DT_FixedDUR2,TK_NotStart,DUKHCONP1BZ4ARFF3395,Final Painting,8178,24,0,200,0,5256.25,5256.25,200,0,0,0,,,,2014-08-18 08:00,2014-09-15 17:00,,2014-08-14 08:00,2014-09-11 17:00,2014-08-14 08:00,2014-09-11 17:00,2014-08-14 08:00,2014-09-11 17:00,2014-08-18 08:00,2014-09-15 17:00,,PT_Normal,,,,,VCjteXTVSuibo72KpQh5ow,,,,N,0,0,,,2013-02-16 15:52,2013-02-16 15:56,admin,admin
500661,6359,124472,13662,0,N,N,N,CP_Drtn,TT_Task,DT_FixedDUR2,TK_NotStart,DUKHCONP1BZ4ARFF3330,Paint First coat,8178,232,208,200,0,5256.25,5256.25,200,0,0,0,,,,2014-05-24 08:00,2014-06-21 17:00,,2014-04-20 08:00,2014-05-18 17:00,2014-04-20 08:00,2014-05-18 17:00,2014-04-20 08:00,2014-05-18 17:00,2014-05-24 08:00,2014-06-21 17:00,,PT_Normal,,,,,25Zr9Y8ORJGAOJoCPlpjFg,,,,N,0,0,,,2013-02-16 15:52,2013-02-16 15:56,admin,admin
500662,6359,124472,13662,0,N,N,N,CP_Drtn,TT_Task,DT_FixedDUR2,TK_NotStart,DUKHCONP1BZ4ARFF3320,Ceramic Wall Tiling,8170,24,0,200,0,1516,1516,200,0,0,0,,,,2014-05-07 08:00,2014-06-04 17:00,,2014-05-04 08:00,2014-06-01 17:00,2014-05-04 08:00,2014-06-01 17:00,2014-05-04 08:00,2014-06-01 17:00,2014-05-07 08:00,2014-06-04 17:00,,PT_Normal,,,,,K8558RWUTHq4e3y5uQ0c+A,,,,N,0,0,,,2013-02-16 15:52,2013-02-16 15:56,admin,admin
500663,6359,124472,13662,0,N,N,N,CP_Drtn,TT_Task,DT_FixedDUR2,TK_NotStart,DUKHCONP1BZ4ARFF3325,Porcelain Tile flooring,8170,24,0,200,0,1341,1341,200,0,0,0,,,,2014-05-17 08:00,2014-06-14 17:00,,2014-05-13 08:00,2014-06-10 17:00,2014-05-13 08:00,2014-06-10 17:00,2014-05-13 08:00,2014-06-10 17:00,2014-05-17 08:00,2014-06-14 17:00,,PT_Normal,,,,,jf4Qzh6eSWSEeW1IKJxmuQ,,,,N,0,0,,,2013-02-16 15:52,2013-02-16 15:56,admin,admin
500664,6359,124472,13662,0,N,N,N,CP_Drtn,TT_Task,DT_FixedDUR2,TK_NotStart,DUKHCONP1BZ4ARFF3335,Slate Tile Flooring & Skirting,8170,176,152,120,0,931.25,931.25,120,0,0,0,,,,2014-06-25 08:00,2014-07-12 17:00,,2014-05-31 08:00,2014-06-16 17:00,2014-05-31 08:00,2014-06-16 17:00,2014-05-31 08:00,2014-06-16 17:00,2014-06-25 08:00,2014-07-12 17:00,,PT_Normal,,,,,emZWt/rARAemIOxVgzstkw,,,,N,0,0,,,2013-02-16 15:52,2013-02-16 15:56,admin,admin
500665,6359,124472,13662,0,N,N,N,CP_Drtn,TT_Task,DT_FixedDUR2,TK_NotStart,DUKHCONP1BZ4ARFF3350,Granite - Stair case flooring & Skirting,8171,112,88,160,0,850,850,160,0,0,0,,,,2014-06-19 08:00,2014-07-12 17:00,,2014-06-03 08:00,2014-06-25 17:00,2014-06-03 08:00,2014-06-25 17:00,2014-06-03 08:00,2014-06-25 17:00,2014-06-19 08:00,2014-07-12 17:00,,PT_Normal,,,,,xRGcCdoiSl+C5e6ynVuUZg,,,,N,0,0,,,2013-02-16 15:52,2013-02-16 15:56,admin,admin
500666,6359,124472,13662,0,N,N,N,CP_Drtn,TT_Task,DT_FixedDUR2,TK_NotStart,DUKHCONP1BZ4ARFF3345,Fixing of Suspension systems,8178,24,0,160,0,1191,1191,160,0,0,0,,,,2014-06-07 08:00,2014-06-29 17:00,,2014-06-03 08:00,2014-06-25 17:00,2014-06-03 08:00,2014-06-25 17:00,2014-06-03 08:00,2014-06-25 17:00,2014-06-07 08:00,2014-06-29 17:00,,PT_Normal,,,,,MrQtinOlTiyobRu5hColcQ,,,,N,0,0,,,2013-02-16 15:52,2013-02-16 15:56,admin,admin
500667,6359,124472,13662,0,N,N,N,CP_Drtn,TT_Task,DT_FixedDUR2,TK_NotStart,DUKHCONP1BZ4ARFF3360,Gypsum board false ceiling,8178,24,0,200,0,1191,1191,200,0,0,0,,,,2014-06-18 08:00,2014-07-16 17:00,,2014-06-15 08:00,2014-07-13 17:00,2014-06-15 08:00,2014-07-13 17:00,2014-06-15 08:00,2014-07-13 17:00,2014-06-18 08:00,2014-07-16 17:00,,PT_Normal,,,,,JKlr5knKRaCxRMQCZ/0I0g,,,,N,0,0,,,2013-02-16 15:52,2013-02-16 15:56,admin,admin
500668,6359,124472,13662,0,N,N,N,CP_Drtn,TT_Task,DT_FixedDUR2,TK_NotStart,DUKHCONP1BZ4ARFF3365,Wooden door,8178,24,0,120,0,176,176,120,0,0,0,,,,2014-07-03 08:00,2014-07-20 17:00,,2014-06-30 08:00,2014-07-16 17:00,2014-06-30 08:00,2014-07-16 17:00,2014-06-30 08:00,2014-07-16 17:00,2014-07-03 08:00,2014-07-20 17:00,,PT_Normal,,,,,ssnB/o6STg+Bq+vpcndWzA,,,,N,0,0,,,2013-02-16 15:52,2013-02-16 15:56,admin,admin
500669,6359,124472,13662,0,N,N,N,CP_Drtn,TT_Task,DT_FixedDUR2,TK_NotStart,DUKHCONP1BZ4ARFF3370,Aluminum Door,8178,24,0,160,0,132,132,160,0,0,0,,,,2014-07-12 08:00,2014-08-06 17:00,,2014-07-08 08:00,2014-07-30 17:00,2014-07-08 08:00,2014-07-30 17:00,2014-07-08 08:00,2014-07-30 17:00,2014-07-12 08:00,2014-08-06 17:00,,PT_Normal,,,,,8vR2mbqRTMKKNspgxt3onQ,,,,N,0,0,,,2013-02-16 15:52,2013-02-16 15:56,admin,admin
500670,6359,124472,13662,0,N,N,N,CP_Drtn,TT_Task,DT_FixedDUR2,TK_NotStart,DUKHCONP1BZ4ARFF3380,Aluminum windows,8178,128,104,160,0,272.25,272.25,160,0,0,0,,,,2014-08-06 08:00,2014-08-28 17:00,,2014-07-15 08:00,2014-08-10 17:00,2014-07-15 08:00,2014-08-10 17:00,2014-07-15 08:00,2014-08-10 17:00,2014-08-06 08:00,2014-08-28 17:00,,PT_Normal,,,,,95byHNHVR3GYlDkgilKQLA,,,,N,0,0,,,2013-02-16 15:52,2013-02-16 15:56,admin,admin
500671,6359,124472,13662,0,N,N,N,CP_Drtn,TT_Task,DT_FixedDUR2,TK_NotStart,DUKHCONP1BZ4ARFF3375,Carpentry & Joinery Works,8178,24,0,200,0,704,704,200,0,0,0,,,,2014-07-20 08:00,2014-08-20 17:00,,2014-07-16 08:00,2014-08-17 17:00,2014-07-16 08:00,2014-08-17 17:00,2014-07-16 08:00,2014-08-17 17:00,2014-07-20 08:00,2014-08-20 17:00,,PT_Normal,,,,,CwCCJmbMQnqo8SjFViOU+g,,,,N,0,0,,,2013-02-16 15:52,2013-02-16 15:56,admin,admin
500672,6359,124472,13662,0,N,N,N,CP_Drtn,TT_Task,DT_FixedDUR2,TK_NotStart,DUKHCONP1BZ4ARFF3390,Installation of Granite Counter Top,8171,40,16,160,0,110,110,160,0,0,0,,,,2014-08-09 08:00,2014-08-31 17:00,,2014-07-30 08:00,2014-08-25 17:00,2014-07-30 08:00,2014-08-25 17:00,2014-07-30 08:00,2014-08-25 17:00,2014-08-09 08:00,2014-08-31 17:00,,PT_Normal,,,,,BoRSPnqTS0u7q50mieMNmA,,,,N,0,0,,,2013-02-16 15:52,2013-02-16 15:56,admin,admin
500673,6359,124473,13662,0,N,N,N,CP_Drtn,TT_Task,DT_FixedDUR2,TK_NotStart,DUKHCONP1BZ4ARGF3075,Carpentry & Joinery Works,8178,456,0,160,0,528,528,160,0,0,0,,,,2014-07-23 08:00,2014-08-18 17:00,,2014-05-18 08:00,2014-06-09 17:00,2014-05-18 08:00,2014-06-09 17:00,2014-05-18 08:00,2014-06-09 17:00,2014-07-23 08:00,2014-08-18 17:00,,PT_Normal,,,,,/I6n6QO2T0O+c+Xu14zYRQ,,,,N,0,0,,,2013-02-16 15:52,2013-02-16 15:56,admin,admin
500674,6359,124473,13662,0,N,N,N,CP_Drtn,TT_Task,DT_FixedDUR2,TK_NotStart,DUKHCONP1BZ4ARGF3090,Installation of Granite Counter Top,8171,456,0,120,0,242,242,120,0,0,0,,,,2014-08-09 08:00,2014-08-25 17:00,,2014-05-31 08:00,2014-06-16 17:00,2014-05-31 08:00,2014-06-16 17:00,2014-05-31 08:00,2014-06-16 17:00,2014-08-09 08:00,2014-08-25 17:00,,PT_Normal,,,,,61D5BkQKQPmxbYPWPAqe5w,,,,N,0,0,,,2013-02-16 15:52,2013-02-16 15:56,admin,admin
500675,6359,124473,13662,0,N,N,N,CP_Drtn,TT_Task,DT_FixedDUR2,TK_NotStart,DUKHCONP1BZ4ARGF3085,S.S.Balustrade,8178,496,40,160,0,175,175,160,0,0,0,,,,2014-08-10 08:00,2014-09-01 17:00,,2014-05-26 08:00,2014-06-17 17:00,2014-05-26 08:00,2014-06-17 17:00,2014-05-26 08:00,2014-06-17 17:00,2014-08-10 08:00,2014-09-01 17:00,,PT_Normal,,,,,LDBwSbokQneIWVP50JCmhA,,,,N,0,0,,,2013-02-16 15:52,2013-02-16 15:56,admin,admin
500676,6359,124473,13662,0,N,N,N,CP_Drtn,TT_Task,DT_FixedDUR2,TK_NotStart,DUKHCONP1BZ4ARGF3095,Final Painting,8178,456,0,200,0,5936.25,5936.25,200,0,0,0,,,,2014-08-18 08:00,2014-09-15 17:00,,2014-06-09 08:00,2014-07-07 17:00,2014-06-09 08:00,2014-07-07 17:00,2014-06-09 08:00,2014-07-07 17:00,2014-08-18 08:00,2014-09-15 17:00,,PT_Normal,,,,,Rjpvp7y7TtC0xlCzvAGnmQ,,,,N,0,0,,,2013-02-16 15:52,2013-02-16 15:56,admin,admin
500677,6359,124473,13662,0,N,N,N,CP_Drtn,TT_Task,DT_FixedDUR2,TK_NotStart,DUKHCONP1BZ4ARGF3000,Block work,8168,392,0,200,0,9262.5,9262.5,200,0,0,0,,,,2014-03-24 08:00,2014-04-21 17:00,,2014-01-25 08:00,2014-02-23 17:00,2014-01-25 08:00,2014-02-23 17:00,2014-01-25 08:00,2014-02-23 17:00,2014-03-24 08:00,2014-04-21 17:00,,PT_Normal,,,,,eOtgMhGqQWycy5IGEvfbDw,,,,N,0,0,,,2013-02-16 15:52,2013-02-16 15:56,admin,admin
500678,6359,124473,13662,0,N,N,N,CP_Drtn,TT_Task,DT_FixedDUR2,TK_NotStart,DUKHCONP1BZ4ARGF3005,Plastering work,8169,392,0,200,0,11350,11350,200,0,0,0,,,,2014-04-15 08:00,2014-05-13 17:00,,2014-02-17 08:00,2014-03-17 17:00,2014-02-17 08:00,2014-03-17 17:00,2014-02-17 08:00,2014-03-17 17:00,2014-04-15 08:00,2014-05-13 17:00,,PT_Normal,,,,,U4FN2th2Q1u48N+jIGJb6A,,,,N,0,0,,,2013-02-16 15:52,2013-02-16 15:56,admin,admin
500679,6359,124473,13662,0,N,N,N,CP_Drtn,TT_Task,DT_FixedDUR2,TK_NotStart,DUKHCONP1BZ4ARGF3010,Flooring screed,8164,456,64,168,0,2171.5,2171.5,168,0,0,0,,,,2014-05-03 08:00,2014-05-26 17:00,,2014-02-25 08:00,2014-03-20 17:00,2014-02-25 08:00,2014-03-20 17:00,2014-02-25 08:00,2014-03-20 17:00,2014-05-03 08:00,2014-05-26 17:00,,PT_Normal,,,,,aIgZ5hF4QqOW0qi2PXRnLQ,,,,N,0,0,,,2013-02-16 15:52,2013-02-16 15:56,admin,admin
500680,6359,124473,13662,0,N,N,N,CP_Drtn,TT_Task,DT_FixedDUR2,TK_NotStart,DUKHCONP1BZ4ARGF3015,Wet area waterproofing & Protection Screed,8178,392,0,120,0,423.5,423.5,120,0,0,0,,,,2014-05-03 08:00,2014-05-19 17:00,,2014-03-06 08:00,2014-03-23 17:00,2014-03-06 08:00,2014-03-23 17:00,2014-03-06 08:00,2014-03-23 17:00,2014-05-03 08:00,2014-05-19 17:00,,PT_Normal,,,,,IW4GSKTzTKaR3mHa1FqmZQ,,,,N,0,0,,,2013-02-16 15:52,2013-02-16 15:56,admin,admin
500681,6359,124473,13662,0,N,N,N,CP_Drtn,TT_Task,DT_FixedDUR2,TK_NotStart,DUKHCONP1BZ4ARGF3030,Paint First coat,8178,504,0,200,0,5936.25,5936.25,200,0,0,0,,,,2014-05-18 08:00,2014-06-15 17:00,,2014-03-05 08:00,2014-04-02 17:00,2014-03-05 08:00,2014-04-02 17:00,2014-03-05 08:00,2014-04-02 17:00,2014-05-18 08:00,2014-06-15 17:00,,PT_Normal,,,,,a0iOGXckTKuGynkL6RZFkA,,,,N,0,0,,,2013-02-16 15:52,2013-02-16 15:56,admin,admin
500682,6359,124473,13662,0,N,N,N,CP_Drtn,TT_Task,DT_FixedDUR2,TK_NotStart,DUKHCONP1BZ4ARGF3020,Ceramic Wall Tiling,8170,392,0,200,0,3534.75,3534.75,200,0,0,0,,,,2014-05-08 08:00,2014-06-05 17:00,,2014-03-12 08:00,2014-04-09 17:00,2014-03-12 08:00,2014-04-09 17:00,2014-03-12 08:00,2014-04-09 17:00,2014-05-08 08:00,2014-06-05 17:00,,PT_Normal,,,,,yJbb6BwBQyqweBmPqntZtA,,,,N,0,0,,,2013-02-16 15:52,2013-02-16 15:56,admin,admin
500683,6359,124473,13662,0,N,N,N,CP_Drtn,TT_Task,DT_FixedDUR2,TK_NotStart,DUKHCONP1BZ4ARGF3025,Porcelain Tile flooring,8170,392,0,200,0,1918.75,1918.75,200,0,0,0,,,,2014-05-14 08:00,2014-06-11 17:00,,2014-03-18 08:00,2014-04-15 17:00,2014-03-18 08:00,2014-04-15 17:00,2014-03-18 08:00,2014-04-15 17:00,2014-05-14 08:00,2014-06-11 17:00,,PT_Normal,,,,,+BqJwXIAQcOt41sVhNf9qw,,,,N,0,0,,,2013-02-16 15:52,2013-02-16 15:56,admin,admin
500684,6359,124473,13662,0,N,N,N,CP_Drtn,TT_Task,DT_FixedDUR2,TK_NotStart,DUKHCONP1BZ4ARGF3040,Cobble Tile flooring,8170,456,0,120,0,700,700,120,0,0,0,,,,2014-06-19 08:00,2014-07-06 17:00,,2014-04-14 08:00,2014-04-30 17:00,2014-04-14 08:00,2014-04-30 17:00,2014-04-14 08:00,2014-04-30 17:00,2014-06-19 08:00,2014-07-06 17:00,,PT_Normal,,,,,ZmKK/2nPTuOWnJem8c0ZfA,,,,N,0,0,,,2013-02-16 15:52,2013-02-16 15:56,admin,admin
500685,6359,124473,13662,0,N,N,N,CP_Drtn,TT_Task,DT_FixedDUR2,TK_NotStart,DUKHCONP1BZ4ARGF3035,Slate Tile Flooring & Skirting,8170,472,16,120,0,931.25,931.25,120,0,0,0,,,,2014-06-15 08:00,2014-07-01 17:00,,2014-04-07 08:00,2014-04-23 17:00,2014-04-07 08:00,2014-04-23 17:00,2014-04-07 08:00,2014-04-23 17:00,2014-06-15 08:00,2014-07-01 17:00,,PT_Normal,,,,,NzMMRMfiQFG49I2EWjdukQ,,,,N,0,0,,,2013-02-16 15:52,2013-02-16 15:56,admin,admin
500686,6359,124473,13662,0,N,N,N,CP_Drtn,TT_Task,DT_FixedDUR2,TK_NotStart,DUKHCONP1BZ4ARGF3050,Granite - Stair case flooring & Skirting,8171,456,0,160,0,850,850,160,0,0,0,,,,2014-06-28 08:00,2014-07-20 17:00,,2014-04-22 08:00,2014-05-14 17:00,2014-04-22 08:00,2014-05-14 17:00,2014-04-22 08:00,2014-05-14 17:00,2014-06-28 08:00,2014-07-20 17:00,,PT_Normal,,,,,Y6um13f3QuenseMz01/7fA,,,,N,0,0,,,2013-02-16 15:52,2013-02-16 15:56,admin,admin
500687,6359,124473,13662,0,N,N,N,CP_Drtn,TT_Task,DT_FixedDUR2,TK_NotStart,DUKHCONP1BZ4ARGF3045,Fixing of Suspension systems,8178,392,0,160,0,1320.5,1320.5,160,0,0,0,,,,2014-06-01 08:00,2014-06-23 17:00,,2014-04-05 08:00,2014-04-27 17:00,2014-04-05 08:00,2014-04-27 17:00,2014-04-05 08:00,2014-04-27 17:00,2014-06-01 08:00,2014-06-23 17:00,,PT_Normal,,,,,s0/KmBjyQ6CWQ1G67szWzw,,,,N,0,0,,,2013-02-16 15:52,2013-02-16 15:56,admin,admin
500688,6359,124473,13662,0,N,N,N,CP_Drtn,TT_Task,DT_FixedDUR2,TK_NotStart,DUKHCONP1BZ4ARGF3055,Aluminum tile false ceiling,8178,416,24,200,0,130,130,200,0,0,0,,,,2014-06-12 08:00,2014-07-10 17:00,,2014-04-13 08:00,2014-05-11 17:00,2014-04-13 08:00,2014-05-11 17:00,2014-04-13 08:00,2014-05-11 17:00,2014-06-12 08:00,2014-07-10 17:00,,PT_Normal,,,,,/kztnDsBSBm4QZU+wS5Ndw,,,,N,0,0,,,2013-02-16 15:52,2013-02-16 15:56,admin,admin
500689,6359,124473,13662,0,N,N,N,CP_Drtn,TT_Task,DT_FixedDUR2,TK_NotStart,DUKHCONP1BZ4ARGF3060,Gypsum board false ceiling,8178,392,0,200,0,1216.3,1216.3,200,0,0,0,,,,2014-06-12 08:00,2014-07-10 17:00,,2014-04-16 08:00,2014-05-14 17:00,2014-04-16 08:00,2014-05-14 17:00,2014-04-16 08:00,2014-05-14 17:00,2014-06-12 08:00,2014-07-10 17:00,,PT_Normal,,,,,cJ+csNCWTaa9p40XiGH59g,,,,N,0,0,,,2013-02-16 15:52,2013-02-23 09:03,admin,admin
500690,6359,124473,13662,0,N,N,N,CP_Drtn,TT_Task,DT_FixedDUR2,TK_NotStart,DUKHCONP1BZ4ARGF3065,Wooden door & PVC Door,8178,456,0,120,0,660,660,120,0,0,0,,,,2014-07-12 08:00,2014-07-28 17:00,,2014-05-06 08:00,2014-05-22 17:00,2014-05-06 08:00,2014-05-22 17:00,2014-05-06 08:00,2014-05-22 17:00,2014-07-12 08:00,2014-07-28 17:00,,PT_Normal,,,,,KGiBGlyOS1G7A5gbHIvvLg,,,,N,0,0,,,2013-02-16 15:52,2013-02-16 15:56,admin,admin
500691,6359,124473,13662,0,N,N,N,CP_Drtn,TT_Task,DT_FixedDUR2,TK_NotStart,DUKHCONP1BZ4ARGF3070,Aluminum doors,8178,456,0,120,0,88,88,120,0,0,0,,,,2014-07-17 08:00,2014-08-06 17:00,,2014-05-12 08:00,2014-05-28 17:00,2014-05-12 08:00,2014-05-28 17:00,2014-05-12 08:00,2014-05-28 17:00,2014-07-17 08:00,2014-08-06 17:00,,PT_Normal,,,,,p4Zql/+xS1OSE0g+93WZ1g,,,,N,0,0,,,2013-02-16 15:52,2013-02-16 15:56,admin,admin
500692,6359,124473,13662,0,N,N,N,CP_Drtn,TT_Task,DT_FixedDUR2,TK_NotStart,DUKHCONP1BZ4ARGF3080,Aluminum windows,8178,536,40,160,0,257.5,257.5,160,0,0,0,,,,2014-08-09 08:00,2014-08-31 17:00,,2014-05-19 08:00,2014-06-10 17:00,2014-05-19 08:00,2014-06-10 17:00,2014-05-19 08:00,2014-06-10 17:00,2014-08-09 08:00,2014-08-31 17:00,,PT_Normal,,,,,YSpst86hT5GMrlvSc90oiQ,,,,N,0,0,,,2013-02-16 15:52,2013-02-16 15:56,admin,admin
500693,6359,124476,13662,0,N,N,N,CP_Drtn,TT_Task,DT_FixedDUR2,TK_NotStart,DUKHCONP1BZ4ELRF4070,Installation of Isolator,8178,24,0,144,0,825.6,825.6,144,0,0,0,,,,2014-08-09 08:00,2014-08-28 17:00,,2014-08-05 08:00,2014-08-25 17:00,2014-08-05 08:00,2014-08-25 17:00,2014-08-05 08:00,2014-08-25 17:00,2014-08-09 08:00,2014-08-28 17:00,,PT_Normal,,,,,Hqoi1elgRdqEvTiCFP9kGQ,,,,N,0,0,,,2013-02-16 15:52,2013-02-16 15:56,admin,admin
500694,6359,124476,13662,0,N,N,N,CP_Drtn,TT_Task,DT_FixedDUR2,TK_NotStart,DUKHCONP1BZ4ELRF4075,Installation of TV Dish Antenna,8178,24,0,184,0,1830.4,1830.4,184,0,0,0,,,,2014-08-20 08:00,2014-09-15 17:00,,2014-08-17 08:00,2014-09-11 17:00,2014-08-17 08:00,2014-09-11 17:00,2014-08-17 08:00,2014-09-11 17:00,2014-08-20 08:00,2014-09-15 17:00,,PT_Normal,,,,,8jU4CbwCSveyOdtyrw+DdQ,,,,N,0,0,,,2013-02-16 15:52,2013-02-16 15:56,admin,admin
500695,6359,124477,13662,0,N,N,N,CP_Drtn,TT_Task,DT_FixedDUR2,TK_NotStart,DUKHCONP1BZ4ELFF4035,Fixing of wall conduits & switch socket boxes,8178,128,0,200,0,2579.2,2579.2,200,0,0,0,,,,2014-04-01 08:00,2014-04-29 17:00,,2014-03-13 08:00,2014-04-10 17:00,2014-03-13 08:00,2014-04-10 17:00,2014-03-13 08:00,2014-04-10 17:00,2014-04-01 08:00,2014-04-29 17:00,,PT_Normal,,,,,0PL+oXYeSKWAfovprQgTEg,,,,N,0,0,,,2013-02-16 15:52,2013-02-16 15:56,admin,admin
500696,6359,124477,13662,0,N,N,N,CP_Drtn,TT_Task,DT_FixedDUR2,TK_NotStart,DUKHCONP1BZ4ELFF4040,Cable tray & trunking installation,8178,368,0,160,0,3180.8,3180.8,160,0,0,0,,,,2014-05-18 08:00,2014-06-09 17:00,,2014-03-25 08:00,2014-04-16 17:00,2014-03-25 08:00,2014-04-16 17:00,2014-03-25 08:00,2014-04-16 17:00,2014-05-18 08:00,2014-06-09 17:00,,PT_Normal,,,,,IO6nRMLsTIyJOwi8c3wBQg,,,,N,0,0,,,2013-02-16 15:52,2013-02-16 15:56,admin,admin
500697,6359,124477,13662,0,N,N,N,CP_Drtn,TT_Task,DT_FixedDUR2,TK_NotStart,DUKHCONP1BZ4ELFF4045,Installation of wiring & Main Cabling,8178,368,0,200,0,636.8,636.8,200,0,0,0,,,,2014-05-26 08:00,2014-06-23 17:00,,2014-04-02 08:00,2014-04-30 17:00,2014-04-02 08:00,2014-04-30 17:00,2014-04-02 08:00,2014-04-30 17:00,2014-05-26 08:00,2014-06-23 17:00,,PT_Normal,,,,,94n6PeUkQMGiE4uBI0Jv9Q,,,,N,0,0,,,2013-02-16 15:52,2013-02-23 09:03,admin,admin
500698,6359,124477,13662,0,N,N,N,CP_Drtn,TT_Task,DT_FixedDUR2,TK_NotStart,DUKHCONP1BZ4ELFF4060,"Installation  of DBS,MCCB Accessories.",8178,24,0,160,0,454.4,454.4,160,0,0,0,,,,2014-07-03 08:00,2014-07-26 17:00,,2014-06-30 08:00,2014-07-22 17:00,2014-06-30 08:00,2014-07-22 17:00,2014-06-30 08:00,2014-07-22 17:00,2014-07-03 08:00,2014-07-26 17:00,,PT_Normal,,,,,BuRIGYWZRRiA8cb9xDIhYg,,,,N,0,0,,,2013-02-16 15:52,2013-02-16 15:56,admin,admin
500699,6359,124477,13662,0,N,N,N,CP_Drtn,TT_Task,DT_FixedDUR2,TK_NotStart,DUKHCONP1BZ4ELFF4065,Installation of Lighting fixtures & Accessories,8178,24,0,200,0,3302.4,3302.4,200,0,0,0,,,,2014-07-16 08:00,2014-08-17 17:00,,2014-07-13 08:00,2014-08-13 17:00,2014-07-13 08:00,2014-08-13 17:00,2014-07-13 08:00,2014-08-13 17:00,2014-07-16 08:00,2014-08-17 17:00,,PT_Normal,,,,,QzuSoR7IS6KCaUKRnjDP+w,,,,N,0,0,,,2013-02-16 15:52,2013-02-16 15:56,admin,admin
500700,6359,124477,13662,0,N,N,N,CP_Drtn,TT_Task,DT_FixedDUR2,TK_NotStart,DUKHCONP1BZ4ELFF4055,Install. of CAMS & Fire Fighting Accessories,8178,360,0,200,0,4569.6,4569.6,200,0,0,0,,,,2014-08-18 08:00,2014-09-15 17:00,,2014-06-23 08:00,2014-07-21 17:00,2014-06-23 08:00,2014-07-21 17:00,2014-06-23 08:00,2014-07-21 17:00,2014-08-18 08:00,2014-09-15 17:00,,PT_Normal,,,,,ajc4ZcycR1GrPEYi99H5wA,,,,N,0,0,,,2013-02-16 15:52,2013-02-16 15:56,admin,admin
500701,6359,124477,13662,0,N,N,N,CP_Drtn,TT_Task,DT_FixedDUR2,TK_NotStart,DUKHCONP1BZ4ELFF4050,Installation of Telephone System,8178,200,176,200,0,1422.4,1422.4,200,0,0,0,,,,2014-07-20 08:00,2014-08-20 17:00,,2014-06-21 08:00,2014-07-19 17:00,2014-06-21 08:00,2014-07-19 17:00,2014-06-21 08:00,2014-07-19 17:00,2014-07-20 08:00,2014-08-20 17:00,,PT_Normal,,,,,Yd9jdnOuQj6hmNVoVOyG/g,,,,N,0,0,,,2013-02-16 15:52,2013-02-16 15:56,admin,admin
500702,6359,124478,13662,0,N,N,N,CP_Drtn,TT_Task,DT_FixedDUR2,TK_NotStart,DUKHCONP1BZ4ELGF4000,Fixing of wall conduits & switch socket boxes,8178,464,0,200,0,2579.2,2579.2,200,0,0,0,,,,2014-04-09 08:00,2014-05-07 17:00,,2014-01-30 08:00,2014-03-01 17:00,2014-01-30 08:00,2014-03-01 17:00,2014-01-30 08:00,2014-03-01 17:00,2014-04-09 08:00,2014-05-07 17:00,,PT_Normal,,,,,VzhmdzpbRaGjak5Z/14f1A,,,,N,0,0,,,2013-02-16 15:52,2013-02-16 15:56,admin,admin
500703,6359,124478,13662,0,N,N,N,CP_Drtn,TT_Task,DT_FixedDUR2,TK_NotStart,DUKHCONP1BZ4ELGF4005,Cable tray & trunking installation,8178,608,0,160,0,3180.8,3180.8,160,0,0,0,,,,2014-05-12 08:00,2014-06-03 17:00,,2014-02-12 08:00,2014-03-06 17:00,2014-02-12 08:00,2014-03-06 17:00,2014-02-12 08:00,2014-03-06 17:00,2014-05-12 08:00,2014-06-03 17:00,,PT_Normal,,,,,BSJk1sPiSdO+6BBiwgthyQ,,,,N,0,0,,,2013-02-16 15:52,2013-02-16 15:56,admin,admin
500704,6359,124478,13662,0,N,N,N,CP_Drtn,TT_Task,DT_FixedDUR2,TK_NotStart,DUKHCONP1BZ4ELGF4010,Installation of wiring & Main Cabling,8178,608,216,200,0,636.8,636.8,200,0,0,0,,,,2014-05-20 08:00,2014-06-17 17:00,,2014-02-20 08:00,2014-03-20 17:00,2014-02-20 08:00,2014-03-20 17:00,2014-02-20 08:00,2014-03-20 17:00,2014-05-20 08:00,2014-06-17 17:00,,PT_Normal,,,,,zZngbUYqSmOre2Ys+iYhnA,,,,N,0,0,,,2013-02-16 15:52,2013-02-23 09:03,admin,admin
500705,6359,124478,13662,0,N,N,N,CP_Drtn,TT_Task,DT_FixedDUR2,TK_NotStart,DUKHCONP1BZ4ELGF4020,"Installation  of DBS,MCCB Accessories.",8178,392,0,160,0,454.4,454.4,160,0,0,0,,,,2014-06-26 08:00,2014-07-19 17:00,,2014-04-30 08:00,2014-05-22 17:00,2014-04-30 08:00,2014-05-22 17:00,2014-04-30 08:00,2014-05-22 17:00,2014-06-26 08:00,2014-07-19 17:00,,PT_Normal,,,,,ppUCO0p9TCON8Vpffbm15A,,,,N,0,0,,,2013-02-16 15:52,2013-02-16 15:56,admin,admin
500706,6359,124478,13662,0,N,N,N,CP_Drtn,TT_Task,DT_FixedDUR2,TK_NotStart,DUKHCONP1BZ4ELGF4025,Installation of Lighting fixtures & Accessories,8178,408,0,200,0,3302.4,3302.4,200,0,0,0,,,,2014-07-10 08:00,2014-08-11 17:00,,2014-05-12 08:00,2014-06-09 17:00,2014-05-12 08:00,2014-06-09 17:00,2014-05-12 08:00,2014-06-09 17:00,2014-07-10 08:00,2014-08-11 17:00,,PT_Normal,,,,,kG9TWBuaQx6BUTIVeKSdTw,,,,N,0,0,,,2013-02-16 15:52,2013-02-16 15:56,admin,admin
500707,6359,124478,13662,0,N,N,N,CP_Drtn,TT_Task,DT_FixedDUR2,TK_NotStart,DUKHCONP1BZ4ELGF4015,Install. of CAMS & Fire Fighting Accessories,8178,568,0,200,0,4569.6,4569.6,200,0,0,0,,,,2014-07-16 08:00,2014-08-17 17:00,,2014-04-24 08:00,2014-05-22 17:00,2014-04-24 08:00,2014-05-22 17:00,2014-04-24 08:00,2014-05-22 17:00,2014-07-16 08:00,2014-08-17 17:00,,PT_Normal,,,,,F/knkDS3S72rVRgolVwUQQ,,,,N,0,0,,,2013-02-16 15:52,2013-02-16 15:56,admin,admin
500708,6359,124478,13662,0,N,N,N,CP_Drtn,TT_Task,DT_FixedDUR2,TK_NotStart,DUKHCONP1BZ4ELGF4030,Installation of Telephone System,8178,392,40,160,0,1422.4,1422.4,160,0,0,0,,,,2014-07-08 08:00,2014-07-30 17:00,,2014-05-12 08:00,2014-06-03 17:00,2014-05-12 08:00,2014-06-03 17:00,2014-05-12 08:00,2014-06-03 17:00,2014-07-08 08:00,2014-07-30 17:00,,PT_Normal,,,,,DBiPhvZGRVGen8ZZzohFrQ,,,,N,0,0,,,2013-02-16 15:52,2013-02-16 15:56,admin,admin
500709,6359,124480,13662,0,N,N,N,CP_Drtn,TT_Task,DT_FixedDUR2,TK_NotStart,DUKHCONP1BZ4PLGF4305,Installation of Plumbing pipes & testing,8178,392,0,144,0,883.2,883.2,144,0,0,0,,,,2014-04-09 08:00,2014-04-29 17:00,,2014-02-10 08:00,2014-03-03 17:00,2014-02-10 08:00,2014-03-03 17:00,2014-02-10 08:00,2014-03-03 17:00,2014-04-09 08:00,2014-04-29 17:00,,PT_Normal,,,,,L5FKW+VXR0+tUSvxMhr7eA,,,,N,0,0,,,2013-02-16 15:52,2013-02-16 15:56,admin,admin
500710,6359,124480,13662,0,N,N,N,CP_Drtn,TT_Task,DT_FixedDUR2,TK_NotStart,DUKHCONP1BZ4PLGF4310,Installation of Drainage pipes &testing,8178,416,72,144,0,331.2,331.2,144,0,0,0,,,,2014-04-13 08:00,2014-05-03 17:00,,2014-02-10 08:00,2014-03-03 17:00,2014-02-10 08:00,2014-03-03 17:00,2014-02-10 08:00,2014-03-03 17:00,2014-04-13 08:00,2014-05-03 17:00,,PT_Normal,,,,,PYRWbvDyQ7GbJQSfaNDmvw,,,,N,0,0,,,2013-02-16 15:52,2013-02-16 15:56,admin,admin
500711,6359,124480,13662,0,N,N,N,CP_Drtn,TT_Task,DT_FixedDUR2,TK_NotStart,DUKHCONP1BZ4PLGF4315,Sanitary Fittings & Accessories,8178,648,0,160,0,201.6,201.6,160,0,0,0,,,,2014-08-18 08:00,2014-09-09 17:00,,2014-05-12 08:00,2014-06-03 17:00,2014-05-12 08:00,2014-06-03 17:00,2014-05-12 08:00,2014-06-03 17:00,2014-08-18 08:00,2014-09-09 17:00,,PT_Normal,,,,,Fy9uXvGbS2ygD40YzV9h6w,,,,N,0,0,,,2013-02-16 15:52,2013-02-16 15:56,admin,admin
500712,6359,124480,13662,0,N,N,N,CP_Drtn,TT_Task,DT_FixedDUR2,TK_NotStart,DUKHCONP1BZ4PLGF4320,Installation of Water Heater,8178,648,80,120,0,201.6,201.6,120,0,0,0,,,,2014-08-30 08:00,2014-09-15 17:00,,2014-05-24 08:00,2014-06-09 17:00,2014-05-24 08:00,2014-06-09 17:00,2014-05-24 08:00,2014-06-09 17:00,2014-08-30 08:00,2014-09-15 17:00,,PT_Normal,,,,,M6PZASfUS72pHWFzPPoJiQ,,,,N,0,0,,,2013-02-16 15:52,2013-02-16 15:56,admin,admin
500713,6359,124480,13662,0,N,N,N,CP_Drtn,TT_Task,DT_FixedDUR2,TK_NotStart,DUKHCONP1BZ4PLUG4300,Drainage / Storm Pipes in Grade Slab,8178,88,0,160,0,110.4,110.4,160,0,0,0,,,,2013-11-07 08:00,2013-11-30 17:00,,2013-10-26 08:00,2013-11-17 17:00,2013-10-26 08:00,2013-11-17 17:00,2013-10-26 08:00,2013-11-17 17:00,2013-11-07 08:00,2013-11-30 17:00,,PT_Normal,,,,,rnYYDnC3TcOngOj+uipEUA,,,,N,0,0,,,2013-02-16 15:52,2013-02-16 15:56,admin,admin
500714,6359,124481,13662,0,N,N,N,CP_Drtn,TT_Task,DT_FixedDUR2,TK_NotStart,DUKHCONP1BZ4PLFF4325,Installation of Plumbing pipes & testing,8178,24,0,144,0,883.2,883.2,144,0,0,0,,,,2014-03-29 08:00,2014-04-17 17:00,,2014-03-25 08:00,2014-04-14 17:00,2014-03-25 08:00,2014-04-14 17:00,2014-03-25 08:00,2014-04-14 17:00,2014-03-29 08:00,2014-04-17 17:00,,PT_Normal,,,,,evo8mg6qQyuJk2APrwT1bQ,,,,N,0,0,,,2013-02-16 15:52,2013-02-16 15:56,admin,admin
500715,6359,124481,13662,0,N,N,N,CP_Drtn,TT_Task,DT_FixedDUR2,TK_NotStart,DUKHCONP1BZ4PLFF4330,Installation of Drainage pipes & testing,8178,240,56,144,0,331.2,331.2,144,0,0,0,,,,2014-04-29 08:00,2014-05-19 17:00,,2014-03-25 08:00,2014-04-14 17:00,2014-03-25 08:00,2014-04-14 17:00,2014-03-25 08:00,2014-04-14 17:00,2014-04-29 08:00,2014-05-19 17:00,,PT_Normal,,,,,60hE6zL+RdGmDoExwMui5A,,,,N,0,0,,,2013-02-16 15:52,2013-02-16 15:56,admin,admin
500716,6359,124481,13662,0,N,N,N,CP_Drtn,TT_Task,DT_FixedDUR2,TK_NotStart,DUKHCONP1BZ4PLFF4335,Sanitary Fittings & Accessories,8178,152,0,160,0,201.6,201.6,160,0,0,0,,,,2014-07-28 08:00,2014-08-23 17:00,,2014-07-06 08:00,2014-07-28 17:00,2014-07-06 08:00,2014-07-28 17:00,2014-07-06 08:00,2014-07-28 17:00,2014-07-28 08:00,2014-08-23 17:00,,PT_Normal,,,,,mTK2YmJTS7iveCvOv5Qniw,,,,N,0,0,,,2013-02-16 15:52,2013-02-16 15:56,admin,admin
500717,6359,124481,13662,0,N,N,N,CP_Drtn,TT_Task,DT_FixedDUR2,TK_NotStart,DUKHCONP1BZ4PLFF4340,Installation of Water Heater,8178,152,0,120,0,134.4,134.4,120,0,0,0,,,,2014-08-12 08:00,2014-08-28 17:00,,2014-07-17 08:00,2014-08-06 17:00,2014-07-17 08:00,2014-08-06 17:00,2014-07-17 08:00,2014-08-06 17:00,2014-08-12 08:00,2014-08-28 17:00,,PT_Normal,,,,,RdM7CvCOQr6IduTBd0h4xw,,,,N,0,0,,,2013-02-16 15:52,2013-02-16 15:56,admin,admin
500718,6359,124482,13662,0,N,N,N,CP_Drtn,TT_Task,DT_FixedDUR2,TK_NotStart,DUKHCONP1BZ4PLRF4345,Installation of Plumbing pipes & fittings,8178,688,56,112,0,288,288,112,0,0,0,,,,2014-07-30 08:00,2014-08-18 17:00,,2014-04-21 08:00,2014-05-06 17:00,2014-04-21 08:00,2014-05-06 17:00,2014-04-21 08:00,2014-05-06 17:00,2014-07-30 08:00,2014-08-18 17:00,,PT_Normal,,,,,yy5PLHYnRsaOvaHfrOZodw,,,,N,0,0,,,2013-02-16 15:52,2013-02-16 15:56,admin,admin
500719,6359,124482,13662,0,N,N,N,CP_Drtn,TT_Task,DT_FixedDUR2,TK_NotStart,DUKHCONP1BZ4PLRF4350,Installation of Rain water Pipes,,632,80,120,0,0,0,120,0,0,0,,,,2014-08-12 08:00,2014-08-28 17:00,,2014-05-08 08:00,2014-05-25 17:00,2014-05-08 08:00,2014-05-25 17:00,2014-05-08 08:00,2014-05-25 17:00,2014-08-12 08:00,2014-08-28 17:00,,PT_Normal,,,,,YEnUdpQPSC2p6PQN+oiD0Q,,,,N,0,0,,,2013-02-16 15:52,2013-02-16 15:56,admin,admin
500720,6359,124482,13662,0,N,N,N,CP_Drtn,TT_Task,DT_FixedDUR2,TK_NotStart,DUKHCONP1BZ4PLRF4355,Roof  Water Tank Installation & Connections,8178,152,0,200,0,672,672,200,0,0,0,,,,2014-08-18 08:00,2014-09-15 17:00,,2014-07-23 08:00,2014-08-24 17:00,2014-07-23 08:00,2014-08-24 17:00,2014-07-23 08:00,2014-08-24 17:00,2014-08-18 08:00,2014-09-15 17:00,,PT_Normal,,,,,/vnAQKHbRUCp5lcP1L7bvg,,,,N,0,0,,,2013-02-16 15:52,2013-02-16 15:56,admin,admin
500721,6359,124484,13662,0,N,N,N,CP_Drtn,TT_Task,DT_FixedDUR2,TK_NotStart,DUKHCONP1BZ4ACRF4630,Installation of Refrigerant Pipes,8178,696,0,200,0,795.2,795.2,200,0,0,0,,,,2014-08-12 08:00,2014-09-09 17:00,,2014-04-29 08:00,2014-05-27 17:00,2014-04-29 08:00,2014-05-27 17:00,2014-04-29 08:00,2014-05-27 17:00,2014-08-12 08:00,2014-09-09 17:00,,PT_Normal,,,,,JpyGDlP4RFadkMCvTZIGOg,,,,N,0,0,,,2013-02-16 15:52,2013-02-16 15:56,admin,admin
500722,6359,124484,13662,0,N,N,N,CP_Drtn,TT_Task,DT_FixedDUR2,TK_NotStart,DUKHCONP1BZ4ACRF4635,Installation of Condensing Unit,8178,176,0,200,0,1136,1136,200,0,0,0,,,,2014-08-18 08:00,2014-09-15 17:00,,2014-07-20 08:00,2014-08-20 17:00,2014-07-20 08:00,2014-08-20 17:00,2014-07-20 08:00,2014-08-20 17:00,2014-08-18 08:00,2014-09-15 17:00,,PT_Normal,,,,,Ma6ZM8qnQlWfM+/wLzLwSg,,,,N,0,0,,,2013-02-16 15:52,2013-02-16 15:56,admin,admin
500723,6359,124485,13662,0,N,N,N,CP_Drtn,TT_Task,DT_FixedDUR2,TK_NotStart,DUKHCONP1BZ4ACFF4615,Installation AC Pipes,8178,368,24,160,0,1886.4,1886.4,160,0,0,0,,,,2014-06-10 08:00,2014-07-02 17:00,,2014-04-17 08:00,2014-05-10 17:00,2014-04-17 08:00,2014-05-10 17:00,2014-04-17 08:00,2014-05-10 17:00,2014-06-10 08:00,2014-07-02 17:00,,PT_Normal,,,,,JOXoh8fMQueNW+5JNdlvBQ,,,,N,0,0,,,2013-02-16 15:52,2013-02-16 15:56,admin,admin
500724,6359,124485,13662,0,N,N,N,CP_Drtn,TT_Task,DT_FixedDUR2,TK_NotStart,DUKHCONP1BZ4ACFF4620,Fixing of Ventilation Equipments,8178,136,0,200,0,182.4,182.4,200,0,0,0,,,,2014-07-13 08:00,2014-08-13 17:00,,2014-06-23 08:00,2014-07-21 17:00,2014-06-23 08:00,2014-07-21 17:00,2014-06-23 08:00,2014-07-21 17:00,2014-07-13 08:00,2014-08-13 17:00,,PT_Normal,,,,,CZxKfMiBQWG5K53wfUJsfg,,,,N,0,0,,,2013-02-16 15:52,2013-02-16 15:56,admin,admin
500725,6359,124485,13662,0,N,N,N,CP_Drtn,TT_Task,DT_FixedDUR2,TK_NotStart,DUKHCONP1BZ4ACFF4625,Fixing of Split AC,8178,136,0,160,0,568,568,160,0,0,0,,,,2014-08-06 08:00,2014-08-28 17:00,,2014-07-14 08:00,2014-08-09 17:00,2014-07-14 08:00,2014-08-09 17:00,2014-07-14 08:00,2014-08-09 17:00,2014-08-06 08:00,2014-08-28 17:00,,PT_Normal,,,,,JpNu8irFRxOrZxnILJCzxA,,,,N,0,0,,,2013-02-16 15:52,2013-02-16 15:56,admin,admin
500726,6359,124486,13662,0,N,N,N,CP_Drtn,TT_Task,DT_FixedDUR2,TK_NotStart,DUKHCONP1BZ4ACGF4600,Installation AC Pipes,8178,640,40,160,0,1886.4,1886.4,160,0,0,0,,,,2014-06-04 08:00,2014-06-26 17:00,,2014-03-03 08:00,2014-03-25 17:00,2014-03-03 08:00,2014-03-25 17:00,2014-03-03 08:00,2014-03-25 17:00,2014-06-04 08:00,2014-06-26 17:00,,PT_Normal,,,,,Fs2u6CobRpm+/SJVlQf/+Q,,,,N,0,0,,,2013-02-16 15:52,2013-02-16 15:56,admin,admin
500727,6359,124486,13662,0,N,N,N,CP_Drtn,TT_Task,DT_FixedDUR2,TK_NotStart,DUKHCONP1BZ4ACGF4605,Fixing of Ventilation Equipments,8178,544,0,200,0,296,296,200,0,0,0,,,,2014-07-13 08:00,2014-08-13 17:00,,2014-04-24 08:00,2014-05-22 17:00,2014-04-24 08:00,2014-05-22 17:00,2014-04-24 08:00,2014-05-22 17:00,2014-07-13 08:00,2014-08-13 17:00,,PT_Normal,,,,,EC+MZQ0+TQ2HqYdtrri4VQ,,,,N,0,0,,,2013-02-16 15:52,2013-02-16 15:56,admin,admin
500728,6359,124486,13662,0,N,N,N,CP_Drtn,TT_Task,DT_FixedDUR2,TK_NotStart,DUKHCONP1BZ4ACGF4610,Fixing of Split AC,8178,544,40,160,0,568,568,160,0,0,0,,,,2014-08-06 08:00,2014-08-28 17:00,,2014-05-15 08:00,2014-06-07 17:00,2014-05-15 08:00,2014-06-07 17:00,2014-05-15 08:00,2014-06-07 17:00,2014-08-06 08:00,2014-08-28 17:00,,PT_Normal,,,,,lrCBeZ8yTbqeqU9guHeLLw,,,,N,0,0,,,2013-02-16 15:52,2013-02-16 15:56,admin,admin
500729,6359,124487,13662,0,N,N,N,CP_Drtn,TT_Task,DT_FixedDUR2,TK_NotStart,DUKHCONP1BZ4PLTC8005,Pre-Commissioning & Testing of Plumbing Works,8178,24,0,200,0,3000,3000,200,0,0,0,,,,2014-09-16 08:00,2014-10-16 17:00,,2014-09-13 08:00,2014-10-13 17:00,2014-09-13 08:00,2014-10-13 17:00,2014-09-13 08:00,2014-10-13 17:00,2014-09-16 08:00,2014-10-16 17:00,,PT_Normal,,,,,KU59Ek27ROmjWBjlQJ1lkw,,,,N,0,0,,,2013-02-16 15:52,2013-02-16 15:56,admin,admin
500730,6359,124487,13662,0,N,N,N,CP_Drtn,TT_Task,DT_FixedDUR2,TK_NotStart,DUKHCONP1BZ4ACTC8000,Pre-Commissioning & Testing of AC Works,8178,24,0,200,0,1500,1500,200,0,0,0,,,,2014-09-16 08:00,2014-10-16 17:00,,2014-09-13 08:00,2014-10-13 17:00,2014-09-13 08:00,2014-10-13 17:00,2014-09-13 08:00,2014-10-13 17:00,2014-09-16 08:00,2014-10-16 17:00,,PT_Normal,,,,,YoSwdpzUQB+hutgD1j0UmA,,,,N,0,0,,,2013-02-16 15:52,2013-02-16 15:56,admin,admin
500731,6359,124487,13662,0,N,N,N,CP_Drtn,TT_Task,DT_FixedDUR2,TK_NotStart,DUKHCONP1BZ4ELTC8010,Pre-Commissioning & Testing of Electrical Works,8178,24,0,200,0,3000,3000,200,0,0,0,,,,2014-09-16 08:00,2014-10-16 17:00,,2014-09-13 08:00,2014-10-13 17:00,2014-09-13 08:00,2014-10-13 17:00,2014-09-13 08:00,2014-10-13 17:00,2014-09-16 08:00,2014-10-16 17:00,,PT_Normal,,,,,X3Acw1ynQ7i2vgJ1n3L3Bg,,,,N,0,0,,,2013-02-16 15:52,2013-02-16 15:56,admin,admin
500732,6359,124490,13662,0,N,N,N,CP_Drtn,TT_Task,DT_FixedDUR2,TK_NotStart,DUKHCONP1BZ6SLEX5105,Laying of Grass/ green area,8178,552,0,200,0,6860,6860,200,0,0,0,,,,2014-10-04 08:00,2014-11-03 17:00,,2014-07-12 08:00,2014-08-12 17:00,2014-07-12 08:00,2014-08-12 17:00,2014-07-12 08:00,2014-08-12 17:00,2014-10-04 08:00,2014-11-03 17:00,,PT_Normal,,,,,6sycooSoTFeYnCf5due1VA,,,,N,0,0,,,2013-02-16 15:52,2013-02-16 15:56,admin,admin
500733,6359,124490,13662,0,N,N,N,CP_Drtn,TT_Task,DT_FixedDUR2,TK_NotStart,DUKHCONP1BZ6SLEX5110,Laying of Palm tree,8178,552,528,200,0,420,420,200,0,0,0,,,,2014-10-18 08:00,2014-11-15 17:00,,2014-07-23 08:00,2014-08-24 17:00,2014-07-23 08:00,2014-08-24 17:00,2014-07-23 08:00,2014-08-24 17:00,2014-10-18 08:00,2014-11-15 17:00,,PT_Normal,,,,,lASWNER2QgC0MdBimeAnpw,,,,N,0,0,,,2013-02-16 15:52,2013-02-16 15:56,admin,admin
500734,6359,124491,13662,0,N,N,N,CP_Drtn,TT_Task,DT_FixedDUR2,TK_NotStart,DUKHCONP1BZ6HDEX5090,kerb works,8173,552,0,160,0,890,890,160,0,0,0,,,,2014-08-26 08:00,2014-09-17 17:00,,2014-06-03 08:00,2014-06-25 17:00,2014-06-03 08:00,2014-06-25 17:00,2014-06-03 08:00,2014-06-25 17:00,2014-08-26 08:00,2014-09-17 17:00,,PT_Normal,,,,,ar7o27/kSNuBU7VvWZJHaA,,,,N,0,0,,,2013-02-16 15:52,2013-02-16 15:56,admin,admin
500735,6359,124491,13662,0,N,N,N,CP_Drtn,TT_Task,DT_FixedDUR2,TK_NotStart,DUKHCONP1BZ6HDEX5095,Cobble Stone Works,8170,552,0,160,0,570,570,160,0,0,0,,,,2014-09-07 08:00,2014-09-29 17:00,,2014-06-15 08:00,2014-07-07 17:00,2014-06-15 08:00,2014-07-07 17:00,2014-06-15 08:00,2014-07-07 17:00,2014-09-07 08:00,2014-09-29 17:00,,PT_Normal,,,,,JxBJc5YIQR2sLLkUWpQ8hg,,,,N,0,0,,,2013-02-16 15:52,2013-02-16 15:56,admin,admin
500736,6359,124491,13662,0,N,N,N,CP_Drtn,TT_Task,DT_FixedDUR2,TK_NotStart,DUKHCONP1BZ6HDEX5100,Interlock works,8174,552,0,160,0,510,510,160,0,0,0,,,,2014-09-22 08:00,2014-10-16 17:00,,2014-06-30 08:00,2014-07-22 17:00,2014-06-30 08:00,2014-07-22 17:00,2014-06-30 08:00,2014-07-22 17:00,2014-09-22 08:00,2014-10-16 17:00,,PT_Normal,,,,,L5QiCzAES1S/4cyrzV7r1w,,,,N,0,0,,,2013-02-16 15:52,2013-02-16 15:56,admin,admin
500737,6359,124492,13662,0,N,N,N,CP_Drtn,TT_Task,DT_FixedDUR2,TK_NotStart,DUKHCONP1BZ6WEEX5030,Excavation,8177,408,0,160,0,140,140,160,80,0,80,,,,2014-08-09 08:00,2014-08-31 17:00,,2014-06-07 08:00,2014-06-29 17:00,2014-06-07 08:00,2014-06-29 17:00,2014-06-07 08:00,2014-06-29 17:00,2014-08-09 08:00,2014-08-31 17:00,,PT_Normal,,,,,3TXF/rjsQJq8mXmdxN+E6A,,,,N,0,0,,,2013-02-16 15:52,2013-02-16 15:56,admin,admin
500738,6359,124492,13662,0,N,N,N,CP_Drtn,TT_Task,DT_FixedDUR2,TK_NotStart,DUKHCONP1BZ6WEEX5035,Construction of Raft,8165,408,0,200,0,2030,2030,200,0,0,0,,,,2014-08-20 08:00,2014-09-17 17:00,,2014-06-18 08:00,2014-07-16 17:00,2014-06-18 08:00,2014-07-16 17:00,2014-06-18 08:00,2014-07-16 17:00,2014-08-20 08:00,2014-09-17 17:00,,PT_Normal,,,,,/BsjLDz8RWatzNDVaJ7I1g,,,,N,0,0,,,2013-02-16 15:52,2013-02-16 15:56,admin,admin
500739,6359,124492,13662,0,N,N,N,CP_Drtn,TT_Task,DT_FixedDUR2,TK_NotStart,DUKHCONP1BZ6WEEX5040,Block works & Plastering,8168,408,0,200,0,1110,1110,200,0,0,0,,,,2014-08-30 08:00,2014-09-27 17:00,,2014-06-28 08:00,2014-07-26 17:00,2014-06-28 08:00,2014-07-26 17:00,2014-06-28 08:00,2014-07-26 17:00,2014-08-30 08:00,2014-09-27 17:00,,PT_Normal,,,,,s4JhbAZmTymKvsr4Terqyg,,,,N,0,0,,,2013-02-16 15:52,2013-02-16 15:56,admin,admin
500740,6359,124492,13662,0,N,N,N,CP_Drtn,TT_Task,DT_FixedDUR2,TK_NotStart,DUKHCONP1BZ6WEEX5045,Flooring & Painting,8178,408,0,200,0,510,510,200,0,0,0,,,,2014-09-10 08:00,2014-10-08 17:00,,2014-07-09 08:00,2014-08-10 17:00,2014-07-09 08:00,2014-08-10 17:00,2014-07-09 08:00,2014-08-10 17:00,2014-09-10 08:00,2014-10-08 17:00,,PT_Normal,,,,,3qzlmTpDSLOIYO4IX/OGVw,,,,N,0,0,,,2013-02-16 15:52,2013-02-16 15:56,admin,admin
500741,6359,124492,13662,0,N,N,N,CP_Drtn,TT_Task,DT_FixedDUR2,TK_NotStart,DUKHCONP1BZ6WEEX5050,Installation of Steel Gate,8178,408,0,160,0,140,140,160,0,0,0,,,,2014-09-28 08:00,2014-10-22 17:00,,2014-07-27 08:00,2014-08-21 17:00,2014-07-27 08:00,2014-08-21 17:00,2014-07-27 08:00,2014-08-21 17:00,2014-09-28 08:00,2014-10-22 17:00,,PT_Normal,,,,,LEBFu1GmQy2+ESMx+j3ZKw,,,,N,0,0,,,2013-02-16 15:52,2013-02-16 15:56,admin,admin
500742,6359,124492,13662,0,N,N,N,CP_Drtn,TT_Task,DT_FixedDUR2,TK_NotStart,DUKHCONP1BZ6WEEX5060,Structural steel &  SS Shed cover installation,8178,408,0,200,0,770,770,200,0,0,0,,,,2014-10-04 08:00,2014-11-03 17:00,,2014-08-05 08:00,2014-09-02 17:00,2014-08-05 08:00,2014-09-02 17:00,2014-08-05 08:00,2014-09-02 17:00,2014-10-04 08:00,2014-11-03 17:00,,PT_Normal,,,,,q7IoejUhTZ23U/yzzbTE4Q,,,,N,0,0,,,2013-02-16 15:52,2013-02-16 15:56,admin,admin
500743,6359,124492,13662,0,N,N,N,CP_Drtn,TT_Task,DT_FixedDUR2,TK_NotStart,DUKHCONP1BZ6WEEX5065,"Install. of Water Tank,Chiller,Pump & Meter",8178,408,256,200,0,478,478,200,0,0,0,,,,2014-10-18 08:00,2014-11-15 17:00,,2014-08-17 08:00,2014-09-14 17:00,2014-08-17 08:00,2014-09-14 17:00,2014-08-17 08:00,2014-09-14 17:00,2014-10-18 08:00,2014-11-15 17:00,,PT_Normal,,,,,20OJY2NVRLeYep0IB1wBcQ,,,,N,0,0,,,2013-02-16 15:52,2013-02-16 15:56,admin,admin
500744,6359,124493,13662,0,N,N,N,CP_Drtn,TT_Task,DT_FixedDUR2,TK_NotStart,DUKHCONP1BZ6MSEX5335,Aluminum Roll-up Shutter with 2m Wall,8178,200,200,200,0,400,400,200,0,0,0,,,,2014-11-16 08:00,2014-12-14 17:00,,2014-10-18 08:00,2014-11-15 17:00,2014-10-18 08:00,2014-11-15 17:00,2014-10-18 08:00,2014-11-15 17:00,2014-11-16 08:00,2014-12-14 17:00,,PT_Normal,,,,,twbjeRMdQUOgMwPgegdpVw,,,,N,0,0,,,2013-02-16 15:52,2013-02-16 15:56,admin,admin
500745,6359,124493,13662,0,N,N,N,CP_Drtn,TT_Task,DT_FixedDUR2,TK_NotStart,DUKHCONP1BZ6MSEX5020,Construction Entrance Ramp,8164,552,0,200,0,1610,1610,200,0,0,0,,,,2014-07-26 08:00,2014-08-26 17:00,,2014-05-06 08:00,2014-06-03 17:00,2014-05-06 08:00,2014-06-03 17:00,2014-05-06 08:00,2014-06-03 17:00,2014-07-26 08:00,2014-08-26 17:00,,PT_Normal,,,,,WMYI7WpvTou5CIW9lflY1g,,,,N,0,0,,,2013-02-16 15:52,2013-02-16 15:56,admin,admin
500746,6359,124493,13662,0,N,N,N,CP_Drtn,TT_Task,DT_FixedDUR2,TK_NotStart,DUKHCONP1BZ6MSEX5025,SS.Handrails and Balustrades,8178,552,0,160,0,500,500,160,0,0,0,,,,2014-08-18 08:00,2014-09-09 17:00,,2014-05-26 08:00,2014-06-17 17:00,2014-05-26 08:00,2014-06-17 17:00,2014-05-26 08:00,2014-06-17 17:00,2014-08-18 08:00,2014-09-09 17:00,,PT_Normal,,,,,KRJzbA7dRLi5EkoSmxfYvA,,,,N,0,0,,,2013-02-16 15:52,2013-02-16 15:56,admin,admin
500747,6359,124493,13662,0,N,N,N,CP_Drtn,TT_Task,DT_FixedDUR2,TK_NotStart,DUKHCONP1BZ6MSEX5015,Construction of grease Trap,8178,304,0,160,0,110,110,160,0,0,0,,,,2014-07-26 08:00,2014-08-20 17:00,,2014-06-11 08:00,2014-07-03 17:00,2014-06-11 08:00,2014-07-03 17:00,2014-06-11 08:00,2014-07-03 17:00,2014-07-26 08:00,2014-08-20 17:00,,PT_Normal,,,,,NTWPFb3BSquNmSq2E+Zpxg,,,,N,0,0,,,2013-02-16 15:52,2013-02-16 15:56,admin,admin
500748,6359,124493,13662,0,N,N,N,CP_Drtn,TT_Task,DT_FixedDUR2,TK_NotStart,DUKHCONP1BZ6MSEX5000,Construction of Manholes,8172,304,0,200,0,1100,1100,200,0,0,0,,,,2014-06-22 08:00,2014-07-20 17:00,,2014-05-08 08:00,2014-06-05 17:00,2014-05-08 08:00,2014-06-05 17:00,2014-05-08 08:00,2014-06-05 17:00,2014-06-22 08:00,2014-07-20 17:00,,PT_Normal,,,,,v3e1HAlMRsW7K/9YKqYROQ,,,,N,0,0,,,2013-02-16 15:52,2013-02-16 15:56,admin,admin
500749,6359,124493,13662,0,N,N,N,CP_Drtn,TT_Task,DT_FixedDUR2,TK_NotStart,DUKHCONP1BZ6MSEX5005,"Construction  of Soak pit, Chambers",8172,304,0,200,0,220,220,200,0,0,0,,,,2014-07-06 08:00,2014-08-06 17:00,,2014-05-22 08:00,2014-06-19 17:00,2014-05-22 08:00,2014-06-19 17:00,2014-05-22 08:00,2014-06-19 17:00,2014-07-06 08:00,2014-08-06 17:00,,PT_Normal,,,,,J2/RbfLoSqSIhDIRtWzSgw,,,,N,0,0,,,2013-02-16 15:52,2013-02-16 15:56,admin,admin
500750,6359,124493,13662,0,N,N,N,CP_Drtn,TT_Task,DT_FixedDUR2,TK_NotStart,DUKHCONP1BZ6MSEX5010,Telephone cable laying,8177,304,104,200,0,500,500,200,0,0,0,,,,2014-08-21 08:00,2014-09-18 17:00,,2014-07-05 08:00,2014-08-05 17:00,2014-07-05 08:00,2014-08-05 17:00,2014-07-05 08:00,2014-08-05 17:00,2014-08-21 08:00,2014-09-18 17:00,,PT_Normal,,,,,xX87zBZOQIu9kajw3Gmp1g,,,,N,0,0,,,2013-02-16 15:52,2013-02-16 15:56,admin,admin
500751,6359,124496,13662,0,N,N,N,CP_Drtn,TT_Task,DT_FixedDUR2,TK_NotStart,DUKHCONP1BZ6AREL3665,External Plastering,8169,608,0,200,0,15250,15250,200,0,0,0,,,,2014-09-16 08:00,2014-10-16 17:00,,2014-06-16 08:00,2014-07-14 17:00,2014-06-16 08:00,2014-07-14 17:00,2014-06-16 08:00,2014-07-14 17:00,2014-09-16 08:00,2014-10-16 17:00,,PT_Normal,,,,,P04040O6S8Oek+HMhkqyog,,,,N,0,0,,,2013-02-16 15:52,2013-02-16 15:56,admin,admin
500752,6359,124496,13662,0,N,N,N,CP_Drtn,TT_Task,DT_FixedDUR2,TK_NotStart,DUKHCONP1BZ6AREL3670,External stone cladding works,8170,608,0,160,0,1170,1170,160,0,0,0,,,,2014-10-04 08:00,2014-10-28 17:00,,2014-07-03 08:00,2014-07-26 17:00,2014-07-03 08:00,2014-07-26 17:00,2014-07-03 08:00,2014-07-26 17:00,2014-10-04 08:00,2014-10-28 17:00,,PT_Normal,,,,,rgRtSrxfRKWbIyrUVBcbHg,,,,N,0,0,,,2013-02-16 15:52,2013-02-16 15:56,admin,admin
500753,6359,124496,13662,0,N,N,N,CP_Drtn,TT_Task,DT_FixedDUR2,TK_NotStart,DUKHCONP1BZ6AREL3680,External Painting,8178,608,584,160,0,5280,5280,160,0,0,0,,,,2014-10-23 08:00,2014-11-15 17:00,,2014-07-21 08:00,2014-08-16 17:00,2014-07-21 08:00,2014-08-16 17:00,2014-07-21 08:00,2014-08-16 17:00,2014-10-23 08:00,2014-11-15 17:00,,PT_Normal,,,,,P6KUlyDSRtaKWiG3FNHmFg,,,,N,0,0,,,2013-02-16 15:52,2013-02-16 15:56,admin,admin
500754,6359,124496,13662,0,N,N,N,CP_Drtn,TT_Task,DT_FixedDUR2,TK_NotStart,DUKHCONP1BZ6AREL3675,GRC works,8178,608,0,160,0,550,550,160,0,0,0,,,,2014-10-12 08:00,2014-11-03 17:00,,2014-07-09 08:00,2014-07-31 17:00,2014-07-09 08:00,2014-07-31 17:00,2014-07-09 08:00,2014-07-31 17:00,2014-10-12 08:00,2014-11-03 17:00,,PT_Normal,,,,,k2actkP0RISv/O9S79egYA,,,,N,0,0,,,2013-02-16 15:52,2013-02-16 15:56,admin,admin
500755,6359,124497,13662,0,N,N,N,CP_Drtn,TT_Task,DT_FixedDUR2,TK_NotStart,DUKHCONP1BZ6ARRF3630,Leveling Screed for Waterproofing,8164,624,0,200,0,887.5,887.5,200,0,0,0,,,,2014-09-03 08:00,2014-10-01 17:00,,2014-06-01 08:00,2014-06-29 17:00,2014-06-01 08:00,2014-06-29 17:00,2014-06-01 08:00,2014-06-29 17:00,2014-09-03 08:00,2014-10-01 17:00,,PT_Normal,,,,,uS4D4bQyQVmgyRz75o87iQ,,,,N,0,0,,,2013-02-16 15:52,2013-02-16 15:56,admin,admin
500756,6359,124497,13662,0,N,N,N,CP_Drtn,TT_Task,DT_FixedDUR2,TK_NotStart,DUKHCONP1BZ6ARRF3635,Laying of Waterproofing Membrane,8178,624,0,200,0,1232,1232,200,0,0,0,,,,2014-09-07 08:00,2014-10-05 17:00,,2014-06-04 08:00,2014-07-02 17:00,2014-06-04 08:00,2014-07-02 17:00,2014-06-04 08:00,2014-07-02 17:00,2014-09-07 08:00,2014-10-05 17:00,,PT_Normal,,,,,kSygxe99RbC+pMcwVBTcQw,,,,N,0,0,,,2013-02-16 15:52,2013-02-16 15:56,admin,admin
500757,6359,124497,13662,0,N,N,N,CP_Drtn,TT_Task,DT_FixedDUR2,TK_NotStart,DUKHCONP1BZ6ARRF3640,Installation of Insulation & Protection,8178,624,0,200,0,1562,1562,200,0,0,0,,,,2014-09-11 08:00,2014-10-12 17:00,,2014-06-09 08:00,2014-07-07 17:00,2014-06-09 08:00,2014-07-07 17:00,2014-06-09 08:00,2014-07-07 17:00,2014-09-11 08:00,2014-10-12 17:00,,PT_Normal,,,,,nI91lr4sQ7OcXdFXulU4CQ,,,,N,0,0,,,2013-02-16 15:52,2013-02-16 15:56,admin,admin
500758,6359,124497,13662,0,N,N,N,CP_Drtn,TT_Task,DT_FixedDUR2,TK_NotStart,DUKHCONP1BZ6ARRF3645,Lime Stone Chips & Paving slab Installation,8170,624,0,200,0,781,781,200,0,0,0,,,,2014-09-16 08:00,2014-10-16 17:00,,2014-06-14 08:00,2014-07-12 17:00,2014-06-14 08:00,2014-07-12 17:00,2014-06-14 08:00,2014-07-12 17:00,2014-09-16 08:00,2014-10-16 17:00,,PT_Normal,,,,,6TgfLoz2SgarIhB9S6XkkA,,,,N,0,0,,,2013-02-16 15:52,2013-02-16 15:56,admin,admin
500759,6359,124497,13662,0,N,N,N,CP_Drtn,TT_Task,DT_FixedDUR2,TK_NotStart,DUKHCONP1BZ6ARRF3655,Installation of Pumps Protection cabinets,8178,624,0,160,0,770,770,160,0,0,0,,,,2014-10-12 08:00,2014-11-03 17:00,,2014-07-07 08:00,2014-07-29 17:00,2014-07-07 08:00,2014-07-29 17:00,2014-07-07 08:00,2014-07-29 17:00,2014-10-12 08:00,2014-11-03 17:00,,PT_Normal,,,,,wDMEaQOcSgif1C+O8HvSBg,,,,N,0,0,,,2013-02-16 15:52,2013-02-16 15:56,admin,admin
500760,6359,124497,13662,0,N,N,N,CP_Drtn,TT_Task,DT_FixedDUR2,TK_NotStart,DUKHCONP1BZ6ARRF3650,Install. of Gal. Frame & Aluminum Slat Screen,8178,624,0,200,0,1074.5,1074.5,200,0,0,0,,,,2014-09-24 08:00,2014-10-25 17:00,,2014-06-22 08:00,2014-07-20 17:00,2014-06-22 08:00,2014-07-20 17:00,2014-06-22 08:00,2014-07-20 17:00,2014-09-24 08:00,2014-10-25 17:00,,PT_Normal,,,,,VI8ltcoNQHGeldj2VIG9gg,,,,N,0,0,,,2013-02-16 15:52,2013-02-16 15:56,admin,admin
500761,6359,124497,13662,0,N,N,N,CP_Drtn,TT_Task,DT_FixedDUR2,TK_NotStart,DUKHCONP1BZ6ARRF3660,Installation of Access Ladder,8178,624,600,120,0,440,440,120,0,0,0,,,,2014-10-29 08:00,2014-11-15 17:00,,2014-07-24 08:00,2014-08-13 17:00,2014-07-24 08:00,2014-08-13 17:00,2014-07-24 08:00,2014-08-13 17:00,2014-10-29 08:00,2014-11-15 17:00,,PT_Normal,,,,,fsSlF0KqQDi9eA8vE81qpg,,,,N,0,0,,,2013-02-16 15:52,2013-02-16 15:56,admin,admin
500762,6359,124499,13662,0,N,N,N,CP_Drtn,TT_Task,DT_FixedDUR2,TK_NotStart,DUKHCONP1BZ6ARFF3300,Block work,8168,24,0,200,0,9175,9175,200,0,0,0,,,,2014-05-08 08:00,2014-06-05 17:00,,2014-05-05 08:00,2014-06-02 17:00,2014-05-05 08:00,2014-06-02 17:00,2014-05-05 08:00,2014-06-02 17:00,2014-05-08 08:00,2014-06-05 17:00,,PT_Normal,,,,,4oXuaFL/TIen9K7ONEVrBg,,,,N,0,0,,,2013-02-16 15:52,2013-02-16 15:56,admin,admin
500763,6359,124499,13662,0,N,N,N,CP_Drtn,TT_Task,DT_FixedDUR2,TK_NotStart,DUKHCONP1BZ6ARFF3305,Plastering work,8169,24,0,200,0,9399,9399,200,0,0,0,,,,2014-06-04 08:00,2014-07-02 17:00,,2014-06-01 08:00,2014-06-29 17:00,2014-06-01 08:00,2014-06-29 17:00,2014-06-01 08:00,2014-06-29 17:00,2014-06-04 08:00,2014-07-02 17:00,,PT_Normal,,,,,he5nGnHLQhmNtTugnJvUAw,,,,N,0,0,,,2013-02-16 15:52,2013-02-16 15:56,admin,admin
500764,6359,124499,13662,0,N,N,N,CP_Drtn,TT_Task,DT_FixedDUR2,TK_NotStart,DUKHCONP1BZ6ARFF3310,Flooring screed,8164,160,136,168,0,1352,1352,168,0,0,0,,,,2014-07-02 08:00,2014-07-26 17:00,,2014-06-09 08:00,2014-07-02 17:00,2014-06-09 08:00,2014-07-02 17:00,2014-06-09 08:00,2014-07-02 17:00,2014-07-02 08:00,2014-07-26 17:00,,PT_Normal,,,,,YQxCDwc8TRGCI8lAJRF0Aw,,,,N,0,0,,,2013-02-16 15:52,2013-02-16 15:56,admin,admin
500765,6359,124499,13662,0,N,N,N,CP_Drtn,TT_Task,DT_FixedDUR2,TK_NotStart,DUKHCONP1BZ6ARFF3315,Wet area waterproofing,8178,24,0,120,0,1716,1716,120,0,0,0,,,,2014-06-25 08:00,2014-07-12 17:00,,2014-06-22 08:00,2014-07-08 17:00,2014-06-22 08:00,2014-07-08 17:00,2014-06-22 08:00,2014-07-08 17:00,2014-06-25 08:00,2014-07-12 17:00,,PT_Normal,,,,,2nHwKrs8RkmYYNBcvhKF/Q,,,,N,0,0,,,2013-02-16 15:52,2013-02-16 15:56,admin,admin
500766,6359,124499,13662,0,N,N,N,CP_Drtn,TT_Task,DT_FixedDUR2,TK_NotStart,DUKHCONP1BZ6ARFF3330,Paint First coat,8178,232,208,200,0,6570.3,6570.3,200,0,0,0,,,,2014-07-21 08:00,2014-08-21 17:00,,2014-06-17 08:00,2014-07-15 17:00,2014-06-17 08:00,2014-07-15 17:00,2014-06-17 08:00,2014-07-15 17:00,2014-07-21 08:00,2014-08-21 17:00,,PT_Normal,,,,,JjsGcYa7TKKBPRigf5Gwqw,,,,N,0,0,,,2013-02-16 15:52,2013-02-23 09:03,admin,admin
500767,6359,124499,13662,0,N,N,N,CP_Drtn,TT_Task,DT_FixedDUR2,TK_NotStart,DUKHCONP1BZ6ARFF3320,Ceramic Wall Tiling,8170,24,0,200,0,1893.75,1893.75,200,0,0,0,,,,2014-07-05 08:00,2014-08-05 17:00,,2014-07-01 08:00,2014-07-29 17:00,2014-07-01 08:00,2014-07-29 17:00,2014-07-01 08:00,2014-07-29 17:00,2014-07-05 08:00,2014-08-05 17:00,,PT_Normal,,,,,Kh5lrFRDQQW1xbWv7sTveQ,,,,N,0,0,,,2013-02-16 15:52,2013-02-16 15:56,admin,admin
500768,6359,124499,13662,0,N,N,N,CP_Drtn,TT_Task,DT_FixedDUR2,TK_NotStart,DUKHCONP1BZ6ARFF3325,Porcelain Tile flooring,8170,24,0,200,0,1675,1675,200,0,0,0,,,,2014-07-14 08:00,2014-08-14 17:00,,2014-07-10 08:00,2014-08-11 17:00,2014-07-10 08:00,2014-08-11 17:00,2014-07-10 08:00,2014-08-11 17:00,2014-07-14 08:00,2014-08-14 17:00,,PT_Normal,,,,,tV/xRh7BTVGhBFq+bBuE0g,,,,N,0,0,,,2013-02-16 15:52,2013-02-16 15:56,admin,admin
500769,6359,124499,13662,0,N,N,N,CP_Drtn,TT_Task,DT_FixedDUR2,TK_NotStart,DUKHCONP1BZ6ARFF3335,Slate Tile Flooring & Skirting,8170,176,152,120,0,1162.5,1162.5,120,0,0,0,,,,2014-08-26 08:00,2014-09-11 17:00,,2014-07-28 08:00,2014-08-17 17:00,2014-07-28 08:00,2014-08-17 17:00,2014-07-28 08:00,2014-08-17 17:00,2014-08-26 08:00,2014-09-11 17:00,,PT_Normal,,,,,p9dkFdIZTLuJNo0+jrOa7Q,,,,N,0,0,,,2013-02-16 15:52,2013-02-16 15:56,admin,admin
500770,6359,124499,13662,0,N,N,N,CP_Drtn,TT_Task,DT_FixedDUR2,TK_NotStart,DUKHCONP1BZ6ARFF3350,Granite - Stair case flooring & Skirting,8171,112,88,160,0,1062.5,1062.5,160,0,0,0,,,,2014-08-20 08:00,2014-09-11 17:00,,2014-07-31 08:00,2014-08-26 17:00,2014-07-31 08:00,2014-08-26 17:00,2014-07-31 08:00,2014-08-26 17:00,2014-08-20 08:00,2014-09-11 17:00,,PT_Normal,,,,,N36O9JsyQ3y9UHd6QdLzQw,,,,N,0,0,,,2013-02-16 15:52,2013-02-16 15:56,admin,admin
500771,6359,124499,13662,0,N,N,N,CP_Drtn,TT_Task,DT_FixedDUR2,TK_NotStart,DUKHCONP1BZ6ARFF3345,Fixing of Suspension systems,8178,24,0,160,0,1487.5,1487.5,160,0,0,0,,,,2014-08-07 08:00,2014-08-30 17:00,,2014-07-31 08:00,2014-08-26 17:00,2014-07-31 08:00,2014-08-26 17:00,2014-07-31 08:00,2014-08-26 17:00,2014-08-07 08:00,2014-08-30 17:00,,PT_Normal,,,,,uTPRuuUvT2yymsL1N+OVKQ,,,,N,0,0,,,2013-02-16 15:52,2013-02-16 15:56,admin,admin
500772,6359,124499,13662,0,N,N,N,CP_Drtn,TT_Task,DT_FixedDUR2,TK_NotStart,DUKHCONP1BZ6ARFF3360,Gypsum board false ceiling,8178,24,0,200,0,1487.5,1487.5,200,0,0,0,,,,2014-08-19 08:00,2014-09-16 17:00,,2014-08-16 08:00,2014-09-13 17:00,2014-08-16 08:00,2014-09-13 17:00,2014-08-16 08:00,2014-09-13 17:00,2014-08-19 08:00,2014-09-16 17:00,,PT_Normal,,,,,RxztjDUbTyKxmN1EpNvOBA,,,,N,0,0,,,2013-02-16 15:52,2013-02-16 15:56,admin,admin
500773,6359,124499,13662,0,N,N,N,CP_Drtn,TT_Task,DT_FixedDUR2,TK_NotStart,DUKHCONP1BZ6ARFF3365,Wooden door,8178,24,0,120,0,220,220,120,0,0,0,,,,2014-09-03 08:00,2014-09-20 17:00,,2014-08-31 08:00,2014-09-16 17:00,2014-08-31 08:00,2014-09-16 17:00,2014-08-31 08:00,2014-09-16 17:00,2014-09-03 08:00,2014-09-20 17:00,,PT_Normal,,,,,rJXmVarLTnubDzve6Q53fg,,,,N,0,0,,,2013-02-16 15:52,2013-02-16 15:56,admin,admin
500774,6359,124499,13662,0,N,N,N,CP_Drtn,TT_Task,DT_FixedDUR2,TK_NotStart,DUKHCONP1BZ6ARFF3370,Aluminum Door,8178,24,0,160,0,165,165,160,0,0,0,,,,2014-09-11 08:00,2014-10-04 17:00,,2014-09-08 08:00,2014-09-30 17:00,2014-09-08 08:00,2014-09-30 17:00,2014-09-08 08:00,2014-09-30 17:00,2014-09-11 08:00,2014-10-04 17:00,,PT_Normal,,,,,yMqtxNkqRDOT6yxeY6jCrw,,,,N,0,0,,,2013-02-16 15:52,2013-02-16 15:56,admin,admin
500775,6359,124499,13662,0,N,N,N,CP_Drtn,TT_Task,DT_FixedDUR2,TK_NotStart,DUKHCONP1BZ6ARFF3380,Aluminum windows,8178,128,104,160,0,338.25,338.25,160,0,0,0,,,,2014-10-04 08:00,2014-10-28 17:00,,2014-09-15 08:00,2014-10-07 17:00,2014-09-15 08:00,2014-10-07 17:00,2014-09-15 08:00,2014-10-07 17:00,2014-10-04 08:00,2014-10-28 17:00,,PT_Normal,,,,,icalPZLiRUSyVwmkcw8LpA,,,,N,0,0,,,2013-02-16 15:52,2013-02-16 15:56,admin,admin
500776,6359,124499,13662,0,N,N,N,CP_Drtn,TT_Task,DT_FixedDUR2,TK_NotStart,DUKHCONP1BZ6ARFF3375,Carpentry & Joinery Works,8178,24,0,200,0,880,880,200,0,0,0,,,,2014-09-20 08:00,2014-10-20 17:00,,2014-09-16 08:00,2014-10-16 17:00,2014-09-16 08:00,2014-10-16 17:00,2014-09-16 08:00,2014-10-16 17:00,2014-09-20 08:00,2014-10-20 17:00,,PT_Normal,,,,,QKMdzqUgSbuneQkiwRPqew,,,,N,0,0,,,2013-02-16 15:52,2013-02-16 15:56,admin,admin
500777,6359,124499,13662,0,N,N,N,CP_Drtn,TT_Task,DT_FixedDUR2,TK_NotStart,DUKHCONP1BZ6ARFF3390,Installation of Granite Counter Top,8171,40,16,160,0,137.5,137.5,160,0,0,0,,,,2014-10-06 08:00,2014-10-30 17:00,,2014-09-30 08:00,2014-10-25 17:00,2014-09-30 08:00,2014-10-25 17:00,2014-09-30 08:00,2014-10-25 17:00,2014-10-06 08:00,2014-10-30 17:00,,PT_Normal,,,,,zZsLjZjKS12ix2D6m18nWQ,,,,N,0,0,,,2013-02-16 15:52,2013-02-16 15:56,admin,admin
500778,6359,124499,13662,0,N,N,N,CP_Drtn,TT_Task,DT_FixedDUR2,TK_NotStart,DUKHCONP1BZ6ARFF3385,Handrail &  Balustrade,8178,24,0,160,0,218.75,218.75,160,0,0,0,,,,2014-10-04 08:00,2014-10-28 17:00,,2014-09-30 08:00,2014-10-25 17:00,2014-09-30 08:00,2014-10-25 17:00,2014-09-30 08:00,2014-10-25 17:00,2014-10-04 08:00,2014-10-28 17:00,,PT_Normal,,,,,DiqyyWPGTTGO46WXiRvwtA,,,,N,0,0,,,2013-02-16 15:52,2013-02-16 15:56,admin,admin
500779,6359,124499,13662,0,N,N,N,CP_Drtn,TT_Task,DT_FixedDUR2,TK_NotStart,DUKHCONP1BZ6ARFF3395,Final Painting,8178,24,0,200,0,6570.3,6570.3,200,0,0,0,,,,2014-10-18 08:00,2014-11-15 17:00,,2014-10-14 08:00,2014-11-11 17:00,2014-10-14 08:00,2014-11-11 17:00,2014-10-14 08:00,2014-11-11 17:00,2014-10-18 08:00,2014-11-15 17:00,,PT_Normal,,,,,1LGZpfW/QsCueRn1D+gtyg,,,,N,0,0,,,2013-02-16 15:52,2013-02-23 09:03,admin,admin
500780,6359,124500,13662,0,N,N,N,CP_Drtn,TT_Task,DT_FixedDUR2,TK_NotStart,DUKHCONP1BZ6ARGF3030,Paint First coat,8178,504,112,200,0,7419.5,7419.5,200,0,0,0,,,,2014-07-15 08:00,2014-08-16 17:00,,2014-05-03 08:00,2014-05-31 17:00,2014-05-03 08:00,2014-05-31 17:00,2014-05-03 08:00,2014-05-31 17:00,2014-07-15 08:00,2014-08-16 17:00,,PT_Normal,,,,,i6O4I/l8TeSm6MHz2HL6bA,,,,N,0,0,,,2013-02-16 15:52,2013-02-16 15:56,admin,admin
500781,6359,124500,13662,0,N,N,N,CP_Drtn,TT_Task,DT_FixedDUR2,TK_NotStart,DUKHCONP1BZ6ARGF3020,Ceramic Wall Tiling,8170,392,0,200,0,4418.75,4418.75,200,0,0,0,,,,2014-07-06 08:00,2014-08-06 17:00,,2014-05-10 08:00,2014-06-07 17:00,2014-05-10 08:00,2014-06-07 17:00,2014-05-10 08:00,2014-06-07 17:00,2014-07-06 08:00,2014-08-06 17:00,,PT_Normal,,,,,w0sXyQSDQqGa8o1g/joD4Q,,,,N,0,0,,,2013-02-16 15:52,2013-02-16 15:56,admin,admin
500782,6359,124500,13662,0,N,N,N,CP_Drtn,TT_Task,DT_FixedDUR2,TK_NotStart,DUKHCONP1BZ6ARGF3025,Porcelain Tile flooring,8170,392,0,200,0,2397.25,2397.25,200,0,0,0,,,,2014-07-12 08:00,2014-08-12 17:00,,2014-05-15 08:00,2014-06-12 17:00,2014-05-15 08:00,2014-06-12 17:00,2014-05-15 08:00,2014-06-12 17:00,2014-07-12 08:00,2014-08-12 17:00,,PT_Normal,,,,,uSbL09eRQz+QGvhT/jv88A,,,,N,0,0,,,2013-02-16 15:52,2013-02-16 15:56,admin,admin
500783,6359,124500,13662,0,N,N,N,CP_Drtn,TT_Task,DT_FixedDUR2,TK_NotStart,DUKHCONP1BZ6ARGF3040,Cobble Tile flooring,8170,456,0,120,0,875,875,120,0,0,0,,,,2014-08-20 08:00,2014-09-06 17:00,,2014-06-11 08:00,2014-06-28 17:00,2014-06-11 08:00,2014-06-28 17:00,2014-06-11 08:00,2014-06-28 17:00,2014-08-20 08:00,2014-09-06 17:00,,PT_Normal,,,,,D0VnIe2ZR5yos+k90yViaw,,,,N,0,0,,,2013-02-16 15:52,2013-02-16 15:56,admin,admin
500784,6359,124500,13662,0,N,N,N,CP_Drtn,TT_Task,DT_FixedDUR2,TK_NotStart,DUKHCONP1BZ6ARGF3035,Slate Tile Flooring & Skirting,8170,472,16,120,0,1162.5,1162.5,120,0,0,0,,,,2014-08-16 08:00,2014-09-01 17:00,,2014-06-04 08:00,2014-06-21 17:00,2014-06-04 08:00,2014-06-21 17:00,2014-06-04 08:00,2014-06-21 17:00,2014-08-16 08:00,2014-09-01 17:00,,PT_Normal,,,,,D0Ah2N6mQPKIecdH0ODh7Q,,,,N,0,0,,,2013-02-16 15:52,2013-02-16 15:56,admin,admin
500785,6359,124500,13662,0,N,N,N,CP_Drtn,TT_Task,DT_FixedDUR2,TK_NotStart,DUKHCONP1BZ6ARGF3050,Granite - Stair case flooring & Skirting,8171,456,0,160,0,1062.5,1062.5,160,0,0,0,,,,2014-08-28 08:00,2014-09-20 17:00,,2014-06-19 08:00,2014-07-12 17:00,2014-06-19 08:00,2014-07-12 17:00,2014-06-19 08:00,2014-07-12 17:00,2014-08-28 08:00,2014-09-20 17:00,,PT_Normal,,,,,edJlNcskSUaiVy605b+drQ,,,,N,0,0,,,2013-02-16 15:52,2013-02-16 15:56,admin,admin
500786,6359,124500,13662,0,N,N,N,CP_Drtn,TT_Task,DT_FixedDUR2,TK_NotStart,DUKHCONP1BZ6ARGF3045,Fixing of Suspension systems,8178,392,0,160,0,1650,1650,160,0,0,0,,,,2014-07-29 08:00,2014-08-24 17:00,,2014-06-02 08:00,2014-06-24 17:00,2014-06-02 08:00,2014-06-24 17:00,2014-06-02 08:00,2014-06-24 17:00,2014-07-29 08:00,2014-08-24 17:00,,PT_Normal,,,,,ERnuRDOKQNyaUnPL1eKeXQ,,,,N,0,0,,,2013-02-16 15:52,2013-02-16 15:56,admin,admin
500787,6359,124500,13662,0,N,N,N,CP_Drtn,TT_Task,DT_FixedDUR2,TK_NotStart,DUKHCONP1BZ6ARGF3055,Aluminum tile false ceiling,8178,416,24,200,0,162.5,162.5,200,0,0,0,,,,2014-08-13 08:00,2014-09-10 17:00,,2014-06-10 08:00,2014-07-08 17:00,2014-06-10 08:00,2014-07-08 17:00,2014-06-10 08:00,2014-07-08 17:00,2014-08-13 08:00,2014-09-10 17:00,,PT_Normal,,,,,GJNhEgMCRzGJuY0f/UoexQ,,,,N,0,0,,,2013-02-16 15:52,2013-02-16 15:56,admin,admin
500788,6359,124500,13662,0,N,N,N,CP_Drtn,TT_Task,DT_FixedDUR2,TK_NotStart,DUKHCONP1BZ6ARGF3060,Gypsum board false ceiling,8178,392,0,200,0,1520.5,1520.5,200,0,0,0,,,,2014-08-13 08:00,2014-09-10 17:00,,2014-06-14 08:00,2014-07-12 17:00,2014-06-14 08:00,2014-07-12 17:00,2014-06-14 08:00,2014-07-12 17:00,2014-08-13 08:00,2014-09-10 17:00,,PT_Normal,,,,,SorMXM31Tz21kFOGC4+HfA,,,,N,0,0,,,2013-02-16 15:52,2013-02-16 15:56,admin,admin
500789,6359,124500,13662,0,N,N,N,CP_Drtn,TT_Task,DT_FixedDUR2,TK_NotStart,DUKHCONP1BZ6ARGF3065,Wooden door & PVC Door,8178,456,0,120,0,825,825,120,0,0,0,,,,2014-09-11 08:00,2014-09-28 17:00,,2014-07-03 08:00,2014-07-20 17:00,2014-07-03 08:00,2014-07-20 17:00,2014-07-03 08:00,2014-07-20 17:00,2014-09-11 08:00,2014-09-28 17:00,,PT_Normal,,,,,Ji8s9lMtSrWqTLP0VUb9XQ,,,,N,0,0,,,2013-02-16 15:52,2013-02-16 15:56,admin,admin
500790,6359,124500,13662,0,N,N,N,CP_Drtn,TT_Task,DT_FixedDUR2,TK_NotStart,DUKHCONP1BZ6ARGF3070,Aluminum doors,8178,456,0,120,0,110,110,120,0,0,0,,,,2014-09-17 08:00,2014-10-04 17:00,,2014-07-09 08:00,2014-07-26 17:00,2014-07-09 08:00,2014-07-26 17:00,2014-07-09 08:00,2014-07-26 17:00,2014-09-17 08:00,2014-10-04 17:00,,PT_Normal,,,,,Hdl7eDZnTWqNlnmfk5+THQ,,,,N,0,0,,,2013-02-16 15:52,2013-02-16 15:56,admin,admin
500791,6359,124500,13662,0,N,N,N,CP_Drtn,TT_Task,DT_FixedDUR2,TK_NotStart,DUKHCONP1BZ6ARGF3080,Aluminum windows,8178,536,80,160,0,323.5,323.5,160,0,0,0,,,,2014-10-06 08:00,2014-10-30 17:00,,2014-07-16 08:00,2014-08-11 17:00,2014-07-16 08:00,2014-08-11 17:00,2014-07-16 08:00,2014-08-11 17:00,2014-10-06 08:00,2014-10-30 17:00,,PT_Normal,,,,,hN+yvTuxSr68HJvQacNRng,,,,N,0,0,,,2013-02-16 15:52,2013-02-16 15:56,admin,admin
500792,6359,124500,13662,0,N,N,N,CP_Drtn,TT_Task,DT_FixedDUR2,TK_NotStart,DUKHCONP1BZ6ARGF3075,Carpentry & Joinery Works,8178,456,0,160,0,660,660,160,0,0,0,,,,2014-09-23 08:00,2014-10-18 17:00,,2014-07-15 08:00,2014-08-10 17:00,2014-07-15 08:00,2014-08-10 17:00,2014-07-15 08:00,2014-08-10 17:00,2014-09-23 08:00,2014-10-18 17:00,,PT_Normal,,,,,yGxIvPsVTKeSrt2tMk3tZQ,,,,N,0,0,,,2013-02-16 15:52,2013-02-16 15:56,admin,admin
500793,6359,124500,13662,0,N,N,N,CP_Drtn,TT_Task,DT_FixedDUR2,TK_NotStart,DUKHCONP1BZ6ARGF3090,Installation of Granite Counter Top,8171,456,0,120,0,302.5,302.5,120,0,0,0,,,,2014-10-06 08:00,2014-10-25 17:00,,2014-07-28 08:00,2014-08-17 17:00,2014-07-28 08:00,2014-08-17 17:00,2014-07-28 08:00,2014-08-17 17:00,2014-10-06 08:00,2014-10-25 17:00,,PT_Normal,,,,,hyNQRaOSSnWN5s8OGAIUyA,,,,N,0,0,,,2013-02-16 15:52,2013-02-16 15:56,admin,admin
500794,6359,124500,13662,0,N,N,N,CP_Drtn,TT_Task,DT_FixedDUR2,TK_NotStart,DUKHCONP1BZ6ARGF3085,S.S.Balustrade,8178,496,40,160,0,218.75,218.75,160,0,0,0,,,,2014-10-07 08:00,2014-11-01 17:00,,2014-07-23 08:00,2014-08-18 17:00,2014-07-23 08:00,2014-08-18 17:00,2014-07-23 08:00,2014-08-18 17:00,2014-10-07 08:00,2014-11-01 17:00,,PT_Normal,,,,,r0iKME7ORXaJ028qSM3v9g,,,,N,0,0,,,2013-02-16 15:52,2013-02-16 15:56,admin,admin
500795,6359,124500,13662,0,N,N,N,CP_Drtn,TT_Task,DT_FixedDUR2,TK_NotStart,DUKHCONP1BZ6ARGF3095,Final Painting,8178,456,432,200,0,7419.5,7419.5,200,0,0,0,,,,2014-10-18 08:00,2014-11-15 17:00,,2014-08-10 08:00,2014-09-07 17:00,2014-08-10 08:00,2014-09-07 17:00,2014-08-10 08:00,2014-09-07 17:00,2014-10-18 08:00,2014-11-15 17:00,,PT_Normal,,,,,Xng7lHAmQeCnHYFTqqwAaA,,,,N,0,0,,,2013-02-16 15:52,2013-02-16 15:56,admin,admin
500796,6359,124500,13662,0,N,N,N,CP_Drtn,TT_Task,DT_FixedDUR2,TK_NotStart,DUKHCONP1BZ6ARGF3000,Block work,8168,392,0,200,0,11578.5,11578.5,200,0,0,0,,,,2014-05-21 08:00,2014-06-18 17:00,,2014-03-25 08:00,2014-04-22 17:00,2014-03-25 08:00,2014-04-22 17:00,2014-03-25 08:00,2014-04-22 17:00,2014-05-21 08:00,2014-06-18 17:00,,PT_Normal,,,,,LDsEC7APSJ6saXDvvlTmCg,,,,N,0,0,,,2013-02-16 15:52,2013-02-16 15:56,admin,admin
500797,6359,124500,13662,0,N,N,N,CP_Drtn,TT_Task,DT_FixedDUR2,TK_NotStart,DUKHCONP1BZ6ARGF3005,Plastering work,8169,392,0,200,0,14187.5,14187.5,200,0,0,0,,,,2014-06-12 08:00,2014-07-10 17:00,,2014-04-16 08:00,2014-05-14 17:00,2014-04-16 08:00,2014-05-14 17:00,2014-04-16 08:00,2014-05-14 17:00,2014-06-12 08:00,2014-07-10 17:00,,PT_Normal,,,,,vPqfqucQSxmLRPeMwMMRgA,,,,N,0,0,,,2013-02-16 15:52,2013-02-16 15:56,admin,admin
500798,6359,124500,13662,0,N,N,N,CP_Drtn,TT_Task,DT_FixedDUR2,TK_NotStart,DUKHCONP1BZ6ARGF3010,Flooring screed,8164,456,64,168,0,2713.25,2713.25,168,0,0,0,,,,2014-06-30 08:00,2014-07-23 17:00,,2014-04-24 08:00,2014-05-18 17:00,2014-04-24 08:00,2014-05-18 17:00,2014-04-24 08:00,2014-05-18 17:00,2014-06-30 08:00,2014-07-23 17:00,,PT_Normal,,,,,9z8TB+mITD+XsIbJlAUN4Q,,,,N,0,0,,,2013-02-16 15:52,2013-02-16 15:56,admin,admin
500799,6359,124500,13662,0,N,N,N,CP_Drtn,TT_Task,DT_FixedDUR2,TK_NotStart,DUKHCONP1BZ6ARGF3015,Wet area waterproofing & Protection Screed,8178,392,0,120,0,528,528,120,0,0,0,,,,2014-06-30 08:00,2014-07-16 17:00,,2014-05-04 08:00,2014-05-20 17:00,2014-05-04 08:00,2014-05-20 17:00,2014-05-04 08:00,2014-05-20 17:00,2014-06-30 08:00,2014-07-16 17:00,,PT_Normal,,,,,HDw+PCsjTIawO3D/vQIkKg,,,,N,0,0,,,2013-02-16 15:52,2013-02-16 15:56,admin,admin
500800,6359,124501,13662,0,N,N,N,CP_Drtn,TT_Task,DT_FixedDUR2,TK_NotStart,DUKHCONP1BZ6ARRF3600,Block work,8168,624,0,160,0,872.25,872.25,160,0,0,0,,,,2014-08-24 08:00,2014-09-15 17:00,,2014-05-21 08:00,2014-06-12 17:00,2014-05-21 08:00,2014-06-12 17:00,2014-05-21 08:00,2014-06-12 17:00,2014-08-24 08:00,2014-09-15 17:00,,PT_Normal,,,,,tVkkKsBFS4adaJi1Aau70Q,,,,N,0,0,,,2013-02-16 15:52,2013-02-16 15:56,admin,admin
500801,6359,124501,13662,0,N,N,N,CP_Drtn,TT_Task,DT_FixedDUR2,TK_NotStart,DUKHCONP1BZ6ARRF3605,Plastering work,8169,624,0,160,0,4791,4791,160,0,0,0,,,,2014-09-04 08:00,2014-09-27 17:00,,2014-06-02 08:00,2014-06-24 17:00,2014-06-02 08:00,2014-06-24 17:00,2014-06-02 08:00,2014-06-24 17:00,2014-09-04 08:00,2014-09-27 17:00,,PT_Normal,,,,,N4XbKqo0RvqgThsoR1ASYA,,,,N,0,0,,,2013-02-16 15:52,2013-02-16 15:56,admin,admin
500802,6359,124501,13662,0,N,N,N,CP_Drtn,TT_Task,DT_FixedDUR2,TK_NotStart,DUKHCONP1BZ6ARRF3610,Flooring screed,8164,624,0,120,0,192.5,192.5,120,0,0,0,,,,2014-09-22 08:00,2014-10-08 17:00,,2014-06-19 08:00,2014-07-06 17:00,2014-06-19 08:00,2014-07-06 17:00,2014-06-19 08:00,2014-07-06 17:00,2014-09-22 08:00,2014-10-08 17:00,,PT_Normal,,,,,+5mjbjIOSniw3YJdPcz31g,,,,N,0,0,,,2013-02-16 15:52,2013-02-16 15:56,admin,admin
500803,6359,124501,13662,0,N,N,N,CP_Drtn,TT_Task,DT_FixedDUR2,TK_NotStart,DUKHCONP1BZ6ARRF3695,Painting -Storage area,8178,624,0,160,0,2050,2050,160,0,0,0,,,,2014-10-04 08:00,2014-10-28 17:00,,2014-07-01 08:00,2014-07-23 17:00,2014-07-01 08:00,2014-07-23 17:00,2014-07-01 08:00,2014-07-23 17:00,2014-10-04 08:00,2014-10-28 17:00,,PT_Normal,,,,,I/EQpCaCTyuN3Ky0rF5+6A,,,,N,0,0,,,2013-02-16 15:52,2013-02-16 15:56,admin,admin
500804,6359,124501,13662,0,N,N,N,CP_Drtn,TT_Task,DT_FixedDUR2,TK_NotStart,DUKHCONP1BZ6ARRF3620,Epoxy Painting -Storage area,8178,624,0,120,0,59.5,59.5,120,0,0,0,,,,2014-10-23 08:00,2014-11-09 17:00,,2014-07-19 08:00,2014-08-07 17:00,2014-07-19 08:00,2014-08-07 17:00,2014-07-19 08:00,2014-08-07 17:00,2014-10-23 08:00,2014-11-09 17:00,,PT_Normal,,,,,W5qNzR8MR8CBYWnUig0mrw,,,,N,0,0,,,2013-02-16 15:52,2013-02-16 15:56,admin,admin
500805,6359,124504,13662,0,N,N,N,CP_Drtn,TT_Task,DT_FixedDUR2,TK_NotStart,DUKHCONP1BZ6ELRF4070,Installation of Isolator,8178,24,0,144,0,1032,1032,144,0,0,0,,,,2014-10-06 08:00,2014-10-28 17:00,,2014-10-02 08:00,2014-10-25 17:00,2014-10-02 08:00,2014-10-25 17:00,2014-10-02 08:00,2014-10-25 17:00,2014-10-06 08:00,2014-10-28 17:00,,PT_Normal,,,,,TKqj6kO8RhCaMk7oeNjaDQ,,,,N,0,0,,,2013-02-16 15:52,2013-02-16 15:56,admin,admin
500806,6359,124504,13662,0,N,N,N,CP_Drtn,TT_Task,DT_FixedDUR2,TK_NotStart,DUKHCONP1BZ6ELRF4075,Installation of TV Dish Antenna,8178,24,0,184,0,2288,2288,184,0,0,0,,,,2014-10-20 08:00,2014-11-15 17:00,,2014-10-16 08:00,2014-11-11 17:00,2014-10-16 08:00,2014-11-11 17:00,2014-10-16 08:00,2014-11-11 17:00,2014-10-20 08:00,2014-11-15 17:00,,PT_Normal,,,,,yHz01kv9Q8iuiByN/D8kWw,,,,N,0,0,,,2013-02-16 15:52,2013-02-16 15:56,admin,admin
500807,6359,124505,13662,0,N,N,N,CP_Drtn,TT_Task,DT_FixedDUR2,TK_NotStart,DUKHCONP1BZ6ELFF4035,Fixing of wall conduits & switch socket boxes,8178,128,0,200,0,3224,3224,200,0,0,0,,,,2014-05-29 08:00,2014-06-26 17:00,,2014-05-11 08:00,2014-06-08 17:00,2014-05-11 08:00,2014-06-08 17:00,2014-05-11 08:00,2014-06-08 17:00,2014-05-29 08:00,2014-06-26 17:00,,PT_Normal,,,,,iur3/f+XS7aXuaO6ldBa4A,,,,N,0,0,,,2013-02-16 15:52,2013-02-16 15:56,admin,admin
500808,6359,124505,13662,0,N,N,N,CP_Drtn,TT_Task,DT_FixedDUR2,TK_NotStart,DUKHCONP1BZ6ELFF4040,Cable tray & trunking installation,8178,368,0,160,0,3976,3976,160,0,0,0,,,,2014-07-15 08:00,2014-08-10 17:00,,2014-05-22 08:00,2014-06-14 17:00,2014-05-22 08:00,2014-06-14 17:00,2014-05-22 08:00,2014-06-14 17:00,2014-07-15 08:00,2014-08-10 17:00,,PT_Normal,,,,,q0lBHMimSgWHdup4s8apFg,,,,N,0,0,,,2013-02-16 15:52,2013-02-16 15:56,admin,admin
500809,6359,124505,13662,0,N,N,N,CP_Drtn,TT_Task,DT_FixedDUR2,TK_NotStart,DUKHCONP1BZ6ELFF4045,Installation of wiring & Main Cabling,8178,368,344,200,0,796,796,200,0,0,0,,,,2014-07-23 08:00,2014-08-24 17:00,,2014-05-31 08:00,2014-06-28 17:00,2014-05-31 08:00,2014-06-28 17:00,2014-05-31 08:00,2014-06-28 17:00,2014-07-23 08:00,2014-08-24 17:00,,PT_Normal,,,,,ARL3UhaFQrK1DRJ3omRT4A,,,,N,0,0,,,2013-02-16 15:52,2013-02-16 15:56,admin,admin
500810,6359,124505,13662,0,N,N,N,CP_Drtn,TT_Task,DT_FixedDUR2,TK_NotStart,DUKHCONP1BZ6ELFF4060,"Installation  of DBS,MCCB Accessories.",8178,24,0,160,0,568,568,160,0,0,0,,,,2014-09-03 08:00,2014-09-25 17:00,,2014-08-31 08:00,2014-09-22 17:00,2014-08-31 08:00,2014-09-22 17:00,2014-08-31 08:00,2014-09-22 17:00,2014-09-03 08:00,2014-09-25 17:00,,PT_Normal,,,,,OenzEtt+QbiKTjJMMV/d1A,,,,N,0,0,,,2013-02-16 15:52,2013-02-16 15:56,admin,admin
500811,6359,124505,13662,0,N,N,N,CP_Drtn,TT_Task,DT_FixedDUR2,TK_NotStart,DUKHCONP1BZ6ELFF4065,Installation of Lighting fixtures & Accessories,8178,24,0,200,0,4128,4128,200,0,0,0,,,,2014-09-16 08:00,2014-10-16 17:00,,2014-09-13 08:00,2014-10-13 17:00,2014-09-13 08:00,2014-10-13 17:00,2014-09-13 08:00,2014-10-13 17:00,2014-09-16 08:00,2014-10-16 17:00,,PT_Normal,,,,,zdLgxf96SvGoxG4ouCAO2Q,,,,N,0,0,,,2013-02-16 15:52,2013-02-16 15:56,admin,admin
500812,6359,124505,13662,0,N,N,N,CP_Drtn,TT_Task,DT_FixedDUR2,TK_NotStart,DUKHCONP1BZ6ELFF4055,Install. of CAMS & Fire Fighting Accessories,8178,360,336,200,0,5712,5712,200,0,0,0,,,,2014-10-18 08:00,2014-11-15 17:00,,2014-08-24 08:00,2014-09-21 17:00,2014-08-24 08:00,2014-09-21 17:00,2014-08-24 08:00,2014-09-21 17:00,2014-10-18 08:00,2014-11-15 17:00,,PT_Normal,,,,,ZMqeJDP2Syio6JZxUujtIA,,,,N,0,0,,,2013-02-16 15:52,2013-02-16 15:56,admin,admin
500813,6359,124505,13662,0,N,N,N,CP_Drtn,TT_Task,DT_FixedDUR2,TK_NotStart,DUKHCONP1BZ6ELFF4050,Installation of Telephone System,8178,200,176,200,0,1778,1778,200,0,0,0,,,,2014-09-20 08:00,2014-10-20 17:00,,2014-08-21 08:00,2014-09-18 17:00,2014-08-21 08:00,2014-09-18 17:00,2014-08-21 08:00,2014-09-18 17:00,2014-09-20 08:00,2014-10-20 17:00,,PT_Normal,,,,,vR74Oy1qRPmlffWsybgkSQ,,,,N,0,0,,,2013-02-16 15:52,2013-02-16 15:56,admin,admin
500814,6359,124506,13662,0,N,N,N,CP_Drtn,TT_Task,DT_FixedDUR2,TK_NotStart,DUKHCONP1BZ6ELGF4000,Fixing of wall conduits & switch socket boxes,8178,464,0,200,0,3224,3224,200,0,0,0,,,,2014-06-07 08:00,2014-07-05 17:00,,2014-03-31 08:00,2014-04-28 17:00,2014-03-31 08:00,2014-04-28 17:00,2014-03-31 08:00,2014-04-28 17:00,2014-06-07 08:00,2014-07-05 17:00,,PT_Normal,,,,,17QMuQ1LSYmrJ2DeN48gag,,,,N,0,0,,,2013-02-16 15:52,2013-02-16 15:56,admin,admin
500815,6359,124506,13662,0,N,N,N,CP_Drtn,TT_Task,DT_FixedDUR2,TK_NotStart,DUKHCONP1BZ6ELGF4005,Cable tray & trunking installation,8178,608,0,160,0,3976,3976,160,0,0,0,,,,2014-07-09 08:00,2014-07-31 17:00,,2014-04-12 08:00,2014-05-04 17:00,2014-04-12 08:00,2014-05-04 17:00,2014-04-12 08:00,2014-05-04 17:00,2014-07-09 08:00,2014-07-31 17:00,,PT_Normal,,,,,xAVbkwAQRxOL9+VAUukyUw,,,,N,0,0,,,2013-02-16 15:52,2013-02-16 15:56,admin,admin
500816,6359,124506,13662,0,N,N,N,CP_Drtn,TT_Task,DT_FixedDUR2,TK_NotStart,DUKHCONP1BZ6ELGF4010,Installation of wiring & Main Cabling,8178,608,216,200,0,796,796,200,0,0,0,,,,2014-07-17 08:00,2014-08-18 17:00,,2014-04-20 08:00,2014-05-18 17:00,2014-04-20 08:00,2014-05-18 17:00,2014-04-20 08:00,2014-05-18 17:00,2014-07-17 08:00,2014-08-18 17:00,,PT_Normal,,,,,fW4r78t8QxWFBCHv5y8OHQ,,,,N,0,0,,,2013-02-16 15:52,2013-02-16 15:56,admin,admin
500817,6359,124506,13662,0,N,N,N,CP_Drtn,TT_Task,DT_FixedDUR2,TK_NotStart,DUKHCONP1BZ6ELGF4020,"Installation  of DBS,MCCB Accessories.",8178,392,0,160,0,568,568,160,0,0,0,,,,2014-08-27 08:00,2014-09-18 17:00,,2014-06-28 08:00,2014-07-20 17:00,2014-06-28 08:00,2014-07-20 17:00,2014-06-28 08:00,2014-07-20 17:00,2014-08-27 08:00,2014-09-18 17:00,,PT_Normal,,,,,qsG1JL2OQTuIQaS5x7JThA,,,,N,0,0,,,2013-02-16 15:52,2013-02-16 15:56,admin,admin
500818,6359,124506,13662,0,N,N,N,CP_Drtn,TT_Task,DT_FixedDUR2,TK_NotStart,DUKHCONP1BZ6ELGF4025,Installation of Lighting fixtures & Accessories,8178,408,384,200,0,4128,4128,200,0,0,0,,,,2014-09-10 08:00,2014-10-08 17:00,,2014-07-09 08:00,2014-08-10 17:00,2014-07-09 08:00,2014-08-10 17:00,2014-07-09 08:00,2014-08-10 17:00,2014-09-10 08:00,2014-10-08 17:00,,PT_Normal,,,,,IJNDJePZRfim+V2QIMHH0A,,,,N,0,0,,,2013-02-16 15:52,2013-02-16 15:56,admin,admin
500819,6359,124506,13662,0,N,N,N,CP_Drtn,TT_Task,DT_FixedDUR2,TK_NotStart,DUKHCONP1BZ6ELGF4015,Install. of CAMS & Fire Fighting Accessories,8178,568,208,200,0,5712,5712,200,0,0,0,,,,2014-09-16 08:00,2014-10-16 17:00,,2014-06-22 08:00,2014-07-20 17:00,2014-06-22 08:00,2014-07-20 17:00,2014-06-22 08:00,2014-07-20 17:00,2014-09-16 08:00,2014-10-16 17:00,,PT_Normal,,,,,myoSAeCiSyKJwTGkW7Nkeg,,,,N,0,0,,,2013-02-16 15:52,2013-02-16 15:56,admin,admin
500820,6359,124506,13662,0,N,N,N,CP_Drtn,TT_Task,DT_FixedDUR2,TK_NotStart,DUKHCONP1BZ6ELGF4030,Installation of Telephone System,8178,392,192,160,0,1778,1778,160,0,0,0,,,,2014-09-08 08:00,2014-09-30 17:00,,2014-07-09 08:00,2014-07-31 17:00,2014-07-09 08:00,2014-07-31 17:00,2014-07-09 08:00,2014-07-31 17:00,2014-09-08 08:00,2014-09-30 17:00,,PT_Normal,,,,,LrLVtLLVQhyeaibXIzahPg,,,,N,0,0,,,2013-02-16 15:52,2013-02-16 15:56,admin,admin
500821,6359,124508,13662,0,N,N,N,CP_Drtn,TT_Task,DT_FixedDUR2,TK_NotStart,DUKHCONP1BZ6ACFF4615,Installation AC Pipes,8178,368,24,160,0,2358,2358,160,0,0,0,,,,2014-08-11 08:00,2014-09-02 17:00,,2014-06-15 08:00,2014-07-07 17:00,2014-06-15 08:00,2014-07-07 17:00,2014-06-15 08:00,2014-07-07 17:00,2014-08-11 08:00,2014-09-02 17:00,,PT_Normal,,,,,XQO1veRGTnqt5q+bDiijkQ,,,,N,0,0,,,2013-02-16 15:52,2013-02-16 15:56,admin,admin
500822,6359,124508,13662,0,N,N,N,CP_Drtn,TT_Task,DT_FixedDUR2,TK_NotStart,DUKHCONP1BZ6ACFF4620,Fixing of Ventilation Equipments,8178,136,0,200,0,228,228,200,0,0,0,,,,2014-09-13 08:00,2014-10-13 17:00,,2014-08-24 08:00,2014-09-21 17:00,2014-08-24 08:00,2014-09-21 17:00,2014-08-24 08:00,2014-09-21 17:00,2014-09-13 08:00,2014-10-13 17:00,,PT_Normal,,,,,MixWYsXDQ866IzhEHkKfjw,,,,N,0,0,,,2013-02-16 15:52,2013-02-16 15:56,admin,admin
500823,6359,124508,13662,0,N,N,N,CP_Drtn,TT_Task,DT_FixedDUR2,TK_NotStart,DUKHCONP1BZ6ACFF4625,Fixing of Split AC,8178,136,0,160,0,710,710,160,0,0,0,,,,2014-10-04 08:00,2014-10-28 17:00,,2014-09-14 08:00,2014-10-06 17:00,2014-09-14 08:00,2014-10-06 17:00,2014-09-14 08:00,2014-10-06 17:00,2014-10-04 08:00,2014-10-28 17:00,,PT_Normal,,,,,0wRJhva3Su6O10dMMPASvA,,,,N,0,0,,,2013-02-16 15:52,2013-02-16 15:56,admin,admin
500824,6359,124509,13662,0,N,N,N,CP_Drtn,TT_Task,DT_FixedDUR2,TK_NotStart,DUKHCONP1BZ6ACRF4630,Installation of Refrigerant Pipes,8178,696,520,200,0,994,994,200,0,0,0,,,,2014-10-12 08:00,2014-11-09 17:00,,2014-06-26 08:00,2014-07-24 17:00,2014-06-26 08:00,2014-07-24 17:00,2014-06-26 08:00,2014-07-24 17:00,2014-10-12 08:00,2014-11-09 17:00,,PT_Normal,,,,,x3YbNHkETlOY5+b4bxoqSg,,,,N,0,0,,,2013-02-16 15:52,2013-02-16 15:56,admin,admin
500825,6359,124509,13662,0,N,N,N,CP_Drtn,TT_Task,DT_FixedDUR2,TK_NotStart,DUKHCONP1BZ6ACRF4635,Installation of Condensing Unit,8178,176,152,200,0,1420,1420,200,0,0,0,,,,2014-10-18 08:00,2014-11-15 17:00,,2014-09-20 08:00,2014-10-20 17:00,2014-09-20 08:00,2014-10-20 17:00,2014-09-20 08:00,2014-10-20 17:00,2014-10-18 08:00,2014-11-15 17:00,,PT_Normal,,,,,4DMFYhxgQ9uaEUp2qopM7A,,,,N,0,0,,,2013-02-16 15:52,2013-02-16 15:56,admin,admin
500826,6359,124510,13662,0,N,N,N,CP_Drtn,TT_Task,DT_FixedDUR2,TK_NotStart,DUKHCONP1BZ6ACGF4600,Installation AC Pipes,8178,640,224,160,0,2358,2358,160,0,0,0,,,,2014-08-05 08:00,2014-08-27 17:00,,2014-04-30 08:00,2014-05-22 17:00,2014-04-30 08:00,2014-05-22 17:00,2014-04-30 08:00,2014-05-22 17:00,2014-08-05 08:00,2014-08-27 17:00,,PT_Normal,,,,,7cvrQfaaRj2oCGnyr8s0bQ,,,,N,0,0,,,2013-02-16 15:52,2013-02-16 15:56,admin,admin
500827,6359,124510,13662,0,N,N,N,CP_Drtn,TT_Task,DT_FixedDUR2,TK_NotStart,DUKHCONP1BZ6ACGF4605,Fixing of Ventilation Equipments,8178,544,0,200,0,370,370,200,0,0,0,,,,2014-09-13 08:00,2014-10-13 17:00,,2014-06-22 08:00,2014-07-20 17:00,2014-06-22 08:00,2014-07-20 17:00,2014-06-22 08:00,2014-07-20 17:00,2014-09-13 08:00,2014-10-13 17:00,,PT_Normal,,,,,Syrq2Fs4Q32IkvYgqyX89Q,,,,N,0,0,,,2013-02-16 15:52,2013-02-16 15:56,admin,admin
500828,6359,124510,13662,0,N,N,N,CP_Drtn,TT_Task,DT_FixedDUR2,TK_NotStart,DUKHCONP1BZ6ACGF4610,Fixing of Split AC,8178,544,88,160,0,710,710,160,0,0,0,,,,2014-10-04 08:00,2014-10-28 17:00,,2014-07-13 08:00,2014-08-07 17:00,2014-07-13 08:00,2014-08-07 17:00,2014-07-13 08:00,2014-08-07 17:00,2014-10-04 08:00,2014-10-28 17:00,,PT_Normal,,,,,2LYY+VWkRD6vJQyAesGm0Q,,,,N,0,0,,,2013-02-16 15:52,2013-02-16 15:56,admin,admin
500829,6359,124512,13662,0,N,N,N,CP_Drtn,TT_Task,DT_FixedDUR2,TK_NotStart,DUKHCONP1BZ6PLFF4325,Installation of Plumbing pipes & testing,8178,24,0,144,0,1104,1104,144,0,0,0,,,,2014-05-26 08:00,2014-06-15 17:00,,2014-05-22 08:00,2014-06-11 17:00,2014-05-22 08:00,2014-06-11 17:00,2014-05-22 08:00,2014-06-11 17:00,2014-05-26 08:00,2014-06-15 17:00,,PT_Normal,,,,,3QjcIe1PSVyBEZqU1DNHoA,,,,N,0,0,,,2013-02-16 15:52,2013-02-16 15:56,admin,admin
500830,6359,124512,13662,0,N,N,N,CP_Drtn,TT_Task,DT_FixedDUR2,TK_NotStart,DUKHCONP1BZ6PLFF4330,Installation of Drainage pipes & testing,8178,240,216,144,0,414,414,144,0,0,0,,,,2014-06-26 08:00,2014-07-16 17:00,,2014-05-22 08:00,2014-06-11 17:00,2014-05-22 08:00,2014-06-11 17:00,2014-05-22 08:00,2014-06-11 17:00,2014-06-26 08:00,2014-07-16 17:00,,PT_Normal,,,,,cqV9C81+T7SGBvPs8om6ew,,,,N,0,0,,,2013-02-16 15:52,2013-02-16 15:56,admin,admin
500831,6359,124512,13662,0,N,N,N,CP_Drtn,TT_Task,DT_FixedDUR2,TK_NotStart,DUKHCONP1BZ6PLFF4335,Sanitary Fittings & Accessories,8178,152,0,160,0,252,252,160,0,0,0,,,,2014-09-28 08:00,2014-10-22 17:00,,2014-09-06 08:00,2014-09-28 17:00,2014-09-06 08:00,2014-09-28 17:00,2014-09-06 08:00,2014-09-28 17:00,2014-09-28 08:00,2014-10-22 17:00,,PT_Normal,,,,,Ts+h+pfpTHS6kzJW8+YyHw,,,,N,0,0,,,2013-02-16 15:52,2013-02-16 15:56,admin,admin
500832,6359,124512,13662,0,N,N,N,CP_Drtn,TT_Task,DT_FixedDUR2,TK_NotStart,DUKHCONP1BZ6PLFF4340,Installation of Water Heater,8178,152,0,120,0,168,168,120,0,0,0,,,,2014-10-12 08:00,2014-10-28 17:00,,2014-09-17 08:00,2014-10-04 17:00,2014-09-17 08:00,2014-10-04 17:00,2014-09-17 08:00,2014-10-04 17:00,2014-10-12 08:00,2014-10-28 17:00,,PT_Normal,,,,,FYMMgXNcStaytkfXW0KvjA,,,,N,0,0,,,2013-02-16 15:52,2013-02-16 15:56,admin,admin
500833,6359,124513,13662,0,N,N,N,CP_Drtn,TT_Task,DT_FixedDUR2,TK_NotStart,DUKHCONP1BZ6PLUG4300,Drainage / Storm Pipes in Grade Slab,8178,88,0,160,0,138,138,160,0,0,0,,,,2014-01-06 08:00,2014-01-28 17:00,,2013-12-24 08:00,2014-01-15 17:00,2013-12-24 08:00,2014-01-15 17:00,2013-12-24 08:00,2014-01-15 17:00,2014-01-06 08:00,2014-01-28 17:00,,PT_Normal,,,,,0UhiA83IRXK5EsiwzfnZwA,,,,N,0,0,,,2013-02-16 15:52,2013-02-16 15:56,admin,admin
500834,6359,124513,13662,0,N,N,N,CP_Drtn,TT_Task,DT_FixedDUR2,TK_NotStart,DUKHCONP1BZ6PLGF4305,Installation of Plumbing pipes & testing,8178,392,0,144,0,1104,1104,144,0,0,0,,,,2014-06-07 08:00,2014-06-26 17:00,,2014-04-10 08:00,2014-04-30 17:00,2014-04-10 08:00,2014-04-30 17:00,2014-04-10 08:00,2014-04-30 17:00,2014-06-07 08:00,2014-06-26 17:00,,PT_Normal,,,,,Vl6a9cLSSpOAwPUMcDuINQ,,,,N,0,0,,,2013-02-16 15:52,2013-02-16 15:56,admin,admin
500835,6359,124513,13662,0,N,N,N,CP_Drtn,TT_Task,DT_FixedDUR2,TK_NotStart,DUKHCONP1BZ6PLGF4310,Installation of Drainage pipes &testing,8178,416,112,144,0,414,414,144,0,0,0,,,,2014-06-10 08:00,2014-06-30 17:00,,2014-04-10 08:00,2014-04-30 17:00,2014-04-10 08:00,2014-04-30 17:00,2014-04-10 08:00,2014-04-30 17:00,2014-06-10 08:00,2014-06-30 17:00,,PT_Normal,,,,,heLoycgiR0m8XIAhWF94gg,,,,N,0,0,,,2013-02-16 15:52,2013-02-16 15:56,admin,admin
500836,6359,124513,13662,0,N,N,N,CP_Drtn,TT_Task,DT_FixedDUR2,TK_NotStart,DUKHCONP1BZ6PLGF4315,Sanitary Fittings & Accessories,8178,648,0,160,0,252,252,160,0,0,0,,,,2014-10-18 08:00,2014-11-09 17:00,,2014-07-09 08:00,2014-07-31 17:00,2014-07-09 08:00,2014-07-31 17:00,2014-07-09 08:00,2014-07-31 17:00,2014-10-18 08:00,2014-11-09 17:00,,PT_Normal,,,,,1MdvtlsXR3qUI6Yu1pF4fw,,,,N,0,0,,,2013-02-16 15:52,2013-02-16 15:56,admin,admin
500837,6359,124513,13662,0,N,N,N,CP_Drtn,TT_Task,DT_FixedDUR2,TK_NotStart,DUKHCONP1BZ6PLGF4320,Installation of Water Heater,8178,648,624,120,0,252,252,120,0,0,0,,,,2014-10-29 08:00,2014-11-15 17:00,,2014-07-21 08:00,2014-08-10 17:00,2014-07-21 08:00,2014-08-10 17:00,2014-07-21 08:00,2014-08-10 17:00,2014-10-29 08:00,2014-11-15 17:00,,PT_Normal,,,,,8fEEf+szQ4ysJoZiqz6rIw,,,,N,0,0,,,2013-02-16 15:52,2013-02-16 15:56,admin,admin
500838,6359,124514,13662,0,N,N,N,CP_Drtn,TT_Task,DT_FixedDUR2,TK_NotStart,DUKHCONP1BZ6PLRF4345,Installation of Plumbing pipes & fittings,8178,688,56,112,0,360,360,112,0,0,0,,,,2014-09-30 08:00,2014-10-18 17:00,,2014-06-18 08:00,2014-07-03 17:00,2014-06-18 08:00,2014-07-03 17:00,2014-06-18 08:00,2014-07-03 17:00,2014-09-30 08:00,2014-10-18 17:00,,PT_Normal,,,,,AGsujw3pTNOOfqI795rsOw,,,,N,0,0,,,2013-02-16 15:52,2013-02-16 15:56,admin,admin
500839,6359,124514,13662,0,N,N,N,CP_Drtn,TT_Task,DT_FixedDUR2,TK_NotStart,DUKHCONP1BZ6PLRF4350,Installation of Rain water Pipes,,632,224,120,0,0,0,120,0,0,0,,,,2014-10-12 08:00,2014-10-28 17:00,,2014-07-06 08:00,2014-07-22 17:00,2014-07-06 08:00,2014-07-22 17:00,2014-07-06 08:00,2014-07-22 17:00,2014-10-12 08:00,2014-10-28 17:00,,PT_Normal,,,,,6FLLKtABRiO7LYmRArH0DQ,,,,N,0,0,,,2013-02-16 15:52,2013-02-16 15:56,admin,admin
500840,6359,124514,13662,0,N,N,N,CP_Drtn,TT_Task,DT_FixedDUR2,TK_NotStart,DUKHCONP1BZ6PLRF4355,Roof  Water Tank Installation & Connections,8178,152,128,200,0,840,840,200,0,0,0,,,,2014-10-18 08:00,2014-11-15 17:00,,2014-09-23 08:00,2014-10-23 17:00,2014-09-23 08:00,2014-10-23 17:00,2014-09-23 08:00,2014-10-23 17:00,2014-10-18 08:00,2014-11-15 17:00,,PT_Normal,,,,,BqrzCwFURD2u/BHj6jSzaQ,,,,N,0,0,,,2013-02-16 15:52,2013-02-16 15:56,admin,admin
500841,6359,124517,13662,0,N,N,N,CP_Drtn,TT_Task,DT_FixedDUR2,TK_NotStart,DUKHCONP1BZ6STFF2020,Column-Rebar & Formwork,8166,88,0,200,0,4272,4272,200,0,0,0,,,,2014-03-16 08:00,2014-04-13 17:00,,2014-03-03 08:00,2014-03-31 17:00,2014-03-03 08:00,2014-03-31 17:00,2014-03-03 08:00,2014-03-31 17:00,2014-03-16 08:00,2014-04-13 17:00,,PT_Normal,,,,,C7YMzM00TdGPuEMtRwdhvA,,,,N,0,0,,,2013-02-16 15:52,2013-02-16 15:56,admin,admin
500842,6359,124517,13662,0,N,N,N,CP_Drtn,TT_Task,DT_FixedDUR2,TK_NotStart,DUKHCONP1BZ6STFF2025,Column-Concrete,8167,88,0,184,0,427,427,184,0,0,0,,,,2014-03-25 08:00,2014-04-20 17:00,,2014-03-12 08:00,2014-04-07 17:00,2014-03-12 08:00,2014-04-07 17:00,2014-03-12 08:00,2014-04-07 17:00,2014-03-25 08:00,2014-04-20 17:00,,PT_Normal,,,,,3rypGTTNSuiThg1IyuiQxQ,,,,N,0,0,,,2013-02-16 15:52,2013-02-16 15:56,admin,admin
500843,6359,124517,13662,0,N,N,N,CP_Drtn,TT_Task,DT_FixedDUR2,TK_NotStart,DUKHCONP1BZ6STFF2030,"Beam, Stairs ,Slab-Rebar & Formwork",8165,88,0,200,0,23850.75,23850.75,200,0,0,0,,,,2014-03-29 08:00,2014-04-26 17:00,,2014-03-16 08:00,2014-04-13 17:00,2014-03-16 08:00,2014-04-13 17:00,2014-03-16 08:00,2014-04-13 17:00,2014-03-29 08:00,2014-04-26 17:00,,PT_Normal,,,,,+ABaOB76RruO8KBcmRSwNg,,,,N,0,0,,,2013-02-16 15:52,2013-02-16 15:56,admin,admin
500844,6359,124517,13662,0,N,N,N,CP_Drtn,TT_Task,DT_FixedDUR2,TK_NotStart,DUKHCONP1BZ6STFF2035,"Beam, Stairs ,Slab-Concrete",8167,88,0,112,0,1610,1610,112,0,0,0,,,,2014-04-14 08:00,2014-04-29 17:00,,2014-04-01 08:00,2014-04-16 17:00,2014-04-01 08:00,2014-04-16 17:00,2014-04-01 08:00,2014-04-16 17:00,2014-04-14 08:00,2014-04-29 17:00,,PT_Normal,,,,,8TmIx4OrT/K0FaeYzMMaOg,,,,N,0,0,,,2013-02-16 15:52,2013-02-16 15:56,admin,admin
500845,6359,124518,13662,0,N,N,N,CP_Drtn,TT_Task,DT_FixedDUR2,TK_NotStart,DUKHCONP1BZ6STRF2040,Column-Rebar & Formwork,8166,104,0,144,0,1470,1470,144,0,0,0,,,,2014-04-22 08:00,2014-05-12 17:00,,2014-04-07 08:00,2014-04-27 17:00,2014-04-07 08:00,2014-04-27 17:00,2014-04-07 08:00,2014-04-27 17:00,2014-04-22 08:00,2014-05-12 17:00,,PT_Normal,,,,,qgJIonTZSam+DOwhIn302g,,,,N,0,0,,,2013-02-16 15:52,2013-02-16 15:56,admin,admin
500846,6359,124518,13662,0,N,N,N,CP_Drtn,TT_Task,DT_FixedDUR2,TK_NotStart,DUKHCONP1BZ6STRF2045,Column-Concrete,8167,104,0,136,0,101.5,101.5,136,0,0,0,,,,2014-04-26 08:00,2014-05-14 17:00,,2014-04-10 08:00,2014-04-29 17:00,2014-04-10 08:00,2014-04-29 17:00,2014-04-10 08:00,2014-04-29 17:00,2014-04-26 08:00,2014-05-14 17:00,,PT_Normal,,,,,riiCE0I0SPeGUkYxiAoceQ,,,,N,0,0,,,2013-02-16 15:52,2013-02-16 15:56,admin,admin
500847,6359,124518,13662,0,N,N,N,CP_Drtn,TT_Task,DT_FixedDUR2,TK_NotStart,DUKHCONP1BZ6STRF2050,Slab-Rebar & Formwork - Head Room,8165,104,0,160,0,4303.25,4303.25,160,0,0,0,,,,2014-04-28 08:00,2014-05-20 17:00,,2014-04-13 08:00,2014-05-05 17:00,2014-04-13 08:00,2014-05-05 17:00,2014-04-13 08:00,2014-05-05 17:00,2014-04-28 08:00,2014-05-20 17:00,,PT_Normal,,,,,14/33/9FScOWQO5M/Kw1Tg,,,,N,0,0,,,2013-02-16 15:52,2013-02-16 15:56,admin,admin
500848,6359,124518,13662,0,N,N,N,CP_Drtn,TT_Task,DT_FixedDUR2,TK_NotStart,DUKHCONP1BZ6STRF2055,Slab-Concrete-Head room,8167,104,0,104,0,350,350,104,0,0,0,,,,2014-05-12 08:00,2014-05-26 17:00,,2014-04-27 08:00,2014-05-11 17:00,2014-04-27 08:00,2014-05-11 17:00,2014-04-27 08:00,2014-05-11 17:00,2014-05-12 08:00,2014-05-26 17:00,,PT_Normal,,,,,PqjSbtg1RemAujDivgc1Wg,,,,N,0,0,,,2013-02-16 15:52,2013-02-16 15:56,admin,admin
500849,6359,124518,13662,0,N,N,N,CP_Drtn,TT_Task,DT_FixedDUR2,TK_NotStart,DUKHCONP1BZ6STRF2060,Construction of Parapets,8168,584,72,200,0,1468.75,1468.75,200,0,0,0,,,,2014-07-28 08:00,2014-08-28 17:00,,2014-05-04 08:00,2014-06-01 17:00,2014-05-04 08:00,2014-06-01 17:00,2014-05-04 08:00,2014-06-01 17:00,2014-07-28 08:00,2014-08-28 17:00,,PT_Normal,,,,,ZlIcUr/xQYSdHdcHDuEqzQ,,,,N,0,0,,,2013-02-16 15:52,2013-02-16 15:56,admin,admin
500850,6359,124518,13662,0,N,N,N,CP_Drtn,TT_Task,DT_FixedDUR2,TK_NotStart,DUKHCONP1BZ6STRF2065,Construction of up stands/Plinth,8165,624,0,200,0,687.75,687.75,200,0,0,0,,,,2014-08-23 08:00,2014-09-20 17:00,,2014-05-20 08:00,2014-06-17 17:00,2014-05-20 08:00,2014-06-17 17:00,2014-05-20 08:00,2014-06-17 17:00,2014-08-23 08:00,2014-09-20 17:00,,PT_Normal,,,,,SpqFGp8yRa+S9fWeYFDyiQ,,,,N,0,0,,,2013-02-16 15:52,2013-02-16 15:56,admin,admin
500851,6359,124519,13662,0,N,N,N,CP_Drtn,TT_Task,DT_FixedDUR2,TK_NotStart,DUKHCONP1BZ6STGF2000,Column-Rebar & Formwork,8165,88,0,200,0,6230,6230,200,0,0,0,,,,2014-02-01 08:00,2014-03-02 17:00,,2014-01-19 08:00,2014-02-17 17:00,2014-01-19 08:00,2014-02-17 17:00,2014-01-19 08:00,2014-02-17 17:00,2014-02-01 08:00,2014-03-02 17:00,,PT_Normal,,,,,OOQYAmELTWi2AghH5OTv6Q,,,,N,0,0,,,2013-02-16 15:52,2013-02-16 15:56,admin,admin
500852,6359,124519,13662,0,N,N,N,CP_Drtn,TT_Task,DT_FixedDUR2,TK_NotStart,DUKHCONP1BZ6STGF2005,Column-Concrete,8167,88,0,184,0,486.5,486.5,184,0,0,0,,,,2014-02-10 08:00,2014-03-09 17:00,,2014-01-28 08:00,2014-02-24 17:00,2014-01-28 08:00,2014-02-24 17:00,2014-01-28 08:00,2014-02-24 17:00,2014-02-10 08:00,2014-03-09 17:00,,PT_Normal,,,,,E+Kg7l+kSdyL/RRZmAHR9A,,,,N,0,0,,,2013-02-16 15:52,2013-02-16 15:56,admin,admin
500853,6359,124519,13662,0,N,N,N,CP_Drtn,TT_Task,DT_FixedDUR2,TK_NotStart,DUKHCONP1BZ6STGF2010,"Beam, Stairs ,Slab-Rebar & Formwork",8165,88,0,200,0,23402.75,23402.75,200,0,0,0,,,,2014-02-25 08:00,2014-03-25 17:00,,2014-02-12 08:00,2014-03-12 17:00,2014-02-12 08:00,2014-03-12 17:00,2014-02-12 08:00,2014-03-12 17:00,2014-02-25 08:00,2014-03-25 17:00,,PT_Normal,,,,,fq6ZK3RmTuKA0q70b3HEzg,,,,N,0,0,,,2013-02-16 15:52,2013-02-16 15:56,admin,admin
500854,6359,124519,13662,0,N,N,N,CP_Drtn,TT_Task,DT_FixedDUR2,TK_NotStart,DUKHCONP1BZ6STGF2015,"Beam, Stairs ,Slab-Concrete",8167,88,0,112,0,1820,1820,112,0,0,0,,,,2014-03-13 08:00,2014-03-29 17:00,,2014-03-01 08:00,2014-03-16 17:00,2014-03-01 08:00,2014-03-16 17:00,2014-03-01 08:00,2014-03-16 17:00,2014-03-13 08:00,2014-03-29 17:00,,PT_Normal,,,,,SSUrDxsZQBetoCO+GmovtA,,,,N,0,0,,,2013-02-16 15:52,2013-02-16 15:56,admin,admin
500855,6359,124521,13662,0,N,N,N,CP_Drtn,TT_Task,DT_FixedDUR2,TK_NotStart,DUKHCONP1BZ6STUG1010,Footing Blinding,8163,88,0,184,0,1309,1309,184,0,0,0,,,,2013-10-09 08:00,2013-11-06 17:00,,2013-09-26 08:00,2013-10-24 17:00,2013-09-26 08:00,2013-10-24 17:00,2013-09-26 08:00,2013-10-24 17:00,2013-10-09 08:00,2013-11-06 17:00,,PT_Normal,,,,,/hpDB+BlT3m6B68Gx76xAg,,,,N,0,0,,,2013-02-16 15:52,2013-02-16 15:56,admin,admin
500856,6359,124521,13662,0,N,N,N,CP_Drtn,TT_Task,DT_FixedDUR2,TK_NotStart,DUKHCONP1BZ6STUG1015,Footing Waterproofing & Screed,8164,88,0,200,0,1030.25,1030.25,200,0,0,0,,,,2013-10-15 08:00,2013-11-14 17:00,,2013-10-02 08:00,2013-11-02 17:00,2013-10-02 08:00,2013-11-02 17:00,2013-10-02 08:00,2013-11-02 17:00,2013-10-15 08:00,2013-11-14 17:00,,PT_Normal,,,,,URglp9p0SkW/+fNZLIhsrg,,,,N,0,0,,,2013-02-16 15:52,2013-02-16 15:56,admin,admin
500857,6359,124521,13662,0,N,N,N,CP_Drtn,TT_Task,DT_FixedDUR2,TK_NotStart,DUKHCONP1BZ6STUG1020,Construction of foundations,8165,88,0,160,0,9962.75,9962.75,160,0,0,0,,,,2013-11-02 08:00,2013-11-24 17:00,,2013-10-20 08:00,2013-11-11 17:00,2013-10-20 08:00,2013-11-11 17:00,2013-10-20 08:00,2013-11-11 17:00,2013-11-02 08:00,2013-11-24 17:00,,PT_Normal,,,,,hBfII0vmT6i+KUgdyY4edA,,,,N,0,0,,,2013-02-16 15:52,2013-02-16 15:56,admin,admin
500858,6359,124521,13662,0,N,N,N,CP_Drtn,TT_Task,DT_FixedDUR2,TK_NotStart,DUKHCONP1BZ6STUG1025,Construction of neck of columns,8165,88,0,200,0,2430.75,2430.75,200,0,0,0,,,,2013-11-11 08:00,2013-12-09 17:00,,2013-10-29 08:00,2013-11-26 17:00,2013-10-29 08:00,2013-11-26 17:00,2013-10-29 08:00,2013-11-26 17:00,2013-11-11 08:00,2013-12-09 17:00,,PT_Normal,,,,,fNzvrsJZReC/v8vJxoWInQ,,,,N,0,0,,,2013-02-16 15:52,2013-02-16 15:56,admin,admin
500859,6359,124521,13662,0,N,N,N,CP_Drtn,TT_Task,DT_FixedDUR2,TK_NotStart,DUKHCONP1BZ6STUG1030,Waterproofing Footing & Neck Column,8178,88,0,200,0,670,670,200,0,0,0,,,,2013-11-20 08:00,2013-12-19 17:00,,2013-11-07 08:00,2013-12-05 17:00,2013-11-07 08:00,2013-12-05 17:00,2013-11-07 08:00,2013-12-05 17:00,2013-11-20 08:00,2013-12-19 17:00,,PT_Normal,,,,,gS3sUv35TrOcnb203Y7XDA,,,,N,0,0,,,2013-02-16 15:52,2013-02-16 15:56,admin,admin
500860,6359,124521,13662,0,N,N,N,CP_Drtn,TT_Task,DT_FixedDUR2,TK_NotStart,DUKHCONP1BZ6STUG1035,Backfilling Upto Grade Beam Bottom,8177,88,0,200,0,1520,1520,200,1100,0,1100,,,,2013-12-02 08:00,2013-12-31 17:00,,2013-11-19 08:00,2013-12-17 17:00,2013-11-19 08:00,2013-12-17 17:00,2013-11-19 08:00,2013-12-17 17:00,2013-12-02 08:00,2013-12-31 17:00,,PT_Normal,,,,,C7B+tfwRR3O2Q/IiXkbnrQ,,,,N,0,0,,,2013-02-16 15:52,2013-02-16 15:56,admin,admin
500861,6359,124521,13662,0,N,N,N,CP_Drtn,TT_Task,DT_FixedDUR2,TK_NotStart,DUKHCONP1BZ6STUG1040,Construction of Grade Beams,8163,88,0,200,0,10120.75,10120.75,200,0,0,0,,,,2013-12-19 08:00,2014-01-16 17:00,,2013-12-05 08:00,2014-01-04 17:00,2013-12-05 08:00,2014-01-04 17:00,2013-12-05 08:00,2014-01-04 17:00,2013-12-19 08:00,2014-01-16 17:00,,PT_Normal,,,,,C/uWEzvgQx2G7D5JwRitDg,,,,N,0,0,,,2013-02-16 15:52,2013-02-16 15:56,admin,admin
500862,6359,124521,13662,0,N,N,N,CP_Drtn,TT_Task,DT_FixedDUR2,TK_NotStart,DUKHCONP1BZ6STUG1045,Construction of slab on grade,8163,88,0,200,0,6924.5,6924.5,200,0,0,0,,,,2014-01-15 08:00,2014-02-13 17:00,,2014-01-02 08:00,2014-01-30 17:00,2014-01-02 08:00,2014-01-30 17:00,2014-01-02 08:00,2014-01-30 17:00,2014-01-15 08:00,2014-02-13 17:00,,PT_Normal,,,,,V+i5g3ZFT4+LLKHtRUl4bA,,,,N,0,0,,,2013-02-16 15:52,2013-02-16 15:56,admin,admin
500863,6359,124521,13662,0,N,N,N,CP_Drtn,TT_Task,DT_FixedDUR2,TK_NotStart,DUKHCONP1BZ6STUG1000,Footing Excavation,8177,88,0,200,0,1791,1791,200,843,0,843,,,,2013-09-23 08:00,2013-10-23 17:00,,2013-09-10 08:00,2013-10-08 17:00,2013-09-10 08:00,2013-10-08 17:00,2013-09-10 08:00,2013-10-08 17:00,2013-09-23 08:00,2013-10-23 17:00,,PT_Normal,,,,,oBs4rhXwT6Oe8y3m/Jshsg,,,,N,0,0,,,2013-02-16 15:52,2013-02-16 15:56,admin,admin
500864,6359,124521,13662,0,N,N,N,CP_Drtn,TT_Task,DT_FixedDUR2,TK_NotStart,DUKHCONP1BZ6STUG1005,Footing Antitermite,8178,88,0,184,0,2326.5,2326.5,184,0,0,0,,,,2013-10-05 08:00,2013-11-02 17:00,,2013-09-22 08:00,2013-10-20 17:00,2013-09-22 08:00,2013-10-20 17:00,2013-09-22 08:00,2013-10-20 17:00,2013-10-05 08:00,2013-11-02 17:00,,PT_Normal,,,,,65KrBYFESH2aP+nYBczfQg,,,,N,0,0,,,2013-02-16 15:52,2013-02-16 15:56,admin,admin
500865,6359,124522,13662,0,N,N,N,CP_Drtn,TT_Task,DT_FixedDUR2,TK_NotStart,DUKHCONP1BZ6ACTC8000,Pre-Commissioning & Testing of AC Works,8178,24,24,200,0,1500,1500,200,0,0,0,,,,2014-11-16 08:00,2014-12-14 17:00,,2014-11-12 08:00,2014-12-10 17:00,2014-11-12 08:00,2014-12-10 17:00,2014-11-12 08:00,2014-12-10 17:00,2014-11-16 08:00,2014-12-14 17:00,,PT_Normal,,,,,x3iPb845Qs+34bjqv83sNA,,,,N,0,0,,,2013-02-16 15:52,2013-02-16 15:56,admin,admin
500866,6359,124522,13662,0,N,N,N,CP_Drtn,TT_Task,DT_FixedDUR2,TK_NotStart,DUKHCONP1BZ6ELTC8010,Pre-Commissioning & Testing of Electrical Works,8178,24,24,200,0,3000,3000,200,0,0,0,,,,2014-11-16 08:00,2014-12-14 17:00,,2014-11-12 08:00,2014-12-10 17:00,2014-11-12 08:00,2014-12-10 17:00,2014-11-12 08:00,2014-12-10 17:00,2014-11-16 08:00,2014-12-14 17:00,,PT_Normal,,,,,zOCM+MY8RoiaSJ6SWlx+UA,,,,N,0,0,,,2013-02-16 15:52,2013-02-16 15:56,admin,admin
500867,6359,124522,13662,0,N,N,N,CP_Drtn,TT_Task,DT_FixedDUR2,TK_NotStart,DUKHCONP1BZ6PLTC8005,Pre-Commissioning & Testing of Plumbing Works,8178,24,24,200,0,3000,3000,200,0,0,0,,,,2014-11-16 08:00,2014-12-14 17:00,,2014-11-12 08:00,2014-12-10 17:00,2014-11-12 08:00,2014-12-10 17:00,2014-11-12 08:00,2014-12-10 17:00,2014-11-16 08:00,2014-12-14 17:00,,PT_Normal,,,,,MjsoRrtzR/aoqZlNnZ7X2Q,,,,N,0,0,,,2013-02-16 15:52,2013-02-16 15:56,admin,admin
500868,6359,124526,13662,0,N,N,N,CP_Drtn,TT_Task,DT_FixedDUR2,TK_NotStart,DUKHCONP1BZ3STUG1000,Footing Excavation,8177,88,0,200,0,1433,1433,200,675,0,675,,,,2013-06-24 08:00,2013-07-22 17:00,,2013-06-11 08:00,2013-07-09 17:00,2013-06-11 08:00,2013-07-09 17:00,2013-06-11 08:00,2013-07-09 17:00,2013-06-24 08:00,2013-07-22 17:00,,PT_Normal,,,,,dVPTlL6hQiyKHG+g1olEGQ,,,,N,0,0,,,2013-02-16 15:52,2013-02-16 15:56,admin,admin
500869,6359,124526,13662,0,N,N,N,CP_Drtn,TT_Task,DT_FixedDUR2,TK_NotStart,DUKHCONP1BZ3STUG1005,Footing Antitermite,8178,88,0,184,0,1861.75,1861.75,184,0,0,0,,,,2013-07-06 08:00,2013-07-31 17:00,,2013-06-23 08:00,2013-07-18 17:00,2013-06-23 08:00,2013-07-18 17:00,2013-06-23 08:00,2013-07-18 17:00,2013-07-06 08:00,2013-07-31 17:00,,PT_Normal,,,,,9P+AZRivSYq8oJhRtZQ7JA,,,,N,0,0,,,2013-02-16 15:52,2013-02-16 15:56,admin,admin
500870,6359,124526,13662,0,N,N,N,CP_Drtn,TT_Task,DT_FixedDUR2,TK_NotStart,DUKHCONP1BZ3STUG1010,Footing Blinding,8163,88,0,184,0,1048.25,1048.25,184,0,0,0,,,,2013-07-10 08:00,2013-08-05 17:00,,2013-06-27 08:00,2013-07-23 17:00,2013-06-27 08:00,2013-07-23 17:00,2013-06-27 08:00,2013-07-23 17:00,2013-07-10 08:00,2013-08-05 17:00,,PT_Normal,,,,,j+hRMrmAS0ySTTtlW1qgsg,,,,N,0,0,,,2013-02-16 15:52,2013-02-16 15:56,admin,admin
500871,6359,124526,13662,0,N,N,N,CP_Drtn,TT_Task,DT_FixedDUR2,TK_NotStart,DUKHCONP1BZ3STUG1015,Footing Waterproofing & Screed,8164,88,0,200,0,825,825,200,0,0,0,,,,2013-07-16 08:00,2013-08-17 17:00,,2013-07-03 08:00,2013-07-31 17:00,2013-07-03 08:00,2013-07-31 17:00,2013-07-03 08:00,2013-07-31 17:00,2013-07-16 08:00,2013-08-17 17:00,,PT_Normal,,,,,RxSxELLoSvyLSG1HoK/wOA,,,,N,0,0,,,2013-02-16 15:52,2013-02-16 15:56,admin,admin
500872,6359,124526,13662,0,N,N,N,CP_Drtn,TT_Task,DT_FixedDUR2,TK_NotStart,DUKHCONP1BZ3STUG1020,Construction of foundations,8165,88,0,160,0,7969.5,7969.5,160,0,0,0,,,,2013-07-31 08:00,2013-08-26 17:00,,2013-07-18 08:00,2013-08-13 17:00,2013-07-18 08:00,2013-08-13 17:00,2013-07-18 08:00,2013-08-13 17:00,2013-07-31 08:00,2013-08-26 17:00,,PT_Normal,,,,,BROFChE+R/ykercCFl4IYg,,,,N,0,0,,,2013-02-16 15:52,2013-02-16 15:56,admin,admin
500873,6359,124526,13662,0,N,N,N,CP_Drtn,TT_Task,DT_FixedDUR2,TK_NotStart,DUKHCONP1BZ3STUG1025,Construction of neck of columns,8165,88,0,200,0,1946,1946,200,0,0,0,,,,2013-08-13 08:00,2013-09-10 17:00,,2013-07-28 08:00,2013-08-28 17:00,2013-07-28 08:00,2013-08-28 17:00,2013-07-28 08:00,2013-08-28 17:00,2013-08-13 08:00,2013-09-10 17:00,,PT_Normal,,,,,zNC9//0eRFSqiRfpxUdpmQ,,,,N,0,0,,,2013-02-16 15:52,2013-02-16 15:56,admin,admin
500874,6359,124526,13662,0,N,N,N,CP_Drtn,TT_Task,DT_FixedDUR2,TK_NotStart,DUKHCONP1BZ3STUG1035,Backfilling Upto Grade Beam Bottom,8177,88,0,200,0,1436,1436,200,1100,0,1100,,,,2013-09-03 08:00,2013-10-01 17:00,,2013-08-21 08:00,2013-09-18 17:00,2013-08-21 08:00,2013-09-18 17:00,2013-08-21 08:00,2013-09-18 17:00,2013-09-03 08:00,2013-10-01 17:00,,PT_Normal,,,,,SwSvpZa5SQy2YPcZx9190w,,,,N,0,0,,,2013-02-16 15:52,2013-02-16 15:56,admin,admin
500875,6359,124526,13662,0,N,N,N,CP_Drtn,TT_Task,DT_FixedDUR2,TK_NotStart,DUKHCONP1BZ3STUG1040,Construction of Grade Beams,8163,88,0,200,0,8096.25,8096.25,200,0,0,0,,,,2013-09-19 08:00,2013-10-20 17:00,,2013-09-07 08:00,2013-10-05 17:00,2013-09-07 08:00,2013-10-05 17:00,2013-09-07 08:00,2013-10-05 17:00,2013-09-19 08:00,2013-10-20 17:00,,PT_Normal,,,,,DdgRtbsCTSWC/8tQ0nK9fw,,,,N,0,0,,,2013-02-16 15:52,2013-02-16 15:56,admin,admin
500876,6359,124526,13662,0,N,N,N,CP_Drtn,TT_Task,DT_FixedDUR2,TK_NotStart,DUKHCONP1BZ3STUG1045,Construction of slab on grade,8163,88,0,200,0,5538.75,5538.75,200,0,0,0,,,,2013-10-16 08:00,2013-11-16 17:00,,2013-10-03 08:00,2013-11-03 17:00,2013-10-03 08:00,2013-11-03 17:00,2013-10-03 08:00,2013-11-03 17:00,2013-10-16 08:00,2013-11-16 17:00,,PT_Normal,,,,,2bPIrc+jSPKf7Ib8X+RmuA,,,,N,0,0,,,2013-02-16 15:52,2013-02-16 15:56,admin,admin
500877,6359,124526,13662,0,N,N,N,CP_Drtn,TT_Task,DT_FixedDUR2,TK_NotStart,DUKHCONP1BZ3STUG1030,Waterproofing Footing & Neck Column,8178,88,0,200,0,535.25,535.25,200,0,0,0,,,,2013-08-22 08:00,2013-09-19 17:00,,2013-08-06 08:00,2013-09-07 17:00,2013-08-06 08:00,2013-09-07 17:00,2013-08-06 08:00,2013-09-07 17:00,2013-08-22 08:00,2013-09-19 17:00,,PT_Normal,,,,,WUOT2sJkRcG09nMAU+sn6g,,,,N,0,0,,,2013-02-16 15:52,2013-02-16 15:56,admin,admin
500878,6359,124528,13662,0,N,N,N,CP_Drtn,TT_Task,DT_FixedDUR2,TK_NotStart,DUKHCONP1BZ3STGF2010,"Beam, Stairs ,Slab-Rebar & Formwork",8165,88,0,200,0,18721.5,18721.5,200,0,0,0,,,,2013-11-27 08:00,2013-12-26 17:00,,2013-11-14 08:00,2013-12-12 17:00,2013-11-14 08:00,2013-12-12 17:00,2013-11-14 08:00,2013-12-12 17:00,2013-11-27 08:00,2013-12-26 17:00,,PT_Normal,,,,,y2/cilsnRkGukenoIFLXBQ,,,,N,0,0,,,2013-02-16 15:52,2013-02-16 15:56,admin,admin
500879,6359,124528,13662,0,N,N,N,CP_Drtn,TT_Task,DT_FixedDUR2,TK_NotStart,DUKHCONP1BZ3STGF2015,"Beam, Stairs ,Slab-Concrete",8167,88,0,112,0,1456,1456,112,0,0,0,,,,2013-12-14 08:00,2013-12-30 17:00,,2013-12-01 08:00,2013-12-16 17:00,2013-12-01 08:00,2013-12-16 17:00,2013-12-01 08:00,2013-12-16 17:00,2013-12-14 08:00,2013-12-30 17:00,,PT_Normal,,,,,JZO5ZFhGRzq6HdvOp/GgCQ,,,,N,0,0,,,2013-02-16 15:52,2013-02-16 15:56,admin,admin
500880,6359,124528,13662,0,N,N,N,CP_Drtn,TT_Task,DT_FixedDUR2,TK_NotStart,DUKHCONP1BZ3STGF2000,Column-Rebar & Formwork,8165,88,0,200,0,4984,4984,200,0,0,0,,,,2013-11-04 08:00,2013-12-02 17:00,,2013-10-22 08:00,2013-11-19 17:00,2013-10-22 08:00,2013-11-19 17:00,2013-10-22 08:00,2013-11-19 17:00,2013-11-04 08:00,2013-12-02 17:00,,PT_Normal,,,,,qlpsNcKnSByGeWUGNMiLHQ,,,,N,0,0,,,2013-02-16 15:52,2013-02-16 15:56,admin,admin
500881,6359,124528,13662,0,N,N,N,CP_Drtn,TT_Task,DT_FixedDUR2,TK_NotStart,DUKHCONP1BZ3STGF2005,Column-Concrete,8167,88,0,184,0,388.5,388.5,184,0,0,0,,,,2013-11-13 08:00,2013-12-09 17:00,,2013-10-31 08:00,2013-11-26 17:00,2013-10-31 08:00,2013-11-26 17:00,2013-10-31 08:00,2013-11-26 17:00,2013-11-13 08:00,2013-12-09 17:00,,PT_Normal,,,,,upH2gnZ3Requ1tnjk3AYPg,,,,N,0,0,,,2013-02-16 15:52,2013-02-16 15:56,admin,admin
500882,6359,124529,13662,0,N,N,N,CP_Drtn,TT_Task,DT_FixedDUR2,TK_NotStart,DUKHCONP1BZ3STRF2045,Column-Concrete,8167,304,0,136,0,80.5,80.5,136,0,0,0,,,,2014-02-26 08:00,2014-03-17 17:00,,2014-01-12 08:00,2014-01-30 17:00,2014-01-12 08:00,2014-01-30 17:00,2014-01-12 08:00,2014-01-30 17:00,2014-02-26 08:00,2014-03-17 17:00,,PT_Normal,,,,,feti1IeeTKGxMzYDK0WMuA,,,,N,0,0,,,2013-02-16 15:52,2013-02-16 15:56,admin,admin
500883,6359,124529,13662,0,N,N,N,CP_Drtn,TT_Task,DT_FixedDUR2,TK_NotStart,DUKHCONP1BZ3STRF2050,Slab-Rebar & Formwork - Head Room,8165,304,0,160,0,3444,3444,160,0,0,0,,,,2014-03-01 08:00,2014-03-23 17:00,,2014-01-14 08:00,2014-02-05 17:00,2014-01-14 08:00,2014-02-05 17:00,2014-01-14 08:00,2014-02-05 17:00,2014-03-01 08:00,2014-03-23 17:00,,PT_Normal,,,,,v2LmjFRNR36tJvZjFfqJSA,,,,N,0,0,,,2013-02-16 15:52,2013-02-16 15:56,admin,admin
500884,6359,124529,13662,0,N,N,N,CP_Drtn,TT_Task,DT_FixedDUR2,TK_NotStart,DUKHCONP1BZ3STRF2055,Slab-Concrete-Head room,8167,304,0,104,0,280,280,104,0,0,0,,,,2014-03-15 08:00,2014-03-29 17:00,,2014-01-28 08:00,2014-02-12 17:00,2014-01-28 08:00,2014-02-12 17:00,2014-01-28 08:00,2014-02-12 17:00,2014-03-15 08:00,2014-03-29 17:00,,PT_Normal,,,,,jLu50V2FSWe6PaHUXVP3bg,,,,N,0,0,,,2013-02-16 15:52,2013-02-16 15:56,admin,admin
500885,6359,124529,13662,0,N,N,N,CP_Drtn,TT_Task,DT_FixedDUR2,TK_NotStart,DUKHCONP1BZ3STRF2060,Construction of Parapets,8168,488,80,200,0,1175,1175,200,0,0,0,,,,2014-04-14 08:00,2014-05-12 17:00,,2014-02-01 08:00,2014-03-02 17:00,2014-02-01 08:00,2014-03-02 17:00,2014-02-01 08:00,2014-03-02 17:00,2014-04-14 08:00,2014-05-12 17:00,,PT_Normal,,,,,8FaQSFIeRY+z+iLFzIW0zA,,,,N,0,0,,,2013-02-16 15:52,2013-02-16 15:56,admin,admin
500886,6359,124529,13662,0,N,N,N,CP_Drtn,TT_Task,DT_FixedDUR2,TK_NotStart,DUKHCONP1BZ3STRF2040,Column-Rebar & Formwork,8166,272,0,144,0,1176,1176,144,0,0,0,,,,2014-02-18 08:00,2014-03-10 17:00,,2014-01-08 08:00,2014-01-28 17:00,2014-01-08 08:00,2014-01-28 17:00,2014-01-08 08:00,2014-01-28 17:00,2014-02-18 08:00,2014-03-10 17:00,,PT_Normal,,,,,3gj1sFp/QneNP9U9rjVWfg,,,,N,0,0,,,2013-02-16 15:52,2013-02-16 15:56,admin,admin
500887,6359,124529,13662,0,N,N,N,CP_Drtn,TT_Task,DT_FixedDUR2,TK_NotStart,DUKHCONP1BZ3STRF2065,Construction of up stands/Plinth,8165,624,0,200,0,549.5,549.5,200,0,0,0,,,,2014-05-24 08:00,2014-06-21 17:00,,2014-02-22 08:00,2014-03-22 17:00,2014-02-22 08:00,2014-03-22 17:00,2014-02-22 08:00,2014-03-22 17:00,2014-05-24 08:00,2014-06-21 17:00,,PT_Normal,,,,,yXCzAMZOTQGnSfVG49iSkg,,,,N,0,0,,,2013-02-16 15:52,2013-02-16 15:56,admin,admin
500888,6359,124530,13662,0,N,N,N,CP_Drtn,TT_Task,DT_FixedDUR2,TK_NotStart,DUKHCONP1BZ3STFF2020,Column-Rebar & Formwork,8166,88,0,200,0,3418,3418,200,0,0,0,,,,2013-12-16 08:00,2014-01-14 17:00,,2013-12-03 08:00,2014-01-01 17:00,2013-12-03 08:00,2014-01-01 17:00,2013-12-03 08:00,2014-01-01 17:00,2013-12-16 08:00,2014-01-14 17:00,,PT_Normal,,,,,Qg5mK9Z7QMm8nbAAKb5MTw,,,,N,0,0,,,2013-02-16 15:52,2013-02-16 15:56,admin,admin
500889,6359,124530,13662,0,N,N,N,CP_Drtn,TT_Task,DT_FixedDUR2,TK_NotStart,DUKHCONP1BZ3STFF2025,Column-Concrete,8167,88,0,184,0,339.5,339.5,184,0,0,0,,,,2013-12-26 08:00,2014-01-21 17:00,,2013-12-12 08:00,2014-01-08 17:00,2013-12-12 08:00,2014-01-08 17:00,2013-12-12 08:00,2014-01-08 17:00,2013-12-26 08:00,2014-01-21 17:00,,PT_Normal,,,,,ZaEK59zhR+WNMLIcWVeaXg,,,,N,0,0,,,2013-02-16 15:52,2013-02-16 15:56,admin,admin
500890,6359,124530,13662,0,N,N,N,CP_Drtn,TT_Task,DT_FixedDUR2,TK_NotStart,DUKHCONP1BZ3STFF2030,"Beam, Stairs ,Slab-Rebar & Formwork",8165,88,0,200,0,19080.25,19080.25,200,0,0,0,,,,2013-12-30 08:00,2014-01-27 17:00,,2013-12-16 08:00,2014-01-14 17:00,2013-12-16 08:00,2014-01-14 17:00,2013-12-16 08:00,2014-01-14 17:00,2013-12-30 08:00,2014-01-27 17:00,,PT_Normal,,,,,OQM+4+UxTZiMNeisSkwvEg,,,,N,0,0,,,2013-02-16 15:52,2013-02-16 15:56,admin,admin
500891,6359,124530,13662,0,N,N,N,CP_Drtn,TT_Task,DT_FixedDUR2,TK_NotStart,DUKHCONP1BZ3STFF2035,"Beam, Stairs ,Slab-Concrete",8167,88,0,112,0,1288,1288,112,0,0,0,,,,2014-01-15 08:00,2014-01-30 17:00,,2014-01-02 08:00,2014-01-18 17:00,2014-01-02 08:00,2014-01-18 17:00,2014-01-02 08:00,2014-01-18 17:00,2014-01-15 08:00,2014-01-30 17:00,,PT_Normal,,,,,80hbc9FFTtG4ZtRJgJ7QEw,,,,N,0,0,,,2013-02-16 15:52,2013-02-16 15:56,admin,admin
500892,6359,124533,13662,0,N,N,N,CP_Drtn,TT_Task,DT_FixedDUR2,TK_NotStart,DUKHCONP1BZ3AREL3665,External Plastering,8169,608,0,200,0,12200,12200,200,0,0,0,,,,2014-06-17 08:00,2014-07-15 17:00,,2014-03-20 08:00,2014-04-17 17:00,2014-03-20 08:00,2014-04-17 17:00,2014-03-20 08:00,2014-04-17 17:00,2014-06-17 08:00,2014-07-15 17:00,,PT_Normal,,,,,wWMrgBD1Shus2liesScm/g,,,,N,0,0,,,2013-02-16 15:52,2013-02-16 15:56,admin,admin
500893,6359,124533,13662,0,N,N,N,CP_Drtn,TT_Task,DT_FixedDUR2,TK_NotStart,DUKHCONP1BZ3AREL3670,External stone cladding works,8170,608,0,160,0,936,936,160,0,0,0,,,,2014-07-05 08:00,2014-07-27 17:00,,2014-04-07 08:00,2014-04-29 17:00,2014-04-07 08:00,2014-04-29 17:00,2014-04-07 08:00,2014-04-29 17:00,2014-07-05 08:00,2014-07-27 17:00,,PT_Normal,,,,,8iFSgmstTrmosUo9tl+EXQ,,,,N,0,0,,,2013-02-16 15:52,2013-02-16 15:56,admin,admin
500894,6359,124533,13662,0,N,N,N,CP_Drtn,TT_Task,DT_FixedDUR2,TK_NotStart,DUKHCONP1BZ3AREL3675,GRC works,8178,608,0,160,0,550,550,160,0,0,0,,,,2014-07-10 08:00,2014-08-05 17:00,,2014-04-13 08:00,2014-05-05 17:00,2014-04-13 08:00,2014-05-05 17:00,2014-04-13 08:00,2014-05-05 17:00,2014-07-10 08:00,2014-08-05 17:00,,PT_Normal,,,,,s3TsmwhmQQq/F8GIH8neQw,,,,N,0,0,,,2013-02-16 15:52,2013-02-16 15:56,admin,admin
500895,6359,124533,13662,0,N,N,N,CP_Drtn,TT_Task,DT_FixedDUR2,TK_NotStart,DUKHCONP1BZ3AREL3680,External Painting,8178,608,40,160,0,4224,4224,160,0,0,0,,,,2014-07-22 08:00,2014-08-17 17:00,,2014-04-24 08:00,2014-05-17 17:00,2014-04-24 08:00,2014-05-17 17:00,2014-04-24 08:00,2014-05-17 17:00,2014-07-22 08:00,2014-08-17 17:00,,PT_Normal,,,,,BW+wo0G/QYWTI2SLnsuNwA,,,,N,0,0,,,2013-02-16 15:52,2013-02-16 15:56,admin,admin
500896,6359,124534,13662,0,N,N,N,CP_Drtn,TT_Task,DT_FixedDUR2,TK_NotStart,DUKHCONP1BZ3ARRF3630,Leveling Screed for Waterproofing,8164,624,0,200,0,711.5,711.5,200,0,0,0,,,,2014-06-04 08:00,2014-07-02 17:00,,2014-03-05 08:00,2014-04-02 17:00,2014-03-05 08:00,2014-04-02 17:00,2014-03-05 08:00,2014-04-02 17:00,2014-06-04 08:00,2014-07-02 17:00,,PT_Normal,,,,,CzXlypm5Se2e/wuZx+o/bg,,,,N,0,0,,,2013-02-16 15:52,2013-02-16 15:56,admin,admin
500897,6359,124534,13662,0,N,N,N,CP_Drtn,TT_Task,DT_FixedDUR2,TK_NotStart,DUKHCONP1BZ3ARRF3635,Laying of Waterproofing Membrane,8178,624,0,200,0,986.25,986.25,200,0,0,0,,,,2014-06-08 08:00,2014-07-06 17:00,,2014-03-09 08:00,2014-04-06 17:00,2014-03-09 08:00,2014-04-06 17:00,2014-03-09 08:00,2014-04-06 17:00,2014-06-08 08:00,2014-07-06 17:00,,PT_Normal,,,,,+OmUhwfZSt66q042iqFtxg,,,,N,0,0,,,2013-02-16 15:52,2013-02-16 15:56,admin,admin
500898,6359,124534,13662,0,N,N,N,CP_Drtn,TT_Task,DT_FixedDUR2,TK_NotStart,DUKHCONP1BZ3ARRF3640,Installation of Insulation & Protection,8178,624,0,200,0,1250.25,1250.25,200,0,0,0,,,,2014-06-12 08:00,2014-07-10 17:00,,2014-03-13 08:00,2014-04-10 17:00,2014-03-13 08:00,2014-04-10 17:00,2014-03-13 08:00,2014-04-10 17:00,2014-06-12 08:00,2014-07-10 17:00,,PT_Normal,,,,,DDNdcNE/SIS9FlpodGorDQ,,,,N,0,0,,,2013-02-16 15:52,2013-02-16 15:56,admin,admin
500899,6359,124534,13662,0,N,N,N,CP_Drtn,TT_Task,DT_FixedDUR2,TK_NotStart,DUKHCONP1BZ3ARRF3645,Lime Stone Chips & Paving slab Installation,8170,624,0,200,0,626,626,200,0,0,0,,,,2014-06-17 08:00,2014-07-15 17:00,,2014-03-18 08:00,2014-04-15 17:00,2014-03-18 08:00,2014-04-15 17:00,2014-03-18 08:00,2014-04-15 17:00,2014-06-17 08:00,2014-07-15 17:00,,PT_Normal,,,,,OTDxQBaZSVC+axJwWmLPSQ,,,,N,0,0,,,2013-02-16 15:52,2013-02-16 15:56,admin,admin
500900,6359,124534,13662,0,N,N,N,CP_Drtn,TT_Task,DT_FixedDUR2,TK_NotStart,DUKHCONP1BZ3ARRF3655,Installation of Pumps Protection cabinets,8178,624,40,160,0,616,616,160,0,0,0,,,,2014-07-10 08:00,2014-08-05 17:00,,2014-04-10 08:00,2014-05-03 17:00,2014-04-10 08:00,2014-05-03 17:00,2014-04-10 08:00,2014-05-03 17:00,2014-07-10 08:00,2014-08-05 17:00,,PT_Normal,,,,,8p1yzzinSt2LZiqA//WqBw,,,,N,0,0,,,2013-02-16 15:52,2013-02-16 15:56,admin,admin
500901,6359,124534,13662,0,N,N,N,CP_Drtn,TT_Task,DT_FixedDUR2,TK_NotStart,DUKHCONP1BZ3ARRF3650,Install. of Gal. Frame & Aluminum Slat Screen,8178,624,0,200,0,859.25,859.25,200,0,0,0,,,,2014-06-25 08:00,2014-07-23 17:00,,2014-03-26 08:00,2014-04-23 17:00,2014-03-26 08:00,2014-04-23 17:00,2014-03-26 08:00,2014-04-23 17:00,2014-06-25 08:00,2014-07-23 17:00,,PT_Normal,,,,,F+x3cMSzRmu9uy5lZ/aPRQ,,,,N,0,0,,,2013-02-16 15:52,2013-02-16 15:56,admin,admin
500902,6359,124534,13662,0,N,N,N,CP_Drtn,TT_Task,DT_FixedDUR2,TK_NotStart,DUKHCONP1BZ3ARRF3660,Installation of Access Ladder,8178,624,600,120,0,352,352,120,0,0,0,,,,2014-07-28 08:00,2014-08-17 17:00,,2014-04-28 08:00,2014-05-14 17:00,2014-04-28 08:00,2014-05-14 17:00,2014-04-28 08:00,2014-05-14 17:00,2014-07-28 08:00,2014-08-17 17:00,,PT_Normal,,,,,6FGxdsdOQdmTdLJXKtzA1w,,,,N,0,0,,,2013-02-16 15:52,2013-02-16 15:56,admin,admin
500903,6359,124536,13662,0,N,N,N,CP_Drtn,TT_Task,DT_FixedDUR2,TK_NotStart,DUKHCONP1BZ3ARFF3300,Block work,8168,24,0,200,0,7341,7341,200,0,0,0,,,,2014-02-09 08:00,2014-03-10 17:00,,2014-02-05 08:00,2014-03-06 17:00,2014-02-05 08:00,2014-03-06 17:00,2014-02-05 08:00,2014-03-06 17:00,2014-02-09 08:00,2014-03-10 17:00,,PT_Normal,,,,,GUNn72jqQsy2VtJbj1s9IA,,,,N,0,0,,,2013-02-16 15:52,2013-02-16 15:56,admin,admin
500904,6359,124536,13662,0,N,N,N,CP_Drtn,TT_Task,DT_FixedDUR2,TK_NotStart,DUKHCONP1BZ3ARFF3305,Plastering work,8169,24,0,200,0,7518.75,7518.75,200,0,0,0,,,,2014-03-09 08:00,2014-04-06 17:00,,2014-03-05 08:00,2014-04-02 17:00,2014-03-05 08:00,2014-04-02 17:00,2014-03-05 08:00,2014-04-02 17:00,2014-03-09 08:00,2014-04-06 17:00,,PT_Normal,,,,,8GOv7qw0QSitJj6OAlEejg,,,,N,0,0,,,2013-02-16 15:52,2013-02-16 15:56,admin,admin
500905,6359,124536,13662,0,N,N,N,CP_Drtn,TT_Task,DT_FixedDUR2,TK_NotStart,DUKHCONP1BZ3ARFF3310,Flooring screed,8164,160,136,168,0,1082.5,1082.5,168,0,0,0,,,,2014-04-06 08:00,2014-04-29 17:00,,2014-03-13 08:00,2014-04-06 17:00,2014-03-13 08:00,2014-04-06 17:00,2014-03-13 08:00,2014-04-06 17:00,2014-04-06 08:00,2014-04-29 17:00,,PT_Normal,,,,,9KXsqlfCT2qxvmMJ4kOQKg,,,,N,0,0,,,2013-02-16 15:52,2013-02-16 15:56,admin,admin
500906,6359,124536,13662,0,N,N,N,CP_Drtn,TT_Task,DT_FixedDUR2,TK_NotStart,DUKHCONP1BZ3ARFF3315,Wet area waterproofing,8178,24,0,120,0,1374,1374,120,0,0,0,,,,2014-03-30 08:00,2014-04-15 17:00,,2014-03-26 08:00,2014-04-12 17:00,2014-03-26 08:00,2014-04-12 17:00,2014-03-26 08:00,2014-04-12 17:00,2014-03-30 08:00,2014-04-15 17:00,,PT_Normal,,,,,8BI+rmJbTyOb9L65BAIq+A,,,,N,0,0,,,2013-02-16 15:52,2013-02-16 15:56,admin,admin
500907,6359,124536,13662,0,N,N,N,CP_Drtn,TT_Task,DT_FixedDUR2,TK_NotStart,DUKHCONP1BZ3ARFF3330,Paint First coat,8178,232,208,200,0,5256.25,5256.25,200,0,0,0,,,,2014-04-24 08:00,2014-05-22 17:00,,2014-03-22 08:00,2014-04-19 17:00,2014-03-22 08:00,2014-04-19 17:00,2014-03-22 08:00,2014-04-19 17:00,2014-04-24 08:00,2014-05-22 17:00,,PT_Normal,,,,,KPw1qhkRSp6XxUateU0IcQ,,,,N,0,0,,,2013-02-16 15:52,2013-02-16 15:56,admin,admin
500908,6359,124536,13662,0,N,N,N,CP_Drtn,TT_Task,DT_FixedDUR2,TK_NotStart,DUKHCONP1BZ3ARFF3320,Ceramic Wall Tiling,8170,24,0,200,0,1516,1516,200,0,0,0,,,,2014-04-08 08:00,2014-05-06 17:00,,2014-04-05 08:00,2014-05-03 17:00,2014-04-05 08:00,2014-05-03 17:00,2014-04-05 08:00,2014-05-03 17:00,2014-04-08 08:00,2014-05-06 17:00,,PT_Normal,,,,,6h98J8snRtidOKkjkI9oWg,,,,N,0,0,,,2013-02-16 15:52,2013-02-16 15:56,admin,admin
500909,6359,124536,13662,0,N,N,N,CP_Drtn,TT_Task,DT_FixedDUR2,TK_NotStart,DUKHCONP1BZ3ARFF3325,Porcelain Tile flooring,8170,24,0,200,0,1341,1341,200,0,0,0,,,,2014-04-17 08:00,2014-05-15 17:00,,2014-04-14 08:00,2014-05-12 17:00,2014-04-14 08:00,2014-05-12 17:00,2014-04-14 08:00,2014-05-12 17:00,2014-04-17 08:00,2014-05-15 17:00,,PT_Normal,,,,,fYwJa64tT3qTESz94ho8ZA,,,,N,0,0,,,2013-02-16 15:52,2013-02-16 15:56,admin,admin
500910,6359,124536,13662,0,N,N,N,CP_Drtn,TT_Task,DT_FixedDUR2,TK_NotStart,DUKHCONP1BZ3ARFF3335,Slate Tile Flooring & Skirting,8170,176,152,120,0,931.25,931.25,120,0,0,0,,,,2014-05-27 08:00,2014-06-12 17:00,,2014-05-01 08:00,2014-05-18 17:00,2014-05-01 08:00,2014-05-18 17:00,2014-05-01 08:00,2014-05-18 17:00,2014-05-27 08:00,2014-06-12 17:00,,PT_Normal,,,,,dOa8ke2sRfW4b7+FVl/kVw,,,,N,0,0,,,2013-02-16 15:52,2013-02-16 15:56,admin,admin
500911,6359,124536,13662,0,N,N,N,CP_Drtn,TT_Task,DT_FixedDUR2,TK_NotStart,DUKHCONP1BZ3ARFF3350,Granite - Stair case flooring & Skirting,8171,112,88,160,0,850,850,160,0,0,0,,,,2014-05-21 08:00,2014-06-12 17:00,,2014-05-05 08:00,2014-05-27 17:00,2014-05-05 08:00,2014-05-27 17:00,2014-05-05 08:00,2014-05-27 17:00,2014-05-21 08:00,2014-06-12 17:00,,PT_Normal,,,,,fEWgxDmgQByW1PtmYUTTUQ,,,,N,0,0,,,2013-02-16 15:52,2013-02-16 15:56,admin,admin
500912,6359,124536,13662,0,N,N,N,CP_Drtn,TT_Task,DT_FixedDUR2,TK_NotStart,DUKHCONP1BZ3ARFF3345,Fixing of Suspension systems,8178,24,0,160,0,1191,1191,160,0,0,0,,,,2014-05-08 08:00,2014-05-31 17:00,,2014-05-05 08:00,2014-05-27 17:00,2014-05-05 08:00,2014-05-27 17:00,2014-05-05 08:00,2014-05-27 17:00,2014-05-08 08:00,2014-05-31 17:00,,PT_Normal,,,,,+uqFHZwMToiF42Fl7f12aw,,,,N,0,0,,,2013-02-16 15:52,2013-02-16 15:56,admin,admin
500913,6359,124536,13662,0,N,N,N,CP_Drtn,TT_Task,DT_FixedDUR2,TK_NotStart,DUKHCONP1BZ3ARFF3360,Gypsum board false ceiling,8178,24,0,200,0,1191,1191,200,0,0,0,,,,2014-05-20 08:00,2014-06-17 17:00,,2014-05-17 08:00,2014-06-14 17:00,2014-05-17 08:00,2014-06-14 17:00,2014-05-17 08:00,2014-06-14 17:00,2014-05-20 08:00,2014-06-17 17:00,,PT_Normal,,,,,y7qM1YJZTZSJp1k+K9w7rA,,,,N,0,0,,,2013-02-16 15:52,2013-02-16 15:56,admin,admin
500914,6359,124536,13662,0,N,N,N,CP_Drtn,TT_Task,DT_FixedDUR2,TK_NotStart,DUKHCONP1BZ3ARFF3365,Wooden door,8178,24,0,120,0,176,176,120,0,0,0,,,,2014-06-04 08:00,2014-06-21 17:00,,2014-06-01 08:00,2014-06-17 17:00,2014-06-01 08:00,2014-06-17 17:00,2014-06-01 08:00,2014-06-17 17:00,2014-06-04 08:00,2014-06-21 17:00,,PT_Normal,,,,,viFWtxlnR8CS/yJJLqEzXA,,,,N,0,0,,,2013-02-16 15:52,2013-02-16 15:56,admin,admin
500915,6359,124536,13662,0,N,N,N,CP_Drtn,TT_Task,DT_FixedDUR2,TK_NotStart,DUKHCONP1BZ3ARFF3370,Aluminum Door,8178,24,0,160,0,132,132,160,0,0,0,,,,2014-06-12 08:00,2014-07-05 17:00,,2014-06-09 08:00,2014-07-01 17:00,2014-06-09 08:00,2014-07-01 17:00,2014-06-09 08:00,2014-07-01 17:00,2014-06-12 08:00,2014-07-05 17:00,,PT_Normal,,,,,0vQXGI3TTVGbiLmMcLMqTA,,,,N,0,0,,,2013-02-16 15:52,2013-02-16 15:56,admin,admin
500916,6359,124536,13662,0,N,N,N,CP_Drtn,TT_Task,DT_FixedDUR2,TK_NotStart,DUKHCONP1BZ3ARFF3380,Aluminum windows,8178,128,104,160,0,272.25,272.25,160,0,0,0,,,,2014-07-05 08:00,2014-07-27 17:00,,2014-06-16 08:00,2014-07-08 17:00,2014-06-16 08:00,2014-07-08 17:00,2014-06-16 08:00,2014-07-08 17:00,2014-07-05 08:00,2014-07-27 17:00,,PT_Normal,,,,,1VtL8vZoTz6r2AuQMz4GhA,,,,N,0,0,,,2013-02-16 15:52,2013-02-16 15:56,admin,admin
500917,6359,124536,13662,0,N,N,N,CP_Drtn,TT_Task,DT_FixedDUR2,TK_NotStart,DUKHCONP1BZ3ARFF3390,Installation of Granite Counter Top,8171,40,16,160,0,110,110,160,0,0,0,,,,2014-07-07 08:00,2014-07-29 17:00,,2014-07-01 08:00,2014-07-23 17:00,2014-07-01 08:00,2014-07-23 17:00,2014-07-01 08:00,2014-07-23 17:00,2014-07-07 08:00,2014-07-29 17:00,,PT_Normal,,,,,IjBYyABHQvaxssFt/C43jg,,,,N,0,0,,,2013-02-16 15:52,2013-02-16 15:56,admin,admin
500918,6359,124536,13662,0,N,N,N,CP_Drtn,TT_Task,DT_FixedDUR2,TK_NotStart,DUKHCONP1BZ3ARFF3385,Handrail &  Balustrade,8178,24,0,160,0,175,175,160,0,0,0,,,,2014-07-05 08:00,2014-07-27 17:00,,2014-07-01 08:00,2014-07-23 17:00,2014-07-01 08:00,2014-07-23 17:00,2014-07-01 08:00,2014-07-23 17:00,2014-07-05 08:00,2014-07-27 17:00,,PT_Normal,,,,,8XwWzGMARyi6CaJ6bs9j4Q,,,,N,0,0,,,2013-02-16 15:52,2013-02-16 15:56,admin,admin
500919,6359,124536,13662,0,N,N,N,CP_Drtn,TT_Task,DT_FixedDUR2,TK_NotStart,DUKHCONP1BZ3ARFF3395,Final Painting,8178,24,0,200,0,5256.25,5256.25,200,0,0,0,,,,2014-07-16 08:00,2014-08-17 17:00,,2014-07-13 08:00,2014-08-13 17:00,2014-07-13 08:00,2014-08-13 17:00,2014-07-13 08:00,2014-08-13 17:00,2014-07-16 08:00,2014-08-17 17:00,,PT_Normal,,,,,/befUOQsTNa4JxOQre+f1Q,,,,N,0,0,,,2013-02-16 15:52,2013-02-16 15:56,admin,admin
500920,6359,124536,13662,0,N,N,N,CP_Drtn,TT_Task,DT_FixedDUR2,TK_NotStart,DUKHCONP1BZ3ARFF3375,Carpentry & Joinery Works,8178,24,0,200,0,704,704,200,0,0,0,,,,2014-06-21 08:00,2014-07-19 17:00,,2014-06-17 08:00,2014-07-15 17:00,2014-06-17 08:00,2014-07-15 17:00,2014-06-17 08:00,2014-07-15 17:00,2014-06-21 08:00,2014-07-19 17:00,,PT_Normal,,,,,q9Dd77A2Ts6qRx5hFmrwcQ,,,,N,0,0,,,2013-02-16 15:52,2013-02-16 15:56,admin,admin
500921,6359,124537,13662,0,N,N,N,CP_Drtn,TT_Task,DT_FixedDUR2,TK_NotStart,DUKHCONP1BZ3ARGF3000,Block work,8168,392,0,200,0,9262.5,9262.5,200,0,0,0,,,,2014-02-23 08:00,2014-03-23 17:00,,2013-12-26 08:00,2014-01-23 17:00,2013-12-26 08:00,2014-01-23 17:00,2013-12-26 08:00,2014-01-23 17:00,2014-02-23 08:00,2014-03-23 17:00,,PT_Normal,,,,,4Frep068S7SoQD9XVj4Geg,,,,N,0,0,,,2013-02-16 15:52,2013-02-16 15:56,admin,admin
500922,6359,124537,13662,0,N,N,N,CP_Drtn,TT_Task,DT_FixedDUR2,TK_NotStart,DUKHCONP1BZ3ARGF3005,Plastering work,8169,392,0,200,0,11350,11350,200,0,0,0,,,,2014-03-17 08:00,2014-04-14 17:00,,2014-01-18 08:00,2014-02-16 17:00,2014-01-18 08:00,2014-02-16 17:00,2014-01-18 08:00,2014-02-16 17:00,2014-03-17 08:00,2014-04-14 17:00,,PT_Normal,,,,,opC0CHrmSzWbQmo+Qd/Brw,,,,N,0,0,,,2013-02-16 15:52,2013-02-16 15:56,admin,admin
500923,6359,124537,13662,0,N,N,N,CP_Drtn,TT_Task,DT_FixedDUR2,TK_NotStart,DUKHCONP1BZ3ARGF3010,Flooring screed,8164,456,64,168,0,2171.5,2171.5,168,0,0,0,,,,2014-04-03 08:00,2014-04-27 17:00,,2014-01-26 08:00,2014-02-19 17:00,2014-01-26 08:00,2014-02-19 17:00,2014-01-26 08:00,2014-02-19 17:00,2014-04-03 08:00,2014-04-27 17:00,,PT_Normal,,,,,wgBs3WaGROW/zUQVJK4qTg,,,,N,0,0,,,2013-02-16 15:52,2013-02-16 15:56,admin,admin
500924,6359,124537,13662,0,N,N,N,CP_Drtn,TT_Task,DT_FixedDUR2,TK_NotStart,DUKHCONP1BZ3ARGF3015,Wet area waterproofing & Protection Screed,8178,392,0,120,0,423.5,423.5,120,0,0,0,,,,2014-04-03 08:00,2014-04-20 17:00,,2014-02-04 08:00,2014-02-22 17:00,2014-02-04 08:00,2014-02-22 17:00,2014-02-04 08:00,2014-02-22 17:00,2014-04-03 08:00,2014-04-20 17:00,,PT_Normal,,,,,OWhKG/NDSue4egZTO2Ow0Q,,,,N,0,0,,,2013-02-16 15:52,2013-02-16 15:56,admin,admin
500925,6359,124537,13662,0,N,N,N,CP_Drtn,TT_Task,DT_FixedDUR2,TK_NotStart,DUKHCONP1BZ3ARGF3030,Paint First coat,8178,504,0,200,0,5936.25,5936.25,200,0,0,0,,,,2014-04-19 08:00,2014-05-17 17:00,,2014-02-03 08:00,2014-03-04 17:00,2014-02-03 08:00,2014-03-04 17:00,2014-02-03 08:00,2014-03-04 17:00,2014-04-19 08:00,2014-05-17 17:00,,PT_Normal,,,,,55KQrls+SfWfKaNH2xsbOg,,,,N,0,0,,,2013-02-16 15:52,2013-02-16 15:56,admin,admin
500926,6359,124537,13662,0,N,N,N,CP_Drtn,TT_Task,DT_FixedDUR2,TK_NotStart,DUKHCONP1BZ3ARGF3020,Ceramic Wall Tiling,8170,392,0,200,0,3534.75,3534.75,200,0,0,0,,,,2014-04-09 08:00,2014-05-07 17:00,,2014-02-10 08:00,2014-03-11 17:00,2014-02-10 08:00,2014-03-11 17:00,2014-02-10 08:00,2014-03-11 17:00,2014-04-09 08:00,2014-05-07 17:00,,PT_Normal,,,,,3uKLADNXQ5qDzkzivnQbHQ,,,,N,0,0,,,2013-02-16 15:52,2013-02-16 15:56,admin,admin
500927,6359,124537,13662,0,N,N,N,CP_Drtn,TT_Task,DT_FixedDUR2,TK_NotStart,DUKHCONP1BZ3ARGF3025,Porcelain Tile flooring,8170,392,0,200,0,1918.75,1918.75,200,0,0,0,,,,2014-04-15 08:00,2014-05-13 17:00,,2014-02-17 08:00,2014-03-17 17:00,2014-02-17 08:00,2014-03-17 17:00,2014-02-17 08:00,2014-03-17 17:00,2014-04-15 08:00,2014-05-13 17:00,,PT_Normal,,,,,9dc2a9MUTIi1J7BnnIrCTQ,,,,N,0,0,,,2013-02-16 15:52,2013-02-16 15:56,admin,admin
500928,6359,124537,13662,0,N,N,N,CP_Drtn,TT_Task,DT_FixedDUR2,TK_NotStart,DUKHCONP1BZ3ARGF3040,Cobble Tile flooring,8170,456,0,120,0,700,700,120,0,0,0,,,,2014-05-21 08:00,2014-06-07 17:00,,2014-03-16 08:00,2014-04-01 17:00,2014-03-16 08:00,2014-04-01 17:00,2014-03-16 08:00,2014-04-01 17:00,2014-05-21 08:00,2014-06-07 17:00,,PT_Normal,,,,,ch5fMYzeRsuwJawfYRJpZA,,,,N,0,0,,,2013-02-16 15:52,2013-02-16 15:56,admin,admin
500929,6359,124537,13662,0,N,N,N,CP_Drtn,TT_Task,DT_FixedDUR2,TK_NotStart,DUKHCONP1BZ3ARGF3035,Slate Tile Flooring & Skirting,8170,472,16,120,0,931.25,931.25,120,0,0,0,,,,2014-05-17 08:00,2014-06-02 17:00,,2014-03-09 08:00,2014-03-25 17:00,2014-03-09 08:00,2014-03-25 17:00,2014-03-09 08:00,2014-03-25 17:00,2014-05-17 08:00,2014-06-02 17:00,,PT_Normal,,,,,GvImFTiFSTeqWHKQHU3Hnw,,,,N,0,0,,,2013-02-16 15:52,2013-02-16 15:56,admin,admin
500930,6359,124537,13662,0,N,N,N,CP_Drtn,TT_Task,DT_FixedDUR2,TK_NotStart,DUKHCONP1BZ3ARGF3050,Granite - Stair case flooring & Skirting,8171,456,0,160,0,850,850,160,0,0,0,,,,2014-05-29 08:00,2014-06-21 17:00,,2014-03-24 08:00,2014-04-15 17:00,2014-03-24 08:00,2014-04-15 17:00,2014-03-24 08:00,2014-04-15 17:00,2014-05-29 08:00,2014-06-21 17:00,,PT_Normal,,,,,5zw7gz1DTJ6n6In+LBClxg,,,,N,0,0,,,2013-02-16 15:52,2013-02-16 15:56,admin,admin
500931,6359,124537,13662,0,N,N,N,CP_Drtn,TT_Task,DT_FixedDUR2,TK_NotStart,DUKHCONP1BZ3ARGF3045,Fixing of Suspension systems,8178,392,0,160,0,1320.5,1320.5,160,0,0,0,,,,2014-05-03 08:00,2014-05-25 17:00,,2014-03-06 08:00,2014-03-29 17:00,2014-03-06 08:00,2014-03-29 17:00,2014-03-06 08:00,2014-03-29 17:00,2014-05-03 08:00,2014-05-25 17:00,,PT_Normal,,,,,oBh5U/pCSBqjACivyeH9eA,,,,N,0,0,,,2013-02-16 15:52,2013-02-16 15:56,admin,admin
500932,6359,124537,13662,0,N,N,N,CP_Drtn,TT_Task,DT_FixedDUR2,TK_NotStart,DUKHCONP1BZ3ARGF3055,Aluminum tile false ceiling,8178,416,24,200,0,130,130,200,0,0,0,,,,2014-05-14 08:00,2014-06-11 17:00,,2014-03-15 08:00,2014-04-12 17:00,2014-03-15 08:00,2014-04-12 17:00,2014-03-15 08:00,2014-04-12 17:00,2014-05-14 08:00,2014-06-11 17:00,,PT_Normal,,,,,PspFmQieS1aBMLyIxpjyKQ,,,,N,0,0,,,2013-02-16 15:52,2013-02-16 15:56,admin,admin
500933,6359,124537,13662,0,N,N,N,CP_Drtn,TT_Task,DT_FixedDUR2,TK_NotStart,DUKHCONP1BZ3ARGF3060,Gypsum board false ceiling,8178,392,0,200,0,1216.3,1216.3,200,0,0,0,,,,2014-05-14 08:00,2014-06-11 17:00,,2014-03-18 08:00,2014-04-15 17:00,2014-03-18 08:00,2014-04-15 17:00,2014-03-18 08:00,2014-04-15 17:00,2014-05-14 08:00,2014-06-11 17:00,,PT_Normal,,,,,fP0A2UCUTB2BtDQ7xEVntA,,,,N,0,0,,,2013-02-16 15:52,2013-02-23 09:03,admin,admin
500934,6359,124537,13662,0,N,N,N,CP_Drtn,TT_Task,DT_FixedDUR2,TK_NotStart,DUKHCONP1BZ3ARGF3065,Wooden door & PVC Door,8178,456,0,120,0,660,660,120,0,0,0,,,,2014-06-12 08:00,2014-06-29 17:00,,2014-04-07 08:00,2014-04-23 17:00,2014-04-07 08:00,2014-04-23 17:00,2014-04-07 08:00,2014-04-23 17:00,2014-06-12 08:00,2014-06-29 17:00,,PT_Normal,,,,,0daKLYiRT+quj36fWUxpXg,,,,N,0,0,,,2013-02-16 15:52,2013-02-16 15:56,admin,admin
500935,6359,124537,13662,0,N,N,N,CP_Drtn,TT_Task,DT_FixedDUR2,TK_NotStart,DUKHCONP1BZ3ARGF3070,Aluminum doors,8178,456,0,120,0,88,88,120,0,0,0,,,,2014-06-18 08:00,2014-07-05 17:00,,2014-04-13 08:00,2014-04-29 17:00,2014-04-13 08:00,2014-04-29 17:00,2014-04-13 08:00,2014-04-29 17:00,2014-06-18 08:00,2014-07-05 17:00,,PT_Normal,,,,,1w4b5uNoQ1WqQXmUDj0MBA,,,,N,0,0,,,2013-02-16 15:52,2013-02-16 15:56,admin,admin
500936,6359,124537,13662,0,N,N,N,CP_Drtn,TT_Task,DT_FixedDUR2,TK_NotStart,DUKHCONP1BZ3ARGF3080,Aluminum windows,8178,536,40,160,0,257.5,257.5,160,0,0,0,,,,2014-07-07 08:00,2014-07-29 17:00,,2014-04-20 08:00,2014-05-12 17:00,2014-04-20 08:00,2014-05-12 17:00,2014-04-20 08:00,2014-05-12 17:00,2014-07-07 08:00,2014-07-29 17:00,,PT_Normal,,,,,Vrx0d7zcSCuuJY1ZN4+FdQ,,,,N,0,0,,,2013-02-16 15:52,2013-02-16 15:56,admin,admin
500937,6359,124537,13662,0,N,N,N,CP_Drtn,TT_Task,DT_FixedDUR2,TK_NotStart,DUKHCONP1BZ3ARGF3090,Installation of Granite Counter Top,8171,456,0,120,0,242,242,120,0,0,0,,,,2014-07-07 08:00,2014-07-23 17:00,,2014-05-01 08:00,2014-05-18 17:00,2014-05-01 08:00,2014-05-18 17:00,2014-05-01 08:00,2014-05-18 17:00,2014-07-07 08:00,2014-07-23 17:00,,PT_Normal,,,,,VL0HtX2FSL6rQZGKjU4vWg,,,,N,0,0,,,2013-02-16 15:52,2013-02-16 15:56,admin,admin
500938,6359,124537,13662,0,N,N,N,CP_Drtn,TT_Task,DT_FixedDUR2,TK_NotStart,DUKHCONP1BZ3ARGF3085,S.S.Balustrade,8178,496,40,160,0,175,175,160,0,0,0,,,,2014-07-08 08:00,2014-07-30 17:00,,2014-04-27 08:00,2014-05-19 17:00,2014-04-27 08:00,2014-05-19 17:00,2014-04-27 08:00,2014-05-19 17:00,2014-07-08 08:00,2014-07-30 17:00,,PT_Normal,,,,,ZDSwb+ThSeKArX8ew6ViDQ,,,,N,0,0,,,2013-02-16 15:52,2013-02-16 15:56,admin,admin
500939,6359,124537,13662,0,N,N,N,CP_Drtn,TT_Task,DT_FixedDUR2,TK_NotStart,DUKHCONP1BZ3ARGF3095,Final Painting,8178,456,0,200,0,5936.25,5936.25,200,0,0,0,,,,2014-07-16 08:00,2014-08-17 17:00,,2014-05-11 08:00,2014-06-08 17:00,2014-05-11 08:00,2014-06-08 17:00,2014-05-11 08:00,2014-06-08 17:00,2014-07-16 08:00,2014-08-17 17:00,,PT_Normal,,,,,flKAUynyRv2u/RdR3XJKEg,,,,N,0,0,,,2013-02-16 15:52,2013-02-16 15:56,admin,admin
500940,6359,124537,13662,0,N,N,N,CP_Drtn,TT_Task,DT_FixedDUR2,TK_NotStart,DUKHCONP1BZ3ARGF3075,Carpentry & Joinery Works,8178,456,0,160,0,528,528,160,0,0,0,,,,2014-06-24 08:00,2014-07-16 17:00,,2014-04-19 08:00,2014-05-11 17:00,2014-04-19 08:00,2014-05-11 17:00,2014-04-19 08:00,2014-05-11 17:00,2014-06-24 08:00,2014-07-16 17:00,,PT_Normal,,,,,PhbzBchfTqmlrv9muuCZWA,,,,N,0,0,,,2013-02-16 15:52,2013-02-16 15:56,admin,admin
500941,6359,124538,13662,0,N,N,N,CP_Drtn,TT_Task,DT_FixedDUR2,TK_NotStart,DUKHCONP1BZ3ARRF3600,Block work,8168,624,0,160,0,697.25,697.25,160,0,0,0,,,,2014-05-25 08:00,2014-06-16 17:00,,2014-02-23 08:00,2014-03-17 17:00,2014-02-23 08:00,2014-03-17 17:00,2014-02-23 08:00,2014-03-17 17:00,2014-05-25 08:00,2014-06-16 17:00,,PT_Normal,,,,,8H1R8lzlQLSR9NHouMk4tA,,,,N,0,0,,,2013-02-16 15:52,2013-02-16 15:56,admin,admin
500942,6359,124538,13662,0,N,N,N,CP_Drtn,TT_Task,DT_FixedDUR2,TK_NotStart,DUKHCONP1BZ3ARRF3605,Plastering work,8169,624,0,160,0,3833,3833,160,0,0,0,,,,2014-06-05 08:00,2014-06-28 17:00,,2014-03-06 08:00,2014-03-29 17:00,2014-03-06 08:00,2014-03-29 17:00,2014-03-06 08:00,2014-03-29 17:00,2014-06-05 08:00,2014-06-28 17:00,,PT_Normal,,,,,5tFIkmbOQ/WiEKqFdaFoaQ,,,,N,0,0,,,2013-02-16 15:52,2013-02-16 15:56,admin,admin
500943,6359,124538,13662,0,N,N,N,CP_Drtn,TT_Task,DT_FixedDUR2,TK_NotStart,DUKHCONP1BZ3ARRF3610,Flooring screed,8164,624,0,120,0,154,154,120,0,0,0,,,,2014-06-23 08:00,2014-07-09 17:00,,2014-03-24 08:00,2014-04-09 17:00,2014-03-24 08:00,2014-04-09 17:00,2014-03-24 08:00,2014-04-09 17:00,2014-06-23 08:00,2014-07-09 17:00,,PT_Normal,,,,,yravlzr9SpaY6Kjfw0wRBQ,,,,N,0,0,,,2013-02-16 15:52,2013-02-16 15:56,admin,admin
500944,6359,124538,13662,0,N,N,N,CP_Drtn,TT_Task,DT_FixedDUR2,TK_NotStart,DUKHCONP1BZ3ARRF3695,Painting -Storage area,8178,624,0,160,0,1640,1640,160,0,0,0,,,,2014-07-05 08:00,2014-07-27 17:00,,2014-04-05 08:00,2014-04-27 17:00,2014-04-05 08:00,2014-04-27 17:00,2014-04-05 08:00,2014-04-27 17:00,2014-07-05 08:00,2014-07-27 17:00,,PT_Normal,,,,,C1mYJiMuT6eLsGXlm3qsAQ,,,,N,0,0,,,2013-02-16 15:52,2013-02-16 15:56,admin,admin
500945,6359,124538,13662,0,N,N,N,CP_Drtn,TT_Task,DT_FixedDUR2,TK_NotStart,DUKHCONP1BZ3ARRF3620,Epoxy Painting -Storage area,8178,624,0,120,0,48.5,48.5,120,0,0,0,,,,2014-07-22 08:00,2014-08-11 17:00,,2014-04-22 08:00,2014-05-08 17:00,2014-04-22 08:00,2014-05-08 17:00,2014-04-22 08:00,2014-05-08 17:00,2014-07-22 08:00,2014-08-11 17:00,,PT_Normal,,,,,o3mcdyLaTqq0WPBWPhL69A,,,,N,0,0,,,2013-02-16 15:52,2013-02-16 15:56,admin,admin
500946,6359,124539,13662,0,N,N,N,CP_Drtn,TT_Task,DT_FixedDUR2,TK_NotStart,DUKHCONP1BZ3ACTC8000,Pre-Commissioning & Testing of AC Works,8178,24,0,200,0,1500,1500,200,0,0,0,,,,2014-08-18 08:00,2014-09-15 17:00,,2014-08-14 08:00,2014-09-11 17:00,2014-08-14 08:00,2014-09-11 17:00,2014-08-14 08:00,2014-09-11 17:00,2014-08-18 08:00,2014-09-15 17:00,,PT_Normal,,,,,0S6JgYoNRPC6ULHV5AQRVQ,,,,N,0,0,,,2013-02-16 15:52,2013-02-16 15:56,admin,admin
500947,6359,124539,13662,0,N,N,N,CP_Drtn,TT_Task,DT_FixedDUR2,TK_NotStart,DUKHCONP1BZ3ELTC8010,Pre-Commissioning & Testing of Electrical Works,8178,24,0,200,0,3000,3000,200,0,0,0,,,,2014-08-18 08:00,2014-09-15 17:00,,2014-08-14 08:00,2014-09-11 17:00,2014-08-14 08:00,2014-09-11 17:00,2014-08-14 08:00,2014-09-11 17:00,2014-08-18 08:00,2014-09-15 17:00,,PT_Normal,,,,,JOg2Epd5TZahR1M5Z22j3w,,,,N,0,0,,,2013-02-16 15:52,2013-02-16 15:56,admin,admin
500948,6359,124539,13662,0,N,N,N,CP_Drtn,TT_Task,DT_FixedDUR2,TK_NotStart,DUKHCONP1BZ3PLTC8005,Pre-Commissioning & Testing of Plumbing Works,8178,24,0,200,0,3000,3000,200,0,0,0,,,,2014-08-18 08:00,2014-09-15 17:00,,2014-08-14 08:00,2014-09-11 17:00,2014-08-14 08:00,2014-09-11 17:00,2014-08-14 08:00,2014-09-11 17:00,2014-08-18 08:00,2014-09-15 17:00,,PT_Normal,,,,,uoNUk/PtQHWm3VqVTWdm5w,,,,N,0,0,,,2013-02-16 15:52,2013-02-16 15:56,admin,admin
500949,6359,124542,13662,0,N,N,N,CP_Drtn,TT_Task,DT_FixedDUR2,TK_NotStart,DUKHCONP1BZ3ELFF4035,Fixing of wall conduits & switch socket boxes,8178,128,0,200,0,2579.2,2579.2,200,0,0,0,,,,2014-03-03 08:00,2014-03-31 17:00,,2014-02-12 08:00,2014-03-12 17:00,2014-02-12 08:00,2014-03-12 17:00,2014-02-12 08:00,2014-03-12 17:00,2014-03-03 08:00,2014-03-31 17:00,,PT_Normal,,,,,9anm/Xl5SWuYNuX2ZWpUhw,,,,N,0,0,,,2013-02-16 15:52,2013-02-16 15:56,admin,admin
500950,6359,124542,13662,0,N,N,N,CP_Drtn,TT_Task,DT_FixedDUR2,TK_NotStart,DUKHCONP1BZ3ELFF4040,Cable tray & trunking installation,8178,368,0,160,0,3180.8,3180.8,160,0,0,0,,,,2014-04-19 08:00,2014-05-11 17:00,,2014-02-24 08:00,2014-03-18 17:00,2014-02-24 08:00,2014-03-18 17:00,2014-02-24 08:00,2014-03-18 17:00,2014-04-19 08:00,2014-05-11 17:00,,PT_Normal,,,,,kEgThC29S+qzmhNbMBWN/g,,,,N,0,0,,,2013-02-16 15:52,2013-02-16 15:56,admin,admin
500951,6359,124542,13662,0,N,N,N,CP_Drtn,TT_Task,DT_FixedDUR2,TK_NotStart,DUKHCONP1BZ3ELFF4045,Installation of wiring & Main Cabling,8178,368,0,200,0,636.8,636.8,200,0,0,0,,,,2014-04-27 08:00,2014-05-25 17:00,,2014-03-04 08:00,2014-04-01 17:00,2014-03-04 08:00,2014-04-01 17:00,2014-03-04 08:00,2014-04-01 17:00,2014-04-27 08:00,2014-05-25 17:00,,PT_Normal,,,,,S7K3p0n5RWyxvKH06lr3/Q,,,,N,0,0,,,2013-02-16 15:52,2013-02-23 09:03,admin,admin
500952,6359,124542,13662,0,N,N,N,CP_Drtn,TT_Task,DT_FixedDUR2,TK_NotStart,DUKHCONP1BZ3ELFF4060,"Installation  of DBS,MCCB Accessories.",8178,24,0,160,0,454.4,454.4,160,0,0,0,,,,2014-06-04 08:00,2014-06-26 17:00,,2014-06-01 08:00,2014-06-23 17:00,2014-06-01 08:00,2014-06-23 17:00,2014-06-01 08:00,2014-06-23 17:00,2014-06-04 08:00,2014-06-26 17:00,,PT_Normal,,,,,MVenBCNrT5+sMbEic6U7RA,,,,N,0,0,,,2013-02-16 15:52,2013-02-16 15:56,admin,admin
500953,6359,124542,13662,0,N,N,N,CP_Drtn,TT_Task,DT_FixedDUR2,TK_NotStart,DUKHCONP1BZ3ELFF4065,Installation of Lighting fixtures & Accessories,8178,24,0,200,0,3302.4,3302.4,200,0,0,0,,,,2014-06-17 08:00,2014-07-15 17:00,,2014-06-14 08:00,2014-07-12 17:00,2014-06-14 08:00,2014-07-12 17:00,2014-06-14 08:00,2014-07-12 17:00,2014-06-17 08:00,2014-07-15 17:00,,PT_Normal,,,,,HiRaln6zRpiVD5c+mQy6FQ,,,,N,0,0,,,2013-02-16 15:52,2013-02-16 15:56,admin,admin
500954,6359,124542,13662,0,N,N,N,CP_Drtn,TT_Task,DT_FixedDUR2,TK_NotStart,DUKHCONP1BZ3ELFF4055,Install. of CAMS & Fire Fighting Accessories,8178,360,0,200,0,4569.6,4569.6,200,0,0,0,,,,2014-07-16 08:00,2014-08-17 17:00,,2014-05-25 08:00,2014-06-22 17:00,2014-05-25 08:00,2014-06-22 17:00,2014-05-25 08:00,2014-06-22 17:00,2014-07-16 08:00,2014-08-17 17:00,,PT_Normal,,,,,lc9WrvLXQ++p/7qzMQPCgQ,,,,N,0,0,,,2013-02-16 15:52,2013-02-16 15:56,admin,admin
500955,6359,124542,13662,0,N,N,N,CP_Drtn,TT_Task,DT_FixedDUR2,TK_NotStart,DUKHCONP1BZ3ELFF4050,Installation of Telephone System,8178,200,176,200,0,1422.4,1422.4,200,0,0,0,,,,2014-06-21 08:00,2014-07-19 17:00,,2014-05-22 08:00,2014-06-19 17:00,2014-05-22 08:00,2014-06-19 17:00,2014-05-22 08:00,2014-06-19 17:00,2014-06-21 08:00,2014-07-19 17:00,,PT_Normal,,,,,TJDUFwsrQlOaOnnmiDC5mA,,,,N,0,0,,,2013-02-16 15:52,2013-02-16 15:56,admin,admin
500956,6359,124543,13662,0,N,N,N,CP_Drtn,TT_Task,DT_FixedDUR2,TK_NotStart,DUKHCONP1BZ3ELGF4000,Fixing of wall conduits & switch socket boxes,8178,464,0,200,0,2579.2,2579.2,200,0,0,0,,,,2014-03-11 08:00,2014-04-08 17:00,,2014-01-01 08:00,2014-01-29 17:00,2014-01-01 08:00,2014-01-29 17:00,2014-01-01 08:00,2014-01-29 17:00,2014-03-11 08:00,2014-04-08 17:00,,PT_Normal,,,,,u26nUwy2QOunl+FiT97mOg,,,,N,0,0,,,2013-02-16 15:52,2013-02-16 15:56,admin,admin
500957,6359,124543,13662,0,N,N,N,CP_Drtn,TT_Task,DT_FixedDUR2,TK_NotStart,DUKHCONP1BZ3ELGF4005,Cable tray & trunking installation,8178,608,0,160,0,3180.8,3180.8,160,0,0,0,,,,2014-04-13 08:00,2014-05-05 17:00,,2014-01-13 08:00,2014-02-04 17:00,2014-01-13 08:00,2014-02-04 17:00,2014-01-13 08:00,2014-02-04 17:00,2014-04-13 08:00,2014-05-05 17:00,,PT_Normal,,,,,z7+wDjL1R++s0eeINZ5MnQ,,,,N,0,0,,,2013-02-16 15:52,2013-02-16 15:56,admin,admin
500958,6359,124543,13662,0,N,N,N,CP_Drtn,TT_Task,DT_FixedDUR2,TK_NotStart,DUKHCONP1BZ3ELGF4010,Installation of wiring & Main Cabling,8178,608,216,200,0,636.8,636.8,200,0,0,0,,,,2014-04-21 08:00,2014-05-19 17:00,,2014-01-21 08:00,2014-02-19 17:00,2014-01-21 08:00,2014-02-19 17:00,2014-01-21 08:00,2014-02-19 17:00,2014-04-21 08:00,2014-05-19 17:00,,PT_Normal,,,,,Hfoxf67TQOCmW8jxON7tUw,,,,N,0,0,,,2013-02-16 15:52,2013-02-23 09:03,admin,admin
500959,6359,124543,13662,0,N,N,N,CP_Drtn,TT_Task,DT_FixedDUR2,TK_NotStart,DUKHCONP1BZ3ELGF4020,"Installation  of DBS,MCCB Accessories.",8178,392,0,160,0,454.4,454.4,160,0,0,0,,,,2014-05-28 08:00,2014-06-19 17:00,,2014-04-01 08:00,2014-04-23 17:00,2014-04-01 08:00,2014-04-23 17:00,2014-04-01 08:00,2014-04-23 17:00,2014-05-28 08:00,2014-06-19 17:00,,PT_Normal,,,,,Fhx05GBhRSGwrzNK+3do2A,,,,N,0,0,,,2013-02-16 15:52,2013-02-16 15:56,admin,admin
500960,6359,124543,13662,0,N,N,N,CP_Drtn,TT_Task,DT_FixedDUR2,TK_NotStart,DUKHCONP1BZ3ELGF4015,Install. of CAMS & Fire Fighting Accessories,8178,568,0,200,0,4569.6,4569.6,200,0,0,0,,,,2014-06-17 08:00,2014-07-15 17:00,,2014-03-26 08:00,2014-04-23 17:00,2014-03-26 08:00,2014-04-23 17:00,2014-03-26 08:00,2014-04-23 17:00,2014-06-17 08:00,2014-07-15 17:00,,PT_Normal,,,,,Pin+sHW8TPOmz7c56Xmq6A,,,,N,0,0,,,2013-02-16 15:52,2013-02-16 15:56,admin,admin
500961,6359,124543,13662,0,N,N,N,CP_Drtn,TT_Task,DT_FixedDUR2,TK_NotStart,DUKHCONP1BZ3ELGF4030,Installation of Telephone System,8178,392,40,160,0,1422.4,1422.4,160,0,0,0,,,,2014-06-09 08:00,2014-07-01 17:00,,2014-04-13 08:00,2014-05-05 17:00,2014-04-13 08:00,2014-05-05 17:00,2014-04-13 08:00,2014-05-05 17:00,2014-06-09 08:00,2014-07-01 17:00,,PT_Normal,,,,,/bo8lYQhTqeDd/KzClEM6g,,,,N,0,0,,,2013-02-16 15:52,2013-02-16 15:56,admin,admin
500962,6359,124543,13662,0,N,N,N,CP_Drtn,TT_Task,DT_FixedDUR2,TK_NotStart,DUKHCONP1BZ3ELGF4025,Installation of Lighting fixtures & Accessories,8178,408,0,200,0,3302.4,3302.4,200,0,0,0,,,,2014-06-11 08:00,2014-07-09 17:00,,2014-04-13 08:00,2014-05-11 17:00,2014-04-13 08:00,2014-05-11 17:00,2014-04-13 08:00,2014-05-11 17:00,2014-06-11 08:00,2014-07-09 17:00,,PT_Normal,,,,,GK5EnYgeTsy505dKhi+Ayg,,,,N,0,0,,,2013-02-16 15:52,2013-02-16 15:56,admin,admin
500963,6359,124544,13662,0,N,N,N,CP_Drtn,TT_Task,DT_FixedDUR2,TK_NotStart,DUKHCONP1BZ3ELRF4070,Installation of Isolator,8178,24,0,144,0,825.6,825.6,144,0,0,0,,,,2014-07-07 08:00,2014-07-27 17:00,,2014-07-03 08:00,2014-07-23 17:00,2014-07-03 08:00,2014-07-23 17:00,2014-07-03 08:00,2014-07-23 17:00,2014-07-07 08:00,2014-07-27 17:00,,PT_Normal,,,,,VZjS19f5TeWHuD2iQ+oKYw,,,,N,0,0,,,2013-02-16 15:52,2013-02-16 15:56,admin,admin
500964,6359,124544,13662,0,N,N,N,CP_Drtn,TT_Task,DT_FixedDUR2,TK_NotStart,DUKHCONP1BZ3ELRF4075,Installation of TV Dish Antenna,8178,24,0,184,0,1830.4,1830.4,184,0,0,0,,,,2014-07-19 08:00,2014-08-17 17:00,,2014-07-15 08:00,2014-08-13 17:00,2014-07-15 08:00,2014-08-13 17:00,2014-07-15 08:00,2014-08-13 17:00,2014-07-19 08:00,2014-08-17 17:00,,PT_Normal,,,,,1czXAreLRBKuJtqUYh0Sfw,,,,N,0,0,,,2013-02-16 15:52,2013-02-16 15:56,admin,admin
500965,6359,124546,13662,0,N,N,N,CP_Drtn,TT_Task,DT_FixedDUR2,TK_NotStart,DUKHCONP1BZ3ACFF4615,Installation AC Pipes,8178,368,24,160,0,1886.4,1886.4,160,0,0,0,,,,2014-05-12 08:00,2014-06-03 17:00,,2014-03-19 08:00,2014-04-10 17:00,2014-03-19 08:00,2014-04-10 17:00,2014-03-19 08:00,2014-04-10 17:00,2014-05-12 08:00,2014-06-03 17:00,,PT_Normal,,,,,39SRotC4S1eGexPumMZZQA,,,,N,0,0,,,2013-02-16 15:52,2013-02-16 15:56,admin,admin
500966,6359,124546,13662,0,N,N,N,CP_Drtn,TT_Task,DT_FixedDUR2,TK_NotStart,DUKHCONP1BZ3ACFF4620,Fixing of Ventilation Equipments,8178,136,0,200,0,182.4,182.4,200,0,0,0,,,,2014-06-14 08:00,2014-07-12 17:00,,2014-05-25 08:00,2014-06-22 17:00,2014-05-25 08:00,2014-06-22 17:00,2014-05-25 08:00,2014-06-22 17:00,2014-06-14 08:00,2014-07-12 17:00,,PT_Normal,,,,,V7uperobScmmIBxRNI7Z1A,,,,N,0,0,,,2013-02-16 15:52,2013-02-16 15:56,admin,admin
500967,6359,124546,13662,0,N,N,N,CP_Drtn,TT_Task,DT_FixedDUR2,TK_NotStart,DUKHCONP1BZ3ACFF4625,Fixing of Split AC,8178,136,0,160,0,568,568,160,0,0,0,,,,2014-07-05 08:00,2014-07-27 17:00,,2014-06-15 08:00,2014-07-07 17:00,2014-06-15 08:00,2014-07-07 17:00,2014-06-15 08:00,2014-07-07 17:00,2014-07-05 08:00,2014-07-27 17:00,,PT_Normal,,,,,sh5h/3l2TPyJA3s8h6qBwg,,,,N,0,0,,,2013-02-16 15:52,2013-02-16 15:56,admin,admin
500968,6359,124547,13662,0,N,N,N,CP_Drtn,TT_Task,DT_FixedDUR2,TK_NotStart,DUKHCONP1BZ3ACRF4630,Installation of Refrigerant Pipes,8178,696,0,200,0,795.2,795.2,200,0,0,0,,,,2014-07-10 08:00,2014-08-11 17:00,,2014-03-31 08:00,2014-04-28 17:00,2014-03-31 08:00,2014-04-28 17:00,2014-03-31 08:00,2014-04-28 17:00,2014-07-10 08:00,2014-08-11 17:00,,PT_Normal,,,,,eQer5z+oRBq5qt0ygMdMeQ,,,,N,0,0,,,2013-02-16 15:52,2013-02-16 15:56,admin,admin
500969,6359,124547,13662,0,N,N,N,CP_Drtn,TT_Task,DT_FixedDUR2,TK_NotStart,DUKHCONP1BZ3ACRF4635,Installation of Condensing Unit,8178,176,0,200,0,1136,1136,200,0,0,0,,,,2014-07-16 08:00,2014-08-17 17:00,,2014-06-21 08:00,2014-07-19 17:00,2014-06-21 08:00,2014-07-19 17:00,2014-06-21 08:00,2014-07-19 17:00,2014-07-16 08:00,2014-08-17 17:00,,PT_Normal,,,,,VuVsFLgATiG1HpJPN5XXNg,,,,N,0,0,,,2013-02-16 15:52,2013-02-16 15:56,admin,admin
500970,6359,124548,13662,0,N,N,N,CP_Drtn,TT_Task,DT_FixedDUR2,TK_NotStart,DUKHCONP1BZ3ACGF4600,Installation AC Pipes,8178,640,40,160,0,1886.4,1886.4,160,0,0,0,,,,2014-05-06 08:00,2014-05-28 17:00,,2014-02-01 08:00,2014-02-24 17:00,2014-02-01 08:00,2014-02-24 17:00,2014-02-01 08:00,2014-02-24 17:00,2014-05-06 08:00,2014-05-28 17:00,,PT_Normal,,,,,JIVlid/WSgSk8XH9g7RYzw,,,,N,0,0,,,2013-02-16 15:52,2013-02-16 15:56,admin,admin
500971,6359,124548,13662,0,N,N,N,CP_Drtn,TT_Task,DT_FixedDUR2,TK_NotStart,DUKHCONP1BZ3ACGF4605,Fixing of Ventilation Equipments,8178,544,0,200,0,296,296,200,0,0,0,,,,2014-06-14 08:00,2014-07-12 17:00,,2014-03-26 08:00,2014-04-23 17:00,2014-03-26 08:00,2014-04-23 17:00,2014-03-26 08:00,2014-04-23 17:00,2014-06-14 08:00,2014-07-12 17:00,,PT_Normal,,,,,eoL0106aT3WMcD7xJG4B7w,,,,N,0,0,,,2013-02-16 15:52,2013-02-16 15:56,admin,admin
500972,6359,124548,13662,0,N,N,N,CP_Drtn,TT_Task,DT_FixedDUR2,TK_NotStart,DUKHCONP1BZ3ACGF4610,Fixing of Split AC,8178,544,40,160,0,568,568,160,0,0,0,,,,2014-07-05 08:00,2014-07-27 17:00,,2014-04-16 08:00,2014-05-08 17:00,2014-04-16 08:00,2014-05-08 17:00,2014-04-16 08:00,2014-05-08 17:00,2014-07-05 08:00,2014-07-27 17:00,,PT_Normal,,,,,2OEooebHTWGiIZ59lSXy+w,,,,N,0,0,,,2013-02-16 15:52,2013-02-16 15:56,admin,admin
500973,6359,124550,13662,0,N,N,N,CP_Drtn,TT_Task,DT_FixedDUR2,TK_NotStart,DUKHCONP1BZ3PLFF4335,Sanitary Fittings & Accessories,8178,152,0,160,0,201.6,201.6,160,0,0,0,,,,2014-06-29 08:00,2014-07-21 17:00,,2014-06-07 08:00,2014-06-29 17:00,2014-06-07 08:00,2014-06-29 17:00,2014-06-07 08:00,2014-06-29 17:00,2014-06-29 08:00,2014-07-21 17:00,,PT_Normal,,,,,rRdEqxQBTASP8eo+9gPrNA,,,,N,0,0,,,2013-02-16 15:52,2013-02-16 15:56,admin,admin
500974,6359,124550,13662,0,N,N,N,CP_Drtn,TT_Task,DT_FixedDUR2,TK_NotStart,DUKHCONP1BZ3PLFF4340,Installation of Water Heater,8178,152,0,120,0,134.4,134.4,120,0,0,0,,,,2014-07-10 08:00,2014-07-27 17:00,,2014-06-18 08:00,2014-07-05 17:00,2014-06-18 08:00,2014-07-05 17:00,2014-06-18 08:00,2014-07-05 17:00,2014-07-10 08:00,2014-07-27 17:00,,PT_Normal,,,,,uaSXlEz2RsyRXSzR6Bop/Q,,,,N,0,0,,,2013-02-16 15:52,2013-02-16 15:56,admin,admin
500975,6359,124550,13662,0,N,N,N,CP_Drtn,TT_Task,DT_FixedDUR2,TK_NotStart,DUKHCONP1BZ3PLFF4330,Installation of Drainage pipes & testing,8178,240,56,144,0,331.2,331.2,144,0,0,0,,,,2014-03-31 08:00,2014-04-20 17:00,,2014-02-24 08:00,2014-03-16 17:00,2014-02-24 08:00,2014-03-16 17:00,2014-02-24 08:00,2014-03-16 17:00,2014-03-31 08:00,2014-04-20 17:00,,PT_Normal,,,,,b7VKl9zhTmuXrbWc19T77g,,,,N,0,0,,,2013-02-16 15:52,2013-02-16 15:56,admin,admin
500976,6359,124550,13662,0,N,N,N,CP_Drtn,TT_Task,DT_FixedDUR2,TK_NotStart,DUKHCONP1BZ3PLFF4325,Installation of Plumbing pipes & testing,8178,24,0,144,0,883.2,883.2,144,0,0,0,,,,2014-02-27 08:00,2014-03-19 17:00,,2014-02-24 08:00,2014-03-16 17:00,2014-02-24 08:00,2014-03-16 17:00,2014-02-24 08:00,2014-03-16 17:00,2014-02-27 08:00,2014-03-19 17:00,,PT_Normal,,,,,TibDeaBTRxWJ7+rA5MiW6w,,,,N,0,0,,,2013-02-16 15:52,2013-02-16 15:56,admin,admin
500977,6359,124551,13662,0,N,N,N,CP_Drtn,TT_Task,DT_FixedDUR2,TK_NotStart,DUKHCONP1BZ3PLRF4345,Installation of Plumbing pipes & fittings,8178,672,40,112,0,288,288,112,0,0,0,,,,2014-06-29 08:00,2014-07-14 17:00,,2014-03-23 08:00,2014-04-07 17:00,2014-03-23 08:00,2014-04-07 17:00,2014-03-23 08:00,2014-04-07 17:00,2014-06-29 08:00,2014-07-14 17:00,,PT_Normal,,,,,wdYqplbJQx2NyFxLP9vQKg,,,,N,0,0,,,2013-02-16 15:52,2013-02-16 15:56,admin,admin
500978,6359,124551,13662,0,N,N,N,CP_Drtn,TT_Task,DT_FixedDUR2,TK_NotStart,DUKHCONP1BZ3PLRF4350,Installation of Rain water Pipes,,632,80,120,0,0,0,120,0,0,0,,,,2014-07-10 08:00,2014-07-27 17:00,,2014-04-09 08:00,2014-04-26 17:00,2014-04-09 08:00,2014-04-26 17:00,2014-04-09 08:00,2014-04-26 17:00,2014-07-10 08:00,2014-07-27 17:00,,PT_Normal,,,,,kwAK6NnQRCGJoVuWTIOr2w,,,,N,0,0,,,2013-02-16 15:52,2013-02-16 15:56,admin,admin
500979,6359,124551,13662,0,N,N,N,CP_Drtn,TT_Task,DT_FixedDUR2,TK_NotStart,DUKHCONP1BZ3PLRF4355,Roof  Water Tank Installation & Connections,8178,152,0,200,0,672,672,200,0,0,0,,,,2014-07-16 08:00,2014-08-17 17:00,,2014-06-24 08:00,2014-07-22 17:00,2014-06-24 08:00,2014-07-22 17:00,2014-06-24 08:00,2014-07-22 17:00,2014-07-16 08:00,2014-08-17 17:00,,PT_Normal,,,,,3JdpT3PpQcyzi8zcTJM2/w,,,,N,0,0,,,2013-02-16 15:52,2013-02-16 15:56,admin,admin
500980,6359,124552,13662,0,N,N,N,CP_Drtn,TT_Task,DT_FixedDUR2,TK_NotStart,DUKHCONP1BZ3PLGF4305,Installation of Plumbing pipes & testing,8178,392,0,144,0,883.2,883.2,144,0,0,0,,,,2014-03-11 08:00,2014-03-31 17:00,,2014-01-12 08:00,2014-02-01 17:00,2014-01-12 08:00,2014-02-01 17:00,2014-01-12 08:00,2014-02-01 17:00,2014-03-11 08:00,2014-03-31 17:00,,PT_Normal,,,,,nhjoN/EXRISy61Omv5AU0w,,,,N,0,0,,,2013-02-16 15:52,2013-02-16 15:56,admin,admin
500981,6359,124552,13662,0,N,N,N,CP_Drtn,TT_Task,DT_FixedDUR2,TK_NotStart,DUKHCONP1BZ3PLGF4310,Installation of Drainage pipes &testing,8178,416,112,144,0,331.2,331.2,144,0,0,0,,,,2014-03-15 08:00,2014-04-03 17:00,,2014-01-12 08:00,2014-02-01 17:00,2014-01-12 08:00,2014-02-01 17:00,2014-01-12 08:00,2014-02-01 17:00,2014-03-15 08:00,2014-04-03 17:00,,PT_Normal,,,,,GT8Ynvi1QiCnRbUV0aPk+A,,,,N,0,0,,,2013-02-16 15:52,2013-02-16 15:56,admin,admin
500982,6359,124552,13662,0,N,N,N,CP_Drtn,TT_Task,DT_FixedDUR2,TK_NotStart,DUKHCONP1BZ3PLGF4315,Sanitary Fittings & Accessories,8178,648,0,160,0,201.6,201.6,160,0,0,0,,,,2014-07-16 08:00,2014-08-11 17:00,,2014-04-13 08:00,2014-05-05 17:00,2014-04-13 08:00,2014-05-05 17:00,2014-04-13 08:00,2014-05-05 17:00,2014-07-16 08:00,2014-08-11 17:00,,PT_Normal,,,,,WidW4oa1RJm4kQ+HpJspyA,,,,N,0,0,,,2013-02-16 15:52,2013-02-16 15:56,admin,admin
500983,6359,124552,13662,0,N,N,N,CP_Drtn,TT_Task,DT_FixedDUR2,TK_NotStart,DUKHCONP1BZ3PLGF4320,Installation of Water Heater,8178,648,80,120,0,201.6,201.6,120,0,0,0,,,,2014-07-28 08:00,2014-08-17 17:00,,2014-04-24 08:00,2014-05-11 17:00,2014-04-24 08:00,2014-05-11 17:00,2014-04-24 08:00,2014-05-11 17:00,2014-07-28 08:00,2014-08-17 17:00,,PT_Normal,,,,,9U3BwB+bTo2OQBqMqEsbHA,,,,N,0,0,,,2013-02-16 15:52,2013-02-16 15:56,admin,admin
500984,6359,124552,13662,0,N,N,N,CP_Drtn,TT_Task,DT_FixedDUR2,TK_NotStart,DUKHCONP1BZ3PLUG4300,Drainage / Storm Pipes in Grade Slab,8178,88,0,160,0,110.4,110.4,160,0,0,0,,,,2013-10-07 08:00,2013-10-31 17:00,,2013-09-24 08:00,2013-10-16 17:00,2013-09-24 08:00,2013-10-16 17:00,2013-09-24 08:00,2013-10-16 17:00,2013-10-07 08:00,2013-10-31 17:00,,PT_Normal,,,,,PayMLe9AT+CAguOlDZ5MtQ,,,,N,0,0,,,2013-02-16 15:52,2013-02-16 15:56,admin,admin
500985,6359,124554,13662,0,N,N,N,CP_Drtn,TT_Task,DT_FixedDUR2,TK_NotStart,DUKHCONP1BZ3HDEX5090,kerb works,8173,568,0,160,0,712,712,160,0,0,0,,,,2014-05-27 08:00,2014-06-18 17:00,,2014-03-05 08:00,2014-03-27 17:00,2014-03-05 08:00,2014-03-27 17:00,2014-03-05 08:00,2014-03-27 17:00,2014-05-27 08:00,2014-06-18 17:00,,PT_Normal,,,,,WfsDDK6DR2e5N+8GkTKWnQ,,,,N,0,0,,,2013-02-16 15:52,2013-02-16 15:56,admin,admin
500986,6359,124554,13662,0,N,N,N,CP_Drtn,TT_Task,DT_FixedDUR2,TK_NotStart,DUKHCONP1BZ3HDEX5095,Cobble Stone Works,8170,568,0,160,0,456,456,160,0,0,0,,,,2014-06-08 08:00,2014-06-30 17:00,,2014-03-17 08:00,2014-04-08 17:00,2014-03-17 08:00,2014-04-08 17:00,2014-03-17 08:00,2014-04-08 17:00,2014-06-08 08:00,2014-06-30 17:00,,PT_Normal,,,,,OZoFPosvTe+uObc2xp102Q,,,,N,0,0,,,2013-02-16 15:52,2013-02-16 15:56,admin,admin
500987,6359,124554,13662,0,N,N,N,CP_Drtn,TT_Task,DT_FixedDUR2,TK_NotStart,DUKHCONP1BZ3HDEX5100,Interlock works,8174,568,0,160,0,408,408,160,0,0,0,,,,2014-06-23 08:00,2014-07-15 17:00,,2014-04-01 08:00,2014-04-23 17:00,2014-04-01 08:00,2014-04-23 17:00,2014-04-01 08:00,2014-04-23 17:00,2014-06-23 08:00,2014-07-15 17:00,,PT_Normal,,,,,tFjPskNTQUuaqzyDrA+GsQ,,,,N,0,0,,,2013-02-16 15:52,2013-02-16 15:56,admin,admin
500988,6359,124555,13662,0,N,N,N,CP_Drtn,TT_Task,DT_FixedDUR2,TK_NotStart,DUKHCONP1BZ3MSEX5335,Aluminum Roll-up Shutter with 2m Wall,8178,200,0,200,0,400,400,200,0,0,0,,,,2014-08-18 08:00,2014-09-15 17:00,,2014-07-16 08:00,2014-08-17 17:00,2014-07-16 08:00,2014-08-17 17:00,2014-07-16 08:00,2014-08-17 17:00,2014-08-18 08:00,2014-09-15 17:00,,PT_Normal,,,,,zybxU8PbSr6AjLalqJvjXQ,,,,N,0,0,,,2013-02-16 15:52,2013-02-16 15:56,admin,admin
500989,6359,124555,13662,0,N,N,N,CP_Drtn,TT_Task,DT_FixedDUR2,TK_NotStart,DUKHCONP1BZ3MSEX5020,Construction Entrance Ramp,8164,552,0,200,0,1288,1288,200,0,0,0,,,,2014-04-29 08:00,2014-05-27 17:00,,2014-02-06 08:00,2014-03-08 17:00,2014-02-06 08:00,2014-03-08 17:00,2014-02-06 08:00,2014-03-08 17:00,2014-04-29 08:00,2014-05-27 17:00,,PT_Normal,,,,,AkQQH1QkQbm/lFQfnKBAEg,,,,N,0,0,,,2013-02-16 15:52,2013-02-16 15:56,admin,admin
500990,6359,124555,13662,0,N,N,N,CP_Drtn,TT_Task,DT_FixedDUR2,TK_NotStart,DUKHCONP1BZ3MSEX5025,SS.Handrails and Balustrades,8178,568,0,160,0,400,400,160,0,0,0,,,,2014-05-19 08:00,2014-06-10 17:00,,2014-02-25 08:00,2014-03-19 17:00,2014-02-25 08:00,2014-03-19 17:00,2014-02-25 08:00,2014-03-19 17:00,2014-05-19 08:00,2014-06-10 17:00,,PT_Normal,,,,,5KyqQ+SxRHWBNx42yIqBqg,,,,N,0,0,,,2013-02-16 15:52,2013-02-16 15:56,admin,admin
500991,6359,124555,13662,0,N,N,N,CP_Drtn,TT_Task,DT_FixedDUR2,TK_NotStart,DUKHCONP1BZ3MSEX5015,Construction of grease Trap,8178,304,0,160,0,88,88,160,0,0,0,,,,2014-04-29 08:00,2014-05-21 17:00,,2014-03-16 08:00,2014-04-07 17:00,2014-03-16 08:00,2014-04-07 17:00,2014-03-16 08:00,2014-04-07 17:00,2014-04-29 08:00,2014-05-21 17:00,,PT_Normal,,,,,TloaUZzZRGCmu8/cAODR3Q,,,,N,0,0,,,2013-02-16 15:52,2013-02-16 15:56,admin,admin
500992,6359,124555,13662,0,N,N,N,CP_Drtn,TT_Task,DT_FixedDUR2,TK_NotStart,DUKHCONP1BZ3MSEX5000,Construction of Manholes,8172,304,0,200,0,880,880,200,0,0,0,,,,2014-03-26 08:00,2014-04-23 17:00,,2014-02-09 08:00,2014-03-10 17:00,2014-02-09 08:00,2014-03-10 17:00,2014-02-09 08:00,2014-03-10 17:00,2014-03-26 08:00,2014-04-23 17:00,,PT_Normal,,,,,EsWowOOoRmyPeoDZO5p03w,,,,N,0,0,,,2013-02-16 15:52,2013-02-16 15:56,admin,admin
500993,6359,124555,13662,0,N,N,N,CP_Drtn,TT_Task,DT_FixedDUR2,TK_NotStart,DUKHCONP1BZ3MSEX5005,"Construction  of Soak pit, Chambers",8172,304,0,200,0,176,176,200,0,0,0,,,,2014-04-09 08:00,2014-05-07 17:00,,2014-02-24 08:00,2014-03-24 17:00,2014-02-24 08:00,2014-03-24 17:00,2014-02-24 08:00,2014-03-24 17:00,2014-04-09 08:00,2014-05-07 17:00,,PT_Normal,,,,,vSJt85T3Qz+JBlha9R7oWQ,,,,N,0,0,,,2013-02-16 15:52,2013-02-16 15:56,admin,admin
500994,6359,124555,13662,0,N,N,N,CP_Drtn,TT_Task,DT_FixedDUR2,TK_NotStart,DUKHCONP1BZ3MSEX5010,Telephone cable laying,8177,304,104,200,0,500,500,200,0,0,0,,,,2014-05-22 08:00,2014-06-19 17:00,,2014-04-08 08:00,2014-05-06 17:00,2014-04-08 08:00,2014-05-06 17:00,2014-04-08 08:00,2014-05-06 17:00,2014-05-22 08:00,2014-06-19 17:00,,PT_Normal,,,,,VEbF5klkQauA9UimGgqrIQ,,,,N,0,0,,,2013-02-16 15:52,2013-02-16 15:56,admin,admin
500995,6359,124556,13662,0,N,N,N,CP_Drtn,TT_Task,DT_FixedDUR2,TK_NotStart,DUKHCONP1BZ3SLEX5105,Laying of Grass/ green area,8178,568,0,200,0,5488,5488,200,0,0,0,,,,2014-07-05 08:00,2014-08-05 17:00,,2014-04-13 08:00,2014-05-11 17:00,2014-04-13 08:00,2014-05-11 17:00,2014-04-13 08:00,2014-05-11 17:00,2014-07-05 08:00,2014-08-05 17:00,,PT_Normal,,,,,nyr3EXNETaC+EjeEMV0JvQ,,,,N,0,0,,,2013-02-16 15:52,2013-02-16 15:56,admin,admin
500996,6359,124556,13662,0,N,N,N,CP_Drtn,TT_Task,DT_FixedDUR2,TK_NotStart,DUKHCONP1BZ3SLEX5110,Laying of Palm tree,8178,568,544,200,0,336,336,200,0,0,0,,,,2014-07-16 08:00,2014-08-17 17:00,,2014-04-24 08:00,2014-05-22 17:00,2014-04-24 08:00,2014-05-22 17:00,2014-04-24 08:00,2014-05-22 17:00,2014-07-16 08:00,2014-08-17 17:00,,PT_Normal,,,,,pLK9j31jTE2FoPwM6o9WtQ,,,,N,0,0,,,2013-02-16 15:52,2013-02-16 15:56,admin,admin
500997,6359,124557,13662,0,N,N,N,CP_Drtn,TT_Task,DT_FixedDUR2,TK_NotStart,DUKHCONP1BZ3WEEX5030,Excavation,8177,408,0,160,0,128,128,160,80,0,80,,,,2014-04-22 08:00,2014-05-14 17:00,,2014-02-22 08:00,2014-03-16 17:00,2014-02-22 08:00,2014-03-16 17:00,2014-02-22 08:00,2014-03-16 17:00,2014-04-22 08:00,2014-05-14 17:00,,PT_Normal,,,,,vpCghBjxQOWCgcD6/O5s8w,,,,N,0,0,,,2013-02-16 15:52,2013-02-16 15:56,admin,admin
500998,6359,124557,13662,0,N,N,N,CP_Drtn,TT_Task,DT_FixedDUR2,TK_NotStart,DUKHCONP1BZ3WEEX5035,Construction of Raft,8165,408,0,200,0,1624,1624,200,0,0,0,,,,2014-05-04 08:00,2014-06-01 17:00,,2014-03-05 08:00,2014-04-02 17:00,2014-03-05 08:00,2014-04-02 17:00,2014-03-05 08:00,2014-04-02 17:00,2014-05-04 08:00,2014-06-01 17:00,,PT_Normal,,,,,Ap9yjlAySV6lG34XpEavRQ,,,,N,0,0,,,2013-02-16 15:52,2013-02-16 15:56,admin,admin
500999,6359,124557,13662,0,N,N,N,CP_Drtn,TT_Task,DT_FixedDUR2,TK_NotStart,DUKHCONP1BZ3WEEX5040,Block works & Plastering,8168,528,0,200,0,888,888,200,0,0,0,,,,2014-05-31 08:00,2014-06-28 17:00,,2014-03-15 08:00,2014-04-12 17:00,2014-03-15 08:00,2014-04-12 17:00,2014-03-15 08:00,2014-04-12 17:00,2014-05-31 08:00,2014-06-28 17:00,,PT_Normal,,,,,FsWZlTSCR1qoiibQ/76g+g,,,,N,0,0,,,2013-02-16 15:52,2013-02-16 15:56,admin,admin
501000,6359,124557,13662,0,N,N,N,CP_Drtn,TT_Task,DT_FixedDUR2,TK_NotStart,DUKHCONP1BZ3WEEX5045,Flooring & Painting,8178,528,0,200,0,408,408,200,0,0,0,,,,2014-06-11 08:00,2014-07-09 17:00,,2014-03-26 08:00,2014-04-23 17:00,2014-03-26 08:00,2014-04-23 17:00,2014-03-26 08:00,2014-04-23 17:00,2014-06-11 08:00,2014-07-09 17:00,,PT_Normal,,,,,bc3sjxVMRuq4oBxq3l+Tfw,,,,N,0,0,,,2013-02-16 15:52,2013-02-16 15:56,admin,admin
501001,6359,124557,13662,0,N,N,N,CP_Drtn,TT_Task,DT_FixedDUR2,TK_NotStart,DUKHCONP1BZ3WEEX5050,Installation of Steel Gate,8178,528,0,160,0,112,112,160,0,0,0,,,,2014-06-29 08:00,2014-07-21 17:00,,2014-04-13 08:00,2014-05-05 17:00,2014-04-13 08:00,2014-05-05 17:00,2014-04-13 08:00,2014-05-05 17:00,2014-06-29 08:00,2014-07-21 17:00,,PT_Normal,,,,,YKd7TyWrT82tHv3GKmXmag,,,,N,0,0,,,2013-02-16 15:52,2013-02-16 15:56,admin,admin
501002,6359,124557,13662,0,N,N,N,CP_Drtn,TT_Task,DT_FixedDUR2,TK_NotStart,DUKHCONP1BZ3WEEX5060,Structural steel &  SS Shed cover installation,8178,528,0,200,0,616,616,200,0,0,0,,,,2014-07-05 08:00,2014-08-05 17:00,,2014-04-19 08:00,2014-05-17 17:00,2014-04-19 08:00,2014-05-17 17:00,2014-04-19 08:00,2014-05-17 17:00,2014-07-05 08:00,2014-08-05 17:00,,PT_Normal,,,,,ZxER32NQSxmcFwvG4xPuwg,,,,N,0,0,,,2013-02-16 15:52,2013-02-16 15:56,admin,admin
501003,6359,124557,13662,0,N,N,N,CP_Drtn,TT_Task,DT_FixedDUR2,TK_NotStart,DUKHCONP1BZ3WEEX5065,"Install. of Water Tank,Chiller,Pump & Meter",8178,528,96,200,0,382.4,382.4,200,0,0,0,,,,2014-07-16 08:00,2014-08-17 17:00,,2014-04-30 08:00,2014-05-28 17:00,2014-04-30 08:00,2014-05-28 17:00,2014-04-30 08:00,2014-05-28 17:00,2014-07-16 08:00,2014-08-17 17:00,,PT_Normal,,,,,f0XFR/4EReyXb/ICQ2D0uA,,,,N,0,0,,,2013-02-16 15:52,2013-02-16 15:56,admin,admin
501004,6359,124561,13662,0,N,N,N,CP_Drtn,TT_Task,DT_FixedDUR2,TK_NotStart,DUKHCONP1BZ1ACRF4630,Installation of Refrigerant Pipes,8178,696,0,200,0,795.2,795.2,200,0,0,0,,,,2014-05-13 08:00,2014-06-10 17:00,,2014-01-30 08:00,2014-03-01 17:00,2014-01-30 08:00,2014-03-01 17:00,2014-01-30 08:00,2014-03-01 17:00,2014-05-13 08:00,2014-06-10 17:00,,PT_Normal,,,,,Jd44Ywy+RF2c63P8JTm48Q,,,,N,0,0,,,2013-02-16 15:52,2013-02-16 15:56,admin,admin
501005,6359,124561,13662,0,N,N,N,CP_Drtn,TT_Task,DT_FixedDUR2,TK_NotStart,DUKHCONP1BZ1ACRF4635,Installation of Condensing Unit,8178,176,0,200,0,1136,1136,200,0,0,0,,,,2014-05-19 08:00,2014-06-16 17:00,,2014-04-23 08:00,2014-05-21 17:00,2014-04-23 08:00,2014-05-21 17:00,2014-04-23 08:00,2014-05-21 17:00,2014-05-19 08:00,2014-06-16 17:00,,PT_Normal,,,,,yk8V0UbiTrOJvOCOfRqz0A,,,,N,0,0,,,2013-02-16 15:52,2013-02-16 15:56,admin,admin
501006,6359,124562,13662,0,N,N,N,CP_Drtn,TT_Task,DT_FixedDUR2,TK_NotStart,DUKHCONP1BZ1ACGF4600,Installation AC Pipes,8178,648,40,160,0,1886.4,1886.4,160,0,0,0,,,,2014-03-09 08:00,2014-03-31 17:00,,2013-12-02 08:00,2013-12-25 17:00,2013-12-02 08:00,2013-12-25 17:00,2013-12-02 08:00,2013-12-25 17:00,2014-03-09 08:00,2014-03-31 17:00,,PT_Normal,,,,,tysEgvc3RvK5ZhUC0YCVmg,,,,N,0,0,,,2013-02-16 15:52,2013-02-16 15:56,admin,admin
501007,6359,124562,13662,0,N,N,N,CP_Drtn,TT_Task,DT_FixedDUR2,TK_NotStart,DUKHCONP1BZ1ACGF4605,Fixing of Ventilation Equipments,8178,552,0,200,0,296,296,200,0,0,0,,,,2014-04-16 08:00,2014-05-14 17:00,,2014-01-25 08:00,2014-02-23 17:00,2014-01-25 08:00,2014-02-23 17:00,2014-01-25 08:00,2014-02-23 17:00,2014-04-16 08:00,2014-05-14 17:00,,PT_Normal,,,,,Ran59yWYRPiGsLPrX0+nGA,,,,N,0,0,,,2013-02-16 15:52,2013-02-16 15:56,admin,admin
501008,6359,124562,13662,0,N,N,N,CP_Drtn,TT_Task,DT_FixedDUR2,TK_NotStart,DUKHCONP1BZ1ACGF4610,Fixing of Split AC,8178,552,40,160,0,568,568,160,0,0,0,,,,2014-05-07 08:00,2014-05-29 17:00,,2014-02-16 08:00,2014-03-10 17:00,2014-02-16 08:00,2014-03-10 17:00,2014-02-16 08:00,2014-03-10 17:00,2014-05-07 08:00,2014-05-29 17:00,,PT_Normal,,,,,QqkE/kBMTP2PDDaktBQUOA,,,,N,0,0,,,2013-02-16 15:52,2013-02-16 15:56,admin,admin
501009,6359,124563,13662,0,N,N,N,CP_Drtn,TT_Task,DT_FixedDUR2,TK_NotStart,DUKHCONP1BZ1ACFF4615,Installation AC Pipes,8178,368,0,160,0,1886.4,1886.4,160,0,0,0,,,,2014-03-15 08:00,2014-04-06 17:00,,2014-01-19 08:00,2014-02-10 17:00,2014-01-19 08:00,2014-02-10 17:00,2014-01-19 08:00,2014-02-10 17:00,2014-03-15 08:00,2014-04-06 17:00,,PT_Normal,,,,,dMmXTUtAQPeoI6uQpn6ojQ,,,,N,0,0,,,2013-02-16 15:52,2013-02-16 15:56,admin,admin
501010,6359,124563,13662,0,N,N,N,CP_Drtn,TT_Task,DT_FixedDUR2,TK_NotStart,DUKHCONP1BZ1ACFF4620,Fixing of Ventilation Equipments,8178,136,0,200,0,182.4,182.4,200,0,0,0,,,,2014-04-16 08:00,2014-05-14 17:00,,2014-03-27 08:00,2014-04-24 17:00,2014-03-27 08:00,2014-04-24 17:00,2014-03-27 08:00,2014-04-24 17:00,2014-04-16 08:00,2014-05-14 17:00,,PT_Normal,,,,,hPZzEdH9T4GCTaVaHYgnxw,,,,N,0,0,,,2013-02-16 15:52,2013-02-16 15:56,admin,admin
501011,6359,124563,13662,0,N,N,N,CP_Drtn,TT_Task,DT_FixedDUR2,TK_NotStart,DUKHCONP1BZ1ACFF4625,Fixing of Split AC,8178,136,0,160,0,568,568,160,0,0,0,,,,2014-05-07 08:00,2014-05-29 17:00,,2014-04-17 08:00,2014-05-10 17:00,2014-04-17 08:00,2014-05-10 17:00,2014-04-17 08:00,2014-05-10 17:00,2014-05-07 08:00,2014-05-29 17:00,,PT_Normal,,,,,yiFp6typS1mipR3lGWDF4g,,,,N,0,0,,,2013-02-16 15:52,2013-02-16 15:56,admin,admin
501012,6359,124565,13662,0,N,N,N,CP_Drtn,TT_Task,DT_FixedDUR2,TK_NotStart,DUKHCONP1BZ1ELFF4055,Install. of CAMS & Fire Fighting Accessories,8178,360,0,200,0,4569.6,4569.6,200,0,0,0,,,,2014-05-19 08:00,2014-06-16 17:00,,2014-03-27 08:00,2014-04-24 17:00,2014-03-27 08:00,2014-04-24 17:00,2014-03-27 08:00,2014-04-24 17:00,2014-05-19 08:00,2014-06-16 17:00,,PT_Normal,,,,,d34cImv7To6Qh+BlY72dwQ,,,,N,0,0,,,2013-02-16 15:52,2013-02-16 15:56,admin,admin
501013,6359,124565,13662,0,N,N,N,CP_Drtn,TT_Task,DT_FixedDUR2,TK_NotStart,DUKHCONP1BZ1ELFF4050,Installation of Telephone System,8178,200,176,200,0,1422.4,1422.4,200,0,0,0,,,,2014-04-23 08:00,2014-05-21 17:00,,2014-03-25 08:00,2014-04-22 17:00,2014-03-25 08:00,2014-04-22 17:00,2014-03-25 08:00,2014-04-22 17:00,2014-04-23 08:00,2014-05-21 17:00,,PT_Normal,,,,,DLqIR3/bTUe6rO3s9X2r3A,,,,N,0,0,,,2013-02-16 15:52,2013-02-16 15:56,admin,admin
501014,6359,124565,13662,0,N,N,N,CP_Drtn,TT_Task,DT_FixedDUR2,TK_NotStart,DUKHCONP1BZ1ELFF4040,Cable tray & trunking installation,8178,368,0,160,0,3180.8,3180.8,160,0,0,0,,,,2014-02-19 08:00,2014-03-13 17:00,,2013-12-26 08:00,2014-01-18 17:00,2013-12-26 08:00,2014-01-18 17:00,2013-12-26 08:00,2014-01-18 17:00,2014-02-19 08:00,2014-03-13 17:00,,PT_Normal,,,,,JiU2UuAqSI+PfPCraC/kCA,,,,N,0,0,,,2013-02-16 15:52,2013-02-16 15:56,admin,admin
501015,6359,124565,13662,0,N,N,N,CP_Drtn,TT_Task,DT_FixedDUR2,TK_NotStart,DUKHCONP1BZ1ELFF4035,Fixing of wall conduits & switch socket boxes,8178,128,0,200,0,2579.2,2579.2,200,0,0,0,,,,2014-01-02 08:00,2014-01-30 17:00,,2013-12-14 08:00,2014-01-12 17:00,2013-12-14 08:00,2014-01-12 17:00,2013-12-14 08:00,2014-01-12 17:00,2014-01-02 08:00,2014-01-30 17:00,,PT_Normal,,,,,vuRY54t2T5akX4zI9TMbKg,,,,N,0,0,,,2013-02-16 15:52,2013-02-16 15:56,admin,admin
501016,6359,124565,13662,0,N,N,N,CP_Drtn,TT_Task,DT_FixedDUR2,TK_NotStart,DUKHCONP1BZ1ELFF4045,Installation of wiring & Main Cabling,8178,368,0,200,0,636.8,636.8,200,0,0,0,,,,2014-02-27 08:00,2014-03-27 17:00,,2014-01-04 08:00,2014-02-01 17:00,2014-01-04 08:00,2014-02-01 17:00,2014-01-04 08:00,2014-02-01 17:00,2014-02-27 08:00,2014-03-27 17:00,,PT_Normal,,,,,ggHtC+IQSt2RwGQQdZBQaA,,,,N,0,0,,,2013-02-16 15:52,2013-02-23 09:03,admin,admin
501017,6359,124565,13662,0,N,N,N,CP_Drtn,TT_Task,DT_FixedDUR2,TK_NotStart,DUKHCONP1BZ1ELFF4060,"Installation  of DBS,MCCB Accessories.",8178,24,0,160,0,454.4,454.4,160,0,0,0,,,,2014-04-07 08:00,2014-04-29 17:00,,2014-04-03 08:00,2014-04-26 17:00,2014-04-03 08:00,2014-04-26 17:00,2014-04-03 08:00,2014-04-26 17:00,2014-04-07 08:00,2014-04-29 17:00,,PT_Normal,,,,,eml5G6ExRvS9ydGGC0z0mg,,,,N,0,0,,,2013-02-16 15:52,2013-02-16 15:56,admin,admin
501018,6359,124565,13662,0,N,N,N,CP_Drtn,TT_Task,DT_FixedDUR2,TK_NotStart,DUKHCONP1BZ1ELFF4065,Installation of Lighting fixtures & Accessories,8178,24,0,200,0,3302.4,3302.4,200,0,0,0,,,,2014-04-20 08:00,2014-05-18 17:00,,2014-04-16 08:00,2014-05-14 17:00,2014-04-16 08:00,2014-05-14 17:00,2014-04-16 08:00,2014-05-14 17:00,2014-04-20 08:00,2014-05-18 17:00,,PT_Normal,,,,,3XwVHPFfSg+mHdUKL8fbEg,,,,N,0,0,,,2013-02-16 15:52,2013-02-16 15:56,admin,admin
501019,6359,124566,13662,0,N,N,N,CP_Drtn,TT_Task,DT_FixedDUR2,TK_NotStart,DUKHCONP1BZ1ELGF4000,Fixing of wall conduits & switch socket boxes,8178,472,0,200,0,2579.2,2579.2,200,0,0,0,,,,2014-01-11 08:00,2014-02-08 17:00,,2013-11-02 08:00,2013-11-30 17:00,2013-11-02 08:00,2013-11-30 17:00,2013-11-02 08:00,2013-11-30 17:00,2014-01-11 08:00,2014-02-08 17:00,,PT_Normal,,,,,SvGA60CqQTePNOSe4xBLhQ,,,,N,0,0,,,2013-02-16 15:52,2013-02-16 15:56,admin,admin
501020,6359,124566,13662,0,N,N,N,CP_Drtn,TT_Task,DT_FixedDUR2,TK_NotStart,DUKHCONP1BZ1ELGF4005,Cable tray & trunking installation,8178,616,0,160,0,3180.8,3180.8,160,0,0,0,,,,2014-02-13 08:00,2014-03-08 17:00,,2013-11-13 08:00,2013-12-05 17:00,2013-11-13 08:00,2013-12-05 17:00,2013-11-13 08:00,2013-12-05 17:00,2014-02-13 08:00,2014-03-08 17:00,,PT_Normal,,,,,3Cd8B/T8TWutk6IxR7if0Q,,,,N,0,0,,,2013-02-16 15:52,2013-02-16 15:56,admin,admin
501021,6359,124566,13662,0,N,N,N,CP_Drtn,TT_Task,DT_FixedDUR2,TK_NotStart,DUKHCONP1BZ1ELGF4010,Installation of wiring & Main Cabling,8178,616,216,200,0,636.8,636.8,200,0,0,0,,,,2014-02-22 08:00,2014-03-22 17:00,,2013-11-21 08:00,2013-12-21 17:00,2013-11-21 08:00,2013-12-21 17:00,2013-11-21 08:00,2013-12-21 17:00,2014-02-22 08:00,2014-03-22 17:00,,PT_Normal,,,,,ubsLOfHGTu6wXaDAa8fGgw,,,,N,0,0,,,2013-02-16 15:52,2013-02-23 09:03,admin,admin
501022,6359,124566,13662,0,N,N,N,CP_Drtn,TT_Task,DT_FixedDUR2,TK_NotStart,DUKHCONP1BZ1ELGF4020,"Installation  of DBS,MCCB Accessories.",8178,400,0,160,0,454.4,454.4,160,0,0,0,,,,2014-03-31 08:00,2014-04-22 17:00,,2014-01-30 08:00,2014-02-23 17:00,2014-01-30 08:00,2014-02-23 17:00,2014-01-30 08:00,2014-02-23 17:00,2014-03-31 08:00,2014-04-22 17:00,,PT_Normal,,,,,IhyOngIsQhuACCYFxIh2Bg,,,,N,0,0,,,2013-02-16 15:52,2013-02-16 15:56,admin,admin
501023,6359,124566,13662,0,N,N,N,CP_Drtn,TT_Task,DT_FixedDUR2,TK_NotStart,DUKHCONP1BZ1ELGF4025,Installation of Lighting fixtures & Accessories,8178,416,0,200,0,3302.4,3302.4,200,0,0,0,,,,2014-04-14 08:00,2014-05-12 17:00,,2014-02-12 08:00,2014-03-12 17:00,2014-02-12 08:00,2014-03-12 17:00,2014-02-12 08:00,2014-03-12 17:00,2014-04-14 08:00,2014-05-12 17:00,,PT_Normal,,,,,iGzj330bTriIH5osfmQfiQ,,,,N,0,0,,,2013-02-16 15:52,2013-02-16 15:56,admin,admin
501024,6359,124566,13662,0,N,N,N,CP_Drtn,TT_Task,DT_FixedDUR2,TK_NotStart,DUKHCONP1BZ1ELGF4015,Install. of CAMS & Fire Fighting Accessories,8178,576,0,200,0,4569.6,4569.6,200,0,0,0,,,,2014-04-20 08:00,2014-05-18 17:00,,2014-01-25 08:00,2014-02-23 17:00,2014-01-25 08:00,2014-02-23 17:00,2014-01-25 08:00,2014-02-23 17:00,2014-04-20 08:00,2014-05-18 17:00,,PT_Normal,,,,,9p6jciXiRheCjUE9fYI1dg,,,,N,0,0,,,2013-02-16 15:52,2013-02-16 15:56,admin,admin
501025,6359,124566,13662,0,N,N,N,CP_Drtn,TT_Task,DT_FixedDUR2,TK_NotStart,DUKHCONP1BZ1ELGF4030,Installation of Telephone System,8178,400,40,160,0,1422.4,1422.4,160,0,0,0,,,,2014-04-12 08:00,2014-05-04 17:00,,2014-02-12 08:00,2014-03-06 17:00,2014-02-12 08:00,2014-03-06 17:00,2014-02-12 08:00,2014-03-06 17:00,2014-04-12 08:00,2014-05-04 17:00,,PT_Normal,,,,,xx5uPb1YRsGEpgqDM7P1aA,,,,N,0,0,,,2013-02-16 15:52,2013-02-16 15:56,admin,admin
501026,6359,124567,13662,0,N,N,N,CP_Drtn,TT_Task,DT_FixedDUR2,TK_NotStart,DUKHCONP1BZ1ELRF4070,Installation of Isolator,8178,24,0,144,0,825.6,825.6,144,0,0,0,,,,2014-05-10 08:00,2014-05-29 17:00,,2014-05-06 08:00,2014-05-26 17:00,2014-05-06 08:00,2014-05-26 17:00,2014-05-06 08:00,2014-05-26 17:00,2014-05-10 08:00,2014-05-29 17:00,,PT_Normal,,,,,KtwUf71TSOmibJ4/U/k7LQ,,,,N,0,0,,,2013-02-16 15:52,2013-02-16 15:56,admin,admin
501027,6359,124567,13662,0,N,N,N,CP_Drtn,TT_Task,DT_FixedDUR2,TK_NotStart,DUKHCONP1BZ1ELRF4075,Installation of TV Dish Antenna,8178,24,0,184,0,1830.4,1830.4,184,0,0,0,,,,2014-05-21 08:00,2014-06-16 17:00,,2014-05-18 08:00,2014-06-12 17:00,2014-05-18 08:00,2014-06-12 17:00,2014-05-18 08:00,2014-06-12 17:00,2014-05-21 08:00,2014-06-16 17:00,,PT_Normal,,,,,On2PsDFCRem9qO8Ar4NC7A,,,,N,0,0,,,2013-02-16 15:52,2013-02-16 15:56,admin,admin
501028,6359,124569,13662,0,N,N,N,CP_Drtn,TT_Task,DT_FixedDUR2,TK_NotStart,DUKHCONP1BZ1PLGF4305,Installation of Plumbing pipes & testing,8178,352,0,144,0,883.2,883.2,144,0,0,0,,,,2014-01-04 08:00,2014-01-23 17:00,,2013-11-12 08:00,2013-12-02 17:00,2013-11-12 08:00,2013-12-02 17:00,2013-11-12 08:00,2013-12-02 17:00,2014-01-04 08:00,2014-01-23 17:00,,PT_Normal,,,,,Kt9XeptiSbOykkraN2U6rg,,,,N,0,0,,,2013-02-16 15:52,2013-02-16 15:56,admin,admin
501029,6359,124569,13662,0,N,N,N,CP_Drtn,TT_Task,DT_FixedDUR2,TK_NotStart,DUKHCONP1BZ1PLGF4310,Installation of Drainage pipes &testing,8178,352,168,144,0,331.2,331.2,144,0,0,0,,,,2014-01-04 08:00,2014-01-23 17:00,,2013-11-12 08:00,2013-12-02 17:00,2013-11-12 08:00,2013-12-02 17:00,2013-11-12 08:00,2013-12-02 17:00,2014-01-04 08:00,2014-01-23 17:00,,PT_Normal,,,,,uejgEAMRQKa9y0+7yJ37hw,,,,N,0,0,,,2013-02-16 15:52,2013-02-16 15:56,admin,admin
501030,6359,124569,13662,0,N,N,N,CP_Drtn,TT_Task,DT_FixedDUR2,TK_NotStart,DUKHCONP1BZ1PLGF4315,Sanitary Fittings & Accessories,8178,656,0,160,0,201.6,201.6,160,0,0,0,,,,2014-05-19 08:00,2014-06-10 17:00,,2014-02-12 08:00,2014-03-06 17:00,2014-02-12 08:00,2014-03-06 17:00,2014-02-12 08:00,2014-03-06 17:00,2014-05-19 08:00,2014-06-10 17:00,,PT_Normal,,,,,FV6UvPx8S9aMJWo43iBUgA,,,,N,0,0,,,2013-02-16 15:52,2013-02-16 15:56,admin,admin
501031,6359,124569,13662,0,N,N,N,CP_Drtn,TT_Task,DT_FixedDUR2,TK_NotStart,DUKHCONP1BZ1PLGF4320,Installation of Water Heater,8178,656,80,120,0,201.6,201.6,120,0,0,0,,,,2014-05-31 08:00,2014-06-16 17:00,,2014-02-24 08:00,2014-03-12 17:00,2014-02-24 08:00,2014-03-12 17:00,2014-02-24 08:00,2014-03-12 17:00,2014-05-31 08:00,2014-06-16 17:00,,PT_Normal,,,,,YFXi7D8+RPKejEJ2uOQ+kQ,,,,N,0,0,,,2013-02-16 15:52,2013-02-16 15:56,admin,admin
501032,6359,124569,13662,0,N,N,N,CP_Drtn,TT_Task,DT_FixedDUR2,TK_NotStart,DUKHCONP1BZ1PLUG4300,Drainage / Storm Pipes in Grade Slab,8178,0,0,160,0,110.4,110.4,160,0,0,0,,,,2013-07-23 08:00,2013-08-18 17:00,,2013-07-23 08:00,2013-08-18 17:00,2013-07-23 08:00,2013-08-18 17:00,2013-07-23 08:00,2013-08-18 17:00,2013-07-23 08:00,2013-08-18 17:00,,PT_Normal,,,,,37cYZmqdRuS5dJK9K3N5OA,,,,Y,0,0,,,2013-02-16 15:52,2013-02-16 15:56,admin,admin
501033,6359,124570,13662,0,N,N,N,CP_Drtn,TT_Task,DT_FixedDUR2,TK_NotStart,DUKHCONP1BZ1PLFF4325,Installation of Plumbing pipes & testing,8178,24,0,144,0,883.2,883.2,144,0,0,0,,,,2013-12-30 08:00,2014-01-19 17:00,,2013-12-26 08:00,2014-01-15 17:00,2013-12-26 08:00,2014-01-15 17:00,2013-12-26 08:00,2014-01-15 17:00,2013-12-30 08:00,2014-01-19 17:00,,PT_Normal,,,,,3ndl+h+6QXuLY4687kg+SQ,,,,N,0,0,,,2013-02-16 15:52,2013-02-16 15:56,admin,admin
501034,6359,124570,13662,0,N,N,N,CP_Drtn,TT_Task,DT_FixedDUR2,TK_NotStart,DUKHCONP1BZ1PLFF4330,Installation of Drainage pipes & testing,8178,240,56,144,0,331.2,331.2,144,0,0,0,,,,2014-01-30 08:00,2014-02-20 17:00,,2013-12-26 08:00,2014-01-15 17:00,2013-12-26 08:00,2014-01-15 17:00,2013-12-26 08:00,2014-01-15 17:00,2014-01-30 08:00,2014-02-20 17:00,,PT_Normal,,,,,AT2bwtKwRSGSWZSakb/UFg,,,,N,0,0,,,2013-02-16 15:52,2013-02-16 15:56,admin,admin
501035,6359,124570,13662,0,N,N,N,CP_Drtn,TT_Task,DT_FixedDUR2,TK_NotStart,DUKHCONP1BZ1PLFF4335,Sanitary Fittings & Accessories,8178,152,0,160,0,201.6,201.6,160,0,0,0,,,,2014-05-01 08:00,2014-05-24 17:00,,2014-04-09 08:00,2014-05-01 17:00,2014-04-09 08:00,2014-05-01 17:00,2014-04-09 08:00,2014-05-01 17:00,2014-05-01 08:00,2014-05-24 17:00,,PT_Normal,,,,,kEjBe8aSTom8iMMvBI6img,,,,N,0,0,,,2013-02-16 15:52,2013-02-16 15:56,admin,admin
501036,6359,124570,13662,0,N,N,N,CP_Drtn,TT_Task,DT_FixedDUR2,TK_NotStart,DUKHCONP1BZ1PLFF4340,Installation of Water Heater,8178,152,0,120,0,134.4,134.4,120,0,0,0,,,,2014-05-13 08:00,2014-05-29 17:00,,2014-04-21 08:00,2014-05-07 17:00,2014-04-21 08:00,2014-05-07 17:00,2014-04-21 08:00,2014-05-07 17:00,2014-05-13 08:00,2014-05-29 17:00,,PT_Normal,,,,,8p33rilgSQulWKraa7I7fA,,,,N,0,0,,,2013-02-16 15:52,2013-02-16 15:56,admin,admin
501037,6359,124571,13662,0,N,N,N,CP_Drtn,TT_Task,DT_FixedDUR2,TK_NotStart,DUKHCONP1BZ1PLRF4345,Installation of Plumbing pipes & fittings,8178,648,16,112,0,288,288,112,0,0,0,,,,2014-05-04 08:00,2014-05-19 17:00,,2014-01-28 08:00,2014-02-13 17:00,2014-01-28 08:00,2014-02-13 17:00,2014-01-28 08:00,2014-02-13 17:00,2014-05-04 08:00,2014-05-19 17:00,,PT_Normal,,,,,yONIIaedTZGlOo5RCC/x9w,,,,N,0,0,,,2013-02-16 15:52,2013-02-16 15:56,admin,admin
501038,6359,124571,13662,0,N,N,N,CP_Drtn,TT_Task,DT_FixedDUR2,TK_NotStart,DUKHCONP1BZ1PLRF4350,Installation of Rain water Pipes,,632,64,120,0,0,0,120,0,0,0,,,,2014-05-13 08:00,2014-05-29 17:00,,2014-02-09 08:00,2014-02-26 17:00,2014-02-09 08:00,2014-02-26 17:00,2014-02-09 08:00,2014-02-26 17:00,2014-05-13 08:00,2014-05-29 17:00,,PT_Normal,,,,,TKa3mNZpTnOo2hqfp1lJXA,,,,N,0,0,,,2013-02-16 15:52,2013-02-16 15:56,admin,admin
501039,6359,124571,13662,0,N,N,N,CP_Drtn,TT_Task,DT_FixedDUR2,TK_NotStart,DUKHCONP1BZ1PLRF4355,Roof  Water Tank Installation & Connections,8178,152,0,200,0,672,672,200,0,0,0,,,,2014-05-19 08:00,2014-06-16 17:00,,2014-04-27 08:00,2014-05-25 17:00,2014-04-27 08:00,2014-05-25 17:00,2014-04-27 08:00,2014-05-25 17:00,2014-05-19 08:00,2014-06-16 17:00,,PT_Normal,,,,,3L4RBxagSKy+IPVgK5WSbw,,,,N,0,0,,,2013-02-16 15:52,2013-02-16 15:56,admin,admin
501040,6359,124574,13662,0,N,N,N,CP_Drtn,TT_Task,DT_FixedDUR2,TK_NotStart,DUKHCONP1BZ1STRF2040,Column-Rebar & Formwork,8166,168,0,144,0,1176,1176,144,0,0,0,,,,2013-12-14 08:00,2014-01-04 17:00,,2013-11-19 08:00,2013-12-09 17:00,2013-11-19 08:00,2013-12-09 17:00,2013-11-19 08:00,2013-12-09 17:00,2013-12-14 08:00,2014-01-04 17:00,,PT_Normal,,,,,mD5n0PsdSiKqB1WLiiD5Bg,,,,N,0,0,,,2013-02-16 15:52,2013-02-16 15:56,admin,admin
501041,6359,124574,13662,0,N,N,N,CP_Drtn,TT_Task,DT_FixedDUR2,TK_NotStart,DUKHCONP1BZ1STRF2045,Column-Concrete,8167,168,0,136,0,80.5,80.5,136,0,0,0,,,,2013-12-17 08:00,2014-01-06 17:00,,2013-11-23 08:00,2013-12-11 17:00,2013-11-23 08:00,2013-12-11 17:00,2013-11-23 08:00,2013-12-11 17:00,2013-12-17 08:00,2014-01-06 17:00,,PT_Normal,,,,,UFYYMofyTdCYoTp+9C5DbA,,,,N,0,0,,,2013-02-16 15:52,2013-02-16 15:56,admin,admin
501042,6359,124574,13662,0,N,N,N,CP_Drtn,TT_Task,DT_FixedDUR2,TK_NotStart,DUKHCONP1BZ1STRF2050,Slab-Rebar & Formwork - Head Room,8165,168,0,160,0,3444,3444,160,0,0,0,,,,2013-12-21 08:00,2014-01-12 17:00,,2013-11-25 08:00,2013-12-17 17:00,2013-11-25 08:00,2013-12-17 17:00,2013-11-25 08:00,2013-12-17 17:00,2013-12-21 08:00,2014-01-12 17:00,,PT_Normal,,,,,BCZLRORZRhKQ2kQ9uiVUEA,,,,N,0,0,,,2013-02-16 15:52,2013-02-16 15:56,admin,admin
501043,6359,124574,13662,0,N,N,N,CP_Drtn,TT_Task,DT_FixedDUR2,TK_NotStart,DUKHCONP1BZ1STRF2055,Slab-Concrete-Head room,8167,168,0,104,0,280,280,104,0,0,0,,,,2014-01-04 08:00,2014-01-18 17:00,,2013-12-09 08:00,2013-12-24 17:00,2013-12-09 08:00,2013-12-24 17:00,2013-12-09 08:00,2013-12-24 17:00,2014-01-04 08:00,2014-01-18 17:00,,PT_Normal,,,,,CpEiAQDPQ+u7zLeS5QFvIA,,,,N,0,0,,,2013-02-16 15:52,2013-02-16 15:56,admin,admin
501044,6359,124574,13662,0,N,N,N,CP_Drtn,TT_Task,DT_FixedDUR2,TK_NotStart,DUKHCONP1BZ1STRF2060,Construction of Parapets,8168,408,0,200,0,1175,1175,200,0,0,0,,,,2014-02-10 08:00,2014-03-11 17:00,,2013-12-11 08:00,2014-01-09 17:00,2013-12-11 08:00,2014-01-09 17:00,2013-12-11 08:00,2014-01-09 17:00,2014-02-10 08:00,2014-03-11 17:00,,PT_Normal,,,,,gyQWre50T92qi3OPGoIxSQ,,,,N,0,0,,,2013-02-16 15:52,2013-02-16 15:56,admin,admin
501045,6359,124574,13662,0,N,N,N,CP_Drtn,TT_Task,DT_FixedDUR2,TK_NotStart,DUKHCONP1BZ1STRF2065,Construction of up stands/Plinth,8165,624,0,200,0,549.5,549.5,200,0,0,0,,,,2014-03-26 08:00,2014-04-23 17:00,,2013-12-24 08:00,2014-01-21 17:00,2013-12-24 08:00,2014-01-21 17:00,2013-12-24 08:00,2014-01-21 17:00,2014-03-26 08:00,2014-04-23 17:00,,PT_Normal,,,,,tT/mU4lkT3qXUhfiyBfBNg,,,,N,0,0,,,2013-02-16 15:52,2013-02-16 15:56,admin,admin
501046,6359,124575,13662,0,N,N,N,CP_Drtn,TT_Task,DT_FixedDUR2,TK_NotStart,DUKHCONP1BZ1STGF2005,Column-Concrete,8167,0,0,184,0,388.5,388.5,184,0,0,0,,,,2013-08-31 08:00,2013-09-25 17:00,,2013-08-31 08:00,2013-09-25 17:00,2013-08-31 08:00,2013-09-25 17:00,2013-08-31 08:00,2013-09-25 17:00,2013-08-31 08:00,2013-09-25 17:00,,PT_Normal,,,,,bciAdyMKQJWKX0ikGbDriw,,,,Y,0,0,,,2013-02-16 15:52,2013-02-16 15:56,admin,admin
501047,6359,124575,13662,0,N,N,N,CP_Drtn,TT_Task,DT_FixedDUR2,TK_NotStart,DUKHCONP1BZ1STGF2010,"Beam, Stairs ,Slab-Rebar & Formwork",8165,0,0,200,0,18721.5,18721.5,200,0,0,0,,,,2013-09-14 08:00,2013-10-12 17:00,,2013-09-14 08:00,2013-10-12 17:00,2013-09-14 08:00,2013-10-12 17:00,2013-09-14 08:00,2013-10-12 17:00,2013-09-14 08:00,2013-10-12 17:00,,PT_Normal,,,,,zWGLjCDSTB+fP93CDCYVhQ,,,,Y,0,0,,,2013-02-16 15:52,2013-02-16 15:56,admin,admin
501048,6359,124575,13662,0,N,N,N,CP_Drtn,TT_Task,DT_FixedDUR2,TK_NotStart,DUKHCONP1BZ1STGF2015,"Beam, Stairs ,Slab-Concrete",8167,0,0,112,0,1456,1456,112,0,0,0,,,,2013-09-30 08:00,2013-10-15 17:00,,2013-09-30 08:00,2013-10-15 17:00,2013-09-30 08:00,2013-10-15 17:00,2013-09-30 08:00,2013-10-15 17:00,2013-09-30 08:00,2013-10-15 17:00,,PT_Normal,,,,,9915HLd+R2iEIvrWeCEMmw,,,,Y,0,0,,,2013-02-16 15:52,2013-02-16 15:56,admin,admin
501049,6359,124575,13662,0,N,N,N,CP_Drtn,TT_Task,DT_FixedDUR2,TK_NotStart,DUKHCONP1BZ1STGF2000,Column-Rebar & Formwork,8165,0,0,200,0,4984,4984,200,0,0,0,,,,2013-08-21 08:00,2013-09-18 17:00,,2013-08-21 08:00,2013-09-18 17:00,2013-08-21 08:00,2013-09-18 17:00,2013-08-21 08:00,2013-09-18 17:00,2013-08-21 08:00,2013-09-18 17:00,,PT_Normal,,,,,JutooPc8SqO0i9TzseVhYw,,,,Y,0,0,,,2013-02-16 15:52,2013-02-16 15:56,admin,admin
501050,6359,124576,13662,0,N,N,N,CP_Drtn,TT_Task,DT_FixedDUR2,TK_NotStart,DUKHCONP1BZ1STFF2020,Column-Rebar & Formwork,8166,0,0,200,0,3418,3418,200,0,0,0,,,,2013-10-02 08:00,2013-11-02 17:00,,2013-10-02 08:00,2013-11-02 17:00,2013-10-02 08:00,2013-11-02 17:00,2013-10-02 08:00,2013-11-02 17:00,2013-10-02 08:00,2013-11-02 17:00,,PT_Normal,,,,,l7J6ilDdTea4JyG+5+jEmg,,,,Y,0,0,,,2013-02-16 15:52,2013-02-16 15:56,admin,admin
501051,6359,124576,13662,0,N,N,N,CP_Drtn,TT_Task,DT_FixedDUR2,TK_NotStart,DUKHCONP1BZ1STFF2025,Column-Concrete,8167,24,0,184,0,339.5,339.5,184,0,0,0,,,,2013-10-15 08:00,2013-11-12 17:00,,2013-10-12 08:00,2013-11-09 17:00,2013-10-12 08:00,2013-11-09 17:00,2013-10-12 08:00,2013-11-09 17:00,2013-10-15 08:00,2013-11-12 17:00,,PT_Normal,,,,,hJlRbMk7TcqAxlLWIkkGOQ,,,,N,0,0,,,2013-02-16 15:52,2013-02-16 15:56,admin,admin
501052,6359,124576,13662,0,N,N,N,CP_Drtn,TT_Task,DT_FixedDUR2,TK_NotStart,DUKHCONP1BZ1STFF2030,"Beam, Stairs ,Slab-Rebar & Formwork",8165,24,0,200,0,19080.25,19080.25,200,0,0,0,,,,2013-10-31 08:00,2013-11-28 17:00,,2013-10-28 08:00,2013-11-25 17:00,2013-10-28 08:00,2013-11-25 17:00,2013-10-28 08:00,2013-11-25 17:00,2013-10-31 08:00,2013-11-28 17:00,,PT_Normal,,,,,n2JftmjBSgem0pD2D82LKg,,,,N,0,0,,,2013-02-16 15:52,2013-02-16 15:56,admin,admin
501053,6359,124576,13662,0,N,N,N,CP_Drtn,TT_Task,DT_FixedDUR2,TK_NotStart,DUKHCONP1BZ1STFF2035,"Beam, Stairs ,Slab-Concrete",8167,24,0,112,0,1288,1288,112,0,0,0,,,,2013-11-17 08:00,2013-12-02 17:00,,2013-11-13 08:00,2013-11-28 17:00,2013-11-13 08:00,2013-11-28 17:00,2013-11-13 08:00,2013-11-28 17:00,2013-11-17 08:00,2013-12-02 17:00,,PT_Normal,,,,,MmFmsKUtTjG+jEBUQF/RAA,,,,N,0,0,,,2013-02-16 15:52,2013-02-16 15:56,admin,admin
501054,6359,124578,13662,0,N,N,N,CP_Drtn,TT_Task,DT_FixedDUR2,TK_NotStart,DUKHCONP1BZ1STUG1000,Footing Excavation,8177,0,0,200,0,1433,1433,200,675,0,675,,,,2013-04-14 08:00,2013-05-12 17:00,,2013-04-14 08:00,2013-05-12 17:00,2013-04-14 08:00,2013-05-12 17:00,2013-04-14 08:00,2013-05-12 17:00,2013-04-14 08:00,2013-05-12 17:00,,PT_Normal,,,,,fvv/CeJaQ9uywqscEJuXUg,,,,Y,0,0,,,2013-02-16 15:52,2013-02-16 15:56,admin,admin
501055,6359,124578,13662,0,N,N,N,CP_Drtn,TT_Task,DT_FixedDUR2,TK_NotStart,DUKHCONP1BZ1STUG1005,Footing Antitermite,8178,0,0,184,0,1861.75,1861.75,184,0,0,0,,,,2013-04-25 08:00,2013-05-21 17:00,,2013-04-25 08:00,2013-05-21 17:00,2013-04-25 08:00,2013-05-21 17:00,2013-04-25 08:00,2013-05-21 17:00,2013-04-25 08:00,2013-05-21 17:00,,PT_Normal,,,,,XFeRj5B4ToWcox7by6EKKA,,,,Y,0,0,,,2013-02-16 15:52,2013-02-16 15:56,admin,admin
501056,6359,124578,13662,0,N,N,N,CP_Drtn,TT_Task,DT_FixedDUR2,TK_NotStart,DUKHCONP1BZ1STUG1010,Footing Blinding,8163,0,0,184,0,1048.25,1048.25,184,0,0,0,,,,2013-04-29 08:00,2013-05-25 17:00,,2013-04-29 08:00,2013-05-25 17:00,2013-04-29 08:00,2013-05-25 17:00,2013-04-29 08:00,2013-05-25 17:00,2013-04-29 08:00,2013-05-25 17:00,,PT_Normal,,,,,UqqNsU1VTRi0AVNyaq17wA,,,,Y,0,0,,,2013-02-16 15:52,2013-02-16 15:56,admin,admin
501057,6359,124578,13662,0,N,N,N,CP_Drtn,TT_Task,DT_FixedDUR2,TK_NotStart,DUKHCONP1BZ1STUG1015,Footing Waterproofing & Screed,8164,0,0,200,0,825,825,200,0,0,0,,,,2013-05-05 08:00,2013-06-02 17:00,,2013-05-05 08:00,2013-06-02 17:00,2013-05-05 08:00,2013-06-02 17:00,2013-05-05 08:00,2013-06-02 17:00,2013-05-05 08:00,2013-06-02 17:00,,PT_Normal,,,,,LKVr6rBxRUCPJgrjvbdJkg,,,,Y,0,0,,,2013-02-16 15:52,2013-02-16 15:56,admin,admin
501058,6359,124578,13662,0,N,N,N,CP_Drtn,TT_Task,DT_FixedDUR2,TK_NotStart,DUKHCONP1BZ1STUG1020,Construction of foundations,8165,0,0,160,0,7969.5,7969.5,160,0,0,0,,,,2013-05-20 08:00,2013-06-11 17:00,,2013-05-20 08:00,2013-06-11 17:00,2013-05-20 08:00,2013-06-11 17:00,2013-05-20 08:00,2013-06-11 17:00,2013-05-20 08:00,2013-06-11 17:00,,PT_Normal,,,,,fuBsiXyzS5mXldfBlYIj6A,,,,Y,0,0,,,2013-02-16 15:52,2013-02-16 15:56,admin,admin
501059,6359,124578,13662,0,N,N,N,CP_Drtn,TT_Task,DT_FixedDUR2,TK_NotStart,DUKHCONP1BZ1STUG1025,Construction of neck of columns,8165,0,0,200,0,1946,1946,200,0,0,0,,,,2013-05-29 08:00,2013-06-26 17:00,,2013-05-29 08:00,2013-06-26 17:00,2013-05-29 08:00,2013-06-26 17:00,2013-05-29 08:00,2013-06-26 17:00,2013-05-29 08:00,2013-06-26 17:00,,PT_Normal,,,,,E8qwOehzRNGp3xluhgi6iQ,,,,Y,0,0,,,2013-02-16 15:52,2013-02-16 15:56,admin,admin
501060,6359,124578,13662,0,N,N,N,CP_Drtn,TT_Task,DT_FixedDUR2,TK_NotStart,DUKHCONP1BZ1STUG1030,Waterproofing Footing & Neck Column,8178,0,0,200,0,535.25,535.25,200,0,0,0,,,,2013-06-08 08:00,2013-07-06 17:00,,2013-06-08 08:00,2013-07-06 17:00,2013-06-08 08:00,2013-07-06 17:00,2013-06-08 08:00,2013-07-06 17:00,2013-06-08 08:00,2013-07-06 17:00,,PT_Normal,,,,,6CSnCpfdQ9qu3GmtT7gQiQ,,,,Y,0,0,,,2013-02-16 15:52,2013-02-16 15:56,admin,admin
501061,6359,124578,13662,0,N,N,N,CP_Drtn,TT_Task,DT_FixedDUR2,TK_NotStart,DUKHCONP1BZ1STUG1035,Backfilling Upto Grade Beam Bottom,8177,0,0,200,0,1436,1436,200,1100,0,1100,,,,2013-06-19 08:00,2013-07-17 17:00,,2013-06-19 08:00,2013-07-17 17:00,2013-06-19 08:00,2013-07-17 17:00,2013-06-19 08:00,2013-07-17 17:00,2013-06-19 08:00,2013-07-17 17:00,,PT_Normal,,,,,onqd4RdPQm2yXU9CiNm+Hg,,,,Y,0,0,,,2013-02-16 15:52,2013-02-16 15:56,admin,admin
501062,6359,124578,13662,0,N,N,N,CP_Drtn,TT_Task,DT_FixedDUR2,TK_NotStart,DUKHCONP1BZ1STUG1040,Construction of Grade Beams,8163,0,0,200,0,8096.25,8096.25,200,0,0,0,,,,2013-07-06 08:00,2013-08-03 17:00,,2013-07-06 08:00,2013-08-03 17:00,2013-07-06 08:00,2013-08-03 17:00,2013-07-06 08:00,2013-08-03 17:00,2013-07-06 08:00,2013-08-03 17:00,,PT_Normal,,,,,4oMTAEM9SCShVA0B0o/4Xw,,,,Y,0,0,,,2013-02-16 15:52,2013-02-16 15:56,admin,admin
501063,6359,124578,13662,0,N,N,N,CP_Drtn,TT_Task,DT_FixedDUR2,TK_NotStart,DUKHCONP1BZ1STUG1045,Construction of slab on grade,8163,0,0,200,0,5538.75,5538.75,200,0,0,0,,,,2013-08-01 08:00,2013-09-02 17:00,,2013-08-01 08:00,2013-09-02 17:00,2013-08-01 08:00,2013-09-02 17:00,2013-08-01 08:00,2013-09-02 17:00,2013-08-01 08:00,2013-09-02 17:00,,PT_Normal,,,,,nw49WRHhTimhpkxNnBKiHQ,,,,Y,0,0,,,2013-02-16 15:52,2013-02-16 15:56,admin,admin
501064,6359,124579,13662,0,N,N,N,CP_Drtn,TT_Task,DT_FixedDUR2,TK_NotStart,DUKHCONP1BZ1ACTC8000,Pre-Commissioning & Testing of AC Works,8178,24,0,200,0,1500,1500,200,0,0,0,,,,2014-06-17 08:00,2014-07-15 17:00,,2014-06-14 08:00,2014-07-12 17:00,2014-06-14 08:00,2014-07-12 17:00,2014-06-14 08:00,2014-07-12 17:00,2014-06-17 08:00,2014-07-15 17:00,,PT_Normal,,,,,jT324IYqSSWxC7fMLlz8DQ,,,,N,0,0,,,2013-02-16 15:52,2013-02-16 15:56,admin,admin
501065,6359,124579,13662,0,N,N,N,CP_Drtn,TT_Task,DT_FixedDUR2,TK_NotStart,DUKHCONP1BZ1ELTC8010,Pre-Commissioning & Testing of Electrical Works,8178,24,0,200,0,3000,3000,200,0,0,0,,,,2014-06-17 08:00,2014-07-15 17:00,,2014-06-14 08:00,2014-07-12 17:00,2014-06-14 08:00,2014-07-12 17:00,2014-06-14 08:00,2014-07-12 17:00,2014-06-17 08:00,2014-07-15 17:00,,PT_Normal,,,,,Z6CvXaOATCK/+XEr42Nbpw,,,,N,0,0,,,2013-02-16 15:52,2013-02-16 15:56,admin,admin
501066,6359,124579,13662,0,N,N,N,CP_Drtn,TT_Task,DT_FixedDUR2,TK_NotStart,DUKHCONP1BZ1PLTC8005,Pre-Commissioning & Testing of Plumbing Works,8178,24,0,200,0,3000,3000,200,0,0,0,,,,2014-06-17 08:00,2014-07-15 17:00,,2014-06-14 08:00,2014-07-12 17:00,2014-06-14 08:00,2014-07-12 17:00,2014-06-14 08:00,2014-07-12 17:00,2014-06-17 08:00,2014-07-15 17:00,,PT_Normal,,,,,wnTdcL31Qe23OjKpaq7FhA,,,,N,0,0,,,2013-02-16 15:52,2013-02-16 15:56,admin,admin
501067,6359,124581,13662,0,N,N,N,CP_Drtn,TT_Task,DT_FixedDUR2,TK_NotStart,DUKHCONP1BZ1MSEX5335,Aluminum Roll-up Shutter with 2m Wall,8178,200,0,200,0,400,400,200,0,0,0,,,,2014-06-17 08:00,2014-07-15 17:00,,2014-05-19 08:00,2014-06-16 17:00,2014-05-19 08:00,2014-06-16 17:00,2014-05-19 08:00,2014-06-16 17:00,2014-06-17 08:00,2014-07-15 17:00,,PT_Normal,,,,,4a/Q+SLcQKqIHAmi4xjGMg,,,,N,0,0,,,2013-02-16 15:52,2013-02-16 15:56,admin,admin
501068,6359,124581,13662,0,N,N,N,CP_Drtn,TT_Task,DT_FixedDUR2,TK_NotStart,DUKHCONP1BZ1MSEX5020,Construction Entrance Ramp,8164,552,0,200,0,1288,1288,200,0,0,0,,,,2014-03-02 08:00,2014-03-30 17:00,,2013-12-09 08:00,2014-01-07 17:00,2013-12-09 08:00,2014-01-07 17:00,2013-12-09 08:00,2014-01-07 17:00,2014-03-02 08:00,2014-03-30 17:00,,PT_Normal,,,,,YgBUJK0rT02a65D0G9NNYg,,,,N,0,0,,,2013-02-16 15:52,2013-02-16 15:56,admin,admin
501069,6359,124581,13662,0,N,N,N,CP_Drtn,TT_Task,DT_FixedDUR2,TK_NotStart,DUKHCONP1BZ1MSEX5025,SS.Handrails and Balustrades,8178,552,0,160,0,400,400,160,0,0,0,,,,2014-03-22 08:00,2014-04-13 17:00,,2013-12-30 08:00,2014-01-21 17:00,2013-12-30 08:00,2014-01-21 17:00,2013-12-30 08:00,2014-01-21 17:00,2014-03-22 08:00,2014-04-13 17:00,,PT_Normal,,,,,KWmxc1DJS06+Qq1nOXAFzA,,,,N,0,0,,,2013-02-16 15:52,2013-02-16 15:56,admin,admin
501070,6359,124581,13662,0,N,N,N,CP_Drtn,TT_Task,DT_FixedDUR2,TK_NotStart,DUKHCONP1BZ1MSEX5015,Construction of grease Trap,8178,240,0,160,0,88,88,160,0,0,0,,,,2014-03-02 08:00,2014-03-24 17:00,,2014-01-25 08:00,2014-02-17 17:00,2014-01-25 08:00,2014-02-17 17:00,2014-01-25 08:00,2014-02-17 17:00,2014-03-02 08:00,2014-03-24 17:00,,PT_Normal,,,,,orALG+fFTsuDm+6F8Xu20A,,,,N,0,0,,,2013-02-16 15:52,2013-02-16 15:56,admin,admin
501071,6359,124581,13662,0,N,N,N,CP_Drtn,TT_Task,DT_FixedDUR2,TK_NotStart,DUKHCONP1BZ1MSEX5000,Construction of Manholes,8172,168,0,200,0,880,880,200,0,0,0,,,,2014-01-15 08:00,2014-02-13 17:00,,2013-12-22 08:00,2014-01-19 17:00,2013-12-22 08:00,2014-01-19 17:00,2013-12-22 08:00,2014-01-19 17:00,2014-01-15 08:00,2014-02-13 17:00,,PT_Normal,,,,,LH1J2IFgQXiT1kOvttLyqQ,,,,N,0,0,,,2013-02-16 15:52,2013-02-16 15:56,admin,admin
501072,6359,124581,13662,0,N,N,N,CP_Drtn,TT_Task,DT_FixedDUR2,TK_NotStart,DUKHCONP1BZ1MSEX5005,"Construction  of Soak pit, Chambers",8172,240,0,200,0,176,176,200,0,0,0,,,,2014-02-09 08:00,2014-03-10 17:00,,2014-01-05 08:00,2014-02-02 17:00,2014-01-05 08:00,2014-02-02 17:00,2014-01-05 08:00,2014-02-02 17:00,2014-02-09 08:00,2014-03-10 17:00,,PT_Normal,,,,,+Bi7VKOlTFSIABzKFnt3pg,,,,N,0,0,,,2013-02-16 15:52,2013-02-16 15:56,admin,admin
501073,6359,124581,13662,0,N,N,N,CP_Drtn,TT_Task,DT_FixedDUR2,TK_NotStart,DUKHCONP1BZ1MSEX5010,Telephone cable laying,8177,240,40,200,0,500,500,200,0,0,0,,,,2014-03-25 08:00,2014-04-22 17:00,,2014-02-18 08:00,2014-03-18 17:00,2014-02-18 08:00,2014-03-18 17:00,2014-02-18 08:00,2014-03-18 17:00,2014-03-25 08:00,2014-04-22 17:00,,PT_Normal,,,,,MsK0dSOFTkKt0fdeofVW5Q,,,,N,0,0,,,2013-02-16 15:52,2013-02-16 15:56,admin,admin
501074,6359,124582,13662,0,N,N,N,CP_Drtn,TT_Task,DT_FixedDUR2,TK_NotStart,DUKHCONP1BZ1WEEX5030,Excavation,8177,408,0,160,0,128,128,160,80,0,80,,,,2014-02-23 08:00,2014-03-17 17:00,,2013-12-24 08:00,2014-01-15 17:00,2013-12-24 08:00,2014-01-15 17:00,2013-12-24 08:00,2014-01-15 17:00,2014-02-23 08:00,2014-03-17 17:00,,PT_Normal,,,,,2OgdarD+Qi201OSSQXeDwg,,,,N,0,0,,,2013-02-16 15:52,2013-02-16 15:56,admin,admin
501075,6359,124582,13662,0,N,N,N,CP_Drtn,TT_Task,DT_FixedDUR2,TK_NotStart,DUKHCONP1BZ1WEEX5035,Construction of Raft,8165,568,0,200,0,1624,1624,200,0,0,0,,,,2014-03-24 08:00,2014-04-21 17:00,,2013-12-30 08:00,2014-01-27 17:00,2013-12-30 08:00,2014-01-27 17:00,2013-12-30 08:00,2014-01-27 17:00,2014-03-24 08:00,2014-04-21 17:00,,PT_Normal,,,,,/p/QJIYGToS3sHyZy/5WoA,,,,N,0,0,,,2013-02-16 15:52,2013-02-16 15:56,admin,admin
501076,6359,124582,13662,0,N,N,N,CP_Drtn,TT_Task,DT_FixedDUR2,TK_NotStart,DUKHCONP1BZ1WEEX5040,Block works & Plastering,8168,568,0,200,0,888,888,200,0,0,0,,,,2014-04-02 08:00,2014-04-30 17:00,,2014-01-08 08:00,2014-02-05 17:00,2014-01-08 08:00,2014-02-05 17:00,2014-01-08 08:00,2014-02-05 17:00,2014-04-02 08:00,2014-04-30 17:00,,PT_Normal,,,,,oEvTafqwR2iXGH7GZfy2xA,,,,N,0,0,,,2013-02-16 15:52,2013-02-16 15:56,admin,admin
501077,6359,124582,13662,0,N,N,N,CP_Drtn,TT_Task,DT_FixedDUR2,TK_NotStart,DUKHCONP1BZ1WEEX5045,Flooring & Painting,8178,568,0,200,0,408,408,200,0,0,0,,,,2014-04-14 08:00,2014-05-12 17:00,,2014-01-20 08:00,2014-02-18 17:00,2014-01-20 08:00,2014-02-18 17:00,2014-01-20 08:00,2014-02-18 17:00,2014-04-14 08:00,2014-05-12 17:00,,PT_Normal,,,,,ObJ7ds+HT+e+BxAa16IGqA,,,,N,0,0,,,2013-02-16 15:52,2013-02-16 15:56,admin,admin
501078,6359,124582,13662,0,N,N,N,CP_Drtn,TT_Task,DT_FixedDUR2,TK_NotStart,DUKHCONP1BZ1WEEX5050,Installation of Steel Gate,8178,568,0,160,0,112,112,160,0,0,0,,,,2014-05-01 08:00,2014-05-24 17:00,,2014-02-06 08:00,2014-03-02 17:00,2014-02-06 08:00,2014-03-02 17:00,2014-02-06 08:00,2014-03-02 17:00,2014-05-01 08:00,2014-05-24 17:00,,PT_Normal,,,,,KDjAoReCSE2K7H0KKRM0eA,,,,N,0,0,,,2013-02-16 15:52,2013-02-16 15:56,admin,admin
501079,6359,124582,13662,0,N,N,N,CP_Drtn,TT_Task,DT_FixedDUR2,TK_NotStart,DUKHCONP1BZ1WEEX5060,Structural steel &  SS Shed cover installation,8178,568,0,200,0,616,616,200,0,0,0,,,,2014-05-07 08:00,2014-06-04 17:00,,2014-02-13 08:00,2014-03-13 17:00,2014-02-13 08:00,2014-03-13 17:00,2014-02-13 08:00,2014-03-13 17:00,2014-05-07 08:00,2014-06-04 17:00,,PT_Normal,,,,,o441l1e8Ts64iANiglcKbA,,,,N,0,0,,,2013-02-16 15:52,2013-02-16 15:56,admin,admin
501080,6359,124582,13662,0,N,N,N,CP_Drtn,TT_Task,DT_FixedDUR2,TK_NotStart,DUKHCONP1BZ1WEEX5065,"Install. of Water Tank,Chiller,Pump & Meter",8178,568,0,200,0,382.4,382.4,200,0,0,0,,,,2014-05-19 08:00,2014-06-16 17:00,,2014-02-25 08:00,2014-03-25 17:00,2014-02-25 08:00,2014-03-25 17:00,2014-02-25 08:00,2014-03-25 17:00,2014-05-19 08:00,2014-06-16 17:00,,PT_Normal,,,,,qFBxF9mNQ1+c2l41cdhk6A,,,,N,0,0,,,2013-02-16 15:52,2013-02-16 15:56,admin,admin
501081,6359,124583,13662,0,N,N,N,CP_Drtn,TT_Task,DT_FixedDUR2,TK_NotStart,DUKHCONP1BZ1HDEX5090,kerb works,8173,552,0,160,0,712,712,160,0,0,0,,,,2014-03-30 08:00,2014-04-21 17:00,,2014-01-07 08:00,2014-01-29 17:00,2014-01-07 08:00,2014-01-29 17:00,2014-01-07 08:00,2014-01-29 17:00,2014-03-30 08:00,2014-04-21 17:00,,PT_Normal,,,,,QNvUysahSfWeGcCGqu4qew,,,,N,0,0,,,2013-02-16 15:52,2013-02-16 15:56,admin,admin
501082,6359,124583,13662,0,N,N,N,CP_Drtn,TT_Task,DT_FixedDUR2,TK_NotStart,DUKHCONP1BZ1HDEX5095,Cobble Stone Works,8170,552,0,160,0,456,456,160,0,0,0,,,,2014-04-10 08:00,2014-05-03 17:00,,2014-01-19 08:00,2014-02-10 17:00,2014-01-19 08:00,2014-02-10 17:00,2014-01-19 08:00,2014-02-10 17:00,2014-04-10 08:00,2014-05-03 17:00,,PT_Normal,,,,,wvzqJ3DrTIaSw7mg+qCwXg,,,,N,0,0,,,2013-02-16 15:52,2013-02-16 15:56,admin,admin
501083,6359,124583,13662,0,N,N,N,CP_Drtn,TT_Task,DT_FixedDUR2,TK_NotStart,DUKHCONP1BZ1HDEX5100,Interlock works,8174,552,0,160,0,408,408,160,0,0,0,,,,2014-04-26 08:00,2014-05-18 17:00,,2014-02-03 08:00,2014-02-26 17:00,2014-02-03 08:00,2014-02-26 17:00,2014-02-03 08:00,2014-02-26 17:00,2014-04-26 08:00,2014-05-18 17:00,,PT_Normal,,,,,hDopiiYSRtyvYFw75YaBew,,,,N,0,0,,,2013-02-16 15:52,2013-02-16 15:56,admin,admin
501084,6359,124584,13662,0,N,N,N,CP_Drtn,TT_Task,DT_FixedDUR2,TK_NotStart,DUKHCONP1BZ1SLEX5105,Laying of Grass/ green area,8178,552,0,200,0,5488,5488,200,0,0,0,,,,2014-05-07 08:00,2014-06-04 17:00,,2014-02-16 08:00,2014-03-16 17:00,2014-02-16 08:00,2014-03-16 17:00,2014-02-16 08:00,2014-03-16 17:00,2014-05-07 08:00,2014-06-04 17:00,,PT_Normal,,,,,Ar5tRiA+TSi56ZBBYj+8cA,,,,N,0,0,,,2013-02-16 15:52,2013-02-16 15:56,admin,admin
501085,6359,124584,13662,0,N,N,N,CP_Drtn,TT_Task,DT_FixedDUR2,TK_NotStart,DUKHCONP1BZ1SLEX5110,Laying of Palm tree,8178,552,528,200,0,336,336,200,0,0,0,,,,2014-05-19 08:00,2014-06-16 17:00,,2014-02-27 08:00,2014-03-27 17:00,2014-02-27 08:00,2014-03-27 17:00,2014-02-27 08:00,2014-03-27 17:00,2014-05-19 08:00,2014-06-16 17:00,,PT_Normal,,,,,Z175rg8LTmSJUpuCdkOBKw,,,,N,0,0,,,2013-02-16 15:52,2013-02-16 15:56,admin,admin
501086,6359,124587,13662,0,N,N,N,CP_Drtn,TT_Task,DT_FixedDUR2,TK_NotStart,DUKHCONP1BZ1AREL3665,External Plastering,8169,600,0,200,0,12200,12200,200,0,0,0,,,,2014-04-19 08:00,2014-05-17 17:00,,2014-01-20 08:00,2014-02-18 17:00,2014-01-20 08:00,2014-02-18 17:00,2014-01-20 08:00,2014-02-18 17:00,2014-04-19 08:00,2014-05-17 17:00,,PT_Normal,,,,,cvoAtf7jQdOh7ERUBoa6VA,,,,N,0,0,,,2013-02-16 15:52,2013-02-16 15:56,admin,admin
501087,6359,124587,13662,0,N,N,N,CP_Drtn,TT_Task,DT_FixedDUR2,TK_NotStart,DUKHCONP1BZ1AREL3670,External stone cladding works,8170,608,0,160,0,936,936,160,0,0,0,,,,2014-05-07 08:00,2014-05-29 17:00,,2014-02-06 08:00,2014-03-02 17:00,2014-02-06 08:00,2014-03-02 17:00,2014-02-06 08:00,2014-03-02 17:00,2014-05-07 08:00,2014-05-29 17:00,,PT_Normal,,,,,XnEO2dj9RLWWVyOdhOE5nQ,,,,N,0,0,,,2013-02-16 15:52,2013-02-16 15:56,admin,admin
501088,6359,124587,13662,0,N,N,N,CP_Drtn,TT_Task,DT_FixedDUR2,TK_NotStart,DUKHCONP1BZ1AREL3675,GRC works,8178,608,0,160,0,550,550,160,0,0,0,,,,2014-05-13 08:00,2014-06-04 17:00,,2014-02-13 08:00,2014-03-08 17:00,2014-02-13 08:00,2014-03-08 17:00,2014-02-13 08:00,2014-03-08 17:00,2014-05-13 08:00,2014-06-04 17:00,,PT_Normal,,,,,x3UL4WfWTVaxhmFKteW8Ug,,,,N,0,0,,,2013-02-16 15:52,2013-02-16 15:56,admin,admin
501089,6359,124587,13662,0,N,N,N,CP_Drtn,TT_Task,DT_FixedDUR2,TK_NotStart,DUKHCONP1BZ1AREL3680,External Painting,8178,608,40,160,0,4224,4224,160,0,0,0,,,,2014-05-25 08:00,2014-06-16 17:00,,2014-02-25 08:00,2014-03-19 17:00,2014-02-25 08:00,2014-03-19 17:00,2014-02-25 08:00,2014-03-19 17:00,2014-05-25 08:00,2014-06-16 17:00,,PT_Normal,,,,,NXNhQcPeTseh/3gHDkMHgA,,,,N,0,0,,,2013-02-16 15:52,2013-02-16 15:56,admin,admin
501090,6359,124588,13662,0,N,N,N,CP_Drtn,TT_Task,DT_FixedDUR2,TK_NotStart,DUKHCONP1BZ1ARRF3630,Leveling Screed for Waterproofing,8164,624,0,200,0,711.5,711.5,200,0,0,0,,,,2014-04-07 08:00,2014-05-05 17:00,,2014-01-05 08:00,2014-02-02 17:00,2014-01-05 08:00,2014-02-02 17:00,2014-01-05 08:00,2014-02-02 17:00,2014-04-07 08:00,2014-05-05 17:00,,PT_Normal,,,,,GTIFLi89SxW0DL7UbV5GWA,,,,N,0,0,,,2013-02-16 15:52,2013-02-16 15:56,admin,admin
501091,6359,124588,13662,0,N,N,N,CP_Drtn,TT_Task,DT_FixedDUR2,TK_NotStart,DUKHCONP1BZ1ARRF3635,Laying of Waterproofing Membrane,8178,624,0,200,0,986.25,986.25,200,0,0,0,,,,2014-04-10 08:00,2014-05-08 17:00,,2014-01-08 08:00,2014-02-05 17:00,2014-01-08 08:00,2014-02-05 17:00,2014-01-08 08:00,2014-02-05 17:00,2014-04-10 08:00,2014-05-08 17:00,,PT_Normal,,,,,flsGml3mSDenllpe06i7Vg,,,,N,0,0,,,2013-02-16 15:52,2013-02-16 15:56,admin,admin
501092,6359,124588,13662,0,N,N,N,CP_Drtn,TT_Task,DT_FixedDUR2,TK_NotStart,DUKHCONP1BZ1ARRF3640,Installation of Insulation & Protection,8178,624,0,200,0,1250.25,1250.25,200,0,0,0,,,,2014-04-15 08:00,2014-05-13 17:00,,2014-01-13 08:00,2014-02-10 17:00,2014-01-13 08:00,2014-02-10 17:00,2014-01-13 08:00,2014-02-10 17:00,2014-04-15 08:00,2014-05-13 17:00,,PT_Normal,,,,,rtoaDyOmR4ypFZRw7KzWAg,,,,N,0,0,,,2013-02-16 15:52,2013-02-16 15:56,admin,admin
501093,6359,124588,13662,0,N,N,N,CP_Drtn,TT_Task,DT_FixedDUR2,TK_NotStart,DUKHCONP1BZ1ARRF3645,Lime Stone Chips & Paving slab Installation,8170,624,0,200,0,626,626,200,0,0,0,,,,2014-04-20 08:00,2014-05-18 17:00,,2014-01-18 08:00,2014-02-16 17:00,2014-01-18 08:00,2014-02-16 17:00,2014-01-18 08:00,2014-02-16 17:00,2014-04-20 08:00,2014-05-18 17:00,,PT_Normal,,,,,7o0Nk+EkRCqezO9IOLGMOg,,,,N,0,0,,,2013-02-16 15:52,2013-02-16 15:56,admin,admin
501094,6359,124588,13662,0,N,N,N,CP_Drtn,TT_Task,DT_FixedDUR2,TK_NotStart,DUKHCONP1BZ1ARRF3655,Installation of Pumps Protection cabinets,8178,624,0,160,0,616,616,160,0,0,0,,,,2014-05-13 08:00,2014-06-04 17:00,,2014-02-10 08:00,2014-03-05 17:00,2014-02-10 08:00,2014-03-05 17:00,2014-02-10 08:00,2014-03-05 17:00,2014-05-13 08:00,2014-06-04 17:00,,PT_Normal,,,,,YzoibMzuS9mTeObmepXXdA,,,,N,0,0,,,2013-02-16 15:52,2013-02-16 15:56,admin,admin
501095,6359,124588,13662,0,N,N,N,CP_Drtn,TT_Task,DT_FixedDUR2,TK_NotStart,DUKHCONP1BZ1ARRF3650,Install. of Gal. Frame & Aluminum Slat Screen,8178,624,0,200,0,859.25,859.25,200,0,0,0,,,,2014-04-28 08:00,2014-05-26 17:00,,2014-01-26 08:00,2014-02-24 17:00,2014-01-26 08:00,2014-02-24 17:00,2014-01-26 08:00,2014-02-24 17:00,2014-04-28 08:00,2014-05-26 17:00,,PT_Normal,,,,,gY6zGG7bQaKUQBCWsIJM9A,,,,N,0,0,,,2013-02-16 15:52,2013-02-16 15:56,admin,admin
501096,6359,124588,13662,0,N,N,N,CP_Drtn,TT_Task,DT_FixedDUR2,TK_NotStart,DUKHCONP1BZ1ARRF3660,Installation of Access Ladder,8178,648,624,120,0,352,352,120,0,0,0,,,,2014-05-31 08:00,2014-06-16 17:00,,2014-02-25 08:00,2014-03-13 17:00,2014-02-25 08:00,2014-03-13 17:00,2014-02-25 08:00,2014-03-13 17:00,2014-05-31 08:00,2014-06-16 17:00,,PT_Normal,,,,,GMqjDMGkTDCsB2QDR9/0tw,,,,N,0,0,,,2013-02-16 15:52,2013-02-16 15:56,admin,admin
501097,6359,124590,13662,0,N,N,N,CP_Drtn,TT_Task,DT_FixedDUR2,TK_NotStart,DUKHCONP1BZ1ARRF3600,Block work,8168,600,0,160,0,697.25,697.25,160,0,0,0,,,,2014-04-02 08:00,2014-04-24 17:00,,2014-01-04 08:00,2014-01-26 17:00,2014-01-04 08:00,2014-01-26 17:00,2014-01-04 08:00,2014-01-26 17:00,2014-04-02 08:00,2014-04-24 17:00,,PT_Normal,,,,,HKGaVqDqRvO9N16Np3IoSA,,,,N,0,0,,,2013-02-16 15:52,2013-02-16 15:56,admin,admin
501098,6359,124590,13662,0,N,N,N,CP_Drtn,TT_Task,DT_FixedDUR2,TK_NotStart,DUKHCONP1BZ1ARRF3605,Plastering work,8169,600,0,160,0,3833,3833,160,0,0,0,,,,2014-04-10 08:00,2014-05-03 17:00,,2014-01-12 08:00,2014-02-03 17:00,2014-01-12 08:00,2014-02-03 17:00,2014-01-12 08:00,2014-02-03 17:00,2014-04-10 08:00,2014-05-03 17:00,,PT_Normal,,,,,C1b0mWYARlyYWLphCQn97A,,,,N,0,0,,,2013-02-16 15:52,2013-02-16 15:56,admin,admin
501099,6359,124590,13662,0,N,N,N,CP_Drtn,TT_Task,DT_FixedDUR2,TK_NotStart,DUKHCONP1BZ1ARRF3610,Flooring screed,8164,648,0,120,0,154,154,120,0,0,0,,,,2014-05-01 08:00,2014-05-18 17:00,,2014-01-26 08:00,2014-02-12 17:00,2014-01-26 08:00,2014-02-12 17:00,2014-01-26 08:00,2014-02-12 17:00,2014-05-01 08:00,2014-05-18 17:00,,PT_Normal,,,,,nglKZ6q8RS2oxefYjHlb+g,,,,N,0,0,,,2013-02-16 15:52,2013-02-16 15:56,admin,admin
501100,6359,124590,13662,0,N,N,N,CP_Drtn,TT_Task,DT_FixedDUR2,TK_NotStart,DUKHCONP1BZ1ARRF3695,Painting -Storage area,8178,648,0,160,0,1640,1640,160,0,0,0,,,,2014-05-13 08:00,2014-06-04 17:00,,2014-02-06 08:00,2014-03-02 17:00,2014-02-06 08:00,2014-03-02 17:00,2014-02-06 08:00,2014-03-02 17:00,2014-05-13 08:00,2014-06-04 17:00,,PT_Normal,,,,,IVBhivWBQSuOU8jzn3P/Hg,,,,N,0,0,,,2013-02-16 15:52,2013-02-16 15:56,admin,admin
501101,6359,124590,13662,0,N,N,N,CP_Drtn,TT_Task,DT_FixedDUR2,TK_NotStart,DUKHCONP1BZ1ARRF3620,Epoxy Painting -Storage area,8178,648,624,120,0,48.5,48.5,120,0,0,0,,,,2014-05-31 08:00,2014-06-16 17:00,,2014-02-25 08:00,2014-03-13 17:00,2014-02-25 08:00,2014-03-13 17:00,2014-02-25 08:00,2014-03-13 17:00,2014-05-31 08:00,2014-06-16 17:00,,PT_Normal,,,,,4kElhjU9SB6SMKUXIOACjQ,,,,N,0,0,,,2013-02-16 15:52,2013-02-16 15:56,admin,admin
501102,6359,124591,13662,0,N,N,N,CP_Drtn,TT_Task,DT_FixedDUR2,TK_NotStart,DUKHCONP1BZ1ARFF3300,Block work,8168,24,0,200,0,7341,7341,200,0,0,0,,,,2013-12-11 08:00,2014-01-09 17:00,,2013-12-08 08:00,2014-01-06 17:00,2013-12-08 08:00,2014-01-06 17:00,2013-12-08 08:00,2014-01-06 17:00,2013-12-11 08:00,2014-01-09 17:00,,PT_Normal,,,,,zhiqqEwEQyG/QQ6nhE25vw,,,,N,0,0,,,2013-02-16 15:52,2013-02-16 15:56,admin,admin
501103,6359,124591,13662,0,N,N,N,CP_Drtn,TT_Task,DT_FixedDUR2,TK_NotStart,DUKHCONP1BZ1ARFF3305,Plastering work,8169,24,0,200,0,7518.75,7518.75,200,0,0,0,,,,2014-01-08 08:00,2014-02-05 17:00,,2014-01-05 08:00,2014-02-02 17:00,2014-01-05 08:00,2014-02-02 17:00,2014-01-05 08:00,2014-02-02 17:00,2014-01-08 08:00,2014-02-05 17:00,,PT_Normal,,,,,5wkCbbHgSeetSkMhdOgmDA,,,,N,0,0,,,2013-02-16 15:52,2013-02-16 15:56,admin,admin
501104,6359,124591,13662,0,N,N,N,CP_Drtn,TT_Task,DT_FixedDUR2,TK_NotStart,DUKHCONP1BZ1ARFF3310,Flooring screed,8164,160,136,168,0,1082.5,1082.5,168,0,0,0,,,,2014-02-05 08:00,2014-03-02 17:00,,2014-01-13 08:00,2014-02-05 17:00,2014-01-13 08:00,2014-02-05 17:00,2014-01-13 08:00,2014-02-05 17:00,2014-02-05 08:00,2014-03-02 17:00,,PT_Normal,,,,,YZyg/aQjROWroyDTtIaR9A,,,,N,0,0,,,2013-02-16 15:52,2013-02-16 15:56,admin,admin
501105,6359,124591,13662,0,N,N,N,CP_Drtn,TT_Task,DT_FixedDUR2,TK_NotStart,DUKHCONP1BZ1ARFF3315,Wet area waterproofing,8178,24,0,120,0,1374,1374,120,0,0,0,,,,2014-01-29 08:00,2014-02-16 17:00,,2014-01-26 08:00,2014-02-12 17:00,2014-01-26 08:00,2014-02-12 17:00,2014-01-26 08:00,2014-02-12 17:00,2014-01-29 08:00,2014-02-16 17:00,,PT_Normal,,,,,VjAL/21PT2WWUsViTB20WQ,,,,N,0,0,,,2013-02-16 15:52,2013-02-16 15:56,admin,admin
501106,6359,124591,13662,0,N,N,N,CP_Drtn,TT_Task,DT_FixedDUR2,TK_NotStart,DUKHCONP1BZ1ARFF3330,Paint First coat,8178,232,208,200,0,5256.25,5256.25,200,0,0,0,,,,2014-02-25 08:00,2014-03-25 17:00,,2014-01-21 08:00,2014-02-19 17:00,2014-01-21 08:00,2014-02-19 17:00,2014-01-21 08:00,2014-02-19 17:00,2014-02-25 08:00,2014-03-25 17:00,,PT_Normal,,,,,qRKC2pnwQF+UU+vpxJKX2g,,,,N,0,0,,,2013-02-16 15:52,2013-02-16 15:56,admin,admin
501107,6359,124591,13662,0,N,N,N,CP_Drtn,TT_Task,DT_FixedDUR2,TK_NotStart,DUKHCONP1BZ1ARFF3320,Ceramic Wall Tiling,8170,24,0,200,0,1516,1516,200,0,0,0,,,,2014-02-08 08:00,2014-03-09 17:00,,2014-02-04 08:00,2014-03-05 17:00,2014-02-04 08:00,2014-03-05 17:00,2014-02-04 08:00,2014-03-05 17:00,2014-02-08 08:00,2014-03-09 17:00,,PT_Normal,,,,,s0IEtEW2RmCLG196rvxWNA,,,,N,0,0,,,2013-02-16 15:52,2013-02-16 15:56,admin,admin
501108,6359,124591,13662,0,N,N,N,CP_Drtn,TT_Task,DT_FixedDUR2,TK_NotStart,DUKHCONP1BZ1ARFF3325,Porcelain Tile flooring,8170,24,0,200,0,1341,1341,200,0,0,0,,,,2014-02-18 08:00,2014-03-18 17:00,,2014-02-15 08:00,2014-03-15 17:00,2014-02-15 08:00,2014-03-15 17:00,2014-02-15 08:00,2014-03-15 17:00,2014-02-18 08:00,2014-03-18 17:00,,PT_Normal,,,,,brcgwmubTOGzm5vFcfN6VQ,,,,N,0,0,,,2013-02-16 15:52,2013-02-16 15:56,admin,admin
501109,6359,124591,13662,0,N,N,N,CP_Drtn,TT_Task,DT_FixedDUR2,TK_NotStart,DUKHCONP1BZ1ARFF3335,Slate Tile Flooring & Skirting,8170,176,152,120,0,931.25,931.25,120,0,0,0,,,,2014-03-30 08:00,2014-04-15 17:00,,2014-03-04 08:00,2014-03-20 17:00,2014-03-04 08:00,2014-03-20 17:00,2014-03-04 08:00,2014-03-20 17:00,2014-03-30 08:00,2014-04-15 17:00,,PT_Normal,,,,,j8LAh99rRJG/iYIQKX/rLA,,,,N,0,0,,,2013-02-16 15:52,2013-02-16 15:56,admin,admin
501110,6359,124591,13662,0,N,N,N,CP_Drtn,TT_Task,DT_FixedDUR2,TK_NotStart,DUKHCONP1BZ1ARFF3350,Granite - Stair case flooring & Skirting,8171,112,88,160,0,850,850,160,0,0,0,,,,2014-03-24 08:00,2014-04-15 17:00,,2014-03-08 08:00,2014-03-30 17:00,2014-03-08 08:00,2014-03-30 17:00,2014-03-08 08:00,2014-03-30 17:00,2014-03-24 08:00,2014-04-15 17:00,,PT_Normal,,,,,agjqM/q6TjyYyppNOJksOw,,,,N,0,0,,,2013-02-16 15:52,2013-02-16 15:56,admin,admin
501111,6359,124591,13662,0,N,N,N,CP_Drtn,TT_Task,DT_FixedDUR2,TK_NotStart,DUKHCONP1BZ1ARFF3345,Fixing of Suspension systems,8178,24,0,160,0,1143.5,1143.5,160,0,0,0,,,,2014-03-11 08:00,2014-04-02 17:00,,2014-03-08 08:00,2014-03-30 17:00,2014-03-08 08:00,2014-03-30 17:00,2014-03-08 08:00,2014-03-30 17:00,2014-03-11 08:00,2014-04-02 17:00,,PT_Normal,,,,,xot4oBxASDipy7jGJIrtWA,,,,N,0,0,,,2013-02-16 15:52,2013-02-16 15:56,admin,admin
501112,6359,124591,13662,0,N,N,N,CP_Drtn,TT_Task,DT_FixedDUR2,TK_NotStart,DUKHCONP1BZ1ARFF3360,Gypsum board false ceiling,8178,24,0,200,0,1191,1191,200,0,0,0,,,,2014-03-23 08:00,2014-04-20 17:00,,2014-03-19 08:00,2014-04-16 17:00,2014-03-19 08:00,2014-04-16 17:00,2014-03-19 08:00,2014-04-16 17:00,2014-03-23 08:00,2014-04-20 17:00,,PT_Normal,,,,,iD9m9/G9QYqO72Xnv87nJA,,,,N,0,0,,,2013-02-16 15:52,2013-02-16 15:56,admin,admin
501113,6359,124591,13662,0,N,N,N,CP_Drtn,TT_Task,DT_FixedDUR2,TK_NotStart,DUKHCONP1BZ1ARFF3370,Aluminum Door,8178,24,0,160,0,132,132,160,0,0,0,,,,2014-04-15 08:00,2014-05-07 17:00,,2014-04-12 08:00,2014-05-04 17:00,2014-04-12 08:00,2014-05-04 17:00,2014-04-12 08:00,2014-05-04 17:00,2014-04-15 08:00,2014-05-07 17:00,,PT_Normal,,,,,rUj6MHorTRuT99NSLfKywA,,,,N,0,0,,,2013-02-16 15:52,2013-02-16 15:56,admin,admin
501114,6359,124591,13662,0,N,N,N,CP_Drtn,TT_Task,DT_FixedDUR2,TK_NotStart,DUKHCONP1BZ1ARFF3380,Aluminum windows,8178,128,104,160,0,272.25,272.25,160,0,0,0,,,,2014-05-07 08:00,2014-05-29 17:00,,2014-04-19 08:00,2014-05-11 17:00,2014-04-19 08:00,2014-05-11 17:00,2014-04-19 08:00,2014-05-11 17:00,2014-05-07 08:00,2014-05-29 17:00,,PT_Normal,,,,,XwnRCx6iRDiUnWYjPZBK8A,,,,N,0,0,,,2013-02-16 15:52,2013-02-16 15:56,admin,admin
501115,6359,124591,13662,0,N,N,N,CP_Drtn,TT_Task,DT_FixedDUR2,TK_NotStart,DUKHCONP1BZ1ARFF3375,Carpentry & Joinery Works,8178,24,0,200,0,704,704,200,0,0,0,,,,2014-04-23 08:00,2014-05-21 17:00,,2014-04-20 08:00,2014-05-18 17:00,2014-04-20 08:00,2014-05-18 17:00,2014-04-20 08:00,2014-05-18 17:00,2014-04-23 08:00,2014-05-21 17:00,,PT_Normal,,,,,MCJz6q6YR3+eGsTwB5dkTA,,,,N,0,0,,,2013-02-16 15:52,2013-02-16 15:56,admin,admin
501116,6359,124591,13662,0,N,N,N,CP_Drtn,TT_Task,DT_FixedDUR2,TK_NotStart,DUKHCONP1BZ1ARFF3390,Installation of Granite Counter Top,8171,40,16,160,0,110,110,160,0,0,0,,,,2014-05-10 08:00,2014-06-01 17:00,,2014-05-04 08:00,2014-05-26 17:00,2014-05-04 08:00,2014-05-26 17:00,2014-05-04 08:00,2014-05-26 17:00,2014-05-10 08:00,2014-06-01 17:00,,PT_Normal,,,,,IlsxpiOoSdmWhREXOMKeCw,,,,N,0,0,,,2013-02-16 15:52,2013-02-16 15:56,admin,admin
501117,6359,124591,13662,0,N,N,N,CP_Drtn,TT_Task,DT_FixedDUR2,TK_NotStart,DUKHCONP1BZ1ARFF3385,Handrail &  Balustrade,8178,24,0,160,0,175,175,160,0,0,0,,,,2014-05-07 08:00,2014-05-29 17:00,,2014-05-04 08:00,2014-05-26 17:00,2014-05-04 08:00,2014-05-26 17:00,2014-05-04 08:00,2014-05-26 17:00,2014-05-07 08:00,2014-05-29 17:00,,PT_Normal,,,,,zAMCFvfFSLCSxRmlTN0Wig,,,,N,0,0,,,2013-02-16 15:52,2013-02-16 15:56,admin,admin
501118,6359,124591,13662,0,N,N,N,CP_Drtn,TT_Task,DT_FixedDUR2,TK_NotStart,DUKHCONP1BZ1ARFF3395,Final Painting,8178,24,0,200,0,5256.25,5256.25,200,0,0,0,,,,2014-05-19 08:00,2014-06-16 17:00,,2014-05-15 08:00,2014-06-12 17:00,2014-05-15 08:00,2014-06-12 17:00,2014-05-15 08:00,2014-06-12 17:00,2014-05-19 08:00,2014-06-16 17:00,,PT_Normal,,,,,UDyyfpfiTOOjF+qm2bkU3Q,,,,N,0,0,,,2013-02-16 15:52,2013-02-16 15:56,admin,admin
501119,6359,124591,13662,0,N,N,N,CP_Drtn,TT_Task,DT_FixedDUR2,TK_NotStart,DUKHCONP1BZ1ARFF3365,Wooden door,8178,24,0,120,0,176,176,120,0,0,0,,,,2014-04-07 08:00,2014-04-23 17:00,,2014-04-03 08:00,2014-04-20 17:00,2014-04-03 08:00,2014-04-20 17:00,2014-04-03 08:00,2014-04-20 17:00,2014-04-07 08:00,2014-04-23 17:00,,PT_Normal,,,,,Sp4fnZ53S82onVfcI8EFzg,,,,N,0,0,,,2013-02-16 15:52,2013-02-16 15:56,admin,admin
501120,6359,124592,13662,0,N,N,N,CP_Drtn,TT_Task,DT_FixedDUR2,TK_NotStart,DUKHCONP1BZ1ARGF3000,Block work,8168,352,0,200,0,9262.5,9262.5,200,0,0,0,,,,2013-12-17 08:00,2014-01-15 17:00,,2013-10-27 08:00,2013-11-24 17:00,2013-10-27 08:00,2013-11-24 17:00,2013-10-27 08:00,2013-11-24 17:00,2013-12-17 08:00,2014-01-15 17:00,,PT_Normal,,,,,NHMq5cmUQyG1OLddD5B1ZA,,,,N,0,0,,,2013-02-16 15:52,2013-02-16 15:56,admin,admin
501121,6359,124592,13662,0,N,N,N,CP_Drtn,TT_Task,DT_FixedDUR2,TK_NotStart,DUKHCONP1BZ1ARGF3005,Plastering work,8169,400,0,200,0,11350,11350,200,0,0,0,,,,2014-01-16 08:00,2014-02-15 17:00,,2013-11-18 08:00,2013-12-16 17:00,2013-11-18 08:00,2013-12-16 17:00,2013-11-18 08:00,2013-12-16 17:00,2014-01-16 08:00,2014-02-15 17:00,,PT_Normal,,,,,4+2pI7PgRL2QSR6WDNntPg,,,,N,0,0,,,2013-02-16 15:52,2013-02-16 15:56,admin,admin
501122,6359,124592,13662,0,N,N,N,CP_Drtn,TT_Task,DT_FixedDUR2,TK_NotStart,DUKHCONP1BZ1ARGF3010,Flooring screed,8164,464,64,168,0,2171.5,2171.5,168,0,0,0,,,,2014-02-03 08:00,2014-02-27 17:00,,2013-11-26 08:00,2013-12-21 17:00,2013-11-26 08:00,2013-12-21 17:00,2013-11-26 08:00,2013-12-21 17:00,2014-02-03 08:00,2014-02-27 17:00,,PT_Normal,,,,,QjoTB9jwR5Gl4B1IEagJ6A,,,,N,0,0,,,2013-02-16 15:52,2013-02-16 15:56,admin,admin
501123,6359,124592,13662,0,N,N,N,CP_Drtn,TT_Task,DT_FixedDUR2,TK_NotStart,DUKHCONP1BZ1ARGF3015,Wet area waterproofing & Protection Screed,8178,400,0,120,0,423.5,423.5,120,0,0,0,,,,2014-02-03 08:00,2014-02-20 17:00,,2013-12-05 08:00,2013-12-23 17:00,2013-12-05 08:00,2013-12-23 17:00,2013-12-05 08:00,2013-12-23 17:00,2014-02-03 08:00,2014-02-20 17:00,,PT_Normal,,,,,yG+nBXvhS32lq1/mNKYILg,,,,N,0,0,,,2013-02-16 15:52,2013-02-16 15:56,admin,admin
501124,6359,124592,13662,0,N,N,N,CP_Drtn,TT_Task,DT_FixedDUR2,TK_NotStart,DUKHCONP1BZ1ARGF3030,Paint First coat,8178,512,0,200,0,5936.25,5936.25,200,0,0,0,,,,2014-02-19 08:00,2014-03-19 17:00,,2013-12-04 08:00,2014-01-02 17:00,2013-12-04 08:00,2014-01-02 17:00,2013-12-04 08:00,2014-01-02 17:00,2014-02-19 08:00,2014-03-19 17:00,,PT_Normal,,,,,ULdgzAUYQiGn54e0i26Khg,,,,N,0,0,,,2013-02-16 15:52,2013-02-16 15:56,admin,admin
501125,6359,124592,13662,0,N,N,N,CP_Drtn,TT_Task,DT_FixedDUR2,TK_NotStart,DUKHCONP1BZ1ARGF3020,Ceramic Wall Tiling,8170,400,0,200,0,3534.75,3534.75,200,0,0,0,,,,2014-02-09 08:00,2014-03-10 17:00,,2013-12-11 08:00,2014-01-09 17:00,2013-12-11 08:00,2014-01-09 17:00,2013-12-11 08:00,2014-01-09 17:00,2014-02-09 08:00,2014-03-10 17:00,,PT_Normal,,,,,xGHwp+MVRq24EMZIV9xGhQ,,,,N,0,0,,,2013-02-16 15:52,2013-02-16 15:56,admin,admin
501126,6359,124592,13662,0,N,N,N,CP_Drtn,TT_Task,DT_FixedDUR2,TK_NotStart,DUKHCONP1BZ1ARGF3025,Porcelain Tile flooring,8170,400,0,200,0,1918.75,1918.75,200,0,0,0,,,,2014-02-16 08:00,2014-03-16 17:00,,2013-12-17 08:00,2014-01-15 17:00,2013-12-17 08:00,2014-01-15 17:00,2013-12-17 08:00,2014-01-15 17:00,2014-02-16 08:00,2014-03-16 17:00,,PT_Normal,,,,,2Y00M3DaRU+ktfWC1Lya6Q,,,,N,0,0,,,2013-02-16 15:52,2013-02-16 15:56,admin,admin
501127,6359,124592,13662,0,N,N,N,CP_Drtn,TT_Task,DT_FixedDUR2,TK_NotStart,DUKHCONP1BZ1ARGF3040,Cobble Tile flooring,8170,464,0,120,0,700,700,120,0,0,0,,,,2014-03-24 08:00,2014-04-09 17:00,,2014-01-14 08:00,2014-01-30 17:00,2014-01-14 08:00,2014-01-30 17:00,2014-01-14 08:00,2014-01-30 17:00,2014-03-24 08:00,2014-04-09 17:00,,PT_Normal,,,,,QR6FeOqKSBeuMH8awsFqUg,,,,N,0,0,,,2013-02-16 15:52,2013-02-16 15:56,admin,admin
501128,6359,124592,13662,0,N,N,N,CP_Drtn,TT_Task,DT_FixedDUR2,TK_NotStart,DUKHCONP1BZ1ARGF3035,Slate Tile Flooring & Skirting,8170,480,16,120,0,931.25,931.25,120,0,0,0,,,,2014-03-19 08:00,2014-04-05 17:00,,2014-01-07 08:00,2014-01-23 17:00,2014-01-07 08:00,2014-01-23 17:00,2014-01-07 08:00,2014-01-23 17:00,2014-03-19 08:00,2014-04-05 17:00,,PT_Normal,,,,,paKG+NMOTemZhubUBy2l8g,,,,N,0,0,,,2013-02-16 15:52,2013-02-16 15:56,admin,admin
501129,6359,124592,13662,0,N,N,N,CP_Drtn,TT_Task,DT_FixedDUR2,TK_NotStart,DUKHCONP1BZ1ARGF3050,Granite - Stair case flooring & Skirting,8171,464,0,160,0,850,850,160,0,0,0,,,,2014-04-01 08:00,2014-04-23 17:00,,2014-01-22 08:00,2014-02-15 17:00,2014-01-22 08:00,2014-02-15 17:00,2014-01-22 08:00,2014-02-15 17:00,2014-04-01 08:00,2014-04-23 17:00,,PT_Normal,,,,,oaarRiqRTdKcvYXAe50bSw,,,,N,0,0,,,2013-02-16 15:52,2013-02-16 15:56,admin,admin
501130,6359,124592,13662,0,N,N,N,CP_Drtn,TT_Task,DT_FixedDUR2,TK_NotStart,DUKHCONP1BZ1ARGF3045,Fixing of Suspension systems,8178,400,0,160,0,1320.5,1320.5,160,0,0,0,,,,2014-03-05 08:00,2014-03-27 17:00,,2014-01-05 08:00,2014-01-27 17:00,2014-01-05 08:00,2014-01-27 17:00,2014-01-05 08:00,2014-01-27 17:00,2014-03-05 08:00,2014-03-27 17:00,,PT_Normal,,,,,Z/BLywBaRU6CU89Syy/JoQ,,,,N,0,0,,,2013-02-16 15:52,2013-02-16 15:56,admin,admin
501131,6359,124592,13662,0,N,N,N,CP_Drtn,TT_Task,DT_FixedDUR2,TK_NotStart,DUKHCONP1BZ1ARGF3055,Aluminum tile false ceiling,8178,424,24,200,0,130,130,200,0,0,0,,,,2014-03-17 08:00,2014-04-14 17:00,,2014-01-13 08:00,2014-02-10 17:00,2014-01-13 08:00,2014-02-10 17:00,2014-01-13 08:00,2014-02-10 17:00,2014-03-17 08:00,2014-04-14 17:00,,PT_Normal,,,,,DQGMCK4dT96gXfMBztLAag,,,,N,0,0,,,2013-02-16 15:52,2013-02-16 15:56,admin,admin
501132,6359,124592,13662,0,N,N,N,CP_Drtn,TT_Task,DT_FixedDUR2,TK_NotStart,DUKHCONP1BZ1ARGF3060,Gypsum board false ceiling,8178,400,0,200,0,1216.3,1216.3,200,0,0,0,,,,2014-03-17 08:00,2014-04-14 17:00,,2014-01-16 08:00,2014-02-15 17:00,2014-01-16 08:00,2014-02-15 17:00,2014-01-16 08:00,2014-02-15 17:00,2014-03-17 08:00,2014-04-14 17:00,,PT_Normal,,,,,NHh0I6dER/CHJrc6hHNDRg,,,,N,0,0,,,2013-02-16 15:52,2013-02-23 09:03,admin,admin
501133,6359,124592,13662,0,N,N,N,CP_Drtn,TT_Task,DT_FixedDUR2,TK_NotStart,DUKHCONP1BZ1ARGF3065,Wooden door & PVC Door,8178,464,0,120,0,660,660,120,0,0,0,,,,2014-04-15 08:00,2014-05-01 17:00,,2014-02-05 08:00,2014-02-23 17:00,2014-02-05 08:00,2014-02-23 17:00,2014-02-05 08:00,2014-02-23 17:00,2014-04-15 08:00,2014-05-01 17:00,,PT_Normal,,,,,JfrNAlUMR0qr6FqUwrdn8g,,,,N,0,0,,,2013-02-16 15:52,2013-02-16 15:56,admin,admin
501134,6359,124592,13662,0,N,N,N,CP_Drtn,TT_Task,DT_FixedDUR2,TK_NotStart,DUKHCONP1BZ1ARGF3070,Aluminum doors,8178,464,0,120,0,88,88,120,0,0,0,,,,2014-04-21 08:00,2014-05-07 17:00,,2014-02-12 08:00,2014-03-01 17:00,2014-02-12 08:00,2014-03-01 17:00,2014-02-12 08:00,2014-03-01 17:00,2014-04-21 08:00,2014-05-07 17:00,,PT_Normal,,,,,zM00yTi1StuTr96JpZ51Bw,,,,N,0,0,,,2013-02-16 15:52,2013-02-16 15:56,admin,admin
501135,6359,124592,13662,0,N,N,N,CP_Drtn,TT_Task,DT_FixedDUR2,TK_NotStart,DUKHCONP1BZ1ARGF3080,Aluminum windows,8178,544,40,160,0,257.5,257.5,160,0,0,0,,,,2014-05-10 08:00,2014-06-01 17:00,,2014-02-19 08:00,2014-03-13 17:00,2014-02-19 08:00,2014-03-13 17:00,2014-02-19 08:00,2014-03-13 17:00,2014-05-10 08:00,2014-06-01 17:00,,PT_Normal,,,,,95FoPM8vQvKZs/iQogPeTQ,,,,N,0,0,,,2013-02-16 15:52,2013-02-16 15:56,admin,admin
501136,6359,124592,13662,0,N,N,N,CP_Drtn,TT_Task,DT_FixedDUR2,TK_NotStart,DUKHCONP1BZ1ARGF3075,Carpentry & Joinery Works,8178,464,0,160,0,528,528,160,0,0,0,,,,2014-04-27 08:00,2014-05-19 17:00,,2014-02-18 08:00,2014-03-12 17:00,2014-02-18 08:00,2014-03-12 17:00,2014-02-18 08:00,2014-03-12 17:00,2014-04-27 08:00,2014-05-19 17:00,,PT_Normal,,,,,PKLCjScURKi+QAg3bw2wlw,,,,N,0,0,,,2013-02-16 15:52,2013-02-16 15:56,admin,admin
501137,6359,124592,13662,0,N,N,N,CP_Drtn,TT_Task,DT_FixedDUR2,TK_NotStart,DUKHCONP1BZ1ARGF3090,Installation of Granite Counter Top,8171,464,0,120,0,242,242,120,0,0,0,,,,2014-05-10 08:00,2014-05-26 17:00,,2014-03-03 08:00,2014-03-19 17:00,2014-03-03 08:00,2014-03-19 17:00,2014-03-03 08:00,2014-03-19 17:00,2014-05-10 08:00,2014-05-26 17:00,,PT_Normal,,,,,jbeSzfDQQDuVqNnzeBNZgQ,,,,N,0,0,,,2013-02-16 15:52,2013-02-16 15:56,admin,admin
501138,6359,124592,13662,0,N,N,N,CP_Drtn,TT_Task,DT_FixedDUR2,TK_NotStart,DUKHCONP1BZ1ARGF3085,S.S.Balustrade,8178,504,40,160,0,175,175,160,0,0,0,,,,2014-05-11 08:00,2014-06-02 17:00,,2014-02-26 08:00,2014-03-20 17:00,2014-02-26 08:00,2014-03-20 17:00,2014-02-26 08:00,2014-03-20 17:00,2014-05-11 08:00,2014-06-02 17:00,,PT_Normal,,,,,TTWlHEjdTAG/UFJuJvJOpw,,,,N,0,0,,,2013-02-16 15:52,2013-02-16 15:56,admin,admin
501139,6359,124592,13662,0,N,N,N,CP_Drtn,TT_Task,DT_FixedDUR2,TK_NotStart,DUKHCONP1BZ1ARGF3095,Final Painting,8178,464,0,200,0,5936.25,5936.25,200,0,0,0,,,,2014-05-19 08:00,2014-06-16 17:00,,2014-03-12 08:00,2014-04-09 17:00,2014-03-12 08:00,2014-04-09 17:00,2014-03-12 08:00,2014-04-09 17:00,2014-05-19 08:00,2014-06-16 17:00,,PT_Normal,,,,,4OqIeo4xTiOQfuvM9Dasyw,,,,N,0,0,,,2013-02-16 15:52,2013-02-16 15:56,admin,admin
501140,6359,124596,13662,0,N,N,N,CP_Drtn,TT_Task,DT_FixedDUR2,TK_NotStart,DUKHCONI2AZ1ELGL5215,Excavation Cable  Trenches  & Duct Banks,8177,24,0,200,0,2077,2077,200,751,0,751,,,,2013-12-08 08:00,2014-01-06 17:00,,2013-12-04 08:00,2014-01-02 17:00,2013-12-04 08:00,2014-01-02 17:00,2013-12-04 08:00,2014-01-02 17:00,2013-12-08 08:00,2014-01-06 17:00,,PT_Normal,,,,,hWDk4Bz4R0urMUAAbMVZDQ,,,,N,0,0,,,2013-02-16 15:52,2013-02-16 16:35,admin,admin
501141,6359,124596,13662,0,N,N,N,CP_Drtn,TT_Task,DT_FixedDUR2,TK_NotStart,DUKHCONI2AZ1ELGL5220,Laying of electrical cables,8178,48,0,200,0,3141.2,3141.2,200,0,0,0,,,,2013-12-17 08:00,2014-01-15 17:00,,2013-12-10 08:00,2014-01-08 17:00,2013-12-10 08:00,2014-01-08 17:00,2013-12-10 08:00,2014-01-08 17:00,2013-12-17 08:00,2014-01-15 17:00,,PT_Normal,,,,,bV3KMLRORYq9g/VMEjpTEQ,,,,N,0,0,,,2013-02-16 15:52,2013-02-16 16:35,admin,admin
501142,6359,124596,13662,0,N,N,N,CP_Drtn,TT_Task,DT_FixedDUR2,TK_NotStart,DUKHCONI2AZ1ELGL5225,Backfilling Electrical trench,8177,48,0,200,0,1359,1359,200,825,0,825,,,,2013-12-26 08:00,2014-01-23 17:00,,2013-12-19 08:00,2014-01-16 17:00,2013-12-19 08:00,2014-01-16 17:00,2013-12-19 08:00,2014-01-16 17:00,2013-12-26 08:00,2014-01-23 17:00,,PT_Normal,,,,,C49W1+JNTa+Zg7UIa3jWYQ,,,,N,0,0,,,2013-02-16 15:52,2013-02-16 16:35,admin,admin
501143,6359,124596,13662,0,N,N,N,CP_Drtn,TT_Task,DT_FixedDUR2,TK_NotStart,DUKHCONI2AZ1ELGL5230,Construction of Submain Board & Feeder Pillar,8165,408,0,200,0,520,520,200,0,0,0,,,,2014-03-02 08:00,2014-03-30 17:00,,2013-12-31 08:00,2014-01-28 17:00,2013-12-31 08:00,2014-01-28 17:00,2013-12-31 08:00,2014-01-28 17:00,2014-03-02 08:00,2014-03-30 17:00,,PT_Normal,,,,,oKH3yaPnR1i8/ozZd+SloQ,,,,N,0,0,,,2013-02-16 15:52,2013-02-16 16:35,admin,admin
501144,6359,124597,13662,0,N,N,N,CP_Drtn,TT_Task,DT_FixedDUR2,TK_NotStart,DUKHCONI2AZ1PSGL7000,Excavation,8177,208,40,120,0,37,37,120,31.000038,0,31.000038,,,,2014-04-15 08:00,2014-05-01 17:00,,2014-03-16 08:00,2014-04-01 17:00,2014-03-16 08:00,2014-04-01 17:00,2014-03-16 08:00,2014-04-01 17:00,2014-04-15 08:00,2014-05-01 17:00,,PT_Normal,,,,,RtZPcY5AQZqLsok5XogBnw,,,,N,0,0,,,2013-02-16 15:52,2013-02-23 09:03,admin,admin
501145,6359,124597,13662,0,N,N,N,CP_Drtn,TT_Task,DT_FixedDUR2,TK_NotStart,DUKHCONI2AZ1PSGL7005,Foundation casting,8165,168,0,120,0,938,938,120,0,0,0,,,,2014-04-21 08:00,2014-05-07 17:00,,2014-03-27 08:00,2014-04-13 17:00,2014-03-27 08:00,2014-04-13 17:00,2014-03-27 08:00,2014-04-13 17:00,2014-04-21 08:00,2014-05-07 17:00,,PT_Normal,,,,,dT+Vx6bnQSi4wlUzcZLY1w,,,,N,0,0,,,2013-02-16 15:52,2013-02-16 16:35,admin,admin
501146,6359,124597,13662,0,N,N,N,CP_Drtn,TT_Task,DT_FixedDUR2,TK_NotStart,DUKHCONI2AZ1PSGL7010,"Column, Frame&  Fabrics  Erection",8178,168,0,200,0,122,122,200,0,0,0,,,,2014-05-03 08:00,2014-05-31 17:00,,2014-04-08 08:00,2014-05-06 17:00,2014-04-08 08:00,2014-05-06 17:00,2014-04-08 08:00,2014-05-06 17:00,2014-05-03 08:00,2014-05-31 17:00,,PT_Normal,,,,,blUr58ZESzKZTndc+tQleg,,,,N,0,0,,,2013-02-16 15:52,2013-02-16 16:35,admin,admin
501147,6359,124597,13662,0,N,N,N,CP_Drtn,TT_Task,DT_FixedDUR2,TK_NotStart,DUKHCONI2AZ1PSGL7015,Electrical Works-Parking Shed,8178,168,144,200,0,275.2,275.2,200,0,0,0,,,,2014-05-08 08:00,2014-06-05 17:00,,2014-04-14 08:00,2014-05-12 17:00,2014-04-14 08:00,2014-05-12 17:00,2014-04-14 08:00,2014-05-12 17:00,2014-05-08 08:00,2014-06-05 17:00,,PT_Normal,,,,,NuS4yEKFRnOzLnESnX8biw,,,,N,0,0,,,2013-02-16 15:52,2013-02-23 09:03,admin,admin
501148,6359,124598,13662,0,N,N,N,CP_Drtn,TT_Task,DT_FixedDUR2,TK_NotStart,DUKHCONI2AZ1TCGL5295,Excavation Telecommunication trenches,8177,24,0,160,0,178,178,160,100,0,100,,,,2014-01-01 08:00,2014-01-23 17:00,,2013-12-29 08:00,2014-01-20 17:00,2013-12-29 08:00,2014-01-20 17:00,2013-12-29 08:00,2014-01-20 17:00,2014-01-01 08:00,2014-01-23 17:00,,PT_Normal,,,,,LjdjZI5lRiOWfZjfTMaCVQ,,,,N,0,0,,,2013-02-16 15:52,2013-02-16 16:35,admin,admin
501149,6359,124598,13662,0,N,N,N,CP_Drtn,TT_Task,DT_FixedDUR2,TK_NotStart,DUKHCONI2AZ1TCGL5300,Laying of cables,8178,24,0,160,0,369.2,369.2,160,0,0,0,,,,2014-01-07 08:00,2014-01-29 17:00,,2014-01-04 08:00,2014-01-26 17:00,2014-01-04 08:00,2014-01-26 17:00,2014-01-04 08:00,2014-01-26 17:00,2014-01-07 08:00,2014-01-29 17:00,,PT_Normal,,,,,qg1r0IOcRPa3M8meuPyrxQ,,,,N,0,0,,,2013-02-16 15:52,2013-02-16 16:35,admin,admin
501150,6359,124598,13662,0,N,N,N,CP_Drtn,TT_Task,DT_FixedDUR2,TK_NotStart,DUKHCONI2AZ1TCGL5305,Backfilling telecommunication trench,8177,24,0,160,0,140,140,160,110,0,110,,,,2014-01-13 08:00,2014-02-04 17:00,,2014-01-09 08:00,2014-02-01 17:00,2014-01-09 08:00,2014-02-01 17:00,2014-01-09 08:00,2014-02-01 17:00,2014-01-13 08:00,2014-02-04 17:00,,PT_Normal,,,,,2AQ4bWrpSZqLEJtnTJ6++w,,,,N,0,0,,,2013-02-16 15:52,2013-02-16 16:35,admin,admin
501151,6359,124598,13662,0,N,N,N,CP_Drtn,TT_Task,DT_FixedDUR2,TK_NotStart,DUKHCONI2AZ1TCGL5310,Connection & Installation,8178,544,184,160,0,180.8,180.8,160,0,0,0,,,,2014-04-12 08:00,2014-05-04 17:00,,2014-01-21 08:00,2014-02-13 17:00,2014-01-21 08:00,2014-02-13 17:00,2014-01-21 08:00,2014-02-13 17:00,2014-04-12 08:00,2014-05-04 17:00,,PT_Normal,,,,,oQZGzy2OSpCzqz/m91xFMQ,,,,N,0,0,,,2013-02-16 15:52,2013-02-16 16:35,admin,admin
501152,6359,124599,13662,0,N,N,N,CP_Drtn,TT_Task,DT_FixedDUR2,TK_NotStart,DUKHCONI2AZ1WSGL5155,Excavation for water line,8177,8,0,200,0,239,239,200,125,0,125,,,,2013-10-13 08:00,2013-11-12 17:00,,2013-10-12 08:00,2013-11-11 17:00,2013-10-12 08:00,2013-11-11 17:00,2013-10-12 08:00,2013-11-11 17:00,2013-10-13 08:00,2013-11-12 17:00,,PT_Normal,,,,,0v+oq0LNQQG/Km1LlxAAxA,,,,N,0,0,,,2013-02-16 15:52,2013-02-16 15:56,admin,admin
501153,6359,124599,13662,0,N,N,N,CP_Drtn,TT_Task,DT_FixedDUR2,TK_NotStart,DUKHCONI2AZ1WSGL5160,Laying of water line,8178,8,0,200,0,302.4,302.4,200,0,0,0,,,,2013-10-21 08:00,2013-11-18 17:00,,2013-10-20 08:00,2013-11-17 17:00,2013-10-20 08:00,2013-11-17 17:00,2013-10-20 08:00,2013-11-17 17:00,2013-10-21 08:00,2013-11-18 17:00,,PT_Normal,,,,,Jw/Lx009TG2bZ9SfBPiAAA,,,,N,0,0,,,2013-02-16 15:52,2013-02-23 09:03,admin,admin
501154,6359,124599,13662,0,N,N,N,CP_Drtn,TT_Task,DT_FixedDUR2,TK_NotStart,DUKHCONI2AZ1WSGL5165,Testing of potable water line,8178,8,0,200,0,84,84,200,0,0,0,,,,2013-10-27 08:00,2013-11-24 17:00,,2013-10-26 08:00,2013-11-23 17:00,2013-10-26 08:00,2013-11-23 17:00,2013-10-26 08:00,2013-11-23 17:00,2013-10-27 08:00,2013-11-24 17:00,,PT_Normal,,,,,c+qc+B83T1edt2AlCz5bBQ,,,,N,0,0,,,2013-02-16 15:52,2013-02-16 15:56,admin,admin
501155,6359,124599,13662,0,N,N,N,CP_Drtn,TT_Task,DT_FixedDUR2,TK_NotStart,DUKHCONI2AZ1WSGL5170,Backfilling potable water line,8177,8,0,200,0,187,187,200,139,0,139,,,,2013-11-02 08:00,2013-11-30 17:00,,2013-10-31 08:00,2013-11-28 17:00,2013-10-31 08:00,2013-11-28 17:00,2013-10-31 08:00,2013-11-28 17:00,2013-11-02 08:00,2013-11-30 17:00,,PT_Normal,,,,,0sRnUxivQOa3FtODUxFeGA,,,,N,0,0,,,2013-02-16 15:52,2013-02-16 15:56,admin,admin
501156,6359,124599,13662,0,N,N,N,CP_Drtn,TT_Task,DT_FixedDUR2,TK_NotStart,DUKHCONI2AZ1WSGL5175,Construction of valve chambers & Thrust Blocks,8172,256,0,200,0,66,66,200,0,0,0,,,,2013-12-14 08:00,2014-01-12 17:00,,2013-11-06 08:00,2013-12-04 17:00,2013-11-06 08:00,2013-12-04 17:00,2013-11-06 08:00,2013-12-04 17:00,2013-12-14 08:00,2014-01-12 17:00,,PT_Normal,,,,,04CkaujSTaGg4chYUxAmEw,,,,N,0,0,,,2013-02-16 15:52,2013-02-16 15:56,admin,admin
501157,6359,124599,13662,0,N,N,N,CP_Drtn,TT_Task,DT_FixedDUR2,TK_NotStart,DUKHCONI2AZ1WSGL5180,"Installation of meter ,Accessories & Connection",8178,256,96,160,0,33.6,33.6,160,0,0,0,,,,2014-01-13 08:00,2014-02-04 17:00,,2013-12-05 08:00,2013-12-29 17:00,2013-12-05 08:00,2013-12-29 17:00,2013-12-05 08:00,2013-12-29 17:00,2014-01-13 08:00,2014-02-04 17:00,,PT_Normal,,,,,SlcD40DXSIOtiZdMOvomuw,,,,N,0,0,,,2013-02-16 15:52,2013-02-16 16:35,admin,admin
501158,6359,124600,13662,0,N,N,N,CP_Drtn,TT_Task,DT_FixedDUR2,TK_NotStart,DUKHCONI2AZ1SAGL5135,Construction of manholes Drainage,8172,496,144,200,0,36,36,200,0,0,0,,,,2013-12-14 08:00,2014-01-12 17:00,,2013-09-30 08:00,2013-10-30 17:00,2013-09-30 08:00,2013-10-30 17:00,2013-09-30 08:00,2013-10-30 17:00,2013-12-14 08:00,2014-01-12 17:00,,PT_Normal,,,,,ibZQKPQ7SX6gBXcKmdKHCA,,,,N,0,0,,,2013-02-16 15:52,2013-02-16 15:56,admin,admin
501159,6359,124600,13662,0,N,N,N,CP_Drtn,TT_Task,DT_FixedDUR2,TK_NotStart,DUKHCONI2AZ1SAGL5140,Construction of soakaways,8172,8,0,200,0,102,102,200,0,0,0,,,,2013-10-01 08:00,2013-10-31 17:00,,2013-09-30 08:00,2013-10-30 17:00,2013-09-30 08:00,2013-10-30 17:00,2013-09-30 08:00,2013-10-30 17:00,2013-10-01 08:00,2013-10-31 17:00,,PT_Normal,,,,,ed1Yy6NHSvak99jvN3o4ug,,,,N,0,0,,,2013-02-16 15:52,2013-02-16 15:56,admin,admin
501160,6359,124600,13662,0,N,N,N,CP_Drtn,TT_Task,DT_FixedDUR2,TK_NotStart,DUKHCONI2AZ1SAGL5145,Construction of Road gullies,8172,8,0,200,0,102,102,200,0,0,0,,,,2013-11-02 08:00,2013-11-30 17:00,,2013-10-31 08:00,2013-11-28 17:00,2013-10-31 08:00,2013-11-28 17:00,2013-10-31 08:00,2013-11-28 17:00,2013-11-02 08:00,2013-11-30 17:00,,PT_Normal,,,,,68V0VyFUT2q2wQHXL/qvbg,,,,N,0,0,,,2013-02-16 15:52,2013-02-16 15:56,admin,admin
501161,6359,124600,13662,0,N,N,N,CP_Drtn,TT_Task,DT_FixedDUR2,TK_NotStart,DUKHCONI2AZ1SAGL5150,Connection with existing sewer manhole,8172,296,272,160,0,36,36,160,0,0,0,,,,2014-01-13 08:00,2014-02-04 17:00,,2013-11-30 08:00,2013-12-23 17:00,2013-11-30 08:00,2013-12-23 17:00,2013-11-30 08:00,2013-12-23 17:00,2014-01-13 08:00,2014-02-04 17:00,,PT_Normal,,,,,SAS9s1e4TZSrwk7ahgB8sw,,,,N,0,0,,,2013-02-16 15:52,2013-02-16 16:35,admin,admin
501162,6359,124601,13662,0,N,N,N,CP_Drtn,TT_Task,DT_FixedDUR2,TK_NotStart,DUKHCONI2AZ1STGL5235,Excavation for Street lighting,8177,24,0,200,0,184,184,200,100,0,100,,,,2013-12-08 08:00,2014-01-06 17:00,,2013-12-04 08:00,2014-01-02 17:00,2013-12-04 08:00,2014-01-02 17:00,2013-12-04 08:00,2014-01-02 17:00,2013-12-08 08:00,2014-01-06 17:00,,PT_Normal,,,,,biKYGY57R4m8u4mR8ZD/0A,,,,N,0,0,,,2013-02-16 15:52,2013-02-16 16:35,admin,admin
501163,6359,124601,13662,0,N,N,N,CP_Drtn,TT_Task,DT_FixedDUR2,TK_NotStart,DUKHCONI2AZ1STGL5240,Construction of Duct Banks,8178,24,0,200,0,340.8,340.8,200,0,0,0,,,,2013-12-14 08:00,2014-01-12 17:00,,2013-12-10 08:00,2014-01-08 17:00,2013-12-10 08:00,2014-01-08 17:00,2013-12-10 08:00,2014-01-08 17:00,2013-12-14 08:00,2014-01-12 17:00,,PT_Normal,,,,,MKkKuowYQsuB7QI5hj681g,,,,N,0,0,,,2013-02-16 15:52,2013-02-16 16:35,admin,admin
501164,6359,124601,13662,0,N,N,N,CP_Drtn,TT_Task,DT_FixedDUR2,TK_NotStart,DUKHCONI2AZ1STGL5245,Construction of Foundation,8172,24,0,200,0,506,506,200,0,0,0,,,,2013-12-14 08:00,2014-01-12 17:00,,2013-12-10 08:00,2014-01-08 17:00,2013-12-10 08:00,2014-01-08 17:00,2013-12-10 08:00,2014-01-08 17:00,2013-12-14 08:00,2014-01-12 17:00,,PT_Normal,,,,,AJwqhlbqSVuubevHlhnsLw,,,,N,0,0,,,2013-02-16 15:52,2013-02-16 16:35,admin,admin
501165,6359,124601,13662,0,N,N,N,CP_Drtn,TT_Task,DT_FixedDUR2,TK_NotStart,DUKHCONI2AZ1STGL5250,Backfilling Street Lighting,8177,24,0,200,0,146,146,200,110,0,110,,,,2013-12-21 08:00,2014-01-18 17:00,,2013-12-16 08:00,2014-01-14 17:00,2013-12-16 08:00,2014-01-14 17:00,2013-12-16 08:00,2014-01-14 17:00,2013-12-21 08:00,2014-01-18 17:00,,PT_Normal,,,,,Vx8RE0D/Ru6bIyNZK3KzEw,,,,N,0,0,,,2013-02-16 15:52,2013-02-16 16:35,admin,admin
501166,6359,124601,13662,0,N,N,N,CP_Drtn,TT_Task,DT_FixedDUR2,TK_NotStart,DUKHCONI2AZ1STGL5255,Installation of light Post,8178,528,104,200,0,170.4,170.4,200,0,0,0,,,,2014-03-23 08:00,2014-04-20 17:00,,2014-01-04 08:00,2014-02-01 17:00,2014-01-04 08:00,2014-02-01 17:00,2014-01-04 08:00,2014-02-01 17:00,2014-03-23 08:00,2014-04-20 17:00,,PT_Normal,,,,,9dr6eplOSnCfCSaZ6dYLLw,,,,N,0,0,,,2013-02-16 15:52,2013-02-16 16:40,admin,admin
501167,6359,124601,13662,0,N,N,N,CP_Drtn,TT_Task,DT_FixedDUR2,TK_NotStart,DUKHCONI2AZ1STGL5260,Electrical Works,8178,408,144,200,0,142,142,200,0,0,0,,,,2014-03-31 08:00,2014-04-28 17:00,,2014-01-29 08:00,2014-02-27 17:00,2014-01-29 08:00,2014-02-27 17:00,2014-01-29 08:00,2014-02-27 17:00,2014-03-31 08:00,2014-04-28 17:00,,PT_Normal,,,,,tEMM8LXOThK8gslzdybDAA,,,,N,0,0,,,2013-02-16 15:52,2013-02-16 16:35,admin,admin
501168,6359,124602,13662,0,N,N,N,CP_Drtn,TT_Task,DT_FixedDUR2,TK_NotStart,DUKHCONI2AZ1IRGL5265,Excavation for irrigation line,8177,232,0,200,0,93,93,200,51,0,51,,,,2014-02-22 08:00,2014-03-22 17:00,,2014-01-18 08:00,2014-02-16 17:00,2014-01-18 08:00,2014-02-16 17:00,2014-01-18 08:00,2014-02-16 17:00,2014-02-22 08:00,2014-03-22 17:00,,PT_Normal,,,,,k//Fxg0QRt2lI/GSO/VDXA,,,,N,0,0,,,2013-02-16 15:52,2013-02-16 16:35,admin,admin
501169,6359,124602,13662,0,N,N,N,CP_Drtn,TT_Task,DT_FixedDUR2,TK_NotStart,DUKHCONI2AZ1IRGL5270,Laying of irrigationline,8178,232,0,200,0,50.4,50.4,200,0,0,0,,,,2014-02-27 08:00,2014-03-27 17:00,,2014-01-23 08:00,2014-02-22 17:00,2014-01-23 08:00,2014-02-22 17:00,2014-01-23 08:00,2014-02-22 17:00,2014-02-27 08:00,2014-03-27 17:00,,PT_Normal,,,,,kUiJ7qeHR0e6kE56HHcGBw,,,,N,0,0,,,2013-02-16 15:52,2013-02-16 16:35,admin,admin
501170,6359,124602,13662,0,N,N,N,CP_Drtn,TT_Task,DT_FixedDUR2,TK_NotStart,DUKHCONI2AZ1IRGL5275,Testing of irrigation line,8178,232,0,200,0,50.4,50.4,200,0,0,0,,,,2014-03-05 08:00,2014-04-02 17:00,,2014-01-29 08:00,2014-02-27 17:00,2014-01-29 08:00,2014-02-27 17:00,2014-01-29 08:00,2014-02-27 17:00,2014-03-05 08:00,2014-04-02 17:00,,PT_Normal,,,,,ujytmvhRQqmkAzIKET/7Vw,,,,N,0,0,,,2013-02-16 15:52,2013-02-16 16:35,admin,admin
501171,6359,124602,13662,0,N,N,N,CP_Drtn,TT_Task,DT_FixedDUR2,TK_NotStart,DUKHCONI2AZ1IRGL5280,Backfilling irrigation line,8177,232,0,200,0,73,73,200,55,0,55,,,,2014-03-11 08:00,2014-04-08 17:00,,2014-02-04 08:00,2014-03-05 17:00,2014-02-04 08:00,2014-03-05 17:00,2014-02-04 08:00,2014-03-05 17:00,2014-03-11 08:00,2014-04-08 17:00,,PT_Normal,,,,,80acVa4DRlSXQo8MXY2k2Q,,,,N,0,0,,,2013-02-16 15:52,2013-02-16 16:35,admin,admin
501172,6359,124602,13662,0,N,N,N,CP_Drtn,TT_Task,DT_FixedDUR2,TK_NotStart,DUKHCONI2AZ1IRGL5285,"Construction of Thrust Blocks,Pull boxes",8178,272,0,200,0,193.6,193.6,200,0,0,0,,,,2014-03-29 08:00,2014-04-26 17:00,,2014-02-17 08:00,2014-03-17 17:00,2014-02-17 08:00,2014-03-17 17:00,2014-02-17 08:00,2014-03-17 17:00,2014-03-29 08:00,2014-04-26 17:00,,PT_Normal,,,,,NH7tjulAT/G/2bnjlhS0QA,,,,N,0,0,,,2013-02-16 15:52,2013-02-16 16:35,admin,admin
501173,6359,124602,13662,0,N,N,N,CP_Drtn,TT_Task,DT_FixedDUR2,TK_NotStart,DUKHCONI2AZ1IRGL5290,"Irrigation Fittings (Nozzle,Values)",8178,272,88,200,0,33.6,33.6,200,0,0,0,,,,2014-04-06 08:00,2014-05-04 17:00,,2014-02-25 08:00,2014-03-25 17:00,2014-02-25 08:00,2014-03-25 17:00,2014-02-25 08:00,2014-03-25 17:00,2014-04-06 08:00,2014-05-04 17:00,,PT_Normal,,,,,2enRg8U5RVeFCiH5CFDp9A,,,,N,0,0,,,2013-02-16 15:52,2013-02-16 16:35,admin,admin
501174,6359,124603,13662,0,N,N,N,CP_Drtn,TT_Task,DT_FixedDUR2,TK_NotStart,DUKHCONI2AZ1SLGL7200,Excavation,8177,184,0,200,0,658,658,200,376,0,376,,,,2014-04-06 08:00,2014-05-04 17:00,,2014-03-10 08:00,2014-04-07 17:00,2014-03-10 08:00,2014-04-07 17:00,2014-03-10 08:00,2014-04-07 17:00,2014-04-06 08:00,2014-05-04 17:00,,PT_Normal,,,,,zgKCNapdSKWYiZuUEPj/gQ,,,,N,0,0,,,2013-02-16 15:52,2013-02-16 16:35,admin,admin
501175,6359,124603,13662,0,N,N,N,CP_Drtn,TT_Task,DT_FixedDUR2,TK_NotStart,DUKHCONI2AZ1SLGL7205,Sweet Soil Laying,8178,184,0,200,0,140,140,200,0,0,0,,,,2014-04-17 08:00,2014-05-15 17:00,,2014-03-22 08:00,2014-04-19 17:00,2014-03-22 08:00,2014-04-19 17:00,2014-03-22 08:00,2014-04-19 17:00,2014-04-17 08:00,2014-05-15 17:00,,PT_Normal,,,,,hcdqdxPpS1mJ1ao1accU+Q,,,,N,0,0,,,2013-02-16 15:52,2013-02-16 16:35,admin,admin
501176,6359,124603,13662,0,N,N,N,CP_Drtn,TT_Task,DT_FixedDUR2,TK_NotStart,DUKHCONI2AZ1SLGL7210,Plantation works,8178,264,144,200,0,266,266,200,0,0,0,,,,2014-05-11 08:00,2014-06-08 17:00,,2014-04-02 08:00,2014-04-30 17:00,2014-04-02 08:00,2014-04-30 17:00,2014-04-02 08:00,2014-04-30 17:00,2014-05-11 08:00,2014-06-08 17:00,,PT_Normal,,,,,giTDfJkSRbmuJgSNxkqiEA,,,,N,0,0,,,2013-02-16 15:52,2013-02-16 16:35,admin,admin
501177,6359,124604,13662,0,N,N,N,CP_Drtn,TT_Task,DT_FixedDUR2,TK_NotStart,DUKHCONI2AZ1HDGL7020,Precast Concrete Kerbs works,8173,184,0,160,0,186,186,160,0,0,0,,,,2014-03-02 08:00,2014-03-24 17:00,,2014-02-02 08:00,2014-02-25 17:00,2014-02-02 08:00,2014-02-25 17:00,2014-02-02 08:00,2014-02-25 17:00,2014-03-02 08:00,2014-03-24 17:00,,PT_Normal,,,,,sg4fucxUQ1qLGrKFDJeeKA,,,,N,0,0,,,2013-02-16 15:52,2013-02-16 16:35,admin,admin
501178,6359,124604,13662,0,N,N,N,CP_Drtn,TT_Task,DT_FixedDUR2,TK_NotStart,DUKHCONI2AZ1HDGL7025,Interlocking for Walkways,8174,184,0,200,0,432,432,200,0,0,0,,,,2014-03-13 08:00,2014-04-10 17:00,,2014-02-15 08:00,2014-03-15 17:00,2014-02-15 08:00,2014-03-15 17:00,2014-02-15 08:00,2014-03-15 17:00,2014-03-13 08:00,2014-04-10 17:00,,PT_Normal,,,,,GO3/a52yTVO2NaOe4vh8NQ,,,,N,0,0,,,2013-02-16 15:52,2013-02-16 16:35,admin,admin
501179,6359,124604,13662,0,N,N,N,CP_Drtn,TT_Task,DT_FixedDUR2,TK_NotStart,DUKHCONI2AZ1HDGL7030,Construction of Retaining wall,8165,184,0,200,0,376,376,200,0,0,0,,,,2014-03-25 08:00,2014-04-22 17:00,,2014-02-26 08:00,2014-03-26 17:00,2014-02-26 08:00,2014-03-26 17:00,2014-02-26 08:00,2014-03-26 17:00,2014-03-25 08:00,2014-04-22 17:00,,PT_Normal,,,,,g7ehXK7RR0C5HbdZtN1ZQg,,,,N,0,0,,,2013-02-16 15:52,2013-02-16 16:35,admin,admin
501180,6359,124604,13662,0,N,N,N,CP_Drtn,TT_Task,DT_FixedDUR2,TK_NotStart,DUKHCONI2AZ1HDGL7035,Construction of Wash Stone Boulders,8170,184,0,200,0,66,66,200,0,0,0,,,,2014-03-25 08:00,2014-04-22 17:00,,2014-02-26 08:00,2014-03-26 17:00,2014-02-26 08:00,2014-03-26 17:00,2014-02-26 08:00,2014-03-26 17:00,2014-03-25 08:00,2014-04-22 17:00,,PT_Normal,,,,,kdub3R0fSSmOV1cd1gvl2w,,,,N,0,0,,,2013-02-16 15:52,2013-02-16 16:35,admin,admin
501181,6359,124604,13662,0,N,N,N,CP_Drtn,TT_Task,DT_FixedDUR2,TK_NotStart,DUKHCONI2AZ1HDGL7040,Construction of Speed Humps,8167,264,264,80,0,14,14,80,0,0,0,,,,2014-05-22 08:00,2014-06-02 17:00,,2014-04-14 08:00,2014-04-24 17:00,2014-04-14 08:00,2014-04-24 17:00,2014-04-14 08:00,2014-04-24 17:00,2014-05-22 08:00,2014-06-02 17:00,,PT_Normal,,,,,skkA0rkvQOCfNz6YbNmLcg,,,,N,0,0,,,2013-02-16 15:52,2013-02-16 16:35,admin,admin
501182,6359,124605,13662,0,N,N,N,CP_Drtn,TT_Task,DT_FixedDUR2,TK_NotStart,DUKHCONI2AZ1FFGL5185,Excavation for firefighting line,8177,8,0,200,0,87,87,200,51,0,51,,,,2013-11-07 08:00,2013-12-05 17:00,,2013-11-06 08:00,2013-12-04 17:00,2013-11-06 08:00,2013-12-04 17:00,2013-11-06 08:00,2013-12-04 17:00,2013-11-07 08:00,2013-12-05 17:00,,PT_Normal,,,,,G/FkUWUrTcOBtMCc7KYIGg,,,,N,0,0,,,2013-02-16 15:52,2013-02-16 16:35,admin,admin
501183,6359,124605,13662,0,N,N,N,CP_Drtn,TT_Task,DT_FixedDUR2,TK_NotStart,DUKHCONI2AZ1FFGL5190,Laying of firefighting line,8178,8,0,200,0,82.8,82.8,200,0,0,0,,,,2013-11-16 08:00,2013-12-14 17:00,,2013-11-14 08:00,2013-12-12 17:00,2013-11-14 08:00,2013-12-12 17:00,2013-11-14 08:00,2013-12-12 17:00,2013-11-16 08:00,2013-12-14 17:00,,PT_Normal,,,,,JgqwzYy5ROuMnRmYr4BDQA,,,,N,0,0,,,2013-02-16 15:52,2013-02-16 16:35,admin,admin
501184,6359,124605,13662,0,N,N,N,CP_Drtn,TT_Task,DT_FixedDUR2,TK_NotStart,DUKHCONI2AZ1FFGL5195,Testing of firefighting line,8178,8,0,200,0,44.4,44.4,200,0,0,0,,,,2013-11-21 08:00,2013-12-21 17:00,,2013-11-20 08:00,2013-12-19 17:00,2013-11-20 08:00,2013-12-19 17:00,2013-11-20 08:00,2013-12-19 17:00,2013-11-21 08:00,2013-12-21 17:00,,PT_Normal,,,,,hFYVkDVPS0ScHD2Fpf8puw,,,,N,0,0,,,2013-02-16 15:52,2013-02-16 16:35,admin,admin
501185,6359,124605,13662,0,N,N,N,CP_Drtn,TT_Task,DT_FixedDUR2,TK_NotStart,DUKHCONI2AZ1FFGL5200,Backfilling firefighting line,8177,8,0,200,0,73,73,200,55,0,55,,,,2013-11-27 08:00,2013-12-26 17:00,,2013-11-26 08:00,2013-12-25 17:00,2013-11-26 08:00,2013-12-25 17:00,2013-11-26 08:00,2013-12-25 17:00,2013-11-27 08:00,2013-12-26 17:00,,PT_Normal,,,,,an4VcviXTxOEmjBcisxUxQ,,,,N,0,0,,,2013-02-16 15:52,2013-02-16 16:35,admin,admin
501186,6359,124605,13662,0,N,N,N,CP_Drtn,TT_Task,DT_FixedDUR2,TK_NotStart,DUKHCONI2AZ1FFGL5205,Construction of valve chambers & Thrust Blocks,8165,160,0,200,0,84,84,200,0,0,0,,,,2014-01-01 08:00,2014-01-29 17:00,,2013-12-08 08:00,2014-01-06 17:00,2013-12-08 08:00,2014-01-06 17:00,2013-12-08 08:00,2014-01-06 17:00,2014-01-01 08:00,2014-01-29 17:00,,PT_Normal,,,,,cFh+c6dOTZeMs8oS5R8DUQ,,,,N,0,0,,,2013-02-16 15:52,2013-02-16 16:35,admin,admin
501187,6359,124605,13662,0,N,N,N,CP_Drtn,TT_Task,DT_FixedDUR2,TK_NotStart,DUKHCONI2AZ1FFGL5210,Connection with existing Firewater System,8165,160,104,200,0,84,84,200,0,0,0,,,,2014-01-07 08:00,2014-02-04 17:00,,2013-12-14 08:00,2014-01-12 17:00,2013-12-14 08:00,2014-01-12 17:00,2013-12-14 08:00,2014-01-12 17:00,2014-01-07 08:00,2014-02-04 17:00,,PT_Normal,,,,,/u1Bn2EJTl6czH61ykv5xA,,,,N,0,0,,,2013-02-16 15:52,2013-02-16 16:35,admin,admin
501188,6359,124606,13662,0,N,N,N,CP_Drtn,TT_Task,DT_FixedDUR2,TK_NotStart,DUKHCONI2AZ1DRGL5115,Excavation for Drainage line,8177,0,0,200,0,172,172,200,100,0,100,,,,2013-08-28 08:00,2013-09-25 17:00,,2013-08-28 08:00,2013-09-25 17:00,2013-08-28 08:00,2013-09-25 17:00,2013-08-28 08:00,2013-09-25 17:00,2013-08-28 08:00,2013-09-25 17:00,,PT_Normal,,,,,MhnHFgSSQcSOhRNsye5nTA,,,,N,0,0,,,2013-02-16 15:52,2013-02-16 15:56,admin,admin
501189,6359,124606,13662,0,N,N,N,CP_Drtn,TT_Task,DT_FixedDUR2,TK_NotStart,DUKHCONI2AZ1DRGL5120,Laying of Drainage line,8178,0,0,200,0,82.8,82.8,200,0,0,0,,,,2013-09-04 08:00,2013-10-02 17:00,,2013-09-04 08:00,2013-10-02 17:00,2013-09-04 08:00,2013-10-02 17:00,2013-09-04 08:00,2013-10-02 17:00,2013-09-04 08:00,2013-10-02 17:00,,PT_Normal,,,,,GAMQZtBvTcOUovEsFar8qg,,,,N,0,0,,,2013-02-16 15:52,2013-02-16 15:56,admin,admin
501190,6359,124606,13662,0,N,N,N,CP_Drtn,TT_Task,DT_FixedDUR2,TK_NotStart,DUKHCONI2AZ1DRGL5125,Testing of Drainage line,8178,0,0,200,0,50.4,50.4,200,0,0,0,,,,2013-09-12 08:00,2013-10-10 17:00,,2013-09-12 08:00,2013-10-10 17:00,2013-09-12 08:00,2013-10-10 17:00,2013-09-12 08:00,2013-10-10 17:00,2013-09-12 08:00,2013-10-10 17:00,,PT_Normal,,,,,GY3AKzssRj2wA2PN0O2wEg,,,,N,0,0,,,2013-02-16 15:52,2013-02-16 15:56,admin,admin
501191,6359,124606,13662,0,N,N,N,CP_Drtn,TT_Task,DT_FixedDUR2,TK_NotStart,DUKHCONI2AZ1DRGL5130,Backfilling Drainage line,8177,0,0,120,0,195,195,120,165,0,165,,,,2013-09-30 08:00,2013-10-16 17:00,,2013-09-30 08:00,2013-10-16 17:00,2013-09-30 08:00,2013-10-16 17:00,2013-09-30 08:00,2013-10-16 17:00,2013-09-30 08:00,2013-10-16 17:00,,PT_Normal,,,,,3ZHMRnJvQJ6ZjujIqMtl1A,,,,N,0,0,,,2013-02-16 15:52,2013-02-16 15:56,admin,admin
501192,6359,124607,13662,0,N,N,N,CP_Drtn,TT_Task,DT_FixedDUR2,TK_NotStart,DUKHCONI2AZ1RWGL6000,Excavation & Earth Filling,8177,24,0,80,0,452,452,80,200,0,200,,,,2014-02-05 08:00,2014-02-17 17:00,,2014-02-02 08:00,2014-02-13 17:00,2014-02-02 08:00,2014-02-13 17:00,2014-02-02 08:00,2014-02-13 17:00,2014-02-05 08:00,2014-02-17 17:00,,PT_Normal,,,,,MIhKUsZBQfqVITQ9AXSa1Q,,,,N,0,0,,,2013-02-16 15:52,2013-02-16 16:35,admin,admin
501193,6359,124607,13662,0,N,N,N,CP_Drtn,TT_Task,DT_FixedDUR2,TK_NotStart,DUKHCONI2AZ1RWGL6005,Laying of Sub Grade,8178,24,0,200,0,18,18,200,0,0,0,,,,2014-02-18 08:00,2014-03-18 17:00,,2014-02-15 08:00,2014-03-15 17:00,2014-02-15 08:00,2014-03-15 17:00,2014-02-15 08:00,2014-03-15 17:00,2014-02-18 08:00,2014-03-18 17:00,,PT_Normal,,,,,DbBiKWHUQaOL2GIvbMsy1w,,,,N,0,0,,,2013-02-16 15:52,2013-02-16 16:35,admin,admin
501194,6359,124607,13662,0,N,N,N,CP_Drtn,TT_Task,DT_FixedDUR2,TK_NotStart,DUKHCONI2AZ1RWGL6010,Laying of Precast Kerbs,8178,24,0,200,0,18,18,200,0,0,0,,,,2014-03-02 08:00,2014-03-30 17:00,,2014-02-26 08:00,2014-03-26 17:00,2014-02-26 08:00,2014-03-26 17:00,2014-02-26 08:00,2014-03-26 17:00,2014-03-02 08:00,2014-03-30 17:00,,PT_Normal,,,,,+C+UldCHR6KOIVFHt+mo3Q,,,,N,0,0,,,2013-02-16 15:52,2013-02-16 16:35,admin,admin
501195,6359,124607,13662,0,N,N,N,CP_Drtn,TT_Task,DT_FixedDUR2,TK_NotStart,DUKHCONI2AZ1RWGL6015,Laying of Granular Sub Base Coarse,8173,24,0,160,0,1250,1250,160,600,0,600,,,,2014-03-13 08:00,2014-04-05 17:00,,2014-03-10 08:00,2014-04-01 17:00,2014-03-10 08:00,2014-04-01 17:00,2014-03-10 08:00,2014-04-01 17:00,2014-03-13 08:00,2014-04-05 17:00,,PT_Normal,,,,,8coRRbEdTOe9NgxjIh1yfA,,,,N,0,0,,,2013-02-16 15:52,2013-02-16 16:35,admin,admin
501196,6359,124607,13662,0,N,N,N,CP_Drtn,TT_Task,DT_FixedDUR2,TK_NotStart,DUKHCONI2AZ1RWGL6020,Laying of Road Base Asphalt Concrete,8178,168,0,40,0,168,168,40,150,0,150,,,,2014-04-27 08:00,2014-05-01 17:00,,2014-04-02 08:00,2014-04-07 17:00,2014-04-02 08:00,2014-04-07 17:00,2014-04-02 08:00,2014-04-07 17:00,2014-04-27 08:00,2014-05-01 17:00,,PT_Normal,,,,,7a2tM2xMR5idjDC2hVPHYw,,,,N,0,0,,,2013-02-16 15:52,2013-02-16 16:35,admin,admin
501197,6359,124607,13662,0,N,N,N,CP_Drtn,TT_Task,DT_FixedDUR2,TK_NotStart,DUKHCONI2AZ1RWGL6025,Laying of Asphalt Wearing Coarse,8178,264,0,40,0,168,168,40,150,0,150,,,,2014-05-17 08:00,2014-05-21 17:00,,2014-04-08 08:00,2014-04-13 17:00,2014-04-08 08:00,2014-04-13 17:00,2014-04-08 08:00,2014-04-13 17:00,2014-05-17 08:00,2014-05-21 17:00,,PT_Normal,,,,,28XIFD8RQhCKZhSpeoiFMw,,,,N,0,0,,,2013-02-16 15:52,2013-02-16 16:35,admin,admin
501198,6359,124607,13662,0,N,N,N,CP_Drtn,TT_Task,DT_FixedDUR2,TK_NotStart,DUKHCONI2AZ1RWGL6030,Traffic Signage & Road Marking,8178,288,120,40,0,472,472,40,0,0,0,,,,2014-05-26 08:00,2014-05-31 17:00,,2014-04-14 08:00,2014-04-19 17:00,2014-04-14 08:00,2014-04-19 17:00,2014-04-14 08:00,2014-04-19 17:00,2014-05-26 08:00,2014-05-31 17:00,,PT_Normal,,,,,b/Cyxs/CSh6WLTLhDSL1kA,,,,N,0,0,,,2013-02-16 15:52,2013-02-16 16:35,admin,admin
501199,6359,124608,13662,0,N,N,N,CP_Drtn,TT_Task,DT_FixedDUR2,TK_NotStart,DUKHCONI2AZ1BWGL5315,Construction of Boundary Wall (Ht-3m),8165,232,0,200,0,126,126,200,0,0,0,,,,2014-02-01 08:00,2014-03-02 17:00,,2013-12-29 08:00,2014-01-26 17:00,2013-12-29 08:00,2014-01-26 17:00,2013-12-29 08:00,2014-01-26 17:00,2014-02-01 08:00,2014-03-02 17:00,,PT_Normal,,,,,A4xbXC0pS32twEt11JLJBg,,,,N,0,0,,,2013-02-16 15:52,2013-02-16 16:45,admin,admin
501200,6359,124608,13662,0,N,N,N,CP_Drtn,TT_Task,DT_FixedDUR2,TK_NotStart,DUKHCONI2AZ1BWGL5320,"Install.Steel Gate,Entance Barrier (3m Wall)",8178,232,0,200,0,28,28,200,0,0,0,,,,2014-02-18 08:00,2014-03-18 17:00,,2014-01-14 08:00,2014-02-12 17:00,2014-01-14 08:00,2014-02-12 17:00,2014-01-14 08:00,2014-02-12 17:00,2014-02-18 08:00,2014-03-18 17:00,,PT_Normal,,,,,/7p7J/jpRfuqgK5yPe/WQQ,,,,N,0,0,,,2013-02-16 15:52,2013-02-16 16:45,admin,admin
501201,6359,124608,13662,0,N,N,N,CP_Drtn,TT_Task,DT_FixedDUR2,TK_NotStart,DUKHCONI2AZ1BWGL5325,Const. of Villa Front Boundary Wall (Ht-2m),8165,232,0,200,0,70,70,200,0,0,0,,,,2014-03-19 08:00,2014-04-16 17:00,,2014-02-13 08:00,2014-03-13 17:00,2014-02-13 08:00,2014-03-13 17:00,2014-02-13 08:00,2014-03-13 17:00,2014-03-19 08:00,2014-04-16 17:00,,PT_Normal,,,,,4H7J98eTT6e8EzQzDG1Jog,,,,N,0,0,,,2013-02-16 15:52,2013-02-16 16:45,admin,admin
501202,6359,124608,13662,0,N,N,N,CP_Drtn,TT_Task,DT_FixedDUR2,TK_NotStart,DUKHCONI2AZ1BWGL5330,Const. of Blockwork fence Wall (Ht-1.85m),8165,456,136,200,0,28,28,200,0,0,0,,,,2014-05-03 08:00,2014-05-31 17:00,,2014-02-25 08:00,2014-03-25 17:00,2014-02-25 08:00,2014-03-25 17:00,2014-02-25 08:00,2014-03-25 17:00,2014-05-03 08:00,2014-05-31 17:00,,PT_Normal,,,,,EQV5QzYHQ/2YgG2YejrINA,,,,N,0,0,,,2013-02-16 15:52,2013-02-16 16:45,admin,admin
501203,6359,124611,13662,0,N,N,N,CP_Drtn,TT_Task,DT_FixedDUR2,TK_NotStart,DUKHCONI2ASBIWGL7400,Excavation,8177,224,0,120,0,295,295,120,150.999936,0,150.999936,,,,2013-12-15 08:00,2014-01-01 17:00,,2013-11-12 08:00,2013-11-28 17:00,2013-11-12 08:00,2013-11-28 17:00,2013-11-12 08:00,2013-11-28 17:00,2013-12-15 08:00,2014-01-01 17:00,,PT_Normal,,,,,dfMNim42QXejZ/FPfvkFxA,,,,N,0,0,,,2013-02-16 15:52,2013-02-16 15:56,admin,admin
501204,6359,124611,13662,0,N,N,N,CP_Drtn,TT_Task,DT_FixedDUR2,TK_NotStart,DUKHCONI2ASBIWGL7405,Blinding & base waterproofing,8163,224,0,80,0,200,200,80,0,0,0,,,,2014-01-02 08:00,2014-01-13 17:00,,2013-11-30 08:00,2013-12-10 17:00,2013-11-30 08:00,2013-12-10 17:00,2013-11-30 08:00,2013-12-10 17:00,2014-01-02 08:00,2014-01-13 17:00,,PT_Normal,,,,,nNf8e+2HSguyoDvBXdDlAA,,,,N,0,0,,,2013-02-16 15:52,2013-02-16 15:56,admin,admin
501205,6359,124611,13662,0,N,N,N,CP_Drtn,TT_Task,DT_FixedDUR2,TK_NotStart,DUKHCONI2ASBIWGL7410,Construction of Raft slab,8165,224,0,80,0,630,630,80,0,0,0,,,,2014-01-14 08:00,2014-01-25 17:00,,2013-12-11 08:00,2013-12-23 17:00,2013-12-11 08:00,2013-12-23 17:00,2013-12-11 08:00,2013-12-23 17:00,2014-01-14 08:00,2014-01-25 17:00,,PT_Normal,,,,,OmUhHYB4RICUE2M/+BHYHQ,,,,N,0,0,,,2013-02-16 15:52,2013-02-16 15:56,admin,admin
501206,6359,124611,13662,0,N,N,N,CP_Drtn,TT_Task,DT_FixedDUR2,TK_NotStart,DUKHCONI2ASBIWGL7415,Construction of RCC Wall,8165,224,0,200,0,1708,1708,200,0,0,0,,,,2014-01-26 08:00,2014-02-24 17:00,,2013-12-24 08:00,2014-01-21 17:00,2013-12-24 08:00,2014-01-21 17:00,2013-12-24 08:00,2014-01-21 17:00,2014-01-26 08:00,2014-02-24 17:00,,PT_Normal,,,,,AaNdkxEIRIO8CWamR3tFIQ,,,,N,0,0,,,2013-02-16 15:52,2013-02-16 15:56,admin,admin
501207,6359,124611,13662,0,N,N,N,CP_Drtn,TT_Task,DT_FixedDUR2,TK_NotStart,DUKHCONI2ASBIWGL7420,Construction of  Roof Slab,8165,224,0,160,0,490,490,160,0,0,0,,,,2014-02-25 08:00,2014-03-19 17:00,,2014-01-22 08:00,2014-02-15 17:00,2014-01-22 08:00,2014-02-15 17:00,2014-01-22 08:00,2014-02-15 17:00,2014-02-25 08:00,2014-03-19 17:00,,PT_Normal,,,,,7CdQ3RnPTimllf2C+9qhwQ,,,,N,0,0,,,2013-02-16 15:52,2013-02-16 15:56,admin,admin
501208,6359,124611,13662,0,N,N,N,CP_Drtn,TT_Task,DT_FixedDUR2,TK_NotStart,DUKHCONI2ASBIWGL7425,Waterproofing & Backfilling,8177,272,0,120,0,192,192,120,83.999955,0,83.999955,,,,2014-03-27 08:00,2014-04-13 17:00,,2014-02-16 08:00,2014-03-04 17:00,2014-02-16 08:00,2014-03-04 17:00,2014-02-16 08:00,2014-03-04 17:00,2014-03-27 08:00,2014-04-13 17:00,,PT_Normal,,,,,Reb25fhlRceteCkW5ztR6A,,,,N,0,0,,,2013-02-16 15:52,2013-02-23 09:03,admin,admin
501209,6359,124611,13662,0,N,N,N,CP_Drtn,TT_Task,DT_FixedDUR2,TK_NotStart,DUKHCONI2ASBIWGL7430,Floor screed,8164,224,0,40,0,66,66,40,0,0,0,,,,2014-04-14 08:00,2014-04-19 17:00,,2014-03-12 08:00,2014-03-17 17:00,2014-03-12 08:00,2014-03-17 17:00,2014-03-12 08:00,2014-03-17 17:00,2014-04-14 08:00,2014-04-19 17:00,,PT_Normal,,,,,eZuNu50URp2FB+isH/prww,,,,N,0,0,,,2013-02-16 15:52,2013-02-16 16:35,admin,admin
501210,6359,124611,13662,0,N,N,N,CP_Drtn,TT_Task,DT_FixedDUR2,TK_NotStart,DUKHCONI2ASBIWGL7455,Internal epoxy coating & Painting,8178,224,0,40,0,44,44,40,0,0,0,,,,2014-05-28 08:00,2014-06-02 17:00,,2014-04-26 08:00,2014-04-30 17:00,2014-04-26 08:00,2014-04-30 17:00,2014-04-26 08:00,2014-04-30 17:00,2014-05-28 08:00,2014-06-02 17:00,,PT_Normal,,,,,V7xgi3i4Qwe4MaQSTfcB0Q,,,,N,0,0,,,2013-02-16 15:52,2013-02-16 16:35,admin,admin
501211,6359,124611,13662,0,N,N,N,CP_Drtn,TT_Task,DT_FixedDUR2,TK_NotStart,DUKHCONI2ASBIWGL7460,Installation of Steel Ladder,8178,224,0,40,0,14,14,40,0,0,0,,,,2014-06-03 08:00,2014-06-08 17:00,,2014-05-01 08:00,2014-05-06 17:00,2014-05-01 08:00,2014-05-06 17:00,2014-05-01 08:00,2014-05-06 17:00,2014-06-03 08:00,2014-06-08 17:00,,PT_Normal,,,,,6X9U88TGQ2WeRYC38xY3Yw,,,,N,0,0,,,2013-02-16 15:52,2013-02-16 16:35,admin,admin
501212,6359,124611,13662,0,N,N,N,CP_Drtn,TT_Task,DT_FixedDUR2,TK_NotStart,DUKHCONI2ASBIWGL7465,Installation of G.I Handrails,8178,224,224,40,0,164,164,40,0,0,0,,,,2014-06-09 08:00,2014-06-14 17:00,,2014-05-07 08:00,2014-05-12 17:00,2014-05-07 08:00,2014-05-12 17:00,2014-05-07 08:00,2014-05-12 17:00,2014-06-09 08:00,2014-06-14 17:00,,PT_Normal,,,,,WorSYGG2TG+fh/gV4Oabkg,,,,N,0,0,,,2013-02-16 15:52,2013-02-16 16:35,admin,admin
501213,6359,124611,13662,0,N,N,N,CP_Drtn,TT_Task,DT_FixedDUR2,TK_NotStart,DUKHCONI2ASBIWGL7440,"Plumbing , Drainage & Firefighting  works",8178,224,0,200,0,50.4,50.4,200,0,0,0,,,,2014-04-20 08:00,2014-05-18 17:00,,2014-03-18 08:00,2014-04-15 17:00,2014-03-18 08:00,2014-04-15 17:00,2014-03-18 08:00,2014-04-15 17:00,2014-04-20 08:00,2014-05-18 17:00,,PT_Normal,,,,,B7gDtFHWQ/eYUi9nc3COSw,,,,N,0,0,,,2013-02-16 15:52,2013-02-16 16:35,admin,admin
501214,6359,124611,13662,0,N,N,N,CP_Drtn,TT_Task,DT_FixedDUR2,TK_NotStart,DUKHCONI2ASBIWGL7445,AC Works,8178,224,0,200,0,159.2,159.2,200,0,0,0,,,,2014-04-20 08:00,2014-05-18 17:00,,2014-03-18 08:00,2014-04-15 17:00,2014-03-18 08:00,2014-04-15 17:00,2014-03-18 08:00,2014-04-15 17:00,2014-04-20 08:00,2014-05-18 17:00,,PT_Normal,,,,,j15SsVizTTuOm8YqRbmC1g,,,,N,0,0,,,2013-02-16 15:52,2013-02-23 09:03,admin,admin
501215,6359,124611,13662,0,N,N,N,CP_Drtn,TT_Task,DT_FixedDUR2,TK_NotStart,DUKHCONI2ASBIWGL7450,Electrical Works,8178,224,0,200,0,325.2,325.2,200,0,0,0,,,,2014-04-29 08:00,2014-05-27 17:00,,2014-03-27 08:00,2014-04-24 17:00,2014-03-27 08:00,2014-04-24 17:00,2014-03-27 08:00,2014-04-24 17:00,2014-04-29 08:00,2014-05-27 17:00,,PT_Normal,,,,,/exBS/uoSg2ljUg1kliUnQ,,,,N,0,0,,,2013-02-16 15:52,2013-02-23 09:03,admin,admin
501216,6359,124611,13662,0,N,N,N,CP_Drtn,TT_Task,DT_FixedDUR2,TK_NotStart,DUKHCONI2ASBIWGL7950,Laying of Interlock,8174,456,0,80,0,58,58,80,0,0,0,,,,2014-05-11 08:00,2014-05-21 17:00,,2014-03-05 08:00,2014-03-16 17:00,2014-03-05 08:00,2014-03-16 17:00,2014-03-05 08:00,2014-03-16 17:00,2014-05-11 08:00,2014-05-21 17:00,,PT_Normal,,,,,aCqZLaMCRditrCz+/agS0g,,,,N,0,0,,,2013-02-16 15:52,2013-02-16 15:56,admin,admin
501217,6359,124611,13662,0,N,N,N,CP_Drtn,TT_Task,DT_FixedDUR2,TK_NotStart,DUKHCONI2ASBIWGL7435,Installation of Boundary Fences,8165,456,232,120,0,42,42,120,0,0,0,,,,2014-05-22 08:00,2014-06-08 17:00,,2014-03-17 08:00,2014-04-02 17:00,2014-03-17 08:00,2014-04-02 17:00,2014-03-17 08:00,2014-04-02 17:00,2014-05-22 08:00,2014-06-08 17:00,,PT_Normal,,,,,pCz/qLi2QIaECyLSHDi0Yg,,,,N,0,0,,,2013-02-16 15:52,2013-02-16 16:35,admin,admin
501218,6359,124612,13662,0,N,N,N,CP_Drtn,TT_Task,DT_FixedDUR2,TK_NotStart,DUKHCONI2ASBGZGL7900,Construction of Concrete structure,8165,184,0,160,0,124,124,160,0,0,0,,,,2014-03-25 08:00,2014-04-16 17:00,,2014-02-26 08:00,2014-03-20 17:00,2014-02-26 08:00,2014-03-20 17:00,2014-02-26 08:00,2014-03-20 17:00,2014-03-25 08:00,2014-04-16 17:00,,PT_Normal,,,,,2bybN7eNTymit3cX+JyZMQ,,,,N,0,0,,,2013-02-16 15:52,2013-02-16 16:35,admin,admin
501219,6359,124612,13662,0,N,N,N,CP_Drtn,TT_Task,DT_FixedDUR2,TK_NotStart,DUKHCONI2ASBGZGL7905,Installation of Wooden Works,8178,184,0,200,0,300,300,200,0,0,0,,,,2014-04-06 08:00,2014-05-04 17:00,,2014-03-10 08:00,2014-04-07 17:00,2014-03-10 08:00,2014-04-07 17:00,2014-03-10 08:00,2014-04-07 17:00,2014-04-06 08:00,2014-05-04 17:00,,PT_Normal,,,,,CqFCY9OJQmeHtJnuZ+XqUw,,,,N,0,0,,,2013-02-16 15:52,2013-02-16 16:35,admin,admin
501220,6359,124612,13662,0,N,N,N,CP_Drtn,TT_Task,DT_FixedDUR2,TK_NotStart,DUKHCONI2ASBGZGL7910,Electrical Works-Gazebo,8178,184,64,120,0,125.6,125.6,120,0,0,0,,,,2014-05-05 08:00,2014-05-21 17:00,,2014-04-08 08:00,2014-04-24 17:00,2014-04-08 08:00,2014-04-24 17:00,2014-04-08 08:00,2014-04-24 17:00,2014-05-05 08:00,2014-05-21 17:00,,PT_Normal,,,,,xLNkSNR6SuK9W5MzGmjdhQ,,,,N,0,0,,,2013-02-16 15:52,2013-02-16 16:35,admin,admin
501221,6359,124612,13662,0,N,N,N,CP_Drtn,TT_Task,DT_FixedDUR2,TK_NotStart,DUKHCONI2ASBGZGL7915,Park Benches  Installation,8178,264,80,120,0,120,120,120,0,0,0,,,,2014-04-17 08:00,2014-05-04 17:00,,2014-03-10 08:00,2014-03-26 17:00,2014-03-10 08:00,2014-03-26 17:00,2014-03-10 08:00,2014-03-26 17:00,2014-04-17 08:00,2014-05-04 17:00,,PT_Normal,,,,,I+O1Aun6QfquRCGrR9Ch8Q,,,,N,0,0,,,2013-02-16 15:52,2013-02-16 16:35,admin,admin
501222,6359,124615,13662,0,N,N,N,CP_Drtn,TT_Task,DT_FixedDUR2,TK_NotStart,DUKHCONI2AZ2IRGL5265,Excavation for irrigation line,8177,208,0,200,0,93,93,200,51,0,51,,,,2014-04-09 08:00,2014-05-07 17:00,,2014-03-10 08:00,2014-04-07 17:00,2014-03-10 08:00,2014-04-07 17:00,2014-03-10 08:00,2014-04-07 17:00,2014-04-09 08:00,2014-05-07 17:00,,PT_Normal,,,,,Q9EcWXmqQ3mVMI3vzLK0iQ,,,,N,0,0,,,2013-02-16 15:52,2013-02-16 16:35,admin,admin
501223,6359,124615,13662,0,N,N,N,CP_Drtn,TT_Task,DT_FixedDUR2,TK_NotStart,DUKHCONI2AZ2IRGL5270,Laying of irrigationline,8178,208,0,200,0,50.4,50.4,200,0,0,0,,,,2014-04-15 08:00,2014-05-13 17:00,,2014-03-16 08:00,2014-04-13 17:00,2014-03-16 08:00,2014-04-13 17:00,2014-03-16 08:00,2014-04-13 17:00,2014-04-15 08:00,2014-05-13 17:00,,PT_Normal,,,,,68LcszB8TsOhgRWa2oBaVw,,,,N,0,0,,,2013-02-16 15:52,2013-02-16 16:35,admin,admin
501224,6359,124615,13662,0,N,N,N,CP_Drtn,TT_Task,DT_FixedDUR2,TK_NotStart,DUKHCONI2AZ2IRGL5275,Testing of irrigation line,8178,208,0,200,0,50.4,50.4,200,0,0,0,,,,2014-04-21 08:00,2014-05-19 17:00,,2014-03-22 08:00,2014-04-19 17:00,2014-03-22 08:00,2014-04-19 17:00,2014-03-22 08:00,2014-04-19 17:00,2014-04-21 08:00,2014-05-19 17:00,,PT_Normal,,,,,AKWfUohWRPCvn/v2u9ih4A,,,,N,0,0,,,2013-02-16 15:52,2013-02-16 16:35,admin,admin
501225,6359,124615,13662,0,N,N,N,CP_Drtn,TT_Task,DT_FixedDUR2,TK_NotStart,DUKHCONI2AZ2IRGL5280,Backfilling irrigation line,8177,208,0,200,0,73,73,200,55,0,55,,,,2014-04-27 08:00,2014-05-25 17:00,,2014-03-27 08:00,2014-04-24 17:00,2014-03-27 08:00,2014-04-24 17:00,2014-03-27 08:00,2014-04-24 17:00,2014-04-27 08:00,2014-05-25 17:00,,PT_Normal,,,,,dRTLYpDMQRKS8IB8bgIxIA,,,,N,0,0,,,2013-02-16 15:52,2013-02-16 16:35,admin,admin
501226,6359,124615,13662,0,N,N,N,CP_Drtn,TT_Task,DT_FixedDUR2,TK_NotStart,DUKHCONI2AZ2IRGL5285,"Construction of Thrust Blocks,Pull boxes",8178,208,0,200,0,193.6,193.6,200,0,0,0,,,,2014-05-08 08:00,2014-06-05 17:00,,2014-04-08 08:00,2014-05-06 17:00,2014-04-08 08:00,2014-05-06 17:00,2014-04-08 08:00,2014-05-06 17:00,2014-05-08 08:00,2014-06-05 17:00,,PT_Normal,,,,,D9dkV2UMTomXaYIjDjDGkw,,,,N,0,0,,,2013-02-16 15:52,2013-02-16 16:35,admin,admin
501227,6359,124615,13662,0,N,N,N,CP_Drtn,TT_Task,DT_FixedDUR2,TK_NotStart,DUKHCONI2AZ2IRGL5290,"Irrigation Fittings (Nozzle,Values)",8178,208,88,200,0,33.6,33.6,200,0,0,0,,,,2014-05-17 08:00,2014-06-14 17:00,,2014-04-16 08:00,2014-05-14 17:00,2014-04-16 08:00,2014-05-14 17:00,2014-04-16 08:00,2014-05-14 17:00,2014-05-17 08:00,2014-06-14 17:00,,PT_Normal,,,,,D72w/3vpT/a0ht6uvN80TA,,,,N,0,0,,,2013-02-16 15:52,2013-02-16 16:35,admin,admin
501228,6359,124616,13662,0,N,N,N,CP_Drtn,TT_Task,DT_FixedDUR2,TK_NotStart,DUKHCONI2AZ2SLGL7200,Excavation for Landscaping,8177,120,0,200,0,658,658,200,376,0,376,,,,2014-05-17 08:00,2014-06-14 17:00,,2014-04-29 08:00,2014-05-27 17:00,2014-04-29 08:00,2014-05-27 17:00,2014-04-29 08:00,2014-05-27 17:00,2014-05-17 08:00,2014-06-14 17:00,,PT_Normal,,,,,gg0xG2JsSEefW7JWDRqLEg,,,,N,0,0,,,2013-02-16 15:52,2013-02-16 16:35,admin,admin
501229,6359,124616,13662,0,N,N,N,CP_Drtn,TT_Task,DT_FixedDUR2,TK_NotStart,DUKHCONI2AZ2SLGL7205,Sweet Soil Laying,8178,120,0,200,0,140,140,200,0,0,0,,,,2014-05-28 08:00,2014-06-25 17:00,,2014-05-11 08:00,2014-06-08 17:00,2014-05-11 08:00,2014-06-08 17:00,2014-05-11 08:00,2014-06-08 17:00,2014-05-28 08:00,2014-06-25 17:00,,PT_Normal,,,,,xqgMDhchTjysMyLECuu6cQ,,,,N,0,0,,,2013-02-16 15:52,2013-02-16 16:35,admin,admin
501230,6359,124616,13662,0,N,N,N,CP_Drtn,TT_Task,DT_FixedDUR2,TK_NotStart,DUKHCONI2AZ2SLGL7210,Plantation works,8178,120,120,200,0,266,266,200,0,0,0,,,,2014-06-09 08:00,2014-07-07 17:00,,2014-05-22 08:00,2014-06-19 17:00,2014-05-22 08:00,2014-06-19 17:00,2014-05-22 08:00,2014-06-19 17:00,2014-06-09 08:00,2014-07-07 17:00,,PT_Normal,,,,,+DjBm8p1QQmoQtC5IQ4YdQ,,,,N,0,0,,,2013-02-16 15:52,2013-02-16 16:35,admin,admin
501231,6359,124617,13662,0,N,N,N,CP_Drtn,TT_Task,DT_FixedDUR2,TK_NotStart,DUKHCONI2AZ2ELGL5215,Excavation Cable  Trenches  & Duct Banks,8177,0,0,200,0,2077,2077,200,751,0,751,,,,2014-01-25 08:00,2014-02-23 17:00,,2014-01-25 08:00,2014-02-23 17:00,2014-01-25 08:00,2014-02-23 17:00,2014-01-25 08:00,2014-02-23 17:00,2014-01-25 08:00,2014-02-23 17:00,,PT_Normal,,,,,3bHM3JKpSDypiUxprDpl+g,,,,N,0,0,,,2013-02-16 15:52,2013-02-16 16:35,admin,admin
501232,6359,124617,13662,0,N,N,N,CP_Drtn,TT_Task,DT_FixedDUR2,TK_NotStart,DUKHCONI2AZ2ELGL5220,Laying of electrical cables,8178,104,0,200,0,3141.2,3141.2,200,0,0,0,,,,2014-02-16 08:00,2014-03-16 17:00,,2014-01-30 08:00,2014-03-01 17:00,2014-01-30 08:00,2014-03-01 17:00,2014-01-30 08:00,2014-03-01 17:00,2014-02-16 08:00,2014-03-16 17:00,,PT_Normal,,,,,QW2yXu+1RgC7iE6S+zV/vg,,,,N,0,0,,,2013-02-16 15:52,2013-02-16 16:35,admin,admin
501233,6359,124617,13662,0,N,N,N,CP_Drtn,TT_Task,DT_FixedDUR2,TK_NotStart,DUKHCONI2AZ2ELGL5225,Backfilling Electrical trench,8177,104,0,200,0,1359,1359,200,825,0,825,,,,2014-02-24 08:00,2014-03-24 17:00,,2014-02-08 08:00,2014-03-09 17:00,2014-02-08 08:00,2014-03-09 17:00,2014-02-08 08:00,2014-03-09 17:00,2014-02-24 08:00,2014-03-24 17:00,,PT_Normal,,,,,hohMzS4UQR6zgYpDIrZCLA,,,,N,0,0,,,2013-02-16 15:52,2013-02-16 16:35,admin,admin
501234,6359,124617,13662,0,N,N,N,CP_Drtn,TT_Task,DT_FixedDUR2,TK_NotStart,DUKHCONI2AZ2ELGL5230,Construction of Submain Board & Feeder Pillar,8165,264,0,200,0,520,520,200,0,0,0,,,,2014-03-31 08:00,2014-04-28 17:00,,2014-02-20 08:00,2014-03-20 17:00,2014-02-20 08:00,2014-03-20 17:00,2014-02-20 08:00,2014-03-20 17:00,2014-03-31 08:00,2014-04-28 17:00,,PT_Normal,,,,,YnKoeVikT7Wt5UFb8xY2fA,,,,N,0,0,,,2013-02-16 15:52,2013-02-16 16:35,admin,admin
501235,6359,124618,13662,0,N,N,N,CP_Drtn,TT_Task,DT_FixedDUR2,TK_NotStart,DUKHCONI2AZ2WSGL5160,Laying of water line,8178,8,0,200,0,302.4,302.4,200,0,0,0,,,,2013-12-09 08:00,2014-01-07 17:00,,2013-12-08 08:00,2014-01-06 17:00,2013-12-08 08:00,2014-01-06 17:00,2013-12-08 08:00,2014-01-06 17:00,2013-12-09 08:00,2014-01-07 17:00,,PT_Normal,,,,,vvdY8O6jTs6C6LRXsuXWSA,,,,N,0,0,,,2013-02-16 15:52,2013-02-23 09:03,admin,admin
501236,6359,124618,13662,0,N,N,N,CP_Drtn,TT_Task,DT_FixedDUR2,TK_NotStart,DUKHCONI2AZ2WSGL5165,Testing of potable water line,8178,8,8,200,0,84,84,200,0,0,0,,,,2013-12-15 08:00,2014-01-13 17:00,,2013-12-14 08:00,2014-01-12 17:00,2013-12-14 08:00,2014-01-12 17:00,2013-12-14 08:00,2014-01-12 17:00,2013-12-15 08:00,2014-01-13 17:00,,PT_Normal,,,,,fzuWFzQERHCCeVzr1/tEgg,,,,N,0,0,,,2013-02-16 15:52,2013-02-16 15:56,admin,admin
501237,6359,124618,13662,0,N,N,N,CP_Drtn,TT_Task,DT_FixedDUR2,TK_NotStart,DUKHCONI2AZ2WSGL5170,Backfilling potable water line,8177,0,0,200,0,187,187,200,139,0,139,,,,2013-12-22 08:00,2014-01-19 17:00,,2013-12-22 08:00,2014-01-19 17:00,2013-12-22 08:00,2014-01-19 17:00,2013-12-22 08:00,2014-01-19 17:00,2013-12-22 08:00,2014-01-19 17:00,,PT_Normal,,,,,u3VMFdEATAGaZycq1cga1Q,,,,N,0,0,,,2013-02-16 15:52,2013-02-16 15:56,admin,admin
501238,6359,124618,13662,0,N,N,N,CP_Drtn,TT_Task,DT_FixedDUR2,TK_NotStart,DUKHCONI2AZ2WSGL5175,Construction of valve chambers & Thrust Blocks,8172,232,0,200,0,66,66,200,0,0,0,,,,2014-01-30 08:00,2014-03-01 17:00,,2013-12-28 08:00,2014-01-25 17:00,2013-12-28 08:00,2014-01-25 17:00,2013-12-28 08:00,2014-01-25 17:00,2014-01-30 08:00,2014-03-01 17:00,,PT_Normal,,,,,Azc/8sOJRkeqv8PE+7eLjg,,,,N,0,0,,,2013-02-16 15:52,2013-02-16 15:56,admin,admin
501239,6359,124618,13662,0,N,N,N,CP_Drtn,TT_Task,DT_FixedDUR2,TK_NotStart,DUKHCONI2AZ2WSGL5180,"Installation of meter ,Accessories & Connection",8178,232,56,160,0,33.6,33.6,160,0,0,0,,,,2014-03-02 08:00,2014-03-24 17:00,,2014-01-26 08:00,2014-02-18 17:00,2014-01-26 08:00,2014-02-18 17:00,2014-01-26 08:00,2014-02-18 17:00,2014-03-02 08:00,2014-03-24 17:00,,PT_Normal,,,,,tIt8pmT4TQKOtf8WnUHdTQ,,,,N,0,0,,,2013-02-16 15:52,2013-02-16 16:35,admin,admin
501240,6359,124618,13662,0,N,N,N,CP_Drtn,TT_Task,DT_FixedDUR2,TK_NotStart,DUKHCONI2AZ2WSGL5155,Excavation for water line,8177,8,0,200,0,239,239,200,125,0,125,,,,2013-12-03 08:00,2014-01-01 17:00,,2013-12-02 08:00,2013-12-31 17:00,2013-12-02 08:00,2013-12-31 17:00,2013-12-02 08:00,2013-12-31 17:00,2013-12-03 08:00,2014-01-01 17:00,,PT_Normal,,,,,ayOgjFzIS6ui9FEReXFXwA,,,,N,0,0,,,2013-02-16 15:52,2013-02-16 15:56,admin,admin
501241,6359,124619,13662,0,N,N,N,CP_Drtn,TT_Task,DT_FixedDUR2,TK_NotStart,DUKHCONI2AZ2SAGL5135,Construction of manholes Drainage,8172,472,200,200,0,36,36,200,0,0,0,,,,2014-01-30 08:00,2014-03-01 17:00,,2013-11-21 08:00,2013-12-21 17:00,2013-11-21 08:00,2013-12-21 17:00,2013-11-21 08:00,2013-12-21 17:00,2014-01-30 08:00,2014-03-01 17:00,,PT_Normal,,,,,NpS4QgHIQLCbLHi71r5YnA,,,,N,0,0,,,2013-02-16 15:52,2013-02-16 15:56,admin,admin
501242,6359,124619,13662,0,N,N,N,CP_Drtn,TT_Task,DT_FixedDUR2,TK_NotStart,DUKHCONI2AZ2SAGL5140,Construction of soakaways,8172,0,0,200,0,102,102,200,0,0,0,,,,2013-11-21 08:00,2013-12-21 17:00,,2013-11-21 08:00,2013-12-21 17:00,2013-11-21 08:00,2013-12-21 17:00,2013-11-21 08:00,2013-12-21 17:00,2013-11-21 08:00,2013-12-21 17:00,,PT_Normal,,,,,81pXpsQCToigmPOhexfn3A,,,,N,0,0,,,2013-02-16 15:52,2013-02-16 15:56,admin,admin
501243,6359,124619,13662,0,N,N,N,CP_Drtn,TT_Task,DT_FixedDUR2,TK_NotStart,DUKHCONI2AZ2SAGL5145,Construction of Road gullies,8172,0,0,200,0,102,102,200,0,0,0,,,,2013-12-22 08:00,2014-01-19 17:00,,2013-12-22 08:00,2014-01-19 17:00,2013-12-22 08:00,2014-01-19 17:00,2013-12-22 08:00,2014-01-19 17:00,2013-12-22 08:00,2014-01-19 17:00,,PT_Normal,,,,,PQe89hojT6C5sOT3El0/3w,,,,N,0,0,,,2013-02-16 15:52,2013-02-16 15:56,admin,admin
501244,6359,124619,13662,0,N,N,N,CP_Drtn,TT_Task,DT_FixedDUR2,TK_NotStart,DUKHCONI2AZ2SAGL5150,Connection with existing sewer manhole,8172,272,272,160,0,36,36,160,0,0,0,,,,2014-03-02 08:00,2014-03-24 17:00,,2014-01-20 08:00,2014-02-12 17:00,2014-01-20 08:00,2014-02-12 17:00,2014-01-20 08:00,2014-02-12 17:00,2014-03-02 08:00,2014-03-24 17:00,,PT_Normal,,,,,zHVGqoFfTx+zt/WELTsA2g,,,,N,0,0,,,2013-02-16 15:52,2013-02-16 16:35,admin,admin
501245,6359,124620,13662,0,N,N,N,CP_Drtn,TT_Task,DT_FixedDUR2,TK_NotStart,DUKHCONI2AZ2TCGL5295,Excavation Telecommunication trenches,8177,0,0,160,0,178,178,160,100,0,100,,,,2014-02-18 08:00,2014-03-12 17:00,,2014-02-18 08:00,2014-03-12 17:00,2014-02-18 08:00,2014-03-12 17:00,2014-02-18 08:00,2014-03-12 17:00,2014-02-18 08:00,2014-03-12 17:00,,PT_Normal,,,,,GMtwk/cvR5eLL6/0dryOSQ,,,,N,0,0,,,2013-02-16 15:52,2013-02-16 16:35,admin,admin
501246,6359,124620,13662,0,N,N,N,CP_Drtn,TT_Task,DT_FixedDUR2,TK_NotStart,DUKHCONI2AZ2TCGL5300,Laying of cables,8178,0,0,160,0,369.2,369.2,160,0,0,0,,,,2014-02-24 08:00,2014-03-18 17:00,,2014-02-24 08:00,2014-03-18 17:00,2014-02-24 08:00,2014-03-18 17:00,2014-02-24 08:00,2014-03-18 17:00,2014-02-24 08:00,2014-03-18 17:00,,PT_Normal,,,,,eKmaX9ihTNmsmGv0dLTrMg,,,,N,0,0,,,2013-02-16 15:52,2013-02-16 16:35,admin,admin
501247,6359,124620,13662,0,N,N,N,CP_Drtn,TT_Task,DT_FixedDUR2,TK_NotStart,DUKHCONI2AZ2TCGL5305,Backfilling telecommunication trench,8177,0,0,160,0,140,140,160,110,0,110,,,,2014-03-02 08:00,2014-03-24 17:00,,2014-03-02 08:00,2014-03-24 17:00,2014-03-02 08:00,2014-03-24 17:00,2014-03-02 08:00,2014-03-24 17:00,2014-03-02 08:00,2014-03-24 17:00,,PT_Normal,,,,,fhrWgEMSQmG/yNkEdmxO3w,,,,N,0,0,,,2013-02-16 15:52,2013-02-16 16:35,admin,admin
501248,6359,124620,13662,0,N,N,N,CP_Drtn,TT_Task,DT_FixedDUR2,TK_NotStart,DUKHCONI2AZ2TCGL5310,Connection & Installation,8178,360,136,160,0,180.8,180.8,160,0,0,0,,,,2014-05-05 08:00,2014-05-27 17:00,,2014-03-13 08:00,2014-04-05 17:00,2014-03-13 08:00,2014-04-05 17:00,2014-03-13 08:00,2014-04-05 17:00,2014-05-05 08:00,2014-05-27 17:00,,PT_Normal,,,,,1k3Xtd1sR0S4RYz2jzNzsA,,,,N,0,0,,,2013-02-16 15:52,2013-02-16 16:35,admin,admin
501249,6359,124621,13662,0,N,N,N,CP_Drtn,TT_Task,DT_FixedDUR2,TK_NotStart,DUKHCONI2AZ2STGL5235,Excavation for Street lighting,8177,0,0,200,0,184,184,200,100,0,100,,,,2014-01-25 08:00,2014-02-23 17:00,,2014-01-25 08:00,2014-02-23 17:00,2014-01-25 08:00,2014-02-23 17:00,2014-01-25 08:00,2014-02-23 17:00,2014-01-25 08:00,2014-02-23 17:00,,PT_Normal,,,,,WxJ8UKm5Q767VvFEY4RbfA,,,,N,0,0,,,2013-02-16 15:52,2013-02-16 16:35,admin,admin
501250,6359,124621,13662,0,N,N,N,CP_Drtn,TT_Task,DT_FixedDUR2,TK_NotStart,DUKHCONI2AZ2STGL5240,Construction of Duct Banks,8178,0,0,200,0,340.8,340.8,200,0,0,0,,,,2014-01-30 08:00,2014-03-01 17:00,,2014-01-30 08:00,2014-03-01 17:00,2014-01-30 08:00,2014-03-01 17:00,2014-01-30 08:00,2014-03-01 17:00,2014-01-30 08:00,2014-03-01 17:00,,PT_Normal,,,,,TXXkBmKpQWiQZfexboAL2A,,,,N,0,0,,,2013-02-16 15:52,2013-02-16 16:35,admin,admin
501251,6359,124621,13662,0,N,N,N,CP_Drtn,TT_Task,DT_FixedDUR2,TK_NotStart,DUKHCONI2AZ2STGL5245,Construction of Foundation,8172,0,0,200,0,506,506,200,0,0,0,,,,2014-01-30 08:00,2014-03-01 17:00,,2014-01-30 08:00,2014-03-01 17:00,2014-01-30 08:00,2014-03-01 17:00,2014-01-30 08:00,2014-03-01 17:00,2014-01-30 08:00,2014-03-01 17:00,,PT_Normal,,,,,q6cCLjrHSumonlMPmJZ5nw,,,,N,0,0,,,2013-02-16 15:52,2013-02-16 16:35,admin,admin
501252,6359,124621,13662,0,N,N,N,CP_Drtn,TT_Task,DT_FixedDUR2,TK_NotStart,DUKHCONI2AZ2STGL5250,Backfilling Street Lighting,8177,0,0,200,0,146,146,200,110,0,110,,,,2014-02-05 08:00,2014-03-06 17:00,,2014-02-05 08:00,2014-03-06 17:00,2014-02-05 08:00,2014-03-06 17:00,2014-02-05 08:00,2014-03-06 17:00,2014-02-05 08:00,2014-03-06 17:00,,PT_Normal,,,,,mzakfoPsR12GAzwoFNdfIA,,,,N,0,0,,,2013-02-16 15:52,2013-02-16 16:35,admin,admin
501253,6359,124621,13662,0,N,N,N,CP_Drtn,TT_Task,DT_FixedDUR2,TK_NotStart,DUKHCONI2AZ2STGL5255,Installation of light Post,8178,424,160,200,0,170.4,170.4,200,0,0,0,,,,2014-04-21 08:00,2014-05-19 17:00,,2014-02-18 08:00,2014-03-18 17:00,2014-02-18 08:00,2014-03-18 17:00,2014-02-18 08:00,2014-03-18 17:00,2014-04-21 08:00,2014-05-19 17:00,,PT_Normal,,,,,2O+e3/43T1qZTdN7b16Beg,,,,N,0,0,,,2013-02-16 15:52,2013-02-16 16:35,admin,admin
501254,6359,124621,13662,0,N,N,N,CP_Drtn,TT_Task,DT_FixedDUR2,TK_NotStart,DUKHCONI2AZ2STGL5260,Electrical Works,8178,264,40,200,0,142,142,200,0,0,0,,,,2014-04-29 08:00,2014-05-27 17:00,,2014-03-22 08:00,2014-04-19 17:00,2014-03-22 08:00,2014-04-19 17:00,2014-03-22 08:00,2014-04-19 17:00,2014-04-29 08:00,2014-05-27 17:00,,PT_Normal,,,,,xA0gS9Y3SGeL8mgDsssyTg,,,,N,0,0,,,2013-02-16 15:52,2013-02-16 16:35,admin,admin
501255,6359,124622,13662,0,N,N,N,CP_Drtn,TT_Task,DT_FixedDUR2,TK_NotStart,DUKHCONI2AZ2RWGL6015,Laying of Granular Sub Base Coarse,8173,0,0,160,0,1250,1250,160,600,0,600,,,,2014-04-29 08:00,2014-05-21 17:00,,2014-04-29 08:00,2014-05-21 17:00,2014-04-29 08:00,2014-05-21 17:00,2014-04-29 08:00,2014-05-21 17:00,2014-04-29 08:00,2014-05-21 17:00,,PT_Normal,,,,,SdWXJjgMSOKXU32d5+WZDQ,,,,N,0,0,,,2013-02-16 15:52,2013-02-16 16:35,admin,admin
501256,6359,124622,13662,0,N,N,N,CP_Drtn,TT_Task,DT_FixedDUR2,TK_NotStart,DUKHCONI2AZ2RWGL6020,Laying of Road Base Asphalt Concrete,8178,0,0,40,0,168,168,40,150,0,150,,,,2014-05-22 08:00,2014-05-27 17:00,,2014-05-22 08:00,2014-05-27 17:00,2014-05-22 08:00,2014-05-27 17:00,2014-05-22 08:00,2014-05-27 17:00,2014-05-22 08:00,2014-05-27 17:00,,PT_Normal,,,,,Zww7mT4ISL2Ri5eqyOJOIg,,,,N,0,0,,,2013-02-16 15:52,2013-02-16 16:35,admin,admin
501257,6359,124622,13662,0,N,N,N,CP_Drtn,TT_Task,DT_FixedDUR2,TK_NotStart,DUKHCONI2AZ2RWGL6025,Laying of Asphalt Wearing Coarse,8178,0,0,40,0,168,168,40,150,0,150,,,,2014-05-28 08:00,2014-06-02 17:00,,2014-05-28 08:00,2014-06-02 17:00,2014-05-28 08:00,2014-06-02 17:00,2014-05-28 08:00,2014-06-02 17:00,2014-05-28 08:00,2014-06-02 17:00,,PT_Normal,,,,,NRHbdcXgQTGGXBZHiaXH+g,,,,N,0,0,,,2013-02-16 15:52,2013-02-16 16:35,admin,admin
501258,6359,124622,13662,0,N,N,N,CP_Drtn,TT_Task,DT_FixedDUR2,TK_NotStart,DUKHCONI2AZ2RWGL6030,Traffic Signage & Road Marking,8178,144,120,40,0,472,472,40,0,0,0,,,,2014-06-24 08:00,2014-06-29 17:00,,2014-06-03 08:00,2014-06-08 17:00,2014-06-03 08:00,2014-06-08 17:00,2014-06-03 08:00,2014-06-08 17:00,2014-06-24 08:00,2014-06-29 17:00,,PT_Normal,,,,,47qy7DfdTGyC4nrhaGaFvw,,,,N,0,0,,,2013-02-16 15:52,2013-02-16 16:35,admin,admin
501259,6359,124622,13662,0,N,N,N,CP_Drtn,TT_Task,DT_FixedDUR2,TK_NotStart,DUKHCONI2AZ2RWGL6000,Excavation & Earth Filling,8177,0,0,80,0,452,452,80,200,0,200,,,,2014-03-25 08:00,2014-04-05 17:00,,2014-03-25 08:00,2014-04-05 17:00,2014-03-25 08:00,2014-04-05 17:00,2014-03-25 08:00,2014-04-05 17:00,2014-03-25 08:00,2014-04-05 17:00,,PT_Normal,,,,,iKpi/3xIRFK5Hw69YC20Zg,,,,N,0,0,,,2013-02-16 15:52,2013-02-16 16:35,admin,admin
501260,6359,124622,13662,0,N,N,N,CP_Drtn,TT_Task,DT_FixedDUR2,TK_NotStart,DUKHCONI2AZ2RWGL6005,Laying of Sub Grade,8178,0,0,200,0,18,18,200,0,0,0,,,,2014-04-06 08:00,2014-05-04 17:00,,2014-04-06 08:00,2014-05-04 17:00,2014-04-06 08:00,2014-05-04 17:00,2014-04-06 08:00,2014-05-04 17:00,2014-04-06 08:00,2014-05-04 17:00,,PT_Normal,,,,,Hl9baNeZTLGQx8MSqNQ7fg,,,,N,0,0,,,2013-02-16 15:52,2013-02-16 16:35,admin,admin
501261,6359,124622,13662,0,N,N,N,CP_Drtn,TT_Task,DT_FixedDUR2,TK_NotStart,DUKHCONI2AZ2RWGL6010,Laying of Precast Kerbs,8178,0,0,200,0,18,18,200,0,0,0,,,,2014-04-17 08:00,2014-05-15 17:00,,2014-04-17 08:00,2014-05-15 17:00,2014-04-17 08:00,2014-05-15 17:00,2014-04-17 08:00,2014-05-15 17:00,2014-04-17 08:00,2014-05-15 17:00,,PT_Normal,,,,,+031N2jMT0OO9yHudAsWVA,,,,N,0,0,,,2013-02-16 15:52,2013-02-16 16:35,admin,admin
501262,6359,124623,13662,0,N,N,N,CP_Drtn,TT_Task,DT_FixedDUR2,TK_NotStart,DUKHCONI2AZ2FFGL5185,Excavation for firefighting line,8177,0,0,200,0,87,87,200,51,0,51,,,,2013-12-28 08:00,2014-01-25 17:00,,2013-12-28 08:00,2014-01-25 17:00,2013-12-28 08:00,2014-01-25 17:00,2013-12-28 08:00,2014-01-25 17:00,2013-12-28 08:00,2014-01-25 17:00,,PT_Normal,,,,,BFyq7e2MSI+H7GmDZNtIYw,,,,N,0,0,,,2013-02-16 15:52,2013-02-16 16:35,admin,admin
501263,6359,124623,13662,0,N,N,N,CP_Drtn,TT_Task,DT_FixedDUR2,TK_NotStart,DUKHCONI2AZ2FFGL5190,Laying of firefighting line,8178,0,0,200,0,82.8,82.8,200,0,0,0,,,,2014-01-05 08:00,2014-02-02 17:00,,2014-01-05 08:00,2014-02-02 17:00,2014-01-05 08:00,2014-02-02 17:00,2014-01-05 08:00,2014-02-02 17:00,2014-01-05 08:00,2014-02-02 17:00,,PT_Normal,,,,,uSOM7RpNTNGXkq/DCSPNRQ,,,,N,0,0,,,2013-02-16 15:52,2013-02-16 16:35,admin,admin
501264,6359,124623,13662,0,N,N,N,CP_Drtn,TT_Task,DT_FixedDUR2,TK_NotStart,DUKHCONI2AZ2FFGL5195,Testing of firefighting line,8178,0,0,200,0,44.4,44.4,200,0,0,0,,,,2014-01-11 08:00,2014-02-08 17:00,,2014-01-11 08:00,2014-02-08 17:00,2014-01-11 08:00,2014-02-08 17:00,2014-01-11 08:00,2014-02-08 17:00,2014-01-11 08:00,2014-02-08 17:00,,PT_Normal,,,,,xjfV7VTGSQKrhGt6FKFf+w,,,,N,0,0,,,2013-02-16 15:52,2013-02-16 16:35,admin,admin
501265,6359,124623,13662,0,N,N,N,CP_Drtn,TT_Task,DT_FixedDUR2,TK_NotStart,DUKHCONI2AZ2FFGL5200,Backfilling firefighting line,8177,0,0,200,0,73,73,200,55,0,55,,,,2014-01-16 08:00,2014-02-15 17:00,,2014-01-16 08:00,2014-02-15 17:00,2014-01-16 08:00,2014-02-15 17:00,2014-01-16 08:00,2014-02-15 17:00,2014-01-16 08:00,2014-02-15 17:00,,PT_Normal,,,,,/9OjZ4dATLiKXp65/s//lg,,,,N,0,0,,,2013-02-16 15:52,2013-02-16 16:35,admin,admin
501266,6359,124623,13662,0,N,N,N,CP_Drtn,TT_Task,DT_FixedDUR2,TK_NotStart,DUKHCONI2AZ2FFGL5205,Construction of valve chambers & Thrust Blocks,8165,176,0,200,0,84,84,200,0,0,0,,,,2014-02-18 08:00,2014-03-18 17:00,,2014-01-22 08:00,2014-02-20 17:00,2014-01-22 08:00,2014-02-20 17:00,2014-01-22 08:00,2014-02-20 17:00,2014-02-18 08:00,2014-03-18 17:00,,PT_Normal,,,,,HS0OSkTHQ6+i4Lekm2e1Ww,,,,N,0,0,,,2013-02-16 15:52,2013-02-16 16:35,admin,admin
501267,6359,124623,13662,0,N,N,N,CP_Drtn,TT_Task,DT_FixedDUR2,TK_NotStart,DUKHCONI2AZ2FFGL5210,Connection with existing Firewater System,8165,176,128,200,0,84,84,200,0,0,0,,,,2014-02-24 08:00,2014-03-24 17:00,,2014-01-28 08:00,2014-02-26 17:00,2014-01-28 08:00,2014-02-26 17:00,2014-01-28 08:00,2014-02-26 17:00,2014-02-24 08:00,2014-03-24 17:00,,PT_Normal,,,,,kmSyijiBSS6CsgxhfdBPeQ,,,,N,0,0,,,2013-02-16 15:52,2013-02-16 16:35,admin,admin
501268,6359,124624,13662,0,N,N,N,CP_Drtn,TT_Task,DT_FixedDUR2,TK_NotStart,DUKHCONI2AZ2HDGL7020,Precast Concrete Kerbs works,8173,120,0,160,0,186,186,160,0,0,0,,,,2014-04-12 08:00,2014-05-04 17:00,,2014-03-25 08:00,2014-04-16 17:00,2014-03-25 08:00,2014-04-16 17:00,2014-03-25 08:00,2014-04-16 17:00,2014-04-12 08:00,2014-05-04 17:00,,PT_Normal,,,,,iZ4SOa3RQBK0ckRAly3ymQ,,,,N,0,0,,,2013-02-16 15:52,2013-02-16 16:35,admin,admin
501269,6359,124624,13662,0,N,N,N,CP_Drtn,TT_Task,DT_FixedDUR2,TK_NotStart,DUKHCONI2AZ2HDGL7025,Interlocking for Walkways,8174,120,0,200,0,432,432,200,0,0,0,,,,2014-04-23 08:00,2014-05-21 17:00,,2014-04-06 08:00,2014-05-04 17:00,2014-04-06 08:00,2014-05-04 17:00,2014-04-06 08:00,2014-05-04 17:00,2014-04-23 08:00,2014-05-21 17:00,,PT_Normal,,,,,ymz2MzWiSdyyxQV3I8HWCA,,,,N,0,0,,,2013-02-16 15:52,2013-02-16 16:35,admin,admin
501270,6359,124624,13662,0,N,N,N,CP_Drtn,TT_Task,DT_FixedDUR2,TK_NotStart,DUKHCONI2AZ2HDGL7030,Construction of Retaining wall,8165,120,0,200,0,376,376,200,0,0,0,,,,2014-05-05 08:00,2014-06-02 17:00,,2014-04-17 08:00,2014-05-15 17:00,2014-04-17 08:00,2014-05-15 17:00,2014-04-17 08:00,2014-05-15 17:00,2014-05-05 08:00,2014-06-02 17:00,,PT_Normal,,,,,lZcrd9FCS+Kkg2I3XCNZGw,,,,N,0,0,,,2013-02-16 15:52,2013-02-16 16:35,admin,admin
501271,6359,124624,13662,0,N,N,N,CP_Drtn,TT_Task,DT_FixedDUR2,TK_NotStart,DUKHCONI2AZ2HDGL7035,Construction of Wash Stone Boulders,8170,120,0,200,0,66,66,200,0,0,0,,,,2014-05-05 08:00,2014-06-02 17:00,,2014-04-17 08:00,2014-05-15 17:00,2014-04-17 08:00,2014-05-15 17:00,2014-04-17 08:00,2014-05-15 17:00,2014-05-05 08:00,2014-06-02 17:00,,PT_Normal,,,,,5BpausUbSh6GvlLq9Faf4Q,,,,N,0,0,,,2013-02-16 15:52,2013-02-16 16:35,admin,admin
501272,6359,124624,13662,0,N,N,N,CP_Drtn,TT_Task,DT_FixedDUR2,TK_NotStart,DUKHCONI2AZ2HDGL7040,Construction of Speed Humps,8167,0,0,80,0,14,14,80,0,0,0,,,,2014-06-03 08:00,2014-06-14 17:00,,2014-06-03 08:00,2014-06-14 17:00,2014-06-03 08:00,2014-06-14 17:00,2014-06-03 08:00,2014-06-14 17:00,2014-06-03 08:00,2014-06-14 17:00,,PT_Normal,,,,,hF9TRfIpTqquGX16Ln0TFg,,,,N,0,0,,,2013-02-16 15:52,2013-02-16 16:35,admin,admin
501273,6359,124625,13662,0,N,N,N,CP_Drtn,TT_Task,DT_FixedDUR2,TK_NotStart,DUKHCONI2AZ2DRGL5115,Excavation for Drainage line,8177,0,0,200,0,172,172,200,100,0,100,,,,2013-10-20 08:00,2013-11-17 17:00,,2013-10-20 08:00,2013-11-17 17:00,2013-10-20 08:00,2013-11-17 17:00,2013-10-20 08:00,2013-11-17 17:00,2013-10-20 08:00,2013-11-17 17:00,,PT_Normal,,,,,8XvP0MzXTpuF6VNK9b+lDw,,,,N,0,0,,,2013-02-16 15:52,2013-02-16 15:56,admin,admin
501274,6359,124625,13662,0,N,N,N,CP_Drtn,TT_Task,DT_FixedDUR2,TK_NotStart,DUKHCONI2AZ2DRGL5120,Laying of Drainage line,8178,0,0,200,0,82.8,82.8,200,0,0,0,,,,2013-10-27 08:00,2013-11-24 17:00,,2013-10-27 08:00,2013-11-24 17:00,2013-10-27 08:00,2013-11-24 17:00,2013-10-27 08:00,2013-11-24 17:00,2013-10-27 08:00,2013-11-24 17:00,,PT_Normal,,,,,NAKkKBDxRoypLaQ3wiYZ4w,,,,N,0,0,,,2013-02-16 15:52,2013-02-16 15:56,admin,admin
501275,6359,124625,13662,0,N,N,N,CP_Drtn,TT_Task,DT_FixedDUR2,TK_NotStart,DUKHCONI2AZ2DRGL5125,Testing of Drainage line,8178,0,0,200,0,50.4,50.4,200,0,0,0,,,,2013-11-04 08:00,2013-12-02 17:00,,2013-11-04 08:00,2013-12-02 17:00,2013-11-04 08:00,2013-12-02 17:00,2013-11-04 08:00,2013-12-02 17:00,2013-11-04 08:00,2013-12-02 17:00,,PT_Normal,,,,,9z+qEQ7sQIyD1TShE5JJqA,,,,N,0,0,,,2013-02-16 15:52,2013-02-16 15:56,admin,admin
501276,6359,124625,13662,0,N,N,N,CP_Drtn,TT_Task,DT_FixedDUR2,TK_NotStart,DUKHCONI2AZ2DRGL5130,Backfilling Drainage line,8177,0,0,120,0,195,195,120,165,0,165,,,,2013-11-21 08:00,2013-12-08 17:00,,2013-11-21 08:00,2013-12-08 17:00,2013-11-21 08:00,2013-12-08 17:00,2013-11-21 08:00,2013-12-08 17:00,2013-11-21 08:00,2013-12-08 17:00,,PT_Normal,,,,,jW02cG1cRlOadkro5tSfaw,,,,N,0,0,,,2013-02-16 15:52,2013-02-16 15:56,admin,admin
501277,6359,124626,13662,0,N,N,N,CP_Drtn,TT_Task,DT_FixedDUR2,TK_NotStart,DUKHCONI2AZ2PSGL7010,"Column, Frame&  Fabrics  Erection",8178,24,0,200,0,122,122,200,0,0,0,,,,2014-06-01 08:00,2014-06-29 17:00,,2014-05-28 08:00,2014-06-25 17:00,2014-05-28 08:00,2014-06-25 17:00,2014-05-28 08:00,2014-06-25 17:00,2014-06-01 08:00,2014-06-29 17:00,,PT_Normal,,,,,qPcbCxW6SoicIQMf2gTxeg,,,,N,0,0,,,2013-02-16 15:52,2013-02-16 16:35,admin,admin
501278,6359,124626,13662,0,N,N,N,CP_Drtn,TT_Task,DT_FixedDUR2,TK_NotStart,DUKHCONI2AZ2PSGL7015,Electrical Works-Parking Shed,8178,24,24,200,0,275.2,275.2,200,0,0,0,,,,2014-06-07 08:00,2014-07-05 17:00,,2014-06-03 08:00,2014-07-01 17:00,2014-06-03 08:00,2014-07-01 17:00,2014-06-03 08:00,2014-07-01 17:00,2014-06-07 08:00,2014-07-05 17:00,,PT_Normal,,,,,EtC/s+HKQoesOQ5zFQhWZw,,,,N,0,0,,,2013-02-16 15:52,2013-02-23 09:03,admin,admin
501279,6359,124626,13662,0,N,N,N,CP_Drtn,TT_Task,DT_FixedDUR2,TK_NotStart,DUKHCONI2AZ2PSGL7000,Excavation,8177,64,40,120,0,37,37,120,31.000038,0,31.000038,,,,2014-05-14 08:00,2014-05-31 17:00,,2014-05-05 08:00,2014-05-21 17:00,2014-05-05 08:00,2014-05-21 17:00,2014-05-05 08:00,2014-05-21 17:00,2014-05-14 08:00,2014-05-31 17:00,,PT_Normal,,,,,sch37sMySX+srf+MY0x8hw,,,,N,0,0,,,2013-02-16 15:52,2013-02-23 09:03,admin,admin
501280,6359,124626,13662,0,N,N,N,CP_Drtn,TT_Task,DT_FixedDUR2,TK_NotStart,DUKHCONI2AZ2PSGL7005,Foundation casting,8165,24,0,120,0,938,938,120,0,0,0,,,,2014-05-20 08:00,2014-06-05 17:00,,2014-05-17 08:00,2014-06-02 17:00,2014-05-17 08:00,2014-06-02 17:00,2014-05-17 08:00,2014-06-02 17:00,2014-05-20 08:00,2014-06-05 17:00,,PT_Normal,,,,,V9K1g6JQR0KEPStzQfpNOA,,,,N,0,0,,,2013-02-16 15:52,2013-02-16 16:35,admin,admin
501281,6359,124627,13662,0,N,N,N,CP_Drtn,TT_Task,DT_FixedDUR2,TK_NotStart,DUKHCONI2AZ2BWGL5315,Construction of Boundary Wall (Ht-3m),8165,216,0,200,0,126,126,200,0,0,0,,,,2014-03-22 08:00,2014-04-19 17:00,,2014-02-18 08:00,2014-03-18 17:00,2014-02-18 08:00,2014-03-18 17:00,2014-02-18 08:00,2014-03-18 17:00,2014-03-22 08:00,2014-04-19 17:00,,PT_Normal,,,,,OzRcb8nWQyyJu4xrLizU4Q,,,,N,0,0,,,2013-02-16 15:52,2013-02-16 16:35,admin,admin
501282,6359,124627,13662,0,N,N,N,CP_Drtn,TT_Task,DT_FixedDUR2,TK_NotStart,DUKHCONI2AZ2BWGL5320,"Install.Steel Gate,Entance Barrier (3m Wall)",8178,216,0,200,0,28,28,200,0,0,0,,,,2014-04-06 08:00,2014-05-04 17:00,,2014-03-05 08:00,2014-04-02 17:00,2014-03-05 08:00,2014-04-02 17:00,2014-03-05 08:00,2014-04-02 17:00,2014-04-06 08:00,2014-05-04 17:00,,PT_Normal,,,,,o1K/VXerS5OONwRWdaI0LQ,,,,N,0,0,,,2013-02-16 15:52,2013-02-16 16:35,admin,admin
501283,6359,124627,13662,0,N,N,N,CP_Drtn,TT_Task,DT_FixedDUR2,TK_NotStart,DUKHCONI2AZ2BWGL5325,Const. of Villa Front Boundary Wall (Ht-2m),8165,216,0,200,0,70,70,200,0,0,0,,,,2014-05-05 08:00,2014-06-02 17:00,,2014-04-03 08:00,2014-05-01 17:00,2014-04-03 08:00,2014-05-01 17:00,2014-04-03 08:00,2014-05-01 17:00,2014-05-05 08:00,2014-06-02 17:00,,PT_Normal,,,,,AmEk2/E/SgqRL358lIiNPw,,,,N,0,0,,,2013-02-16 15:52,2013-02-16 16:35,admin,admin
501284,6359,124627,13662,0,N,N,N,CP_Drtn,TT_Task,DT_FixedDUR2,TK_NotStart,DUKHCONI2AZ2BWGL5330,Const. of Blockwork fence Wall (Ht-1.85m),8165,320,296,200,0,28,28,200,0,0,0,,,,2014-06-01 08:00,2014-06-29 17:00,,2014-04-15 08:00,2014-05-13 17:00,2014-04-15 08:00,2014-05-13 17:00,2014-04-15 08:00,2014-05-13 17:00,2014-06-01 08:00,2014-06-29 17:00,,PT_Normal,,,,,hwz8WCzSTaKhvazRYJBJvw,,,,N,0,0,,,2013-02-16 15:52,2013-02-16 16:35,admin,admin
501285,6359,124631,13662,0,N,N,N,CP_Drtn,TT_Task,DT_FixedDUR2,TK_NotStart,DUKHCONI1BSBGZGL7900,Construction of Concrete structure,8165,40,0,160,0,124,124,160,0,0,0,,,,2014-09-03 08:00,2014-09-25 17:00,,2014-08-28 08:00,2014-09-20 17:00,2014-08-28 08:00,2014-09-20 17:00,2014-08-28 08:00,2014-09-20 17:00,2014-09-03 08:00,2014-09-25 17:00,,PT_Normal,,,,,/ih1RIKbQ1W1dcRuCs139w,,,,N,0,0,,,2013-02-16 15:52,2013-02-16 15:56,admin,admin
501286,6359,124631,13662,0,N,N,N,CP_Drtn,TT_Task,DT_FixedDUR2,TK_NotStart,DUKHCONI1BSBGZGL7905,Installation of Wooden Works,8178,40,0,200,0,300,300,200,0,0,0,,,,2014-09-15 08:00,2014-10-15 17:00,,2014-09-09 08:00,2014-10-07 17:00,2014-09-09 08:00,2014-10-07 17:00,2014-09-09 08:00,2014-10-07 17:00,2014-09-15 08:00,2014-10-15 17:00,,PT_Normal,,,,,c36bGtGhQzyegWwDDDsZuw,,,,N,0,0,,,2013-02-16 15:52,2013-02-16 15:56,admin,admin
501287,6359,124631,13662,0,N,N,N,CP_Drtn,TT_Task,DT_FixedDUR2,TK_NotStart,DUKHCONI1BSBGZGL7910,Electrical Works-Gazebo,8178,40,40,120,0,125.6,125.6,120,0,0,0,,,,2014-10-16 08:00,2014-11-02 17:00,,2014-10-08 08:00,2014-10-27 17:00,2014-10-08 08:00,2014-10-27 17:00,2014-10-08 08:00,2014-10-27 17:00,2014-10-16 08:00,2014-11-02 17:00,,PT_Normal,,,,,B7yQmDnWT1iXBlvGF65oKg,,,,N,0,0,,,2013-02-16 15:52,2013-02-16 15:56,admin,admin
501288,6359,124631,13662,0,N,N,N,CP_Drtn,TT_Task,DT_FixedDUR2,TK_NotStart,DUKHCONI1BSBGZGL7915,Park Benches  Installation,8178,120,80,120,0,120,120,120,0,0,0,,,,2014-09-27 08:00,2014-10-15 17:00,,2014-09-09 08:00,2014-09-25 17:00,2014-09-09 08:00,2014-09-25 17:00,2014-09-09 08:00,2014-09-25 17:00,2014-09-27 08:00,2014-10-15 17:00,,PT_Normal,,,,,9HED+UW8RSqqNJmxaOgDCA,,,,N,0,0,,,2013-02-16 15:52,2013-02-16 15:56,admin,admin
501289,6359,124632,13662,0,N,N,N,CP_Drtn,TT_Task,DT_FixedDUR2,TK_NotStart,DUKHCONI1BSBIWGL7460,Installation of Steel Ladder,8178,272,0,40,0,14,14,40,0,0,0,,,,2014-12-03 08:00,2014-12-08 17:00,,2014-10-25 08:00,2014-10-29 17:00,2014-10-25 08:00,2014-10-29 17:00,2014-10-25 08:00,2014-10-29 17:00,2014-12-03 08:00,2014-12-08 17:00,,PT_Normal,,,,,HpetqwXWTFeQZuvHtnKXsw,,,,N,0,0,,,2013-02-16 15:52,2013-02-16 15:56,admin,admin
501290,6359,124632,13662,0,N,N,N,CP_Drtn,TT_Task,DT_FixedDUR2,TK_NotStart,DUKHCONI1BSBIWGL7465,Installation of G.I Handrails,8178,272,272,40,0,164,164,40,0,0,0,,,,2014-12-09 08:00,2014-12-14 17:00,,2014-10-30 08:00,2014-11-04 17:00,2014-10-30 08:00,2014-11-04 17:00,2014-10-30 08:00,2014-11-04 17:00,2014-12-09 08:00,2014-12-14 17:00,,PT_Normal,,,,,BPFJjfwgSLS19HK7x8hH5A,,,,N,0,0,,,2013-02-16 15:52,2013-02-16 15:56,admin,admin
501291,6359,124632,13662,0,N,N,N,CP_Drtn,TT_Task,DT_FixedDUR2,TK_NotStart,DUKHCONI1BSBIWGL7440,"Plumbing , Drainage & Firefighting  works",8178,424,0,200,0,50.4,50.4,200,0,0,0,,,,2014-10-29 08:00,2014-11-26 17:00,,2014-08-26 08:00,2014-09-23 17:00,2014-08-26 08:00,2014-09-23 17:00,2014-08-26 08:00,2014-09-23 17:00,2014-10-29 08:00,2014-11-26 17:00,,PT_Normal,,,,,lh7FXqUsSgimfDnzIkIVlw,,,,N,0,0,,,2013-02-16 15:52,2013-02-16 15:56,admin,admin
501292,6359,124632,13662,0,N,N,N,CP_Drtn,TT_Task,DT_FixedDUR2,TK_NotStart,DUKHCONI1BSBIWGL7445,AC Works,8178,424,152,200,0,159.2,159.2,200,0,0,0,,,,2014-10-29 08:00,2014-11-26 17:00,,2014-08-26 08:00,2014-09-23 17:00,2014-08-26 08:00,2014-09-23 17:00,2014-08-26 08:00,2014-09-23 17:00,2014-10-29 08:00,2014-11-26 17:00,,PT_Normal,,,,,w1Dt3oXZRiGO6E1+k42sTA,,,,N,0,0,,,2013-02-16 15:52,2013-02-23 09:03,admin,admin
501293,6359,124632,13662,0,N,N,N,CP_Drtn,TT_Task,DT_FixedDUR2,TK_NotStart,DUKHCONI1BSBIWGL7450,Electrical Works,8178,272,0,200,0,325.2,325.2,200,0,0,0,,,,2014-10-29 08:00,2014-11-26 17:00,,2014-09-17 08:00,2014-10-18 17:00,2014-09-17 08:00,2014-10-18 17:00,2014-09-17 08:00,2014-10-18 17:00,2014-10-29 08:00,2014-11-26 17:00,,PT_Normal,,,,,jluD5PzARyqkqmho4gsxCQ,,,,N,0,0,,,2013-02-16 15:52,2013-02-23 09:03,admin,admin
501294,6359,124632,13662,0,N,N,N,CP_Drtn,TT_Task,DT_FixedDUR2,TK_NotStart,DUKHCONI1BSBIWGL7950,Laying of Interlock,8174,552,0,80,0,58,58,80,0,0,0,,,,2014-11-10 08:00,2014-11-20 17:00,,2014-08-19 08:00,2014-08-30 17:00,2014-08-19 08:00,2014-08-30 17:00,2014-08-19 08:00,2014-08-30 17:00,2014-11-10 08:00,2014-11-20 17:00,,PT_Normal,,,,,5HplT8VZTz2iZY2groRq6Q,,,,N,0,0,,,2013-02-16 15:52,2013-02-16 15:56,admin,admin
501295,6359,124632,13662,0,N,N,N,CP_Drtn,TT_Task,DT_FixedDUR2,TK_NotStart,DUKHCONI1BSBIWGL7435,Installation of Boundary Fences,8165,552,280,120,0,42,42,120,0,0,0,,,,2014-11-22 08:00,2014-12-08 17:00,,2014-08-31 08:00,2014-09-16 17:00,2014-08-31 08:00,2014-09-16 17:00,2014-08-31 08:00,2014-09-16 17:00,2014-11-22 08:00,2014-12-08 17:00,,PT_Normal,,,,,RIrR/s4vSAiO1A3Ko9a1yQ,,,,N,0,0,,,2013-02-16 15:52,2013-02-16 15:56,admin,admin
501296,6359,124632,13662,0,N,N,N,CP_Drtn,TT_Task,DT_FixedDUR2,TK_NotStart,DUKHCONI1BSBIWGL7400,Excavation,8162,104,0,120,0,295,295,120,150.999936,0,150.999936,,,,2014-05-12 08:00,2014-05-28 17:00,,2014-04-27 08:00,2014-05-13 17:00,2014-04-27 08:00,2014-05-13 17:00,2014-04-27 08:00,2014-05-13 17:00,2014-05-12 08:00,2014-05-28 17:00,,PT_Normal,,,,,FfA/wII/RD2dV2aW1iw9yg,,,,N,0,0,,,2013-02-16 15:52,2013-02-16 15:56,admin,admin
501297,6359,124632,13662,0,N,N,N,CP_Drtn,TT_Task,DT_FixedDUR2,TK_NotStart,DUKHCONI1BSBIWGL7405,Blinding & base waterproofing,8163,104,0,80,0,200,200,80,0,0,0,,,,2014-05-29 08:00,2014-06-09 17:00,,2014-05-14 08:00,2014-05-25 17:00,2014-05-14 08:00,2014-05-25 17:00,2014-05-14 08:00,2014-05-25 17:00,2014-05-29 08:00,2014-06-09 17:00,,PT_Normal,,,,,XOtMTMqNQ9C8iQmknqisAA,,,,N,0,0,,,2013-02-16 15:52,2013-02-16 15:56,admin,admin
501298,6359,124632,13662,0,N,N,N,CP_Drtn,TT_Task,DT_FixedDUR2,TK_NotStart,DUKHCONI1BSBIWGL7415,Construction of RCC Wall,8165,104,0,200,0,1708,1708,200,0,0,0,,,,2014-06-22 08:00,2014-07-20 17:00,,2014-06-07 08:00,2014-07-05 17:00,2014-06-07 08:00,2014-07-05 17:00,2014-06-07 08:00,2014-07-05 17:00,2014-06-22 08:00,2014-07-20 17:00,,PT_Normal,,,,,/XJHGkBCSNeQ3GE6que8lw,,,,N,0,0,,,2013-02-16 15:52,2013-02-16 15:56,admin,admin
501299,6359,124632,13662,0,N,N,N,CP_Drtn,TT_Task,DT_FixedDUR2,TK_NotStart,DUKHCONI1BSBIWGL7420,Construction of  Roof Slab,8165,432,0,160,0,490,490,160,0,0,0,,,,2014-09-10 08:00,2014-10-02 17:00,,2014-07-06 08:00,2014-07-28 17:00,2014-07-06 08:00,2014-07-28 17:00,2014-07-06 08:00,2014-07-28 17:00,2014-09-10 08:00,2014-10-02 17:00,,PT_Normal,,,,,CBB5BlNsRbeY4X0ocjlWwg,,,,N,0,0,,,2013-02-16 15:52,2013-02-16 15:56,admin,admin
501300,6359,124632,13662,0,N,N,N,CP_Drtn,TT_Task,DT_FixedDUR2,TK_NotStart,DUKHCONI1BSBIWGL7425,Waterproofing & Backfilling,8162,432,0,120,0,141,141,120,33,0,33,,,,2014-10-04 08:00,2014-10-22 17:00,,2014-07-29 08:00,2014-08-18 17:00,2014-07-29 08:00,2014-08-18 17:00,2014-07-29 08:00,2014-08-18 17:00,2014-10-04 08:00,2014-10-22 17:00,,PT_Normal,,,,,Y5O86HO6RMS/jex+WXhyog,,,,N,0,0,,,2013-02-16 15:52,2013-02-16 15:56,admin,admin
501301,6359,124632,13662,0,N,N,N,CP_Drtn,TT_Task,DT_FixedDUR2,TK_NotStart,DUKHCONI1BSBIWGL7430,Floor screed,8164,432,8,40,0,66,66,40,0,0,0,,,,2014-10-23 08:00,2014-10-28 17:00,,2014-08-19 08:00,2014-08-24 17:00,2014-08-19 08:00,2014-08-24 17:00,2014-08-19 08:00,2014-08-24 17:00,2014-10-23 08:00,2014-10-28 17:00,,PT_Normal,,,,,3EtBv7NcQ+C6Q6KDqHg+ng,,,,N,0,0,,,2013-02-16 15:52,2013-02-16 15:56,admin,admin
501302,6359,124632,13662,0,N,N,N,CP_Drtn,TT_Task,DT_FixedDUR2,TK_NotStart,DUKHCONI1BSBIWGL7455,Internal epoxy coating & Painting,8178,272,0,40,0,44,44,40,0,0,0,,,,2014-11-27 08:00,2014-12-02 17:00,,2014-10-19 08:00,2014-10-23 17:00,2014-10-19 08:00,2014-10-23 17:00,2014-10-19 08:00,2014-10-23 17:00,2014-11-27 08:00,2014-12-02 17:00,,PT_Normal,,,,,Wmt9l9qKSKGEVDF3hh73Mw,,,,N,0,0,,,2013-02-16 15:52,2013-02-16 15:56,admin,admin
501303,6359,124632,13662,0,N,N,N,CP_Drtn,TT_Task,DT_FixedDUR2,TK_NotStart,DUKHCONI1BSBIWGL7410,Construction of Raft slab,8165,104,0,80,0,630,630,80,0,0,0,,,,2014-06-10 08:00,2014-06-21 17:00,,2014-05-26 08:00,2014-06-05 17:00,2014-05-26 08:00,2014-06-05 17:00,2014-05-26 08:00,2014-06-05 17:00,2014-06-10 08:00,2014-06-21 17:00,,PT_Normal,,,,,xcEwOKgCStKxPkat93N5Sg,,,,N,0,0,,,2013-02-16 15:52,2013-02-16 15:56,admin,admin
501304,6359,124633,13662,0,N,N,N,CP_Drtn,TT_Task,DT_FixedDUR2,TK_NotStart,DUKHCONI1BSBTRGL7600,Excavation,8162,104,0,80,0,32,32,80,20,0,20,,,,2014-07-21 08:00,2014-07-31 17:00,,2014-07-06 08:00,2014-07-16 17:00,2014-07-06 08:00,2014-07-16 17:00,2014-07-06 08:00,2014-07-16 17:00,2014-07-21 08:00,2014-07-31 17:00,,PT_Normal,,,,,vNL2z7TuQKqOL7AXM1DtWQ,,,,N,0,0,,,2013-02-16 15:52,2013-02-16 15:56,admin,admin
501305,6359,124633,13662,0,N,N,N,CP_Drtn,TT_Task,DT_FixedDUR2,TK_NotStart,DUKHCONI1BSBTRGL7605,Construction of foundation & Grade slab,8165,184,0,160,0,280,280,160,0,0,0,,,,2014-08-17 08:00,2014-09-08 17:00,,2014-07-17 08:00,2014-08-12 17:00,2014-07-17 08:00,2014-08-12 17:00,2014-07-17 08:00,2014-08-12 17:00,2014-08-17 08:00,2014-09-08 17:00,,PT_Normal,,,,,puURPDQwQ2GABRvFj43Y/w,,,,N,0,0,,,2013-02-16 15:52,2013-02-16 15:56,admin,admin
501306,6359,124633,13662,0,N,N,N,CP_Drtn,TT_Task,DT_FixedDUR2,TK_NotStart,DUKHCONI1BSBTRGL7610,"Construction Column,Beams & Roof Slab",8165,184,0,160,0,280,280,160,0,0,0,,,,2014-09-09 08:00,2014-10-01 17:00,,2014-08-13 08:00,2014-09-04 17:00,2014-08-13 08:00,2014-09-04 17:00,2014-08-13 08:00,2014-09-04 17:00,2014-09-09 08:00,2014-10-01 17:00,,PT_Normal,,,,,n/i58HfqTXGqeQItfTF/2Q,,,,N,0,0,,,2013-02-16 15:52,2013-02-16 15:56,admin,admin
501307,6359,124633,13662,0,N,N,N,CP_Drtn,TT_Task,DT_FixedDUR2,TK_NotStart,DUKHCONI1BSBTRGL7615,Finishing Works,8164,184,72,200,0,1000,1000,200,0,0,0,,,,2014-10-29 08:00,2014-11-26 17:00,,2014-09-30 08:00,2014-10-30 17:00,2014-09-30 08:00,2014-10-30 17:00,2014-09-30 08:00,2014-10-30 17:00,2014-10-29 08:00,2014-11-26 17:00,,PT_Normal,,,,,yp74h0ZdQ+CR93HWmY4Gow,,,,N,0,0,,,2013-02-16 15:52,2013-02-16 15:56,admin,admin
501308,6359,124633,13662,0,N,N,N,CP_Drtn,TT_Task,DT_FixedDUR2,TK_NotStart,DUKHCONI1BSBTRGL7620,"Plumbing , Drainage & Firefighting  works",8178,112,0,200,0,282.8,282.8,200,0,0,0,,,,2014-11-10 08:00,2014-12-08 17:00,,2014-10-25 08:00,2014-11-22 17:00,2014-10-25 08:00,2014-11-22 17:00,2014-10-25 08:00,2014-11-22 17:00,2014-11-10 08:00,2014-12-08 17:00,,PT_Normal,,,,,/E2R+j+TQI6kdpgSYepvlQ,,,,N,0,0,,,2013-02-16 15:52,2013-02-16 15:56,admin,admin
501309,6359,124633,13662,0,N,N,N,CP_Drtn,TT_Task,DT_FixedDUR2,TK_NotStart,DUKHCONI1BSBTRGL7625,AC Works,8178,112,0,200,0,284,284,200,0,0,0,,,,2014-11-10 08:00,2014-12-08 17:00,,2014-10-25 08:00,2014-11-22 17:00,2014-10-25 08:00,2014-11-22 17:00,2014-10-25 08:00,2014-11-22 17:00,2014-11-10 08:00,2014-12-08 17:00,,PT_Normal,,,,,EjYVzKr0RByDXw9LuPd8rw,,,,N,0,0,,,2013-02-16 15:52,2013-02-16 15:56,admin,admin
501310,6359,124633,13662,0,N,N,N,CP_Drtn,TT_Task,DT_FixedDUR2,TK_NotStart,DUKHCONI1BSBTRGL7630,Electrical Works-Telecom Room,8178,112,0,200,0,416,416,200,0,0,0,,,,2014-11-10 08:00,2014-12-08 17:00,,2014-10-25 08:00,2014-11-22 17:00,2014-10-25 08:00,2014-11-22 17:00,2014-10-25 08:00,2014-11-22 17:00,2014-11-10 08:00,2014-12-08 17:00,,PT_Normal,,,,,h3xGekIcQlmveXkZ85Bt1Q,,,,N,0,0,,,2013-02-16 15:52,2013-02-16 15:56,admin,admin
501311,6359,124633,13662,0,N,N,N,CP_Drtn,TT_Task,DT_FixedDUR2,TK_NotStart,DUKHCONI1BSBTRGL7635,Final Paintings,8178,112,112,40,0,275,275,40,0,0,0,,,,2014-12-09 08:00,2014-12-14 17:00,,2014-11-23 08:00,2014-11-27 17:00,2014-11-23 08:00,2014-11-27 17:00,2014-11-23 08:00,2014-11-27 17:00,2014-12-09 08:00,2014-12-14 17:00,,PT_Normal,,,,,mLnkK+7LTBSjTDIRxK/iyg,,,,N,0,0,,,2013-02-16 15:52,2013-02-16 15:56,admin,admin
501312,6359,124634,13662,0,N,N,N,CP_Drtn,TT_Task,DT_FixedDUR2,TK_NotStart,DUKHCONI1BSBGHGL7800,Excavation,8162,104,0,80,0,32,32,80,20,0,20,,,,2014-08-05 08:00,2014-08-16 17:00,,2014-07-17 08:00,2014-07-28 17:00,2014-07-17 08:00,2014-07-28 17:00,2014-07-17 08:00,2014-07-28 17:00,2014-08-05 08:00,2014-08-16 17:00,,PT_Normal,,,,,jEDBNYD/Tnqu76nVWv17GQ,,,,N,0,0,,,2013-02-16 15:52,2013-02-16 15:56,admin,admin
501313,6359,124634,13662,0,N,N,N,CP_Drtn,TT_Task,DT_FixedDUR2,TK_NotStart,DUKHCONI1BSBGHGL7805,Construction of foundation & Grade slab,8165,104,0,160,0,280,280,160,0,0,0,,,,2014-08-17 08:00,2014-09-08 17:00,,2014-07-29 08:00,2014-08-24 17:00,2014-07-29 08:00,2014-08-24 17:00,2014-07-29 08:00,2014-08-24 17:00,2014-08-17 08:00,2014-09-08 17:00,,PT_Normal,,,,,11LGfRQ/S+eW1QvxRd67aA,,,,N,0,0,,,2013-02-16 15:52,2013-02-16 15:56,admin,admin
501314,6359,124634,13662,0,N,N,N,CP_Drtn,TT_Task,DT_FixedDUR2,TK_NotStart,DUKHCONI1BSBGHGL7810,"Construction Column,Beams & Roof Slab",8165,104,0,160,0,280,280,160,0,0,0,,,,2014-09-09 08:00,2014-10-01 17:00,,2014-08-25 08:00,2014-09-16 17:00,2014-08-25 08:00,2014-09-16 17:00,2014-08-25 08:00,2014-09-16 17:00,2014-09-09 08:00,2014-10-01 17:00,,PT_Normal,,,,,K9Uj7qmTT9WD+gR3kBl1Tg,,,,N,0,0,,,2013-02-16 15:52,2013-02-16 15:56,admin,admin
501315,6359,124634,13662,0,N,N,N,CP_Drtn,TT_Task,DT_FixedDUR2,TK_NotStart,DUKHCONI1BSBGHGL7815,Finishing Works,8164,104,0,200,0,1000,1000,200,0,0,0,,,,2014-10-29 08:00,2014-11-26 17:00,,2014-10-14 08:00,2014-11-11 17:00,2014-10-14 08:00,2014-11-11 17:00,2014-10-14 08:00,2014-11-11 17:00,2014-10-29 08:00,2014-11-26 17:00,,PT_Normal,,,,,nxsaCWy/TSSGYBFgu0cr6g,,,,N,0,0,,,2013-02-16 15:52,2013-02-16 15:56,admin,admin
501316,6359,124634,13662,0,N,N,N,CP_Drtn,TT_Task,DT_FixedDUR2,TK_NotStart,DUKHCONI1BSBGHGL7820,"Plumbing , Drainage & Firefighting  works",8181,104,0,200,0,282.8,282.8,200,0,0,0,,,,2014-11-10 08:00,2014-12-08 17:00,,2014-10-26 08:00,2014-11-23 17:00,2014-10-26 08:00,2014-11-23 17:00,2014-10-26 08:00,2014-11-23 17:00,2014-11-10 08:00,2014-12-08 17:00,,PT_Normal,,,,,pTsjwmCKQcaXl6IxUIT4Jg,,,,N,0,0,,,2013-02-16 15:52,2013-02-16 15:56,admin,admin
501317,6359,124634,13662,0,N,N,N,CP_Drtn,TT_Task,DT_FixedDUR2,TK_NotStart,DUKHCONI1BSBGHGL7825,AC Works,,104,0,200,0,0,0,200,0,0,0,,,,2014-11-10 08:00,2014-12-08 17:00,,2014-10-26 08:00,2014-11-23 17:00,2014-10-26 08:00,2014-11-23 17:00,2014-10-26 08:00,2014-11-23 17:00,2014-11-10 08:00,2014-12-08 17:00,,PT_Normal,,,,,W80yHkWjQy2Q7NzbkLUEGg,,,,N,0,0,,,2013-02-16 15:52,2013-02-16 15:56,admin,admin
501318,6359,124634,13662,0,N,N,N,CP_Drtn,TT_Task,DT_FixedDUR2,TK_NotStart,DUKHCONI1BSBGHGL7830,Electrical Works-Telecom Room,8180,104,0,200,0,416,416,200,0,0,0,,,,2014-11-10 08:00,2014-12-08 17:00,,2014-10-26 08:00,2014-11-23 17:00,2014-10-26 08:00,2014-11-23 17:00,2014-10-26 08:00,2014-11-23 17:00,2014-11-10 08:00,2014-12-08 17:00,,PT_Normal,,,,,+6HXkG4HTCyDv+aAOLBK0g,,,,N,0,0,,,2013-02-16 15:52,2013-02-16 15:56,admin,admin
501319,6359,124634,13662,0,N,N,N,CP_Drtn,TT_Task,DT_FixedDUR2,TK_NotStart,DUKHCONI1BSBGHGL7835,Final Paintings,8178,104,104,40,0,275,275,40,0,0,0,,,,2014-12-09 08:00,2014-12-14 17:00,,2014-11-24 08:00,2014-11-29 17:00,2014-11-24 08:00,2014-11-29 17:00,2014-11-24 08:00,2014-11-29 17:00,2014-12-09 08:00,2014-12-14 17:00,,PT_Normal,,,,,3Ycule62Quq864jOyfaEJw,,,,N,0,0,,,2013-02-16 15:52,2013-02-16 15:56,admin,admin
501320,6359,124637,13662,0,N,N,N,CP_Drtn,TT_Task,DT_FixedDUR2,TK_NotStart,DUKHCONI1BZ2SLGL7200,Excavation,8177,48,0,200,0,926,926,200,500,0,500,,,,2014-07-28 08:00,2014-08-28 17:00,,2014-07-21 08:00,2014-08-21 17:00,2014-07-21 08:00,2014-08-21 17:00,2014-07-21 08:00,2014-08-21 17:00,2014-07-28 08:00,2014-08-28 17:00,,PT_Normal,,,,,eglZcuZnTnOls4N5NqKTUw,,,,N,0,0,,,2013-02-16 15:52,2013-02-16 15:56,admin,admin
501321,6359,124637,13662,0,N,N,N,CP_Drtn,TT_Task,DT_FixedDUR2,TK_NotStart,DUKHCONI1BZ2SLGL7205,Sweet Soil Laying,8178,48,0,200,0,4102,4102,200,0,0,0,,,,2014-08-12 08:00,2014-09-09 17:00,,2014-08-05 08:00,2014-09-02 17:00,2014-08-05 08:00,2014-09-02 17:00,2014-08-05 08:00,2014-09-02 17:00,2014-08-12 08:00,2014-09-09 17:00,,PT_Normal,,,,,WSOzpmQhQSyNVdAvxQsUJA,,,,N,0,0,,,2013-02-16 15:52,2013-02-16 15:56,admin,admin
501322,6359,124637,13662,0,N,N,N,CP_Drtn,TT_Task,DT_FixedDUR2,TK_NotStart,DUKHCONI1BZ2SLGL7210,Plantation works,8178,208,120,200,0,728,728,200,0,0,0,,,,2014-09-16 08:00,2014-10-16 17:00,,2014-08-17 08:00,2014-09-14 17:00,2014-08-17 08:00,2014-09-14 17:00,2014-08-17 08:00,2014-09-14 17:00,2014-09-16 08:00,2014-10-16 17:00,,PT_Normal,,,,,MGA2MW7pR9+wXnfkp6Rv+g,,,,N,0,0,,,2013-02-16 15:52,2013-02-16 15:56,admin,admin
501323,6359,124638,13662,0,N,N,N,CP_Drtn,TT_Task,DT_FixedDUR2,TK_NotStart,DUKHCONI1BZ2BWGL5315,Construction of Boundary Wall (Ht-3m),8165,280,0,200,0,196,196,200,0,0,0,,,,2014-06-22 08:00,2014-07-20 17:00,,2014-05-12 08:00,2014-06-09 17:00,2014-05-12 08:00,2014-06-09 17:00,2014-05-12 08:00,2014-06-09 17:00,2014-06-22 08:00,2014-07-20 17:00,,PT_Normal,,,,,0ZQpAwPqQjO0Q5l7oA34nA,,,,N,0,0,,,2013-02-16 15:52,2013-02-16 15:56,admin,admin
501324,6359,124638,13662,0,N,N,N,CP_Drtn,TT_Task,DT_FixedDUR2,TK_NotStart,DUKHCONI1BZ2BWGL5320,"Install.Steel Gate,Entance Barrier (3m Wall)",8178,280,0,200,0,14,14,200,0,0,0,,,,2014-07-08 08:00,2014-08-09 17:00,,2014-05-28 08:00,2014-06-25 17:00,2014-05-28 08:00,2014-06-25 17:00,2014-05-28 08:00,2014-06-25 17:00,2014-07-08 08:00,2014-08-09 17:00,,PT_Normal,,,,,xf3StfXUTkiKhY8I165O6A,,,,N,0,0,,,2013-02-16 15:52,2013-02-16 15:56,admin,admin
501325,6359,124638,13662,0,N,N,N,CP_Drtn,TT_Task,DT_FixedDUR2,TK_NotStart,DUKHCONI1BZ2BWGL5325,Const. of Villa Front Boundary Wall (Ht-2m),8165,280,0,200,0,140,140,200,0,0,0,,,,2014-08-10 08:00,2014-09-07 17:00,,2014-06-26 08:00,2014-07-24 17:00,2014-06-26 08:00,2014-07-24 17:00,2014-06-26 08:00,2014-07-24 17:00,2014-08-10 08:00,2014-09-07 17:00,,PT_Normal,,,,,r38lyPcCTsKMMeaH4MslFw,,,,N,0,0,,,2013-02-16 15:52,2013-02-16 15:56,admin,admin
501326,6359,124638,13662,0,N,N,N,CP_Drtn,TT_Task,DT_FixedDUR2,TK_NotStart,DUKHCONI1BZ2BWGL5330,Const. of Blockwork fence Wall (Ht-1.85m),8165,584,120,200,0,140,140,200,0,0,0,,,,2014-10-05 08:00,2014-11-04 17:00,,2014-07-08 08:00,2014-08-09 17:00,2014-07-08 08:00,2014-08-09 17:00,2014-07-08 08:00,2014-08-09 17:00,2014-10-05 08:00,2014-11-04 17:00,,PT_Normal,,,,,pYGcah+VRbu+1TDyhQ9y0g,,,,N,0,0,,,2013-02-16 15:52,2013-02-16 15:56,admin,admin
501327,6359,124639,13662,0,N,N,N,CP_Drtn,TT_Task,DT_FixedDUR2,TK_NotStart,DUKHCONI1BZ2FFGL5185,Excavation for firefighting line,8177,0,0,200,0,190,190,200,100,0,100,,,,2014-03-22 08:00,2014-04-19 17:00,,2014-03-22 08:00,2014-04-19 17:00,2014-03-22 08:00,2014-04-19 17:00,2014-03-22 08:00,2014-04-19 17:00,2014-03-22 08:00,2014-04-19 17:00,,PT_Normal,,,,,9XuVDA2IReKH1h0aDwbWnA,,,,Y,0,0,,,2013-02-16 15:52,2013-02-16 15:56,admin,admin
501328,6359,124639,13662,0,N,N,N,CP_Drtn,TT_Task,DT_FixedDUR2,TK_NotStart,DUKHCONI1BZ2FFGL5190,Laying of firefighting line,8178,0,0,200,0,210,210,200,0,0,0,,,,2014-03-30 08:00,2014-04-27 17:00,,2014-03-30 08:00,2014-04-27 17:00,2014-03-30 08:00,2014-04-27 17:00,2014-03-30 08:00,2014-04-27 17:00,2014-03-30 08:00,2014-04-27 17:00,,PT_Normal,,,,,csLAK4K4QQKNUKz3Bi2OtA,,,,Y,0,0,,,2013-02-16 15:52,2013-02-16 15:56,admin,admin
501329,6359,124639,13662,0,N,N,N,CP_Drtn,TT_Task,DT_FixedDUR2,TK_NotStart,DUKHCONI1BZ2FFGL5195,Testing of firefighting line,8178,0,0,200,0,50.4,50.4,200,0,0,0,,,,2014-04-05 08:00,2014-05-03 17:00,,2014-04-05 08:00,2014-05-03 17:00,2014-04-05 08:00,2014-05-03 17:00,2014-04-05 08:00,2014-05-03 17:00,2014-04-05 08:00,2014-05-03 17:00,,PT_Normal,,,,,wnnixq/USjSnuOQGxey9dA,,,,Y,0,0,,,2013-02-16 15:52,2013-02-16 15:56,admin,admin
501330,6359,124639,13662,0,N,N,N,CP_Drtn,TT_Task,DT_FixedDUR2,TK_NotStart,DUKHCONI1BZ2FFGL5200,Backfilling firefighting line,8177,0,0,200,0,311,311,200,275,0,275,,,,2014-04-10 08:00,2014-05-08 17:00,,2014-04-10 08:00,2014-05-08 17:00,2014-04-10 08:00,2014-05-08 17:00,2014-04-10 08:00,2014-05-08 17:00,2014-04-10 08:00,2014-05-08 17:00,,PT_Normal,,,,,GNl4cUZKQvCpi/912bNB5g,,,,Y,0,0,,,2013-02-16 15:52,2013-02-16 15:56,admin,admin
501331,6359,124639,13662,0,N,N,N,CP_Drtn,TT_Task,DT_FixedDUR2,TK_NotStart,DUKHCONI1BZ2FFGL5205,Construction of valve chambers & Thrust Blocks,8165,176,0,200,0,266,266,200,0,0,0,,,,2014-05-12 08:00,2014-06-09 17:00,,2014-04-16 08:00,2014-05-14 17:00,2014-04-16 08:00,2014-05-14 17:00,2014-04-16 08:00,2014-05-14 17:00,2014-05-12 08:00,2014-06-09 17:00,,PT_Normal,,,,,BSTc5DgkR2C4sLC82O2g3g,,,,N,0,0,,,2013-02-16 15:52,2013-02-16 15:56,admin,admin
501332,6359,124639,13662,0,N,N,N,CP_Drtn,TT_Task,DT_FixedDUR2,TK_NotStart,DUKHCONI1BZ2FFGL5210,Connection with existing Firewater System,8178,176,120,200,0,84,84,200,0,0,0,,,,2014-05-18 08:00,2014-06-15 17:00,,2014-04-22 08:00,2014-05-20 17:00,2014-04-22 08:00,2014-05-20 17:00,2014-04-22 08:00,2014-05-20 17:00,2014-05-18 08:00,2014-06-15 17:00,,PT_Normal,,,,,kSBZdW8GQjqlPpRYalN9KA,,,,N,0,0,,,2013-02-16 15:52,2013-02-16 15:56,admin,admin
501333,6359,124640,13662,0,N,N,N,CP_Drtn,TT_Task,DT_FixedDUR2,TK_NotStart,DUKHCONI1BZ2SAGL5135,Construction of manholes Drainage,8177,512,80,200,0,6,6,200,0,0,0,,,,2014-04-24 08:00,2014-05-22 17:00,,2014-02-08 08:00,2014-03-09 17:00,2014-02-08 08:00,2014-03-09 17:00,2014-02-08 08:00,2014-03-09 17:00,2014-04-24 08:00,2014-05-22 17:00,,PT_Normal,,,,,rCxhP2EOS2aqzt3xZx/6fA,,,,N,0,0,,,2013-02-16 15:52,2013-02-16 15:56,admin,admin
501334,6359,124640,13662,0,N,N,N,CP_Drtn,TT_Task,DT_FixedDUR2,TK_NotStart,DUKHCONI1BZ2SAGL5145,Construction of Road gullies,8172,40,0,200,0,176,176,200,0,0,0,,,,2014-03-16 08:00,2014-04-13 17:00,,2014-03-10 08:00,2014-04-07 17:00,2014-03-10 08:00,2014-04-07 17:00,2014-03-10 08:00,2014-04-07 17:00,2014-03-16 08:00,2014-04-13 17:00,,PT_Normal,,,,,yfAwG+pOQtWRxTQ18tV9iQ,,,,N,0,0,,,2013-02-16 15:52,2013-02-16 15:56,admin,admin
501335,6359,124640,13662,0,N,N,N,CP_Drtn,TT_Task,DT_FixedDUR2,TK_NotStart,DUKHCONI1BZ2SAGL5150,Connection with existing sewer manhole,8177,312,312,160,0,6,6,160,0,0,0,,,,2014-05-24 08:00,2014-06-15 17:00,,2014-04-08 08:00,2014-04-30 17:00,2014-04-08 08:00,2014-04-30 17:00,2014-04-08 08:00,2014-04-30 17:00,2014-05-24 08:00,2014-06-15 17:00,,PT_Normal,,,,,OllRn1jbQP6h7To1br/Bdg,,,,N,0,0,,,2013-02-16 15:52,2013-02-16 15:56,admin,admin
501336,6359,124640,13662,0,N,N,N,CP_Drtn,TT_Task,DT_FixedDUR2,TK_NotStart,DUKHCONI1BZ2SAGL5140,Construction of soakaways,8172,40,0,200,0,190,190,200,0,0,0,,,,2014-02-15 08:00,2014-03-15 17:00,,2014-02-08 08:00,2014-03-09 17:00,2014-02-08 08:00,2014-03-09 17:00,2014-02-08 08:00,2014-03-09 17:00,2014-02-15 08:00,2014-03-15 17:00,,PT_Normal,,,,,yrm9bErKRw6ZNccPL0bOXg,,,,N,0,0,,,2013-02-16 15:52,2013-02-16 15:56,admin,admin
501337,6359,124641,13662,0,N,N,N,CP_Drtn,TT_Task,DT_FixedDUR2,TK_NotStart,DUKHCONI1BZ2IRGL5265,Excavation for irrigation line,8177,56,0,200,0,998,998,200,500,0,500,,,,2014-06-09 08:00,2014-07-07 17:00,,2014-06-01 08:00,2014-06-29 17:00,2014-06-01 08:00,2014-06-29 17:00,2014-06-01 08:00,2014-06-29 17:00,2014-06-09 08:00,2014-07-07 17:00,,PT_Normal,,,,,4JHPMxrqSPuF89RFi+ok8g,,,,N,0,0,,,2013-02-16 15:52,2013-02-16 15:56,admin,admin
501338,6359,124641,13662,0,N,N,N,CP_Drtn,TT_Task,DT_FixedDUR2,TK_NotStart,DUKHCONI1BZ2IRGL5270,Laying of irrigationline,8178,56,0,200,0,352.8,352.8,200,0,0,0,,,,2014-06-15 08:00,2014-07-13 17:00,,2014-06-07 08:00,2014-07-05 17:00,2014-06-07 08:00,2014-07-05 17:00,2014-06-07 08:00,2014-07-05 17:00,2014-06-15 08:00,2014-07-13 17:00,,PT_Normal,,,,,njrtsPJgSIeCnTmWAuAgXg,,,,N,0,0,,,2013-02-16 15:52,2013-02-16 15:56,admin,admin
501339,6359,124641,13662,0,N,N,N,CP_Drtn,TT_Task,DT_FixedDUR2,TK_NotStart,DUKHCONI1BZ2IRGL5275,Testing of irrigation line,8178,56,0,200,0,285.6,285.6,200,0,0,0,,,,2014-06-21 08:00,2014-07-19 17:00,,2014-06-12 08:00,2014-07-10 17:00,2014-06-12 08:00,2014-07-10 17:00,2014-06-12 08:00,2014-07-10 17:00,2014-06-21 08:00,2014-07-19 17:00,,PT_Normal,,,,,+JafCb1OTBuMYbt25EfxZA,,,,N,0,0,,,2013-02-16 15:52,2013-02-16 15:56,admin,admin
501340,6359,124641,13662,0,N,N,N,CP_Drtn,TT_Task,DT_FixedDUR2,TK_NotStart,DUKHCONI1BZ2IRGL5280,Backfilling irrigation line,8177,56,0,200,0,706,706,200,550,0,550,,,,2014-06-26 08:00,2014-07-24 17:00,,2014-06-18 08:00,2014-07-16 17:00,2014-06-18 08:00,2014-07-16 17:00,2014-06-18 08:00,2014-07-16 17:00,2014-06-26 08:00,2014-07-24 17:00,,PT_Normal,,,,,L2HG3TjJSymO71oS93ujzQ,,,,N,0,0,,,2013-02-16 15:52,2013-02-16 15:56,admin,admin
501341,6359,124641,13662,0,N,N,N,CP_Drtn,TT_Task,DT_FixedDUR2,TK_NotStart,DUKHCONI1BZ2IRGL5285,"Construction of Thrust Blocks,Pull boxes",8178,136,0,200,0,149.6,149.6,200,0,0,0,,,,2014-07-20 08:00,2014-08-20 17:00,,2014-06-30 08:00,2014-07-28 17:00,2014-06-30 08:00,2014-07-28 17:00,2014-06-30 08:00,2014-07-28 17:00,2014-07-20 08:00,2014-08-20 17:00,,PT_Normal,,,,,wI3eALumTkyxqSde7ipvjw,,,,N,0,0,,,2013-02-16 15:52,2013-02-16 15:56,admin,admin
501342,6359,124641,13662,0,N,N,N,CP_Drtn,TT_Task,DT_FixedDUR2,TK_NotStart,DUKHCONI1BZ2IRGL5290,"Irrigation Fittings (Nozzle,Values)",8178,136,88,200,0,352.8,352.8,200,0,0,0,,,,2014-07-28 08:00,2014-08-28 17:00,,2014-07-08 08:00,2014-08-09 17:00,2014-07-08 08:00,2014-08-09 17:00,2014-07-08 08:00,2014-08-09 17:00,2014-07-28 08:00,2014-08-28 17:00,,PT_Normal,,,,,t8WA/eCXQL+p36qfP5Bd5A,,,,N,0,0,,,2013-02-16 15:52,2013-02-16 15:56,admin,admin
501343,6359,124642,13662,0,N,N,N,CP_Drtn,TT_Task,DT_FixedDUR2,TK_NotStart,DUKHCONI1BZ2RWGL6020,Laying of Road Base Asphalt Concrete,8178,296,0,40,0,174,174,40,150,0,150,,,,2014-09-29 08:00,2014-10-04 17:00,,2014-08-17 08:00,2014-08-21 17:00,2014-08-17 08:00,2014-08-21 17:00,2014-08-17 08:00,2014-08-21 17:00,2014-09-29 08:00,2014-10-04 17:00,,PT_Normal,,,,,ZPLePxyrQVG8loQLPKJL0g,,,,N,0,0,,,2013-02-16 15:52,2013-02-16 15:56,admin,admin
501344,6359,124642,13662,0,N,N,N,CP_Drtn,TT_Task,DT_FixedDUR2,TK_NotStart,DUKHCONI1BZ2RWGL6025,Laying of Asphalt Wearing Coarse,8178,416,0,40,0,174,174,40,150,0,150,,,,2014-10-25 08:00,2014-10-29 17:00,,2014-08-23 08:00,2014-08-27 17:00,2014-08-23 08:00,2014-08-27 17:00,2014-08-23 08:00,2014-08-27 17:00,2014-10-25 08:00,2014-10-29 17:00,,PT_Normal,,,,,Lxj6MKcyRuq6Sfjywmt9Tw,,,,N,0,0,,,2013-02-16 15:52,2013-02-16 15:56,admin,admin
501345,6359,124642,13662,0,N,N,N,CP_Drtn,TT_Task,DT_FixedDUR2,TK_NotStart,DUKHCONI1BZ2RWGL6030,Traffic Signage & Road Marking,8178,416,120,40,0,882,882,40,0,0,0,,,,2014-10-30 08:00,2014-11-04 17:00,,2014-08-28 08:00,2014-09-02 17:00,2014-08-28 08:00,2014-09-02 17:00,2014-08-28 08:00,2014-09-02 17:00,2014-10-30 08:00,2014-11-04 17:00,,PT_Normal,,,,,kyD9y14oQWiXZXNUeYvXKg,,,,N,0,0,,,2013-02-16 15:52,2013-02-16 15:56,admin,admin
501346,6359,124642,13662,0,N,N,N,CP_Drtn,TT_Task,DT_FixedDUR2,TK_NotStart,DUKHCONI1BZ2RWGL6000,Excavation & Earth Filling,8177,0,0,80,0,1150,1150,80,400,0,400,,,,2014-06-16 08:00,2014-06-26 17:00,,2014-06-16 08:00,2014-06-26 17:00,2014-06-16 08:00,2014-06-26 17:00,2014-06-16 08:00,2014-06-26 17:00,2014-06-16 08:00,2014-06-26 17:00,,PT_Normal,,,,,B7fikzSdQpyX/FH0FXdZyg,,,,Y,0,0,,,2013-02-16 15:52,2013-02-16 15:56,admin,admin
501347,6359,124642,13662,0,N,N,N,CP_Drtn,TT_Task,DT_FixedDUR2,TK_NotStart,DUKHCONI1BZ2RWGL6005,Laying of Sub Grade,8178,0,0,200,0,24,24,200,0,0,0,,,,2014-06-28 08:00,2014-07-26 17:00,,2014-06-28 08:00,2014-07-26 17:00,2014-06-28 08:00,2014-07-26 17:00,2014-06-28 08:00,2014-07-26 17:00,2014-06-28 08:00,2014-07-26 17:00,,PT_Normal,,,,,/VMmbkGPRxa0c6wWhxMJFg,,,,Y,0,0,,,2013-02-16 15:52,2013-02-16 15:56,admin,admin
501348,6359,124642,13662,0,N,N,N,CP_Drtn,TT_Task,DT_FixedDUR2,TK_NotStart,DUKHCONI1BZ2RWGL6010,Laying of Precast Kerbs,8178,0,0,200,0,24,24,200,0,0,0,,,,2014-07-09 08:00,2014-08-10 17:00,,2014-07-09 08:00,2014-08-10 17:00,2014-07-09 08:00,2014-08-10 17:00,2014-07-09 08:00,2014-08-10 17:00,2014-07-09 08:00,2014-08-10 17:00,,PT_Normal,,,,,j67kTMlIRU+lNiZBnwCqpg,,,,Y,0,0,,,2013-02-16 15:52,2013-02-16 15:56,admin,admin
501349,6359,124642,13662,0,N,N,N,CP_Drtn,TT_Task,DT_FixedDUR2,TK_NotStart,DUKHCONI1BZ2RWGL6015,Laying of Granular Sub Base Coarse,8173,0,0,160,0,1828,1828,160,600,0,600,,,,2014-07-21 08:00,2014-08-16 17:00,,2014-07-21 08:00,2014-08-16 17:00,2014-07-21 08:00,2014-08-16 17:00,2014-07-21 08:00,2014-08-16 17:00,2014-07-21 08:00,2014-08-16 17:00,,PT_Normal,,,,,6p02o4T+Rf+N9ct1KcaDyw,,,,Y,0,0,,,2013-02-16 15:52,2013-02-16 15:56,admin,admin
501350,6359,124643,13662,0,N,N,N,CP_Drtn,TT_Task,DT_FixedDUR2,TK_NotStart,DUKHCONI1BZ2TCGL5295,Excavation Telecommunication trenches,8177,0,0,160,0,356,356,160,200,0,200,,,,2014-05-12 08:00,2014-06-03 17:00,,2014-05-12 08:00,2014-06-03 17:00,2014-05-12 08:00,2014-06-03 17:00,2014-05-12 08:00,2014-06-03 17:00,2014-05-12 08:00,2014-06-03 17:00,,PT_Normal,,,,,DdHdoi/8SSCuOcdYUQE1aw,,,,Y,0,0,,,2013-02-16 15:52,2013-02-16 15:56,admin,admin
501351,6359,124643,13662,0,N,N,N,CP_Drtn,TT_Task,DT_FixedDUR2,TK_NotStart,DUKHCONI1BZ2TCGL5300,Laying of cables,8178,0,0,160,0,727.2,727.2,160,0,0,0,,,,2014-05-18 08:00,2014-06-09 17:00,,2014-05-18 08:00,2014-06-09 17:00,2014-05-18 08:00,2014-06-09 17:00,2014-05-18 08:00,2014-06-09 17:00,2014-05-18 08:00,2014-06-09 17:00,,PT_Normal,,,,,mDi+QjBCQbKFKEegIY7Ofg,,,,Y,0,0,,,2013-02-16 15:52,2013-02-16 15:56,admin,admin
501352,6359,124643,13662,0,N,N,N,CP_Drtn,TT_Task,DT_FixedDUR2,TK_NotStart,DUKHCONI1BZ2TCGL5305,Backfilling telecommunication trench,8177,0,0,160,0,286,286,160,220,0,220,,,,2014-05-24 08:00,2014-06-15 17:00,,2014-05-24 08:00,2014-06-15 17:00,2014-05-24 08:00,2014-06-15 17:00,2014-05-24 08:00,2014-06-15 17:00,2014-05-24 08:00,2014-06-15 17:00,,PT_Normal,,,,,4vEzMem3TCGKoLkTP3v/6w,,,,Y,0,0,,,2013-02-16 15:52,2013-02-16 15:56,admin,admin
501353,6359,124643,13662,0,N,N,N,CP_Drtn,TT_Task,DT_FixedDUR2,TK_NotStart,DUKHCONI1BZ2TCGL5310,Connection & Installation,8178,568,160,160,0,271.2,271.2,160,0,0,0,,,,2014-08-30 08:00,2014-09-21 17:00,,2014-06-04 08:00,2014-06-26 17:00,2014-06-04 08:00,2014-06-26 17:00,2014-06-04 08:00,2014-06-26 17:00,2014-08-30 08:00,2014-09-21 17:00,,PT_Normal,,,,,uGXvJGVWRIyTrc7v/0QK6g,,,,N,0,0,,,2013-02-16 15:52,2013-02-23 09:03,admin,admin
501354,6359,124644,13662,0,N,N,N,CP_Drtn,TT_Task,DT_FixedDUR2,TK_NotStart,DUKHCONI1BZ2HDGL7020,Precast Concrete Kerbs works,8173,48,0,160,0,800,800,160,0,0,0,,,,2014-06-23 08:00,2014-07-15 17:00,,2014-06-16 08:00,2014-07-08 17:00,2014-06-16 08:00,2014-07-08 17:00,2014-06-16 08:00,2014-07-08 17:00,2014-06-23 08:00,2014-07-15 17:00,,PT_Normal,,,,,k4r80m1TRGieOR0jalpg5Q,,,,N,0,0,,,2013-02-16 15:52,2013-02-16 15:56,admin,admin
501355,6359,124644,13662,0,N,N,N,CP_Drtn,TT_Task,DT_FixedDUR2,TK_NotStart,DUKHCONI1BZ2HDGL7025,Interlocking for Walkways,8174,48,0,200,0,814,814,200,0,0,0,,,,2014-07-05 08:00,2014-08-05 17:00,,2014-06-28 08:00,2014-07-26 17:00,2014-06-28 08:00,2014-07-26 17:00,2014-06-28 08:00,2014-07-26 17:00,2014-07-05 08:00,2014-08-05 17:00,,PT_Normal,,,,,kSsun+DWRf+P4TUcR12Nqg,,,,N,0,0,,,2013-02-16 15:52,2013-02-16 15:56,admin,admin
501356,6359,124644,13662,0,N,N,N,CP_Drtn,TT_Task,DT_FixedDUR2,TK_NotStart,DUKHCONI1BZ2HDGL7030,Construction of Retaining wall,8165,48,0,200,0,3340,3340,200,0,0,0,,,,2014-07-16 08:00,2014-08-17 17:00,,2014-07-09 08:00,2014-08-10 17:00,2014-07-09 08:00,2014-08-10 17:00,2014-07-09 08:00,2014-08-10 17:00,2014-07-16 08:00,2014-08-17 17:00,,PT_Normal,,,,,6RmbkRKBTMu3g0LzlckNSg,,,,N,0,0,,,2013-02-16 15:52,2013-02-16 15:56,admin,admin
501357,6359,124644,13662,0,N,N,N,CP_Drtn,TT_Task,DT_FixedDUR2,TK_NotStart,DUKHCONI1BZ2HDGL7035,Construction of Wash Stone Boulders,8170,48,0,200,0,22,22,200,0,0,0,,,,2014-07-16 08:00,2014-08-17 17:00,,2014-07-09 08:00,2014-08-10 17:00,2014-07-09 08:00,2014-08-10 17:00,2014-07-09 08:00,2014-08-10 17:00,2014-07-16 08:00,2014-08-17 17:00,,PT_Normal,,,,,xMByJf2RScW3WGSe+X3LCA,,,,N,0,0,,,2013-02-16 15:52,2013-02-16 15:56,admin,admin
501358,6359,124644,13662,0,N,N,N,CP_Drtn,TT_Task,DT_FixedDUR2,TK_NotStart,DUKHCONI1BZ2HDGL7040,Construction of Speed Humps,8167,488,240,80,0,14,14,80,0,0,0,,,,2014-11-10 08:00,2014-11-20 17:00,,2014-08-28 08:00,2014-09-08 17:00,2014-08-28 08:00,2014-09-08 17:00,2014-08-28 08:00,2014-09-08 17:00,2014-11-10 08:00,2014-11-20 17:00,,PT_Normal,,,,,oWhh1l7FTbWLXJrZmv/feQ,,,,N,0,0,,,2013-02-16 15:52,2013-02-16 15:56,admin,admin
501359,6359,124645,13662,0,N,N,N,CP_Drtn,TT_Task,DT_FixedDUR2,TK_NotStart,DUKHCONI1BZ2DRGL5115,Excavation for Drainage line,8177,40,0,200,0,419,419,200,251,0,251,,,,2014-01-12 08:00,2014-02-09 17:00,,2014-01-06 08:00,2014-02-03 17:00,2014-01-06 08:00,2014-02-03 17:00,2014-01-06 08:00,2014-02-03 17:00,2014-01-12 08:00,2014-02-09 17:00,,PT_Normal,,,,,LFcaOKUVTe60AQeBYNxHiw,,,,N,0,0,,,2013-02-16 15:52,2013-02-16 15:56,admin,admin
501360,6359,124645,13662,0,N,N,N,CP_Drtn,TT_Task,DT_FixedDUR2,TK_NotStart,DUKHCONI1BZ2DRGL5120,Laying of Drainage line,8178,40,0,200,0,265.2,265.2,200,0,0,0,,,,2014-01-19 08:00,2014-02-17 17:00,,2014-01-13 08:00,2014-02-10 17:00,2014-01-13 08:00,2014-02-10 17:00,2014-01-13 08:00,2014-02-10 17:00,2014-01-19 08:00,2014-02-17 17:00,,PT_Normal,,,,,rcH6FP2SS7erkn9FmpknXA,,,,N,0,0,,,2013-02-16 15:52,2013-02-23 09:03,admin,admin
501361,6359,124645,13662,0,N,N,N,CP_Drtn,TT_Task,DT_FixedDUR2,TK_NotStart,DUKHCONI1BZ2DRGL5125,Testing of Drainage line,8178,40,0,200,0,134.4,134.4,200,0,0,0,,,,2014-01-27 08:00,2014-02-25 17:00,,2014-01-21 08:00,2014-02-19 17:00,2014-01-21 08:00,2014-02-19 17:00,2014-01-21 08:00,2014-02-19 17:00,2014-01-27 08:00,2014-02-25 17:00,,PT_Normal,,,,,jPFFvXh9QzyrHkhQA/MejA,,,,N,0,0,,,2013-02-16 15:52,2013-02-16 15:56,admin,admin
501362,6359,124645,13662,0,N,N,N,CP_Drtn,TT_Task,DT_FixedDUR2,TK_NotStart,DUKHCONI1BZ2DRGL5130,Backfilling Drainage line,8177,40,0,120,0,315,315,120,248.999688,0,248.999688,,,,2014-02-15 08:00,2014-03-03 17:00,,2014-02-08 08:00,2014-02-25 17:00,2014-02-08 08:00,2014-02-25 17:00,2014-02-08 08:00,2014-02-25 17:00,2014-02-15 08:00,2014-03-03 17:00,,PT_Normal,,,,,+nQXNY5YSUCKXKcwlAbOsA,,,,N,0,0,,,2013-02-16 15:52,2013-02-16 15:56,admin,admin
501363,6359,124646,13662,0,N,N,N,CP_Drtn,TT_Task,DT_FixedDUR2,TK_NotStart,DUKHCONI1BZ2STGL5235,Excavation for Street lighting,8177,0,0,200,0,69,69,200,51,0,51,,,,2014-04-19 08:00,2014-05-17 17:00,,2014-04-19 08:00,2014-05-17 17:00,2014-04-19 08:00,2014-05-17 17:00,2014-04-19 08:00,2014-05-17 17:00,2014-04-19 08:00,2014-05-17 17:00,,PT_Normal,,,,,mdGQh+H4RfeiZ2V94fwtdw,,,,Y,0,0,,,2013-02-16 15:52,2013-02-16 15:56,admin,admin
501364,6359,124646,13662,0,N,N,N,CP_Drtn,TT_Task,DT_FixedDUR2,TK_NotStart,DUKHCONI1BZ2STGL5240,Construction of Duct Banks,8178,0,0,200,0,1494,1494,200,0,0,0,,,,2014-04-24 08:00,2014-05-22 17:00,,2014-04-24 08:00,2014-05-22 17:00,2014-04-24 08:00,2014-05-22 17:00,2014-04-24 08:00,2014-05-22 17:00,2014-04-24 08:00,2014-05-22 17:00,,PT_Normal,,,,,7EKRi0shSEaj2Kbs6fn3ww,,,,Y,0,0,,,2013-02-16 15:52,2013-02-16 15:56,admin,admin
501365,6359,124646,13662,0,N,N,N,CP_Drtn,TT_Task,DT_FixedDUR2,TK_NotStart,DUKHCONI1BZ2STGL5245,Construction of Foundation,8172,0,0,200,0,630,630,200,0,0,0,,,,2014-04-24 08:00,2014-05-22 17:00,,2014-04-24 08:00,2014-05-22 17:00,2014-04-24 08:00,2014-05-22 17:00,2014-04-24 08:00,2014-05-22 17:00,2014-04-24 08:00,2014-05-22 17:00,,PT_Normal,,,,,iKUsqWSkTeypWWUg/D+biw,,,,Y,0,0,,,2013-02-16 15:52,2013-02-16 15:56,admin,admin
501366,6359,124646,13662,0,N,N,N,CP_Drtn,TT_Task,DT_FixedDUR2,TK_NotStart,DUKHCONI1BZ2STGL5250,Backfilling Street Lighting,8177,0,0,200,0,122,122,200,110,0,110,,,,2014-04-30 08:00,2014-05-28 17:00,,2014-04-30 08:00,2014-05-28 17:00,2014-04-30 08:00,2014-05-28 17:00,2014-04-30 08:00,2014-05-28 17:00,2014-04-30 08:00,2014-05-28 17:00,,PT_Normal,,,,,HwAatu9mSDSfG9Zp4Ge49g,,,,Y,0,0,,,2013-02-16 15:52,2013-02-16 15:56,admin,admin
501367,6359,124646,13662,0,N,N,N,CP_Drtn,TT_Task,DT_FixedDUR2,TK_NotStart,DUKHCONI1BZ2STGL5255,Installation of light Post,8178,672,120,200,0,216,216,200,0,0,0,,,,2014-08-21 08:00,2014-09-18 17:00,,2014-05-12 08:00,2014-06-09 17:00,2014-05-12 08:00,2014-06-09 17:00,2014-05-12 08:00,2014-06-09 17:00,2014-08-21 08:00,2014-09-18 17:00,,PT_Normal,,,,,aG6i+k1xS5qKPfCTGlgNvg,,,,N,0,0,,,2013-02-16 15:52,2013-02-16 15:56,admin,admin
501368,6359,124646,13662,0,N,N,N,CP_Drtn,TT_Task,DT_FixedDUR2,TK_NotStart,DUKHCONI1BZ2STGL5260,Electrical Works,8178,512,120,200,0,1039.6,1039.6,200,0,0,0,,,,2014-08-30 08:00,2014-09-27 17:00,,2014-06-12 08:00,2014-07-10 17:00,2014-06-12 08:00,2014-07-10 17:00,2014-06-12 08:00,2014-07-10 17:00,2014-08-30 08:00,2014-09-27 17:00,,PT_Normal,,,,,cfgp1Sx3S7aC2fhmqv5jEw,,,,N,0,0,,,2013-02-16 15:52,2013-02-16 15:56,admin,admin
501369,6359,124647,13662,0,N,N,N,CP_Drtn,TT_Task,DT_FixedDUR2,TK_NotStart,DUKHCONI1BZ2WSGL5155,Excavation for water line,8177,0,0,200,0,425,425,200,251,0,251,,,,2014-02-26 08:00,2014-03-26 17:00,,2014-02-26 08:00,2014-03-26 17:00,2014-02-26 08:00,2014-03-26 17:00,2014-02-26 08:00,2014-03-26 17:00,2014-02-26 08:00,2014-03-26 17:00,,PT_Normal,,,,,AAhhTMU9QAyXVN463GGSSg,,,,Y,0,0,,,2013-02-16 15:52,2013-02-16 15:56,admin,admin
501370,6359,124647,13662,0,N,N,N,CP_Drtn,TT_Task,DT_FixedDUR2,TK_NotStart,DUKHCONI1BZ2WSGL5160,Laying of water line,8178,0,0,200,0,319.2,319.2,200,0,0,0,,,,2014-03-04 08:00,2014-04-01 17:00,,2014-03-04 08:00,2014-04-01 17:00,2014-03-04 08:00,2014-04-01 17:00,2014-03-04 08:00,2014-04-01 17:00,2014-03-04 08:00,2014-04-01 17:00,,PT_Normal,,,,,Qpulw2VcSLy/Xyqyjtx6fw,,,,Y,0,0,,,2013-02-16 15:52,2013-02-23 09:03,admin,admin
501371,6359,124647,13662,0,N,N,N,CP_Drtn,TT_Task,DT_FixedDUR2,TK_NotStart,DUKHCONI1BZ2WSGL5165,Testing of potable water line,8178,0,0,200,0,100.8,100.8,200,0,0,0,,,,2014-03-10 08:00,2014-04-07 17:00,,2014-03-10 08:00,2014-04-07 17:00,2014-03-10 08:00,2014-04-07 17:00,2014-03-10 08:00,2014-04-07 17:00,2014-03-10 08:00,2014-04-07 17:00,,PT_Normal,,,,,EZUiqFktQhGZ5qz+rIFLFw,,,,Y,0,0,,,2013-02-16 15:52,2013-02-16 15:56,admin,admin
501372,6359,124647,13662,0,N,N,N,CP_Drtn,TT_Task,DT_FixedDUR2,TK_NotStart,DUKHCONI1BZ2WSGL5170,Backfilling potable water line,8177,0,0,200,0,347,347,200,275,0,275,,,,2014-03-16 08:00,2014-04-13 17:00,,2014-03-16 08:00,2014-04-13 17:00,2014-03-16 08:00,2014-04-13 17:00,2014-03-16 08:00,2014-04-13 17:00,2014-03-16 08:00,2014-04-13 17:00,,PT_Normal,,,,,aNdskWD/RoC6M2mYMxlyWQ,,,,Y,0,0,,,2013-02-16 15:52,2013-02-16 15:56,admin,admin
501373,6359,124647,13662,0,N,N,N,CP_Drtn,TT_Task,DT_FixedDUR2,TK_NotStart,DUKHCONI1BZ2WSGL5175,Construction of valve chambers & Thrust Blocks,8172,232,0,200,0,88,88,200,0,0,0,,,,2014-04-24 08:00,2014-05-22 17:00,,2014-03-22 08:00,2014-04-19 17:00,2014-03-22 08:00,2014-04-19 17:00,2014-03-22 08:00,2014-04-19 17:00,2014-04-24 08:00,2014-05-22 17:00,,PT_Normal,,,,,hPvwgsgyQSKzJfoLy3j3Bg,,,,N,0,0,,,2013-02-16 15:52,2013-02-16 15:56,admin,admin
501374,6359,124647,13662,0,N,N,N,CP_Drtn,TT_Task,DT_FixedDUR2,TK_NotStart,DUKHCONI1BZ2WSGL5180,"Installation of meter ,Accessories & Connection",8178,232,56,160,0,50.4,50.4,160,0,0,0,,,,2014-05-24 08:00,2014-06-15 17:00,,2014-04-20 08:00,2014-05-12 17:00,2014-04-20 08:00,2014-05-12 17:00,2014-04-20 08:00,2014-05-12 17:00,2014-05-24 08:00,2014-06-15 17:00,,PT_Normal,,,,,V7TLqPilSL66O5kdQNB9eQ,,,,N,0,0,,,2013-02-16 15:52,2013-02-16 15:56,admin,admin
501375,6359,124648,13662,0,N,N,N,CP_Drtn,TT_Task,DT_FixedDUR2,TK_NotStart,DUKHCONI1BZ2ELGL5215,Excavation Cable  Trenches  & Duct Banks,8177,0,0,200,0,2772,2772,200,876,0,876,,,,2014-04-19 08:00,2014-05-17 17:00,,2014-04-19 08:00,2014-05-17 17:00,2014-04-19 08:00,2014-05-17 17:00,2014-04-19 08:00,2014-05-17 17:00,2014-04-19 08:00,2014-05-17 17:00,,PT_Normal,,,,,v805cGFCRL+z0AJk6u61Gw,,,,Y,0,0,,,2013-02-16 15:52,2013-02-16 15:56,admin,admin
501376,6359,124648,13662,0,N,N,N,CP_Drtn,TT_Task,DT_FixedDUR2,TK_NotStart,DUKHCONI1BZ2ELGL5220,Laying of electrical cables,8178,24,0,200,0,4487.2,4487.2,200,0,0,0,,,,2014-04-28 08:00,2014-05-26 17:00,,2014-04-24 08:00,2014-05-22 17:00,2014-04-24 08:00,2014-05-22 17:00,2014-04-24 08:00,2014-05-22 17:00,2014-04-28 08:00,2014-05-26 17:00,,PT_Normal,,,,,z8O0Kxk6SfOX9KuBaHvuGg,,,,N,0,0,,,2013-02-16 15:52,2013-02-23 09:03,admin,admin
501377,6359,124648,13662,0,N,N,N,CP_Drtn,TT_Task,DT_FixedDUR2,TK_NotStart,DUKHCONI1BZ2ELGL5225,Backfilling Electrical trench,8177,24,0,200,0,1862,1862,200,1100,0,1100,,,,2014-05-06 08:00,2014-06-03 17:00,,2014-05-03 08:00,2014-05-31 17:00,2014-05-03 08:00,2014-05-31 17:00,2014-05-03 08:00,2014-05-31 17:00,2014-05-06 08:00,2014-06-03 17:00,,PT_Normal,,,,,mnPJBoQISmumwCVxrUcy+A,,,,N,0,0,,,2013-02-16 15:52,2013-02-16 15:56,admin,admin
501378,6359,124648,13662,0,N,N,N,CP_Drtn,TT_Task,DT_FixedDUR2,TK_NotStart,DUKHCONI1BZ2ELGL5230,Construction of Submain Board & Feeder Pillar,8165,512,0,200,0,276,276,200,0,0,0,,,,2014-07-28 08:00,2014-08-28 17:00,,2014-05-14 08:00,2014-06-11 17:00,2014-05-14 08:00,2014-06-11 17:00,2014-05-14 08:00,2014-06-11 17:00,2014-07-28 08:00,2014-08-28 17:00,,PT_Normal,,,,,hfAnUBTjRiu1N0S8oumAZw,,,,N,0,0,,,2013-02-16 15:52,2013-02-16 15:56,admin,admin
501379,6359,124649,13662,0,N,N,N,CP_Drtn,TT_Task,DT_FixedDUR2,TK_NotStart,DUKHCONI1BZ2PSGL7000,Excavation,8177,336,40,120,0,163,163,120,90.999832,0,90.999832,,,,2014-09-17 08:00,2014-10-04 17:00,,2014-07-27 08:00,2014-08-16 17:00,2014-07-27 08:00,2014-08-16 17:00,2014-07-27 08:00,2014-08-16 17:00,2014-09-17 08:00,2014-10-04 17:00,,PT_Normal,,,,,uHx95mxeQK2s5+llJHENLg,,,,N,0,0,,,2013-02-16 15:52,2013-02-16 15:56,admin,admin
501380,6359,124649,13662,0,N,N,N,CP_Drtn,TT_Task,DT_FixedDUR2,TK_NotStart,DUKHCONI1BZ2PSGL7005,Foundation casting,8165,296,0,120,0,302,302,120,0,0,0,,,,2014-09-23 08:00,2014-10-12 17:00,,2014-08-11 08:00,2014-08-27 17:00,2014-08-11 08:00,2014-08-27 17:00,2014-08-11 08:00,2014-08-27 17:00,2014-09-23 08:00,2014-10-12 17:00,,PT_Normal,,,,,ZUs0O1R5SEW+Mnkx9A7eYQ,,,,N,0,0,,,2013-02-16 15:52,2013-02-16 15:56,admin,admin
501381,6359,124649,13662,0,N,N,N,CP_Drtn,TT_Task,DT_FixedDUR2,TK_NotStart,DUKHCONI1BZ2PSGL7010,"Column, Frame&  Fabrics  Erection",8178,296,0,200,0,314,314,200,0,0,0,,,,2014-10-05 08:00,2014-11-04 17:00,,2014-08-23 08:00,2014-09-20 17:00,2014-08-23 08:00,2014-09-20 17:00,2014-08-23 08:00,2014-09-20 17:00,2014-10-05 08:00,2014-11-04 17:00,,PT_Normal,,,,,MHKiAsjDQXq3Qcw9CabkWA,,,,N,0,0,,,2013-02-16 15:52,2013-02-16 15:56,admin,admin
501382,6359,124649,13662,0,N,N,N,CP_Drtn,TT_Task,DT_FixedDUR2,TK_NotStart,DUKHCONI1BZ2PSGL7015,Electrical Works-Parking Shed,8178,296,120,200,0,51.6,51.6,200,0,0,0,,,,2014-10-13 08:00,2014-11-10 17:00,,2014-08-28 08:00,2014-09-25 17:00,2014-08-28 08:00,2014-09-25 17:00,2014-08-28 08:00,2014-09-25 17:00,2014-10-13 08:00,2014-11-10 17:00,,PT_Normal,,,,,qzjo1xvXTGStkaCeT8YOiA,,,,N,0,0,,,2013-02-16 15:52,2013-02-16 15:56,admin,admin
501383,6359,124652,13662,0,N,N,N,CP_Drtn,TT_Task,DT_FixedDUR2,TK_NotStart,DUKHCONI1BZ3DRGL5115,Excavation for Drainage line,8177,80,0,200,0,419,419,200,251,0,251,,,,2014-03-01 08:00,2014-03-29 17:00,,2014-02-17 08:00,2014-03-17 17:00,2014-02-17 08:00,2014-03-17 17:00,2014-02-17 08:00,2014-03-17 17:00,2014-03-01 08:00,2014-03-29 17:00,,PT_Normal,,,,,lvvPTQ0ZRNu/eR6q7CbvIQ,,,,N,0,0,,,2013-02-16 15:52,2013-02-16 15:56,admin,admin
501384,6359,124652,13662,0,N,N,N,CP_Drtn,TT_Task,DT_FixedDUR2,TK_NotStart,DUKHCONI1BZ3DRGL5120,Laying of Drainage line,8178,80,0,200,0,265.2,265.2,200,0,0,0,,,,2014-03-08 08:00,2014-04-05 17:00,,2014-02-24 08:00,2014-03-24 17:00,2014-02-24 08:00,2014-03-24 17:00,2014-02-24 08:00,2014-03-24 17:00,2014-03-08 08:00,2014-04-05 17:00,,PT_Normal,,,,,S9HumtawTrWtAlOfK0W/NQ,,,,N,0,0,,,2013-02-16 15:52,2013-02-23 09:03,admin,admin
501385,6359,124652,13662,0,N,N,N,CP_Drtn,TT_Task,DT_FixedDUR2,TK_NotStart,DUKHCONI1BZ3DRGL5125,Testing of Drainage line,8178,80,0,200,0,134.4,134.4,200,0,0,0,,,,2014-03-16 08:00,2014-04-13 17:00,,2014-03-04 08:00,2014-04-01 17:00,2014-03-04 08:00,2014-04-01 17:00,2014-03-04 08:00,2014-04-01 17:00,2014-03-16 08:00,2014-04-13 17:00,,PT_Normal,,,,,jN3gXtkwRj+MnbcYitMaHw,,,,N,0,0,,,2013-02-16 15:52,2013-02-16 15:56,admin,admin
501386,6359,124652,13662,0,N,N,N,CP_Drtn,TT_Task,DT_FixedDUR2,TK_NotStart,DUKHCONI1BZ3DRGL5130,Backfilling Drainage line,8177,80,0,120,0,315,315,120,248.999688,0,248.999688,,,,2014-04-02 08:00,2014-04-19 17:00,,2014-03-22 08:00,2014-04-07 17:00,2014-03-22 08:00,2014-04-07 17:00,2014-03-22 08:00,2014-04-07 17:00,2014-04-02 08:00,2014-04-19 17:00,,PT_Normal,,,,,clDGzx0MRiCPbVfDyMRwcw,,,,N,0,0,,,2013-02-16 15:52,2013-02-16 15:56,admin,admin
501387,6359,124653,13662,0,N,N,N,CP_Drtn,TT_Task,DT_FixedDUR2,TK_NotStart,DUKHCONI1BZ3FFGL5185,Excavation for firefighting line,8177,0,0,200,0,190,190,200,100,0,100,,,,2014-05-07 08:00,2014-06-04 17:00,,2014-05-07 08:00,2014-06-04 17:00,2014-05-07 08:00,2014-06-04 17:00,2014-05-07 08:00,2014-06-04 17:00,2014-05-07 08:00,2014-06-04 17:00,,PT_Normal,,,,,h9U1Fc5cSZyGv2Psgh2e8Q,,,,Y,0,0,,,2013-02-16 15:52,2013-02-16 15:56,admin,admin
501388,6359,124653,13662,0,N,N,N,CP_Drtn,TT_Task,DT_FixedDUR2,TK_NotStart,DUKHCONI1BZ3FFGL5190,Laying of firefighting line,8178,0,0,200,0,210,210,200,0,0,0,,,,2014-05-15 08:00,2014-06-12 17:00,,2014-05-15 08:00,2014-06-12 17:00,2014-05-15 08:00,2014-06-12 17:00,2014-05-15 08:00,2014-06-12 17:00,2014-05-15 08:00,2014-06-12 17:00,,PT_Normal,,,,,9DXoB6P6TpykQzvasMbhNA,,,,Y,0,0,,,2013-02-16 15:52,2013-02-16 15:56,admin,admin
501389,6359,124653,13662,0,N,N,N,CP_Drtn,TT_Task,DT_FixedDUR2,TK_NotStart,DUKHCONI1BZ3FFGL5195,Testing of firefighting line,8178,0,0,200,0,50.4,50.4,200,0,0,0,,,,2014-05-21 08:00,2014-06-18 17:00,,2014-05-21 08:00,2014-06-18 17:00,2014-05-21 08:00,2014-06-18 17:00,2014-05-21 08:00,2014-06-18 17:00,2014-05-21 08:00,2014-06-18 17:00,,PT_Normal,,,,,Iiq4Sk4CSv+SDweqlmUcMg,,,,Y,0,0,,,2013-02-16 15:52,2013-02-16 15:56,admin,admin
501390,6359,124653,13662,0,N,N,N,CP_Drtn,TT_Task,DT_FixedDUR2,TK_NotStart,DUKHCONI1BZ3FFGL5200,Backfilling firefighting line,8177,0,0,200,0,311,311,200,275,0,275,,,,2014-05-27 08:00,2014-06-24 17:00,,2014-05-27 08:00,2014-06-24 17:00,2014-05-27 08:00,2014-06-24 17:00,2014-05-27 08:00,2014-06-24 17:00,2014-05-27 08:00,2014-06-24 17:00,,PT_Normal,,,,,hmyn6TCJS06D5iCBzI+a6Q,,,,Y,0,0,,,2013-02-16 15:52,2013-02-16 15:56,admin,admin
501391,6359,124653,13662,0,N,N,N,CP_Drtn,TT_Task,DT_FixedDUR2,TK_NotStart,DUKHCONI1BZ3FFGL5205,Construction of valve chambers & Thrust Blocks,8165,176,0,200,0,266,266,200,0,0,0,,,,2014-06-28 08:00,2014-07-26 17:00,,2014-06-02 08:00,2014-06-30 17:00,2014-06-02 08:00,2014-06-30 17:00,2014-06-02 08:00,2014-06-30 17:00,2014-06-28 08:00,2014-07-26 17:00,,PT_Normal,,,,,0PoErh9kT3iO76VCqCizgg,,,,N,0,0,,,2013-02-16 15:52,2013-02-16 15:56,admin,admin
501392,6359,124653,13662,0,N,N,N,CP_Drtn,TT_Task,DT_FixedDUR2,TK_NotStart,DUKHCONI1BZ3FFGL5210,Connection with existing Firewater System,8178,176,120,200,0,84,84,200,0,0,0,,,,2014-07-03 08:00,2014-07-31 17:00,,2014-06-08 08:00,2014-07-06 17:00,2014-06-08 08:00,2014-07-06 17:00,2014-06-08 08:00,2014-07-06 17:00,2014-07-03 08:00,2014-07-31 17:00,,PT_Normal,,,,,mEXPLDwZS1mvrUuk2cdygg,,,,N,0,0,,,2013-02-16 15:52,2013-02-16 15:56,admin,admin
501393,6359,124654,13662,0,N,N,N,CP_Drtn,TT_Task,DT_FixedDUR2,TK_NotStart,DUKHCONI1BZ3BWGL5315,Construction of Boundary Wall (Ht-3m),8165,360,0,200,0,196,196,200,0,0,0,,,,2014-08-23 08:00,2014-09-20 17:00,,2014-06-28 08:00,2014-07-26 17:00,2014-06-28 08:00,2014-07-26 17:00,2014-06-28 08:00,2014-07-26 17:00,2014-08-23 08:00,2014-09-20 17:00,,PT_Normal,,,,,sLGn0q76RZabE1WFLWqcfA,,,,N,0,0,,,2013-02-16 15:52,2013-02-16 15:56,admin,admin
501394,6359,124654,13662,0,N,N,N,CP_Drtn,TT_Task,DT_FixedDUR2,TK_NotStart,DUKHCONI1BZ3BWGL5320,"Install.Steel Gate,Entance Barrier (3m Wall)",8178,360,0,200,0,14,14,200,0,0,0,,,,2014-09-08 08:00,2014-10-06 17:00,,2014-07-14 08:00,2014-08-14 17:00,2014-07-14 08:00,2014-08-14 17:00,2014-07-14 08:00,2014-08-14 17:00,2014-09-08 08:00,2014-10-06 17:00,,PT_Normal,,,,,XSJxXBhrRzGeh0tB745uTg,,,,N,0,0,,,2013-02-16 15:52,2013-02-16 15:56,admin,admin
501395,6359,124654,13662,0,N,N,N,CP_Drtn,TT_Task,DT_FixedDUR2,TK_NotStart,DUKHCONI1BZ3BWGL5325,Const. of Villa Front Boundary Wall (Ht-2m),8165,360,0,200,0,140,140,200,0,0,0,,,,2014-10-07 08:00,2014-11-06 17:00,,2014-08-16 08:00,2014-09-13 17:00,2014-08-16 08:00,2014-09-13 17:00,2014-08-16 08:00,2014-09-13 17:00,2014-10-07 08:00,2014-11-06 17:00,,PT_Normal,,,,,iGq7HMEIQliYjp2yGWaOtQ,,,,N,0,0,,,2013-02-16 15:52,2013-02-16 15:56,admin,admin
501396,6359,124654,13662,0,N,N,N,CP_Drtn,TT_Task,DT_FixedDUR2,TK_NotStart,DUKHCONI1BZ3BWGL5330,Const. of Blockwork fence Wall (Ht-1.85m),8165,464,120,200,0,140,140,200,0,0,0,,,,2014-11-05 08:00,2014-12-03 17:00,,2014-08-27 08:00,2014-09-24 17:00,2014-08-27 08:00,2014-09-24 17:00,2014-08-27 08:00,2014-09-24 17:00,2014-11-05 08:00,2014-12-03 17:00,,PT_Normal,,,,,yJCgv+3SQJmfcDAGNhDT3w,,,,N,0,0,,,2013-02-16 15:52,2013-02-16 15:56,admin,admin
501397,6359,124655,13662,0,N,N,N,CP_Drtn,TT_Task,DT_FixedDUR2,TK_NotStart,DUKHCONI1BZ3SLGL7200,Excavation,8177,8,0,200,0,926,926,200,500,0,500,,,,2014-09-10 08:00,2014-10-08 17:00,,2014-09-09 08:00,2014-10-07 17:00,2014-09-09 08:00,2014-10-07 17:00,2014-09-09 08:00,2014-10-07 17:00,2014-09-10 08:00,2014-10-08 17:00,,PT_Normal,,,,,XJQov+rxTNewGl/zEZaghA,,,,N,0,0,,,2013-02-16 15:52,2013-02-16 15:56,admin,admin
501398,6359,124655,13662,0,N,N,N,CP_Drtn,TT_Task,DT_FixedDUR2,TK_NotStart,DUKHCONI1BZ3SLGL7205,Sweet Soil Laying,8178,8,0,200,0,4102,4102,200,0,0,0,,,,2014-09-22 08:00,2014-10-22 17:00,,2014-09-21 08:00,2014-10-21 17:00,2014-09-21 08:00,2014-10-21 17:00,2014-09-21 08:00,2014-10-21 17:00,2014-09-22 08:00,2014-10-22 17:00,,PT_Normal,,,,,/BczF7XqSU+mHu8yfm2+LQ,,,,N,0,0,,,2013-02-16 15:52,2013-02-16 15:56,admin,admin
501399,6359,124655,13662,0,N,N,N,CP_Drtn,TT_Task,DT_FixedDUR2,TK_NotStart,DUKHCONI1BZ3SLGL7210,Plantation works,8178,88,88,200,0,728,728,200,0,0,0,,,,2014-10-18 08:00,2014-11-15 17:00,,2014-10-02 08:00,2014-11-02 17:00,2014-10-02 08:00,2014-11-02 17:00,2014-10-02 08:00,2014-11-02 17:00,2014-10-18 08:00,2014-11-15 17:00,,PT_Normal,,,,,6X27C5iNRDaEffbKC4nEkw,,,,N,0,0,,,2013-02-16 15:52,2013-02-16 15:56,admin,admin
501400,6359,124656,13662,0,N,N,N,CP_Drtn,TT_Task,DT_FixedDUR2,TK_NotStart,DUKHCONI1BZ3TCGL5295,Excavation Telecommunication trenches,8177,0,0,160,0,356,356,160,200,0,200,,,,2014-06-28 08:00,2014-07-20 17:00,,2014-06-28 08:00,2014-07-20 17:00,2014-06-28 08:00,2014-07-20 17:00,2014-06-28 08:00,2014-07-20 17:00,2014-06-28 08:00,2014-07-20 17:00,,PT_Normal,,,,,Dz8I6abNSs2qgxiruLJr/g,,,,Y,0,0,,,2013-02-16 15:52,2013-02-16 15:56,admin,admin
501401,6359,124656,13662,0,N,N,N,CP_Drtn,TT_Task,DT_FixedDUR2,TK_NotStart,DUKHCONI1BZ3TCGL5300,Laying of cables,8178,0,0,160,0,727.2,727.2,160,0,0,0,,,,2014-07-03 08:00,2014-07-26 17:00,,2014-07-03 08:00,2014-07-26 17:00,2014-07-03 08:00,2014-07-26 17:00,2014-07-03 08:00,2014-07-26 17:00,2014-07-03 08:00,2014-07-26 17:00,,PT_Normal,,,,,EBzVE0IrTCKMv+psY2lfRw,,,,Y,0,0,,,2013-02-16 15:52,2013-02-16 15:56,admin,admin
501402,6359,124656,13662,0,N,N,N,CP_Drtn,TT_Task,DT_FixedDUR2,TK_NotStart,DUKHCONI1BZ3TCGL5305,Backfilling telecommunication trench,8177,0,0,160,0,286,286,160,220,0,220,,,,2014-07-09 08:00,2014-07-31 17:00,,2014-07-09 08:00,2014-07-31 17:00,2014-07-09 08:00,2014-07-31 17:00,2014-07-09 08:00,2014-07-31 17:00,2014-07-09 08:00,2014-07-31 17:00,,PT_Normal,,,,,zbHudxKcQPWZYIpD8TxDUQ,,,,Y,0,0,,,2013-02-16 15:52,2013-02-16 15:56,admin,admin
501403,6359,124656,13662,0,N,N,N,CP_Drtn,TT_Task,DT_FixedDUR2,TK_NotStart,DUKHCONI1BZ3TCGL5310,Connection & Installation,8178,408,160,160,0,271.2,271.2,160,0,0,0,,,,2014-09-22 08:00,2014-10-16 17:00,,2014-07-21 08:00,2014-08-16 17:00,2014-07-21 08:00,2014-08-16 17:00,2014-07-21 08:00,2014-08-16 17:00,2014-09-22 08:00,2014-10-16 17:00,,PT_Normal,,,,,EDPyV2JJSGKoJsfwVHi56g,,,,N,0,0,,,2013-02-16 15:52,2013-02-23 09:03,admin,admin
501404,6359,124657,13662,0,N,N,N,CP_Drtn,TT_Task,DT_FixedDUR2,TK_NotStart,DUKHCONI1BZ3SAGL5135,Construction of manholes Drainage,8177,552,80,200,0,6,6,200,0,0,0,,,,2014-06-10 08:00,2014-07-08 17:00,,2014-03-22 08:00,2014-04-19 17:00,2014-03-22 08:00,2014-04-19 17:00,2014-03-22 08:00,2014-04-19 17:00,2014-06-10 08:00,2014-07-08 17:00,,PT_Normal,,,,,MR+UgQYDTKmvFu7B1HVdhA,,,,N,0,0,,,2013-02-16 15:52,2013-02-16 15:56,admin,admin
501405,6359,124657,13662,0,N,N,N,CP_Drtn,TT_Task,DT_FixedDUR2,TK_NotStart,DUKHCONI1BZ3SAGL5140,Construction of soakaways,8172,80,0,200,0,190,190,200,0,0,0,,,,2014-04-02 08:00,2014-04-30 17:00,,2014-03-22 08:00,2014-04-19 17:00,2014-03-22 08:00,2014-04-19 17:00,2014-03-22 08:00,2014-04-19 17:00,2014-04-02 08:00,2014-04-30 17:00,,PT_Normal,,,,,jong2Tk1Q8GuIkx9fK8iKA,,,,N,0,0,,,2013-02-16 15:52,2013-02-16 15:56,admin,admin
501406,6359,124657,13662,0,N,N,N,CP_Drtn,TT_Task,DT_FixedDUR2,TK_NotStart,DUKHCONI1BZ3SAGL5145,Construction of Road gullies,8172,80,0,200,0,176,176,200,0,0,0,,,,2014-05-01 08:00,2014-05-29 17:00,,2014-04-20 08:00,2014-05-18 17:00,2014-04-20 08:00,2014-05-18 17:00,2014-04-20 08:00,2014-05-18 17:00,2014-05-01 08:00,2014-05-29 17:00,,PT_Normal,,,,,pIEVvOn6QpeTeFcNYqSuSg,,,,N,0,0,,,2013-02-16 15:52,2013-02-16 15:56,admin,admin
501407,6359,124657,13662,0,N,N,N,CP_Drtn,TT_Task,DT_FixedDUR2,TK_NotStart,DUKHCONI1BZ3SAGL5150,Connection with existing sewer manhole,8177,352,352,160,0,6,6,160,0,0,0,,,,2014-07-09 08:00,2014-07-31 17:00,,2014-05-19 08:00,2014-06-10 17:00,2014-05-19 08:00,2014-06-10 17:00,2014-05-19 08:00,2014-06-10 17:00,2014-07-09 08:00,2014-07-31 17:00,,PT_Normal,,,,,3Visfvb5RvKgyvns5tNJkw,,,,N,0,0,,,2013-02-16 15:52,2013-02-16 15:56,admin,admin
501408,6359,124658,13662,0,N,N,N,CP_Drtn,TT_Task,DT_FixedDUR2,TK_NotStart,DUKHCONI1BZ3HDGL7035,Construction of Wash Stone Boulders,8170,8,0,200,0,22,22,200,0,0,0,,,,2014-08-30 08:00,2014-09-27 17:00,,2014-08-28 08:00,2014-09-25 17:00,2014-08-28 08:00,2014-09-25 17:00,2014-08-28 08:00,2014-09-25 17:00,2014-08-30 08:00,2014-09-27 17:00,,PT_Normal,,,,,XRa7DcBCTnewoK+013aD9Q,,,,N,0,0,,,2013-02-16 15:52,2013-02-16 15:56,admin,admin
501409,6359,124658,13662,0,N,N,N,CP_Drtn,TT_Task,DT_FixedDUR2,TK_NotStart,DUKHCONI1BZ3HDGL7040,Construction of Speed Humps,8167,248,248,80,0,14,14,80,0,0,0,,,,2014-11-22 08:00,2014-12-02 17:00,,2014-10-16 08:00,2014-10-27 17:00,2014-10-16 08:00,2014-10-27 17:00,2014-10-16 08:00,2014-10-27 17:00,2014-11-22 08:00,2014-12-02 17:00,,PT_Normal,,,,,EoYpFrzrQb6puoVphQrp2w,,,,N,0,0,,,2013-02-16 15:52,2013-02-16 15:56,admin,admin
501410,6359,124658,13662,0,N,N,N,CP_Drtn,TT_Task,DT_FixedDUR2,TK_NotStart,DUKHCONI1BZ3HDGL7020,Precast Concrete Kerbs works,8173,8,0,160,0,800,800,160,0,0,0,,,,2014-08-06 08:00,2014-08-28 17:00,,2014-08-05 08:00,2014-08-27 17:00,2014-08-05 08:00,2014-08-27 17:00,2014-08-05 08:00,2014-08-27 17:00,2014-08-06 08:00,2014-08-28 17:00,,PT_Normal,,,,,tqjRtKvaQU+DrbQpL9iS9A,,,,N,0,0,,,2013-02-16 15:52,2013-02-16 15:56,admin,admin
501411,6359,124658,13662,0,N,N,N,CP_Drtn,TT_Task,DT_FixedDUR2,TK_NotStart,DUKHCONI1BZ3HDGL7025,Interlocking for Walkways,8174,8,0,200,0,814,814,200,0,0,0,,,,2014-08-18 08:00,2014-09-15 17:00,,2014-08-17 08:00,2014-09-14 17:00,2014-08-17 08:00,2014-09-14 17:00,2014-08-17 08:00,2014-09-14 17:00,2014-08-18 08:00,2014-09-15 17:00,,PT_Normal,,,,,ZMBrPJZxQjqhlOsoxFKg3Q,,,,N,0,0,,,2013-02-16 15:52,2013-02-16 15:56,admin,admin
501412,6359,124658,13662,0,N,N,N,CP_Drtn,TT_Task,DT_FixedDUR2,TK_NotStart,DUKHCONI1BZ3HDGL7030,Construction of Retaining wall,8165,8,0,200,0,3340,3340,200,0,0,0,,,,2014-08-30 08:00,2014-09-27 17:00,,2014-08-28 08:00,2014-09-25 17:00,2014-08-28 08:00,2014-09-25 17:00,2014-08-28 08:00,2014-09-25 17:00,2014-08-30 08:00,2014-09-27 17:00,,PT_Normal,,,,,aIa+f6BRRoaF1u6m/8y+xA,,,,N,0,0,,,2013-02-16 15:52,2013-02-16 15:56,admin,admin
501413,6359,124659,13662,0,N,N,N,CP_Drtn,TT_Task,DT_FixedDUR2,TK_NotStart,DUKHCONI1BZ3PSGL7000,Excavation,8177,216,40,120,0,163,163,120,90.999832,0,90.999832,,,,2014-10-19 08:00,2014-11-04 17:00,,2014-09-15 08:00,2014-10-01 17:00,2014-09-15 08:00,2014-10-01 17:00,2014-09-15 08:00,2014-10-01 17:00,2014-10-19 08:00,2014-11-04 17:00,,PT_Normal,,,,,KOFZSF53Q9mB7NTQgQsqHA,,,,N,0,0,,,2013-02-16 15:52,2013-02-16 15:56,admin,admin
501414,6359,124659,13662,0,N,N,N,CP_Drtn,TT_Task,DT_FixedDUR2,TK_NotStart,DUKHCONI1BZ3PSGL7005,Foundation casting,8165,176,0,120,0,302,302,120,0,0,0,,,,2014-10-25 08:00,2014-11-10 17:00,,2014-09-27 08:00,2014-10-15 17:00,2014-09-27 08:00,2014-10-15 17:00,2014-09-27 08:00,2014-10-15 17:00,2014-10-25 08:00,2014-11-10 17:00,,PT_Normal,,,,,uWSw/Cm5Q2CLMeDJhWraOA,,,,N,0,0,,,2013-02-16 15:52,2013-02-16 15:56,admin,admin
501415,6359,124659,13662,0,N,N,N,CP_Drtn,TT_Task,DT_FixedDUR2,TK_NotStart,DUKHCONI1BZ3PSGL7015,Electrical Works-Parking Shed,8178,176,128,200,0,51.6,51.6,200,0,0,0,,,,2014-11-11 08:00,2014-12-09 17:00,,2014-10-16 08:00,2014-11-13 17:00,2014-10-16 08:00,2014-11-13 17:00,2014-10-16 08:00,2014-11-13 17:00,2014-11-11 08:00,2014-12-09 17:00,,PT_Normal,,,,,TbHNb3FmTYWoejocSzNpPw,,,,N,0,0,,,2013-02-16 15:52,2013-02-16 15:56,admin,admin
501416,6359,124659,13662,0,N,N,N,CP_Drtn,TT_Task,DT_FixedDUR2,TK_NotStart,DUKHCONI1BZ3PSGL7010,"Column, Frame&  Fabrics  Erection",8178,176,0,200,0,314,314,200,0,0,0,,,,2014-11-05 08:00,2014-12-03 17:00,,2014-10-08 08:00,2014-11-08 17:00,2014-10-08 08:00,2014-11-08 17:00,2014-10-08 08:00,2014-11-08 17:00,2014-11-05 08:00,2014-12-03 17:00,,PT_Normal,,,,,d4UIpTvdTUmtkhebIbKOVA,,,,N,0,0,,,2013-02-16 15:52,2013-02-16 15:56,admin,admin
501417,6359,124660,13662,0,N,N,N,CP_Drtn,TT_Task,DT_FixedDUR2,TK_NotStart,DUKHCONI1BZ3ELGL5215,Excavation Cable  Trenches  & Duct Banks,8177,0,0,200,0,2772,2772,200,876,0,876,,,,2014-06-04 08:00,2014-07-02 17:00,,2014-06-04 08:00,2014-07-02 17:00,2014-06-04 08:00,2014-07-02 17:00,2014-06-04 08:00,2014-07-02 17:00,2014-06-04 08:00,2014-07-02 17:00,,PT_Normal,,,,,R0QTjJtDRviR2t0IFTvMxg,,,,Y,0,0,,,2013-02-16 15:52,2013-02-16 15:56,admin,admin
501418,6359,124660,13662,0,N,N,N,CP_Drtn,TT_Task,DT_FixedDUR2,TK_NotStart,DUKHCONI1BZ3ELGL5220,Laying of electrical cables,8178,24,0,200,0,4487.2,4487.2,200,0,0,0,,,,2014-06-14 08:00,2014-07-12 17:00,,2014-06-10 08:00,2014-07-08 17:00,2014-06-10 08:00,2014-07-08 17:00,2014-06-10 08:00,2014-07-08 17:00,2014-06-14 08:00,2014-07-12 17:00,,PT_Normal,,,,,RW3sIsg3SfWBkI+Rfhn1vw,,,,N,0,0,,,2013-02-16 15:52,2013-02-23 09:03,admin,admin
501419,6359,124660,13662,0,N,N,N,CP_Drtn,TT_Task,DT_FixedDUR2,TK_NotStart,DUKHCONI1BZ3ELGL5225,Backfilling Electrical trench,8177,24,0,200,0,1862,1862,200,1100,0,1100,,,,2014-06-22 08:00,2014-07-20 17:00,,2014-06-18 08:00,2014-07-16 17:00,2014-06-18 08:00,2014-07-16 17:00,2014-06-18 08:00,2014-07-16 17:00,2014-06-22 08:00,2014-07-20 17:00,,PT_Normal,,,,,raSGV3QZQxqjcey4xxgXyA,,,,N,0,0,,,2013-02-16 15:52,2013-02-16 15:56,admin,admin
501420,6359,124660,13662,0,N,N,N,CP_Drtn,TT_Task,DT_FixedDUR2,TK_NotStart,DUKHCONI1BZ3ELGL5230,Construction of Submain Board & Feeder Pillar,8165,392,0,200,0,276,276,200,0,0,0,,,,2014-08-30 08:00,2014-09-27 17:00,,2014-06-30 08:00,2014-07-28 17:00,2014-06-30 08:00,2014-07-28 17:00,2014-06-30 08:00,2014-07-28 17:00,2014-08-30 08:00,2014-09-27 17:00,,PT_Normal,,,,,uMuL6/TXSqiSPbya4/o94g,,,,N,0,0,,,2013-02-16 15:53,2013-02-16 15:56,admin,admin
501421,6359,124661,13662,0,N,N,N,CP_Drtn,TT_Task,DT_FixedDUR2,TK_NotStart,DUKHCONI1BZ3WSGL5155,Excavation for water line,8177,0,0,200,0,425,425,200,251,0,251,,,,2014-04-14 08:00,2014-05-12 17:00,,2014-04-14 08:00,2014-05-12 17:00,2014-04-14 08:00,2014-05-12 17:00,2014-04-14 08:00,2014-05-12 17:00,2014-04-14 08:00,2014-05-12 17:00,,PT_Normal,,,,,4V5IdPdLTbOHnPukpDOR+Q,,,,Y,0,0,,,2013-02-16 15:53,2013-02-16 15:56,admin,admin
501422,6359,124661,13662,0,N,N,N,CP_Drtn,TT_Task,DT_FixedDUR2,TK_NotStart,DUKHCONI1BZ3WSGL5160,Laying of water line,8178,0,0,200,0,319.2,319.2,200,0,0,0,,,,2014-04-20 08:00,2014-05-18 17:00,,2014-04-20 08:00,2014-05-18 17:00,2014-04-20 08:00,2014-05-18 17:00,2014-04-20 08:00,2014-05-18 17:00,2014-04-20 08:00,2014-05-18 17:00,,PT_Normal,,,,,noc+8JKVSU2GfL7n/KuioA,,,,Y,0,0,,,2013-02-16 15:53,2013-02-23 09:03,admin,admin
501423,6359,124661,13662,0,N,N,N,CP_Drtn,TT_Task,DT_FixedDUR2,TK_NotStart,DUKHCONI1BZ3WSGL5165,Testing of potable water line,8178,0,0,200,0,100.8,100.8,200,0,0,0,,,,2014-04-26 08:00,2014-05-24 17:00,,2014-04-26 08:00,2014-05-24 17:00,2014-04-26 08:00,2014-05-24 17:00,2014-04-26 08:00,2014-05-24 17:00,2014-04-26 08:00,2014-05-24 17:00,,PT_Normal,,,,,lQpxvxpRTR67g6vtmPaHXQ,,,,Y,0,0,,,2013-02-16 15:53,2013-02-16 15:56,admin,admin
501424,6359,124661,13662,0,N,N,N,CP_Drtn,TT_Task,DT_FixedDUR2,TK_NotStart,DUKHCONI1BZ3WSGL5170,Backfilling potable water line,8177,0,0,200,0,347,347,200,275,0,275,,,,2014-05-01 08:00,2014-05-29 17:00,,2014-05-01 08:00,2014-05-29 17:00,2014-05-01 08:00,2014-05-29 17:00,2014-05-01 08:00,2014-05-29 17:00,2014-05-01 08:00,2014-05-29 17:00,,PT_Normal,,,,,EiM9Xt8oR7e3k4w1WjnsXg,,,,Y,0,0,,,2013-02-16 15:53,2013-02-16 15:56,admin,admin
501425,6359,124661,13662,0,N,N,N,CP_Drtn,TT_Task,DT_FixedDUR2,TK_NotStart,DUKHCONI1BZ3WSGL5175,Construction of valve chambers & Thrust Blocks,8172,232,0,200,0,88,88,200,0,0,0,,,,2014-06-10 08:00,2014-07-08 17:00,,2014-05-07 08:00,2014-06-04 17:00,2014-05-07 08:00,2014-06-04 17:00,2014-05-07 08:00,2014-06-04 17:00,2014-06-10 08:00,2014-07-08 17:00,,PT_Normal,,,,,EHo/GB/fQ9qp1HtB6RV0zg,,,,N,0,0,,,2013-02-16 15:53,2013-02-16 15:56,admin,admin
501426,6359,124661,13662,0,N,N,N,CP_Drtn,TT_Task,DT_FixedDUR2,TK_NotStart,DUKHCONI1BZ3WSGL5180,"Installation of meter ,Accessories & Connection",8178,232,56,160,0,50.4,50.4,160,0,0,0,,,,2014-07-09 08:00,2014-07-31 17:00,,2014-06-05 08:00,2014-06-28 17:00,2014-06-05 08:00,2014-06-28 17:00,2014-06-05 08:00,2014-06-28 17:00,2014-07-09 08:00,2014-07-31 17:00,,PT_Normal,,,,,tzhcWy0ERKumv4cS0vcFVA,,,,N,0,0,,,2013-02-16 15:53,2013-02-16 15:56,admin,admin
501427,6359,124662,13662,0,N,N,N,CP_Drtn,TT_Task,DT_FixedDUR2,TK_NotStart,DUKHCONI1BZ3IRGL5265,Excavation for irrigation line,8177,56,0,200,0,998,998,200,500,0,500,,,,2014-07-26 08:00,2014-08-26 17:00,,2014-07-17 08:00,2014-08-18 17:00,2014-07-17 08:00,2014-08-18 17:00,2014-07-17 08:00,2014-08-18 17:00,2014-07-26 08:00,2014-08-26 17:00,,PT_Normal,,,,,aJnkjm9cRJ+KvPJhn667cw,,,,N,0,0,,,2013-02-16 15:53,2013-02-16 15:56,admin,admin
501428,6359,124662,13662,0,N,N,N,CP_Drtn,TT_Task,DT_FixedDUR2,TK_NotStart,DUKHCONI1BZ3IRGL5270,Laying of irrigationline,8178,56,0,200,0,352.8,352.8,200,0,0,0,,,,2014-07-31 08:00,2014-09-01 17:00,,2014-07-23 08:00,2014-08-24 17:00,2014-07-23 08:00,2014-08-24 17:00,2014-07-23 08:00,2014-08-24 17:00,2014-07-31 08:00,2014-09-01 17:00,,PT_Normal,,,,,sdIZFzTSTJ2M3UgmtTrOpg,,,,N,0,0,,,2013-02-16 15:53,2013-02-16 15:56,admin,admin
501429,6359,124662,13662,0,N,N,N,CP_Drtn,TT_Task,DT_FixedDUR2,TK_NotStart,DUKHCONI1BZ3IRGL5275,Testing of irrigation line,8178,56,0,200,0,285.6,285.6,200,0,0,0,,,,2014-08-10 08:00,2014-09-07 17:00,,2014-07-29 08:00,2014-08-30 17:00,2014-07-29 08:00,2014-08-30 17:00,2014-07-29 08:00,2014-08-30 17:00,2014-08-10 08:00,2014-09-07 17:00,,PT_Normal,,,,,3MfELBb4SS6YOJY9Rt8LLg,,,,N,0,0,,,2013-02-16 15:53,2013-02-16 15:56,admin,admin
501430,6359,124662,13662,0,N,N,N,CP_Drtn,TT_Task,DT_FixedDUR2,TK_NotStart,DUKHCONI1BZ3IRGL5280,Backfilling irrigation line,8177,56,0,200,0,706,706,200,550,0,550,,,,2014-08-16 08:00,2014-09-13 17:00,,2014-08-07 08:00,2014-09-04 17:00,2014-08-07 08:00,2014-09-04 17:00,2014-08-07 08:00,2014-09-04 17:00,2014-08-16 08:00,2014-09-13 17:00,,PT_Normal,,,,,L0MsyNNzQoi+Va2XqjwVvg,,,,N,0,0,,,2013-02-16 15:53,2013-02-16 15:56,admin,admin
501431,6359,124662,13662,0,N,N,N,CP_Drtn,TT_Task,DT_FixedDUR2,TK_NotStart,DUKHCONI1BZ3IRGL5285,"Construction of Thrust Blocks,Pull boxes",8178,96,0,200,0,149.6,149.6,200,0,0,0,,,,2014-09-02 08:00,2014-09-30 17:00,,2014-08-19 08:00,2014-09-16 17:00,2014-08-19 08:00,2014-09-16 17:00,2014-08-19 08:00,2014-09-16 17:00,2014-09-02 08:00,2014-09-30 17:00,,PT_Normal,,,,,7Mpd+Eh7TPGHIav79Ox++g,,,,N,0,0,,,2013-02-16 15:53,2013-02-16 15:56,admin,admin
501432,6359,124662,13662,0,N,N,N,CP_Drtn,TT_Task,DT_FixedDUR2,TK_NotStart,DUKHCONI1BZ3IRGL5290,"Irrigation Fittings (Nozzle,Values)",8178,96,88,200,0,352.8,352.8,200,0,0,0,,,,2014-09-10 08:00,2014-10-08 17:00,,2014-08-27 08:00,2014-09-24 17:00,2014-08-27 08:00,2014-09-24 17:00,2014-08-27 08:00,2014-09-24 17:00,2014-09-10 08:00,2014-10-08 17:00,,PT_Normal,,,,,7pcqCFO+T3G+3yL3genhrw,,,,N,0,0,,,2013-02-16 15:53,2013-02-16 15:56,admin,admin
501433,6359,124663,13662,0,N,N,N,CP_Drtn,TT_Task,DT_FixedDUR2,TK_NotStart,DUKHCONI1BZ3STGL5235,Excavation for Street lighting,8177,0,0,200,0,69,69,200,51,0,51,,,,2014-06-04 08:00,2014-07-02 17:00,,2014-06-04 08:00,2014-07-02 17:00,2014-06-04 08:00,2014-07-02 17:00,2014-06-04 08:00,2014-07-02 17:00,2014-06-04 08:00,2014-07-02 17:00,,PT_Normal,,,,,/6klv9b+TJ+ZlvCep/vUmw,,,,Y,0,0,,,2013-02-16 15:53,2013-02-16 15:56,admin,admin
501434,6359,124663,13662,0,N,N,N,CP_Drtn,TT_Task,DT_FixedDUR2,TK_NotStart,DUKHCONI1BZ3STGL5240,Construction of Duct Banks,8178,0,0,200,0,1494,1494,200,0,0,0,,,,2014-06-10 08:00,2014-07-08 17:00,,2014-06-10 08:00,2014-07-08 17:00,2014-06-10 08:00,2014-07-08 17:00,2014-06-10 08:00,2014-07-08 17:00,2014-06-10 08:00,2014-07-08 17:00,,PT_Normal,,,,,YwW7cqFzQD60qHvMbj73tQ,,,,Y,0,0,,,2013-02-16 15:53,2013-02-16 15:56,admin,admin
501435,6359,124663,13662,0,N,N,N,CP_Drtn,TT_Task,DT_FixedDUR2,TK_NotStart,DUKHCONI1BZ3STGL5245,Construction of Foundation,8172,0,0,200,0,630,630,200,0,0,0,,,,2014-06-10 08:00,2014-07-08 17:00,,2014-06-10 08:00,2014-07-08 17:00,2014-06-10 08:00,2014-07-08 17:00,2014-06-10 08:00,2014-07-08 17:00,2014-06-10 08:00,2014-07-08 17:00,,PT_Normal,,,,,ygD/ZkCsRPGfyoYIf9ZA4Q,,,,Y,0,0,,,2013-02-16 15:53,2013-02-16 15:56,admin,admin
501436,6359,124663,13662,0,N,N,N,CP_Drtn,TT_Task,DT_FixedDUR2,TK_NotStart,DUKHCONI1BZ3STGL5250,Backfilling Street Lighting,8177,0,0,200,0,122,122,200,110,0,110,,,,2014-06-16 08:00,2014-07-14 17:00,,2014-06-16 08:00,2014-07-14 17:00,2014-06-16 08:00,2014-07-14 17:00,2014-06-16 08:00,2014-07-14 17:00,2014-06-16 08:00,2014-07-14 17:00,,PT_Normal,,,,,HacYRWkNR9mmmCx5Ndobwg,,,,Y,0,0,,,2013-02-16 15:53,2013-02-16 15:56,admin,admin
501437,6359,124663,13662,0,N,N,N,CP_Drtn,TT_Task,DT_FixedDUR2,TK_NotStart,DUKHCONI1BZ3STGL5255,Installation of light Post,8178,552,120,200,0,216,216,200,0,0,0,,,,2014-09-20 08:00,2014-10-20 17:00,,2014-06-28 08:00,2014-07-26 17:00,2014-06-28 08:00,2014-07-26 17:00,2014-06-28 08:00,2014-07-26 17:00,2014-09-20 08:00,2014-10-20 17:00,,PT_Normal,,,,,gR6TvYAlRM65pfdxUa12xw,,,,N,0,0,,,2013-02-16 15:53,2013-02-16 15:56,admin,admin
501438,6359,124663,13662,0,N,N,N,CP_Drtn,TT_Task,DT_FixedDUR2,TK_NotStart,DUKHCONI1BZ3STGL5260,Electrical Works,8178,392,120,200,0,1039.6,1039.6,200,0,0,0,,,,2014-09-28 08:00,2014-10-28 17:00,,2014-07-29 08:00,2014-08-30 17:00,2014-07-29 08:00,2014-08-30 17:00,2014-07-29 08:00,2014-08-30 17:00,2014-09-28 08:00,2014-10-28 17:00,,PT_Normal,,,,,ThoE0S2jS+GUlrNABkuc0g,,,,N,0,0,,,2013-02-16 15:53,2013-02-16 15:56,admin,admin
501439,6359,124664,13662,0,N,N,N,CP_Drtn,TT_Task,DT_FixedDUR2,TK_NotStart,DUKHCONI1BZ3RWGL6000,Excavation & Earth Filling,8177,0,0,80,0,1150,1150,80,400,0,400,,,,2014-08-05 08:00,2014-08-16 17:00,,2014-08-05 08:00,2014-08-16 17:00,2014-08-05 08:00,2014-08-16 17:00,2014-08-05 08:00,2014-08-16 17:00,2014-08-05 08:00,2014-08-16 17:00,,PT_Normal,,,,,iHM5X2s5RKmei3nj1cw3Gg,,,,Y,0,0,,,2013-02-16 15:53,2013-02-16 15:56,admin,admin
501440,6359,124664,13662,0,N,N,N,CP_Drtn,TT_Task,DT_FixedDUR2,TK_NotStart,DUKHCONI1BZ3RWGL6005,Laying of Sub Grade,8178,0,0,200,0,24,24,200,0,0,0,,,,2014-08-17 08:00,2014-09-14 17:00,,2014-08-17 08:00,2014-09-14 17:00,2014-08-17 08:00,2014-09-14 17:00,2014-08-17 08:00,2014-09-14 17:00,2014-08-17 08:00,2014-09-14 17:00,,PT_Normal,,,,,A0bpCPDuTwqohCopIxXHpA,,,,Y,0,0,,,2013-02-16 15:53,2013-02-16 15:56,admin,admin
501441,6359,124664,13662,0,N,N,N,CP_Drtn,TT_Task,DT_FixedDUR2,TK_NotStart,DUKHCONI1BZ3RWGL6010,Laying of Precast Kerbs,8178,0,0,200,0,24,24,200,0,0,0,,,,2014-08-28 08:00,2014-09-25 17:00,,2014-08-28 08:00,2014-09-25 17:00,2014-08-28 08:00,2014-09-25 17:00,2014-08-28 08:00,2014-09-25 17:00,2014-08-28 08:00,2014-09-25 17:00,,PT_Normal,,,,,GM/jb1OxTQuTHKqkBX5zQA,,,,Y,0,0,,,2013-02-16 15:53,2013-02-16 15:56,admin,admin
501442,6359,124664,13662,0,N,N,N,CP_Drtn,TT_Task,DT_FixedDUR2,TK_NotStart,DUKHCONI1BZ3RWGL6015,Laying of Granular Sub Base Coarse,8173,0,0,160,0,1828,1828,160,600,0,600,,,,2014-09-09 08:00,2014-10-01 17:00,,2014-09-09 08:00,2014-10-01 17:00,2014-09-09 08:00,2014-10-01 17:00,2014-09-09 08:00,2014-10-01 17:00,2014-09-09 08:00,2014-10-01 17:00,,PT_Normal,,,,,5+lOcNJaSH2Qtacxa8kokg,,,,Y,0,0,,,2013-02-16 15:53,2013-02-16 15:56,admin,admin
501443,6359,124664,13662,0,N,N,N,CP_Drtn,TT_Task,DT_FixedDUR2,TK_NotStart,DUKHCONI1BZ3RWGL6020,Laying of Road Base Asphalt Concrete,8178,176,0,40,0,174,174,40,150,0,150,,,,2014-10-30 08:00,2014-11-04 17:00,,2014-10-02 08:00,2014-10-07 17:00,2014-10-02 08:00,2014-10-07 17:00,2014-10-02 08:00,2014-10-07 17:00,2014-10-30 08:00,2014-11-04 17:00,,PT_Normal,,,,,naO1tBd2TnGr5yGCJRc3tQ,,,,N,0,0,,,2013-02-16 15:53,2013-02-16 15:56,admin,admin
501444,6359,124664,13662,0,N,N,N,CP_Drtn,TT_Task,DT_FixedDUR2,TK_NotStart,DUKHCONI1BZ3RWGL6025,Laying of Asphalt Wearing Coarse,8178,248,0,40,0,174,174,40,150,0,150,,,,2014-11-16 08:00,2014-11-20 17:00,,2014-10-08 08:00,2014-10-15 17:00,2014-10-08 08:00,2014-10-15 17:00,2014-10-08 08:00,2014-10-15 17:00,2014-11-16 08:00,2014-11-20 17:00,,PT_Normal,,,,,ak6cCh6rS2iJiU07UKTayw,,,,N,0,0,,,2013-02-16 15:53,2013-02-16 15:56,admin,admin
501445,6359,124664,13662,0,N,N,N,CP_Drtn,TT_Task,DT_FixedDUR2,TK_NotStart,DUKHCONI1BZ3RWGL6030,Traffic Signage & Road Marking,8178,296,120,40,0,882,882,40,0,0,0,,,,2014-11-29 08:00,2014-12-03 17:00,,2014-10-16 08:00,2014-10-21 17:00,2014-10-16 08:00,2014-10-21 17:00,2014-10-16 08:00,2014-10-21 17:00,2014-11-29 08:00,2014-12-03 17:00,,PT_Normal,,,,,e/eTTzGBQyGbNE9KejY8YA,,,,N,0,0,,,2013-02-16 15:53,2013-02-16 15:56,admin,admin
501446,6359,124667,13662,0,N,N,N,CP_Drtn,TT_Task,DT_FixedDUR2,TK_NotStart,DUKHCONI1BZ4SAGL5135,Construction of manholes Drainage,8177,592,200,200,0,6,6,200,0,0,0,,,,2014-07-27 08:00,2014-08-27 17:00,,2014-05-01 08:00,2014-05-29 17:00,2014-05-01 08:00,2014-05-29 17:00,2014-05-01 08:00,2014-05-29 17:00,2014-07-27 08:00,2014-08-27 17:00,,PT_Normal,,,,,lGVHi9uMR5KIsLpczjeq6A,,,,N,0,0,,,2013-02-16 15:53,2013-02-16 15:56,admin,admin
501447,6359,124667,13662,0,N,N,N,CP_Drtn,TT_Task,DT_FixedDUR2,TK_NotStart,DUKHCONI1BZ4SAGL5140,Construction of soakaways,8172,120,0,200,0,190,190,200,0,0,0,,,,2014-05-19 08:00,2014-06-16 17:00,,2014-05-01 08:00,2014-05-29 17:00,2014-05-01 08:00,2014-05-29 17:00,2014-05-01 08:00,2014-05-29 17:00,2014-05-19 08:00,2014-06-16 17:00,,PT_Normal,,,,,hc8nRGtUS6S9Dzy/G3FpeQ,,,,N,0,0,,,2013-02-16 15:53,2013-02-16 15:56,admin,admin
501448,6359,124667,13662,0,N,N,N,CP_Drtn,TT_Task,DT_FixedDUR2,TK_NotStart,DUKHCONI1BZ4SAGL5145,Construction of Road gullies,8172,120,0,200,0,176,176,200,0,0,0,,,,2014-06-17 08:00,2014-07-15 17:00,,2014-05-31 08:00,2014-06-28 17:00,2014-05-31 08:00,2014-06-28 17:00,2014-05-31 08:00,2014-06-28 17:00,2014-06-17 08:00,2014-07-15 17:00,,PT_Normal,,,,,vOdNn+CLRvyPs3dlK0xLpg,,,,N,0,0,,,2013-02-16 15:53,2013-02-16 15:56,admin,admin
501449,6359,124667,13662,0,N,N,N,CP_Drtn,TT_Task,DT_FixedDUR2,TK_NotStart,DUKHCONI1BZ4SAGL5150,Connection with existing sewer manhole,8177,392,392,160,0,6,6,160,0,0,0,,,,2014-08-28 08:00,2014-09-20 17:00,,2014-06-29 08:00,2014-07-21 17:00,2014-06-29 08:00,2014-07-21 17:00,2014-06-29 08:00,2014-07-21 17:00,2014-08-28 08:00,2014-09-20 17:00,,PT_Normal,,,,,5WKHbcAjTymuerf7I8Di/Q,,,,N,0,0,,,2013-02-16 15:53,2013-02-16 15:56,admin,admin
501450,6359,124668,13662,0,N,N,N,CP_Drtn,TT_Task,DT_FixedDUR2,TK_NotStart,DUKHCONI1BZ4IRGL5265,Excavation for irrigation line,8177,56,0,200,0,998,998,200,500,0,500,,,,2014-09-14 08:00,2014-10-14 17:00,,2014-09-06 08:00,2014-10-04 17:00,2014-09-06 08:00,2014-10-04 17:00,2014-09-06 08:00,2014-10-04 17:00,2014-09-14 08:00,2014-10-14 17:00,,PT_Normal,,,,,YoOMG7mcTSug3Kgp+aWMkQ,,,,N,0,0,,,2013-02-16 15:53,2013-02-16 15:56,admin,admin
501451,6359,124668,13662,0,N,N,N,CP_Drtn,TT_Task,DT_FixedDUR2,TK_NotStart,DUKHCONI1BZ4IRGL5270,Laying of irrigationline,8178,56,0,200,0,352.8,352.8,200,0,0,0,,,,2014-09-20 08:00,2014-10-20 17:00,,2014-09-11 08:00,2014-10-12 17:00,2014-09-11 08:00,2014-10-12 17:00,2014-09-11 08:00,2014-10-12 17:00,2014-09-20 08:00,2014-10-20 17:00,,PT_Normal,,,,,ddreiPs0Rq6HhDxUrfw9/g,,,,N,0,0,,,2013-02-16 15:53,2013-02-16 15:56,admin,admin
501452,6359,124668,13662,0,N,N,N,CP_Drtn,TT_Task,DT_FixedDUR2,TK_NotStart,DUKHCONI1BZ4IRGL5275,Testing of irrigation line,8178,56,0,200,0,285.6,285.6,200,0,0,0,,,,2014-09-25 08:00,2014-10-26 17:00,,2014-09-17 08:00,2014-10-18 17:00,2014-09-17 08:00,2014-10-18 17:00,2014-09-17 08:00,2014-10-18 17:00,2014-09-25 08:00,2014-10-26 17:00,,PT_Normal,,,,,02kPtSYoThyKioNHhC1JMQ,,,,N,0,0,,,2013-02-16 15:53,2013-02-16 15:56,admin,admin
501453,6359,124668,13662,0,N,N,N,CP_Drtn,TT_Task,DT_FixedDUR2,TK_NotStart,DUKHCONI1BZ4IRGL5280,Backfilling irrigation line,8177,56,0,200,0,706,706,200,550,0,550,,,,2014-10-01 08:00,2014-11-01 17:00,,2014-09-23 08:00,2014-10-23 17:00,2014-09-23 08:00,2014-10-23 17:00,2014-09-23 08:00,2014-10-23 17:00,2014-10-01 08:00,2014-11-01 17:00,,PT_Normal,,,,,CvYoVpuCTvOHY0KytznT8w,,,,N,0,0,,,2013-02-16 15:53,2013-02-16 15:56,admin,admin
501454,6359,124668,13662,0,N,N,N,CP_Drtn,TT_Task,DT_FixedDUR2,TK_NotStart,DUKHCONI1BZ4IRGL5285,"Construction of Thrust Blocks,Pull boxes",8178,56,0,200,0,149.6,149.6,200,0,0,0,,,,2014-10-15 08:00,2014-11-12 17:00,,2014-10-05 08:00,2014-11-04 17:00,2014-10-05 08:00,2014-11-04 17:00,2014-10-05 08:00,2014-11-04 17:00,2014-10-15 08:00,2014-11-12 17:00,,PT_Normal,,,,,ON6l+vtmSEGZJ1t1Ak2FKA,,,,N,0,0,,,2013-02-16 15:53,2013-02-16 15:56,admin,admin
501455,6359,124668,13662,0,N,N,N,CP_Drtn,TT_Task,DT_FixedDUR2,TK_NotStart,DUKHCONI1BZ4IRGL5290,"Irrigation Fittings (Nozzle,Values)",8178,56,56,200,0,352.8,352.8,200,0,0,0,,,,2014-10-23 08:00,2014-11-20 17:00,,2014-10-15 08:00,2014-11-12 17:00,2014-10-15 08:00,2014-11-12 17:00,2014-10-15 08:00,2014-11-12 17:00,2014-10-23 08:00,2014-11-20 17:00,,PT_Normal,,,,,NxmEuAV0S7yhuguuRN2yBg,,,,N,0,0,,,2013-02-16 15:53,2013-02-16 15:56,admin,admin
501456,6359,124669,13662,0,N,N,N,CP_Drtn,TT_Task,DT_FixedDUR2,TK_NotStart,DUKHCONI1BZ4HDGL7020,Precast Concrete Kerbs works,8173,0,0,160,0,800,800,160,0,0,0,,,,2014-09-21 08:00,2014-10-15 17:00,,2014-09-21 08:00,2014-10-15 17:00,2014-09-21 08:00,2014-10-15 17:00,2014-09-21 08:00,2014-10-15 17:00,2014-09-21 08:00,2014-10-15 17:00,,PT_Normal,,,,,o/EyLlNzTnig2pk9sQLPPA,,,,Y,0,0,,,2013-02-16 15:53,2013-02-16 15:56,admin,admin
501457,6359,124669,13662,0,N,N,N,CP_Drtn,TT_Task,DT_FixedDUR2,TK_NotStart,DUKHCONI1BZ4HDGL7025,Interlocking for Walkways,8174,0,0,200,0,814,814,200,0,0,0,,,,2014-10-02 08:00,2014-11-02 17:00,,2014-10-02 08:00,2014-11-02 17:00,2014-10-02 08:00,2014-11-02 17:00,2014-10-02 08:00,2014-11-02 17:00,2014-10-02 08:00,2014-11-02 17:00,,PT_Normal,,,,,06ccMBhpT4y4q8O/UfG9iA,,,,Y,0,0,,,2013-02-16 15:53,2013-02-16 15:56,admin,admin
501458,6359,124669,13662,0,N,N,N,CP_Drtn,TT_Task,DT_FixedDUR2,TK_NotStart,DUKHCONI1BZ4HDGL7030,Construction of Retaining wall,8165,0,0,200,0,3340,3340,200,0,0,0,,,,2014-10-16 08:00,2014-11-13 17:00,,2014-10-16 08:00,2014-11-13 17:00,2014-10-16 08:00,2014-11-13 17:00,2014-10-16 08:00,2014-11-13 17:00,2014-10-16 08:00,2014-11-13 17:00,,PT_Normal,,,,,8iQzZ08MS8K6ta+MTQn3pQ,,,,Y,0,0,,,2013-02-16 15:53,2013-02-16 15:56,admin,admin
501459,6359,124669,13662,0,N,N,N,CP_Drtn,TT_Task,DT_FixedDUR2,TK_NotStart,DUKHCONI1BZ4HDGL7035,Construction of Wash Stone Boulders,8170,0,0,200,0,22,22,200,0,0,0,,,,2014-10-16 08:00,2014-11-13 17:00,,2014-10-16 08:00,2014-11-13 17:00,2014-10-16 08:00,2014-11-13 17:00,2014-10-16 08:00,2014-11-13 17:00,2014-10-16 08:00,2014-11-13 17:00,,PT_Normal,,,,,NUGcZsscRZ6zhP2FnLsZrw,,,,Y,0,0,,,2013-02-16 15:53,2013-02-16 15:56,admin,admin
501460,6359,124669,13662,0,N,N,N,CP_Drtn,TT_Task,DT_FixedDUR2,TK_NotStart,DUKHCONI1BZ4HDGL7040,Construction of Speed Humps,8167,0,0,80,0,14,14,80,0,0,0,,,,2014-12-03 08:00,2014-12-14 17:00,,2014-12-03 08:00,2014-12-14 17:00,2014-12-03 08:00,2014-12-14 17:00,2014-12-03 08:00,2014-12-14 17:00,2014-12-03 08:00,2014-12-14 17:00,,PT_Normal,,,,,rw98JE4qQ2uJUagn4G/lFw,,,,Y,0,0,,,2013-02-16 15:53,2013-02-16 15:56,admin,admin
501461,6359,124670,13662,0,N,N,N,CP_Drtn,TT_Task,DT_FixedDUR2,TK_NotStart,DUKHCONI1BZ4SLGL7210,Plantation works,8178,0,0,200,0,728,728,200,0,0,0,,,,2014-11-16 08:00,2014-12-14 17:00,,2014-11-16 08:00,2014-12-14 17:00,2014-11-16 08:00,2014-12-14 17:00,2014-11-16 08:00,2014-12-14 17:00,2014-11-16 08:00,2014-12-14 17:00,,PT_Normal,,,,,ZYsnQs6gQ3qfcAGgTmj62A,,,,Y,0,0,,,2013-02-16 15:53,2013-02-16 15:56,admin,admin
501462,6359,124670,13662,0,N,N,N,CP_Drtn,TT_Task,DT_FixedDUR2,TK_NotStart,DUKHCONI1BZ4SLGL7200,Excavation for Landscaping,8177,0,0,200,0,926,926,200,500,0,500,,,,2014-10-23 08:00,2014-11-20 17:00,,2014-10-23 08:00,2014-11-20 17:00,2014-10-23 08:00,2014-11-20 17:00,2014-10-23 08:00,2014-11-20 17:00,2014-10-23 08:00,2014-11-20 17:00,,PT_Normal,,,,,Dr9lqMcBQy2zghuteiYE2w,,,,Y,0,0,,,2013-02-16 15:53,2013-02-16 15:56,admin,admin
501463,6359,124670,13662,0,N,N,N,CP_Drtn,TT_Task,DT_FixedDUR2,TK_NotStart,DUKHCONI1BZ4SLGL7205,Sweet Soil Laying,8178,0,0,200,0,4102,4102,200,0,0,0,,,,2014-11-04 08:00,2014-12-02 17:00,,2014-11-04 08:00,2014-12-02 17:00,2014-11-04 08:00,2014-12-02 17:00,2014-11-04 08:00,2014-12-02 17:00,2014-11-04 08:00,2014-12-02 17:00,,PT_Normal,,,,,DYfei8gyQjCmyVyxKF4JbQ,,,,Y,0,0,,,2013-02-16 15:53,2013-02-16 15:56,admin,admin
501464,6359,124671,13662,0,N,N,N,CP_Drtn,TT_Task,DT_FixedDUR2,TK_NotStart,DUKHCONI1BZ4FFGL5185,Excavation for firefighting line,8177,0,0,200,0,190,190,200,100,0,100,,,,2014-06-23 08:00,2014-07-21 17:00,,2014-06-23 08:00,2014-07-21 17:00,2014-06-23 08:00,2014-07-21 17:00,2014-06-23 08:00,2014-07-21 17:00,2014-06-23 08:00,2014-07-21 17:00,,PT_Normal,,,,,bpPsO8mMQLGiv+IbSoIOSQ,,,,Y,0,0,,,2013-02-16 15:53,2013-02-16 15:56,admin,admin
501465,6359,124671,13662,0,N,N,N,CP_Drtn,TT_Task,DT_FixedDUR2,TK_NotStart,DUKHCONI1BZ4FFGL5190,Laying of firefighting line,8178,0,0,200,0,210,210,200,0,0,0,,,,2014-07-01 08:00,2014-07-29 17:00,,2014-07-01 08:00,2014-07-29 17:00,2014-07-01 08:00,2014-07-29 17:00,2014-07-01 08:00,2014-07-29 17:00,2014-07-01 08:00,2014-07-29 17:00,,PT_Normal,,,,,RPyDG91YTU69lLFZSCxJQg,,,,Y,0,0,,,2013-02-16 15:53,2013-02-16 15:56,admin,admin
501466,6359,124671,13662,0,N,N,N,CP_Drtn,TT_Task,DT_FixedDUR2,TK_NotStart,DUKHCONI1BZ4FFGL5195,Testing of firefighting line,8178,0,0,200,0,50.4,50.4,200,0,0,0,,,,2014-07-07 08:00,2014-08-07 17:00,,2014-07-07 08:00,2014-08-07 17:00,2014-07-07 08:00,2014-08-07 17:00,2014-07-07 08:00,2014-08-07 17:00,2014-07-07 08:00,2014-08-07 17:00,,PT_Normal,,,,,kgDz2SutScKCsBV6MXF6vw,,,,Y,0,0,,,2013-02-16 15:53,2013-02-16 15:56,admin,admin
501467,6359,124671,13662,0,N,N,N,CP_Drtn,TT_Task,DT_FixedDUR2,TK_NotStart,DUKHCONI1BZ4FFGL5200,Backfilling firefighting line,8177,0,0,200,0,311,311,200,275,0,275,,,,2014-07-13 08:00,2014-08-13 17:00,,2014-07-13 08:00,2014-08-13 17:00,2014-07-13 08:00,2014-08-13 17:00,2014-07-13 08:00,2014-08-13 17:00,2014-07-13 08:00,2014-08-13 17:00,,PT_Normal,,,,,jINHCMhjTy2LQ1GmVFieEA,,,,Y,0,0,,,2013-02-16 15:53,2013-02-16 15:56,admin,admin
501468,6359,124671,13662,0,N,N,N,CP_Drtn,TT_Task,DT_FixedDUR2,TK_NotStart,DUKHCONI1BZ4FFGL5205,Construction of valve chambers & Thrust Blocks,8165,176,0,200,0,266,266,200,0,0,0,,,,2014-08-17 08:00,2014-09-14 17:00,,2014-07-19 08:00,2014-08-19 17:00,2014-07-19 08:00,2014-08-19 17:00,2014-07-19 08:00,2014-08-19 17:00,2014-08-17 08:00,2014-09-14 17:00,,PT_Normal,,,,,wmY8Fbw0SoCHrMy4KaI06A,,,,N,0,0,,,2013-02-16 15:53,2013-02-16 15:56,admin,admin
501469,6359,124671,13662,0,N,N,N,CP_Drtn,TT_Task,DT_FixedDUR2,TK_NotStart,DUKHCONI1BZ4FFGL5210,Connection with existing Firewater System,8178,176,0,200,0,84,84,200,0,0,0,,,,2014-08-23 08:00,2014-09-20 17:00,,2014-07-24 08:00,2014-08-25 17:00,2014-07-24 08:00,2014-08-25 17:00,2014-07-24 08:00,2014-08-25 17:00,2014-08-23 08:00,2014-09-20 17:00,,PT_Normal,,,,,U/dqGpjbSR2x90SM59ARnQ,,,,N,0,0,,,2013-02-16 15:53,2013-02-16 15:56,admin,admin
501470,6359,124672,13662,0,N,N,N,CP_Drtn,TT_Task,DT_FixedDUR2,TK_NotStart,DUKHCONI1BZ4WSGL5180,"Installation of meter ,Accessories & Connection",8178,232,56,160,0,50.4,50.4,160,0,0,0,,,,2014-08-28 08:00,2014-09-20 17:00,,2014-07-22 08:00,2014-08-17 17:00,2014-07-22 08:00,2014-08-17 17:00,2014-07-22 08:00,2014-08-17 17:00,2014-08-28 08:00,2014-09-20 17:00,,PT_Normal,,,,,l5hyv3DMQMS95hc38uMvzA,,,,N,0,0,,,2013-02-16 15:53,2013-02-16 15:56,admin,admin
501471,6359,124672,13662,0,N,N,N,CP_Drtn,TT_Task,DT_FixedDUR2,TK_NotStart,DUKHCONI1BZ4WSGL5155,Excavation for water line,8177,0,0,200,0,425,425,200,251,0,251,,,,2014-05-31 08:00,2014-06-28 17:00,,2014-05-31 08:00,2014-06-28 17:00,2014-05-31 08:00,2014-06-28 17:00,2014-05-31 08:00,2014-06-28 17:00,2014-05-31 08:00,2014-06-28 17:00,,PT_Normal,,,,,oi/zLTdMRUKL0XDA6kHU3g,,,,Y,0,0,,,2013-02-16 15:53,2013-02-16 15:56,admin,admin
501472,6359,124672,13662,0,N,N,N,CP_Drtn,TT_Task,DT_FixedDUR2,TK_NotStart,DUKHCONI1BZ4WSGL5160,Laying of water line,8178,0,0,200,0,319.2,319.2,200,0,0,0,,,,2014-06-05 08:00,2014-07-03 17:00,,2014-06-05 08:00,2014-07-03 17:00,2014-06-05 08:00,2014-07-03 17:00,2014-06-05 08:00,2014-07-03 17:00,2014-06-05 08:00,2014-07-03 17:00,,PT_Normal,,,,,gcWktnH2QTq7Om6fJm22uQ,,,,Y,0,0,,,2013-02-16 15:53,2013-02-23 09:03,admin,admin
501473,6359,124672,13662,0,N,N,N,CP_Drtn,TT_Task,DT_FixedDUR2,TK_NotStart,DUKHCONI1BZ4WSGL5165,Testing of potable water line,8178,0,0,200,0,100.8,100.8,200,0,0,0,,,,2014-06-11 08:00,2014-07-09 17:00,,2014-06-11 08:00,2014-07-09 17:00,2014-06-11 08:00,2014-07-09 17:00,2014-06-11 08:00,2014-07-09 17:00,2014-06-11 08:00,2014-07-09 17:00,,PT_Normal,,,,,o2FKmXcRSVm2D6HmhLYsXg,,,,Y,0,0,,,2013-02-16 15:53,2013-02-16 15:56,admin,admin
501474,6359,124672,13662,0,N,N,N,CP_Drtn,TT_Task,DT_FixedDUR2,TK_NotStart,DUKHCONI1BZ4WSGL5170,Backfilling potable water line,8177,0,0,200,0,347,347,200,275,0,275,,,,2014-06-17 08:00,2014-07-15 17:00,,2014-06-17 08:00,2014-07-15 17:00,2014-06-17 08:00,2014-07-15 17:00,2014-06-17 08:00,2014-07-15 17:00,2014-06-17 08:00,2014-07-15 17:00,,PT_Normal,,,,,o35O0+50RbG2YRB8NFtCQw,,,,Y,0,0,,,2013-02-16 15:53,2013-02-16 15:56,admin,admin
501475,6359,124672,13662,0,N,N,N,CP_Drtn,TT_Task,DT_FixedDUR2,TK_NotStart,DUKHCONI1BZ4WSGL5175,Construction of valve chambers & Thrust Blocks,8172,232,0,200,0,88,88,200,0,0,0,,,,2014-07-27 08:00,2014-08-27 17:00,,2014-06-23 08:00,2014-07-21 17:00,2014-06-23 08:00,2014-07-21 17:00,2014-06-23 08:00,2014-07-21 17:00,2014-07-27 08:00,2014-08-27 17:00,,PT_Normal,,,,,o6m6pj3rTs6fc5qHhXvRAw,,,,N,0,0,,,2013-02-16 15:53,2013-02-16 15:56,admin,admin
501476,6359,124673,13662,0,N,N,N,CP_Drtn,TT_Task,DT_FixedDUR2,TK_NotStart,DUKHCONI1BZ4TCGL5295,Excavation Telecommunication trenches,8177,0,0,160,0,356,356,160,200,0,200,,,,2014-08-17 08:00,2014-09-08 17:00,,2014-08-17 08:00,2014-09-08 17:00,2014-08-17 08:00,2014-09-08 17:00,2014-08-17 08:00,2014-09-08 17:00,2014-08-17 08:00,2014-09-08 17:00,,PT_Normal,,,,,M+n3LPX+TOi2YzyjPuPq+g,,,,Y,0,0,,,2013-02-16 15:53,2013-02-16 15:56,admin,admin
501477,6359,124673,13662,0,N,N,N,CP_Drtn,TT_Task,DT_FixedDUR2,TK_NotStart,DUKHCONI1BZ4TCGL5300,Laying of cables,8178,0,0,160,0,727.2,727.2,160,0,0,0,,,,2014-08-23 08:00,2014-09-14 17:00,,2014-08-23 08:00,2014-09-14 17:00,2014-08-23 08:00,2014-09-14 17:00,2014-08-23 08:00,2014-09-14 17:00,2014-08-23 08:00,2014-09-14 17:00,,PT_Normal,,,,,+Fl52df3Tm60aLhFTxixpA,,,,Y,0,0,,,2013-02-16 15:53,2013-02-16 15:56,admin,admin
501478,6359,124673,13662,0,N,N,N,CP_Drtn,TT_Task,DT_FixedDUR2,TK_NotStart,DUKHCONI1BZ4TCGL5305,Backfilling telecommunication trench,8177,0,0,160,0,286,286,160,220,0,220,,,,2014-08-28 08:00,2014-09-20 17:00,,2014-08-28 08:00,2014-09-20 17:00,2014-08-28 08:00,2014-09-20 17:00,2014-08-28 08:00,2014-09-20 17:00,2014-08-28 08:00,2014-09-20 17:00,,PT_Normal,,,,,aSZAuiaITvaNgUVSfBuVdQ,,,,Y,0,0,,,2013-02-16 15:53,2013-02-16 15:56,admin,admin
501479,6359,124673,13662,0,N,N,N,CP_Drtn,TT_Task,DT_FixedDUR2,TK_NotStart,DUKHCONI1BZ4TCGL5310,Connection & Installation,8178,248,136,160,0,271.2,271.2,160,0,0,0,,,,2014-10-18 08:00,2014-11-09 17:00,,2014-09-09 08:00,2014-10-01 17:00,2014-09-09 08:00,2014-10-01 17:00,2014-09-09 08:00,2014-10-01 17:00,2014-10-18 08:00,2014-11-09 17:00,,PT_Normal,,,,,0OIHyyUZRkOwf8/Ynyo0Bw,,,,N,0,0,,,2013-02-16 15:53,2013-02-23 09:03,admin,admin
501480,6359,124674,13662,0,N,N,N,CP_Drtn,TT_Task,DT_FixedDUR2,TK_NotStart,DUKHCONI1BZ4STGL5235,Excavation for Street lighting,8177,0,0,200,0,69,69,200,51,0,51,,,,2014-07-21 08:00,2014-08-21 17:00,,2014-07-21 08:00,2014-08-21 17:00,2014-07-21 08:00,2014-08-21 17:00,2014-07-21 08:00,2014-08-21 17:00,2014-07-21 08:00,2014-08-21 17:00,,PT_Normal,,,,,lkx19wDxQ9uk2dDt8DRymw,,,,Y,0,0,,,2013-02-16 15:53,2013-02-16 15:56,admin,admin
501481,6359,124674,13662,0,N,N,N,CP_Drtn,TT_Task,DT_FixedDUR2,TK_NotStart,DUKHCONI1BZ4STGL5240,Construction of Duct Banks,8178,0,0,200,0,1494,1494,200,0,0,0,,,,2014-07-27 08:00,2014-08-27 17:00,,2014-07-27 08:00,2014-08-27 17:00,2014-07-27 08:00,2014-08-27 17:00,2014-07-27 08:00,2014-08-27 17:00,2014-07-27 08:00,2014-08-27 17:00,,PT_Normal,,,,,uavSjfs8RcCZsSwbqiB4Ug,,,,Y,0,0,,,2013-02-16 15:53,2013-02-16 15:56,admin,admin
501482,6359,124674,13662,0,N,N,N,CP_Drtn,TT_Task,DT_FixedDUR2,TK_NotStart,DUKHCONI1BZ4STGL5245,Construction of Foundation,8172,0,0,200,0,630,630,200,0,0,0,,,,2014-07-27 08:00,2014-08-27 17:00,,2014-07-27 08:00,2014-08-27 17:00,2014-07-27 08:00,2014-08-27 17:00,2014-07-27 08:00,2014-08-27 17:00,2014-07-27 08:00,2014-08-27 17:00,,PT_Normal,,,,,Oun2sd+VSZ6DS01423HknA,,,,Y,0,0,,,2013-02-16 15:53,2013-02-16 15:56,admin,admin
501483,6359,124674,13662,0,N,N,N,CP_Drtn,TT_Task,DT_FixedDUR2,TK_NotStart,DUKHCONI1BZ4STGL5250,Backfilling Street Lighting,8177,0,0,200,0,122,122,200,110,0,110,,,,2014-08-05 08:00,2014-09-02 17:00,,2014-08-05 08:00,2014-09-02 17:00,2014-08-05 08:00,2014-09-02 17:00,2014-08-05 08:00,2014-09-02 17:00,2014-08-05 08:00,2014-09-02 17:00,,PT_Normal,,,,,77NfZhKTRFGII7Eu+omAnQ,,,,Y,0,0,,,2013-02-16 15:53,2013-02-16 15:56,admin,admin
501484,6359,124674,13662,0,N,N,N,CP_Drtn,TT_Task,DT_FixedDUR2,TK_NotStart,DUKHCONI1BZ4STGL5255,Installation of light Post,8178,432,160,200,0,216,216,200,0,0,0,,,,2014-10-21 08:00,2014-11-18 17:00,,2014-08-17 08:00,2014-09-14 17:00,2014-08-17 08:00,2014-09-14 17:00,2014-08-17 08:00,2014-09-14 17:00,2014-10-21 08:00,2014-11-18 17:00,,PT_Normal,,,,,etX3Ym8DTNGN9/7DAl2UtA,,,,N,0,0,,,2013-02-16 15:53,2013-02-16 15:56,admin,admin
501485,6359,124674,13662,0,N,N,N,CP_Drtn,TT_Task,DT_FixedDUR2,TK_NotStart,DUKHCONI1BZ4STGL5260,Electrical Works,8178,272,0,200,0,1039.6,1039.6,200,0,0,0,,,,2014-10-29 08:00,2014-11-26 17:00,,2014-09-17 08:00,2014-10-18 17:00,2014-09-17 08:00,2014-10-18 17:00,2014-09-17 08:00,2014-10-18 17:00,2014-10-29 08:00,2014-11-26 17:00,,PT_Normal,,,,,jvWdigBPRsOm+OYUG1YTXA,,,,N,0,0,,,2013-02-16 15:53,2013-02-16 15:56,admin,admin
501486,6359,124675,13662,0,N,N,N,CP_Drtn,TT_Task,DT_FixedDUR2,TK_NotStart,DUKHCONI1BZ4DRGL5115,Excavation for Drainage line,8177,120,0,200,0,419,419,200,251,0,251,,,,2014-04-16 08:00,2014-05-14 17:00,,2014-03-30 08:00,2014-04-27 17:00,2014-03-30 08:00,2014-04-27 17:00,2014-03-30 08:00,2014-04-27 17:00,2014-04-16 08:00,2014-05-14 17:00,,PT_Normal,,,,,wh1kvTI2QD6nXWJsRMP8zQ,,,,N,0,0,,,2013-02-16 15:53,2013-02-16 15:56,admin,admin
501487,6359,124675,13662,0,N,N,N,CP_Drtn,TT_Task,DT_FixedDUR2,TK_NotStart,DUKHCONI1BZ4DRGL5120,Laying of Drainage line,8178,120,0,200,0,265.2,265.2,200,0,0,0,,,,2014-04-23 08:00,2014-05-21 17:00,,2014-04-06 08:00,2014-05-04 17:00,2014-04-06 08:00,2014-05-04 17:00,2014-04-06 08:00,2014-05-04 17:00,2014-04-23 08:00,2014-05-21 17:00,,PT_Normal,,,,,FeEekZPDTcSyUj3OSE1GYw,,,,N,0,0,,,2013-02-16 15:53,2013-02-23 09:03,admin,admin
501488,6359,124675,13662,0,N,N,N,CP_Drtn,TT_Task,DT_FixedDUR2,TK_NotStart,DUKHCONI1BZ4DRGL5125,Testing of Drainage line,8178,120,0,200,0,134.4,134.4,200,0,0,0,,,,2014-05-01 08:00,2014-05-29 17:00,,2014-04-14 08:00,2014-05-12 17:00,2014-04-14 08:00,2014-05-12 17:00,2014-04-14 08:00,2014-05-12 17:00,2014-05-01 08:00,2014-05-29 17:00,,PT_Normal,,,,,/iGb0wmvT/mlMjEMpA+b+A,,,,N,0,0,,,2013-02-16 15:53,2013-02-16 15:56,admin,admin
501489,6359,124675,13662,0,N,N,N,CP_Drtn,TT_Task,DT_FixedDUR2,TK_NotStart,DUKHCONI1BZ4DRGL5130,Backfilling Drainage line,8177,120,0,120,0,315,315,120,248.999688,0,248.999688,,,,2014-05-19 08:00,2014-06-04 17:00,,2014-05-01 08:00,2014-05-18 17:00,2014-05-01 08:00,2014-05-18 17:00,2014-05-01 08:00,2014-05-18 17:00,2014-05-19 08:00,2014-06-04 17:00,,PT_Normal,,,,,AcIZEQheQpKIP98yhzeR5Q,,,,N,0,0,,,2013-02-16 15:53,2013-02-16 15:56,admin,admin
501490,6359,124676,13662,0,N,N,N,CP_Drtn,TT_Task,DT_FixedDUR2,TK_NotStart,DUKHCONI1BZ4PSGL7000,Excavation,8177,96,40,120,0,163,163,120,90.999832,0,90.999832,,,,2014-11-17 08:00,2014-12-03 17:00,,2014-11-03 08:00,2014-11-19 17:00,2014-11-03 08:00,2014-11-19 17:00,2014-11-03 08:00,2014-11-19 17:00,2014-11-17 08:00,2014-12-03 17:00,,PT_Normal,,,,,KBflIrE1QCuAiML0BaIPuQ,,,,N,0,0,,,2013-02-16 15:53,2013-02-16 15:56,admin,admin
501491,6359,124676,13662,0,N,N,N,CP_Drtn,TT_Task,DT_FixedDUR2,TK_NotStart,DUKHCONI1BZ4PSGL7005,Foundation casting,8165,56,8,120,0,302,302,120,0,0,0,,,,2014-11-23 08:00,2014-12-09 17:00,,2014-11-15 08:00,2014-12-01 17:00,2014-11-15 08:00,2014-12-01 17:00,2014-11-15 08:00,2014-12-01 17:00,2014-11-23 08:00,2014-12-09 17:00,,PT_Normal,,,,,3YjLnnfZSM2SrG3dbb2wNw,,,,N,0,0,,,2013-02-16 15:53,2013-02-16 15:56,admin,admin
501492,6359,124676,13662,0,N,N,N,CP_Drtn,TT_Task,DT_FixedDUR2,TK_NotStart,DUKHCONI1BZ4PSGL7010,"Column, Frame&  Fabrics  Erection",8178,48,0,200,0,314,314,200,0,0,0,,,,2014-12-04 08:00,2015-01-03 17:00,,2014-11-27 08:00,2014-12-27 17:00,2014-11-27 08:00,2014-12-27 17:00,2014-11-27 08:00,2014-12-27 17:00,2014-12-04 08:00,2015-01-03 17:00,,PT_Normal,,,,,1khut1XtTUC80UaROknzYg,,,,N,0,0,,,2013-02-16 15:53,2013-02-16 15:56,admin,admin
501493,6359,124676,13662,0,N,N,N,CP_Drtn,TT_Task,DT_FixedDUR2,TK_NotStart,DUKHCONI1BZ4PSGL7015,Electrical Works-Parking Shed,8178,48,48,200,0,51.6,51.6,200,0,0,0,,,,2014-12-10 08:00,2015-01-08 17:00,,2014-12-03 08:00,2015-01-01 17:00,2014-12-03 08:00,2015-01-01 17:00,2014-12-03 08:00,2015-01-01 17:00,2014-12-10 08:00,2015-01-08 17:00,,PT_Normal,,,,,oIEPFEd0SpGEhoxAGmpoJA,,,,N,0,0,,,2013-02-16 15:53,2013-02-16 15:56,admin,admin
501494,6359,124677,13662,0,N,N,N,CP_Drtn,TT_Task,DT_FixedDUR2,TK_NotStart,DUKHCONI1BZ4ELGL5215,Excavation Cable  Trenches  & Duct Banks,8177,0,0,200,0,2772,2772,200,876,0,876,,,,2014-07-21 08:00,2014-08-21 17:00,,2014-07-21 08:00,2014-08-21 17:00,2014-07-21 08:00,2014-08-21 17:00,2014-07-21 08:00,2014-08-21 17:00,2014-07-21 08:00,2014-08-21 17:00,,PT_Normal,,,,,QwK6h+MyRQSrgDOcblQbXg,,,,Y,0,0,,,2013-02-16 15:53,2013-02-16 15:56,admin,admin
501495,6359,124677,13662,0,N,N,N,CP_Drtn,TT_Task,DT_FixedDUR2,TK_NotStart,DUKHCONI1BZ4ELGL5220,Laying of electrical cables,8178,56,0,200,0,4487.2,4487.2,200,0,0,0,,,,2014-08-07 08:00,2014-09-04 17:00,,2014-07-27 08:00,2014-08-27 17:00,2014-07-27 08:00,2014-08-27 17:00,2014-07-27 08:00,2014-08-27 17:00,2014-08-07 08:00,2014-09-04 17:00,,PT_Normal,,,,,sDAXgxIbRrOm8GQKKyOZ5Q,,,,N,0,0,,,2013-02-16 15:53,2013-02-23 09:03,admin,admin
501496,6359,124677,13662,0,N,N,N,CP_Drtn,TT_Task,DT_FixedDUR2,TK_NotStart,DUKHCONI1BZ4ELGL5225,Backfilling Electrical trench,8177,56,0,200,0,1862,1862,200,1100,0,1100,,,,2014-08-16 08:00,2014-09-13 17:00,,2014-08-07 08:00,2014-09-04 17:00,2014-08-07 08:00,2014-09-04 17:00,2014-08-07 08:00,2014-09-04 17:00,2014-08-16 08:00,2014-09-13 17:00,,PT_Normal,,,,,YVhQsTUdRz6kgymsx06Bjg,,,,N,0,0,,,2013-02-16 15:53,2013-02-16 15:56,admin,admin
501497,6359,124677,13662,0,N,N,N,CP_Drtn,TT_Task,DT_FixedDUR2,TK_NotStart,DUKHCONI1BZ4ELGL5230,Construction of Submain Board & Feeder Pillar,8165,272,0,200,0,276,276,200,0,0,0,,,,2014-09-28 08:00,2014-10-28 17:00,,2014-08-19 08:00,2014-09-16 17:00,2014-08-19 08:00,2014-09-16 17:00,2014-08-19 08:00,2014-09-16 17:00,2014-09-28 08:00,2014-10-28 17:00,,PT_Normal,,,,,ODSVIdLPTSeWcBukmNIX4Q,,,,N,0,0,,,2013-02-16 15:53,2013-02-16 15:56,admin,admin
501498,6359,124678,13662,0,N,N,N,CP_Drtn,TT_Task,DT_FixedDUR2,TK_NotStart,DUKHCONI1BZ4BWGL5315,Construction of Boundary Wall (Ht-3m),8165,240,0,200,0,196,196,200,0,0,0,,,,2014-09-21 08:00,2014-10-21 17:00,,2014-08-17 08:00,2014-09-14 17:00,2014-08-17 08:00,2014-09-14 17:00,2014-08-17 08:00,2014-09-14 17:00,2014-09-21 08:00,2014-10-21 17:00,,PT_Normal,,,,,coYyPsNkRt6ASxd6rHNb5A,,,,N,0,0,,,2013-02-16 15:53,2013-02-16 15:56,admin,admin
501499,6359,124678,13662,0,N,N,N,CP_Drtn,TT_Task,DT_FixedDUR2,TK_NotStart,DUKHCONI1BZ4BWGL5320,"Install.Steel Gate,Entance Barrier (3m Wall)",8178,240,0,200,0,14,14,200,0,0,0,,,,2014-10-07 08:00,2014-11-06 17:00,,2014-09-02 08:00,2014-09-30 17:00,2014-09-02 08:00,2014-09-30 17:00,2014-09-02 08:00,2014-09-30 17:00,2014-10-07 08:00,2014-11-06 17:00,,PT_Normal,,,,,AzsJYpk9Qie7ZAO57wmYYA,,,,N,0,0,,,2013-02-16 15:53,2013-02-16 15:56,admin,admin
501500,6359,124678,13662,0,N,N,N,CP_Drtn,TT_Task,DT_FixedDUR2,TK_NotStart,DUKHCONI1BZ4BWGL5325,Const. of Villa Front Boundary Wall (Ht-2m),8165,240,0,200,0,140,140,200,0,0,0,,,,2014-11-08 08:00,2014-12-06 17:00,,2014-10-01 08:00,2014-11-01 17:00,2014-10-01 08:00,2014-11-01 17:00,2014-10-01 08:00,2014-11-01 17:00,2014-11-08 08:00,2014-12-06 17:00,,PT_Normal,,,,,+kAhELV/Q2me+X3so6UjOQ,,,,N,0,0,,,2013-02-16 15:53,2013-02-16 15:56,admin,admin
501501,6359,124678,13662,0,N,N,N,CP_Drtn,TT_Task,DT_FixedDUR2,TK_NotStart,DUKHCONI1BZ4BWGL5330,Const. of Blockwork fence Wall (Ht-1.85m),8165,344,296,200,0,140,140,200,0,0,0,,,,2014-12-04 08:00,2015-01-03 17:00,,2014-10-15 08:00,2014-11-12 17:00,2014-10-15 08:00,2014-11-12 17:00,2014-10-15 08:00,2014-11-12 17:00,2014-12-04 08:00,2015-01-03 17:00,,PT_Normal,,,,,j71ReuHcQkO8GOop2TNQ/w,,,,N,0,0,,,2013-02-16 15:53,2013-02-16 15:56,admin,admin
501502,6359,124679,13662,0,N,N,N,CP_Drtn,TT_Task,DT_FixedDUR2,TK_NotStart,DUKHCONI1BZ4RWGL6000,Excavation & Earth Filling,8177,0,0,80,0,1150,1150,80,400,0,400,,,,2014-09-21 08:00,2014-10-01 17:00,,2014-09-21 08:00,2014-10-01 17:00,2014-09-21 08:00,2014-10-01 17:00,2014-09-21 08:00,2014-10-01 17:00,2014-09-21 08:00,2014-10-01 17:00,,PT_Normal,,,,,XblDjYqcQMm1yrfX6sCn3g,,,,Y,0,0,,,2013-02-16 15:53,2013-02-16 15:56,admin,admin
501503,6359,124679,13662,0,N,N,N,CP_Drtn,TT_Task,DT_FixedDUR2,TK_NotStart,DUKHCONI1BZ4RWGL6005,Laying of Sub Grade,8178,0,0,200,0,24,24,200,0,0,0,,,,2014-10-02 08:00,2014-11-02 17:00,,2014-10-02 08:00,2014-11-02 17:00,2014-10-02 08:00,2014-11-02 17:00,2014-10-02 08:00,2014-11-02 17:00,2014-10-02 08:00,2014-11-02 17:00,,PT_Normal,,,,,r5j/zGYTSO+HY3MVq/G4Ag,,,,Y,0,0,,,2013-02-16 15:53,2013-02-16 15:56,admin,admin
501504,6359,124679,13662,0,N,N,N,CP_Drtn,TT_Task,DT_FixedDUR2,TK_NotStart,DUKHCONI1BZ4RWGL6010,Laying of Precast Kerbs,8178,0,0,200,0,24,24,200,0,0,0,,,,2014-10-16 08:00,2014-11-13 17:00,,2014-10-16 08:00,2014-11-13 17:00,2014-10-16 08:00,2014-11-13 17:00,2014-10-16 08:00,2014-11-13 17:00,2014-10-16 08:00,2014-11-13 17:00,,PT_Normal,,,,,9iumzNifS3+R73YwUVOR/Q,,,,Y,0,0,,,2013-02-16 15:53,2013-02-16 15:56,admin,admin
501505,6359,124679,13662,0,N,N,N,CP_Drtn,TT_Task,DT_FixedDUR2,TK_NotStart,DUKHCONI1BZ4RWGL6015,Laying of Granular Sub Base Coarse,8173,0,0,160,0,1828,1828,160,600,0,600,,,,2014-10-28 08:00,2014-11-19 17:00,,2014-10-28 08:00,2014-11-19 17:00,2014-10-28 08:00,2014-11-19 17:00,2014-10-28 08:00,2014-11-19 17:00,2014-10-28 08:00,2014-11-19 17:00,,PT_Normal,,,,,a4JQTMjIQ7uRYmuTHGfcNw,,,,Y,0,0,,,2013-02-16 15:53,2013-02-16 15:56,admin,admin
501506,6359,124679,13662,0,N,N,N,CP_Drtn,TT_Task,DT_FixedDUR2,TK_NotStart,DUKHCONI1BZ4RWGL6020,Laying of Road Base Asphalt Concrete,8178,0,0,48,0,174,174,48,149.998947,0,149.998947,,,,2014-11-20 08:00,2014-11-26 17:00,,2014-11-20 08:00,2014-11-26 17:00,2014-11-20 08:00,2014-11-26 17:00,2014-11-20 08:00,2014-11-26 17:00,2014-11-20 08:00,2014-11-26 17:00,,PT_Normal,,,,,k2sfCHt8Tu+UrxyzRyrojA,,,,Y,0,0,,,2013-02-16 15:53,2013-02-16 15:56,admin,admin
501507,6359,124679,13662,0,N,N,N,CP_Drtn,TT_Task,DT_FixedDUR2,TK_NotStart,DUKHCONI1BZ4RWGL6025,Laying of Asphalt Wearing Coarse,8178,0,0,40,0,174,174,40,150,0,150,,,,2014-11-27 08:00,2014-12-02 17:00,,2014-11-27 08:00,2014-12-02 17:00,2014-11-27 08:00,2014-12-02 17:00,2014-11-27 08:00,2014-12-02 17:00,2014-11-27 08:00,2014-12-02 17:00,,PT_Normal,,,,,yfi0ODRcTH6bOvSi+ViVFw,,,,Y,0,0,,,2013-02-16 15:53,2013-02-16 15:56,admin,admin
501508,6359,124679,13662,0,N,N,N,CP_Drtn,TT_Task,DT_FixedDUR2,TK_NotStart,DUKHCONI1BZ4RWGL6030,Traffic Signage & Road Marking,8178,168,120,40,0,882,882,40,0,0,0,,,,2014-12-29 08:00,2015-01-03 17:00,,2014-12-03 08:00,2014-12-08 17:00,2014-12-03 08:00,2014-12-08 17:00,2014-12-03 08:00,2014-12-08 17:00,2014-12-29 08:00,2015-01-03 17:00,,PT_Normal,,,,,SK8SsjYfTuiKokPRpCNQPg,,,,N,0,0,,,2013-02-16 15:53,2013-02-16 15:56,admin,admin
501509,6359,124682,13662,0,N,N,N,CP_Drtn,TT_Task,DT_FixedDUR2,TK_NotStart,DUKHCONI1BZ1SAGL5135,Construction of manholes Drainage,8177,472,80,200,0,6,6,200,0,0,0,,,,2014-03-09 08:00,2014-04-06 17:00,,2013-12-29 08:00,2014-01-26 17:00,2013-12-29 08:00,2014-01-26 17:00,2013-12-29 08:00,2014-01-26 17:00,2014-03-09 08:00,2014-04-06 17:00,,PT_Normal,,,,,6KjaqcDgQFGjqNOqkbFZDw,,,,N,0,0,,,2013-02-16 15:53,2013-02-16 15:56,admin,admin
501510,6359,124682,13662,0,N,N,N,CP_Drtn,TT_Task,DT_FixedDUR2,TK_NotStart,DUKHCONI1BZ1SAGL5140,Construction of soakaways,8172,0,0,200,0,190,190,200,0,0,0,,,,2013-12-29 08:00,2014-01-26 17:00,,2013-12-29 08:00,2014-01-26 17:00,2013-12-29 08:00,2014-01-26 17:00,2013-12-29 08:00,2014-01-26 17:00,2013-12-29 08:00,2014-01-26 17:00,,PT_Normal,,,,,30ePbo/wQ4Wt80ki7FFSUA,,,,Y,0,0,,,2013-02-16 15:53,2013-02-16 15:56,admin,admin
501511,6359,124682,13662,0,N,N,N,CP_Drtn,TT_Task,DT_FixedDUR2,TK_NotStart,DUKHCONI1BZ1SAGL5145,Construction of Road gullies,8172,0,0,200,0,176,176,200,0,0,0,,,,2014-01-27 08:00,2014-02-25 17:00,,2014-01-27 08:00,2014-02-25 17:00,2014-01-27 08:00,2014-02-25 17:00,2014-01-27 08:00,2014-02-25 17:00,2014-01-27 08:00,2014-02-25 17:00,,PT_Normal,,,,,YxUDIhA2SJSj54blU+j4Sw,,,,Y,0,0,,,2013-02-16 15:53,2013-02-16 15:56,admin,admin
501512,6359,124682,13662,0,N,N,N,CP_Drtn,TT_Task,DT_FixedDUR2,TK_NotStart,DUKHCONI1BZ1SAGL5150,Connection with existing sewer manhole,8177,272,272,160,0,6,6,160,0,0,0,,,,2014-04-07 08:00,2014-04-29 17:00,,2014-02-26 08:00,2014-03-20 17:00,2014-02-26 08:00,2014-03-20 17:00,2014-02-26 08:00,2014-03-20 17:00,2014-04-07 08:00,2014-04-29 17:00,,PT_Normal,,,,,R/DUpmQVQn23L5GWhYo9OQ,,,,N,0,0,,,2013-02-16 15:53,2013-02-16 15:56,admin,admin
501513,6359,124683,13662,0,N,N,N,CP_Drtn,TT_Task,DT_FixedDUR2,TK_NotStart,DUKHCONI1BZ1TCGL5295,Excavation Telecommunication trenches,8177,0,0,160,0,356,356,160,200,0,200,,,,2014-03-26 08:00,2014-04-17 17:00,,2014-03-26 08:00,2014-04-17 17:00,2014-03-26 08:00,2014-04-17 17:00,2014-03-26 08:00,2014-04-17 17:00,2014-03-26 08:00,2014-04-17 17:00,,PT_Normal,,,,,sRJQwtdBQwi9drEMcf+ujg,,,,Y,0,0,,,2013-02-16 15:53,2013-02-16 15:56,admin,admin
501514,6359,124683,13662,0,N,N,N,CP_Drtn,TT_Task,DT_FixedDUR2,TK_NotStart,DUKHCONI1BZ1TCGL5300,Laying of cables,8178,0,0,160,0,727.2,727.2,160,0,0,0,,,,2014-04-01 08:00,2014-04-23 17:00,,2014-04-01 08:00,2014-04-23 17:00,2014-04-01 08:00,2014-04-23 17:00,2014-04-01 08:00,2014-04-23 17:00,2014-04-01 08:00,2014-04-23 17:00,,PT_Normal,,,,,TYiCSZCNQN2H165x12WR/w,,,,Y,0,0,,,2013-02-16 15:53,2013-02-16 15:56,admin,admin
501515,6359,124683,13662,0,N,N,N,CP_Drtn,TT_Task,DT_FixedDUR2,TK_NotStart,DUKHCONI1BZ1TCGL5305,Backfilling telecommunication trench,8177,0,0,160,0,286,286,160,220,0,220,,,,2014-04-07 08:00,2014-04-29 17:00,,2014-04-07 08:00,2014-04-29 17:00,2014-04-07 08:00,2014-04-29 17:00,2014-04-07 08:00,2014-04-29 17:00,2014-04-07 08:00,2014-04-29 17:00,,PT_Normal,,,,,1jigVh3TTlmeNbMqxfaD3A,,,,Y,0,0,,,2013-02-16 15:53,2013-02-16 15:56,admin,admin
501516,6359,124683,13662,0,N,N,N,CP_Drtn,TT_Task,DT_FixedDUR2,TK_NotStart,DUKHCONI1BZ1TCGL5310,Connection & Installation,8178,728,160,160,0,271.2,271.2,160,0,0,0,,,,2014-08-06 08:00,2014-08-28 17:00,,2014-04-19 08:00,2014-05-11 17:00,2014-04-19 08:00,2014-05-11 17:00,2014-04-19 08:00,2014-05-11 17:00,2014-08-06 08:00,2014-08-28 17:00,,PT_Normal,,,,,APNiQnlrRz60dbzxAqkppQ,,,,N,0,0,,,2013-02-16 15:53,2013-02-23 09:03,admin,admin
501517,6359,124684,13662,0,N,N,N,CP_Drtn,TT_Task,DT_FixedDUR2,TK_NotStart,DUKHCONI1BZ1DRGL5115,Excavation for Drainage line,8177,0,0,200,0,419,419,200,251,0,251,,,,2013-11-25 08:00,2013-12-24 17:00,,2013-11-25 08:00,2013-12-24 17:00,2013-11-25 08:00,2013-12-24 17:00,2013-11-25 08:00,2013-12-24 17:00,2013-11-25 08:00,2013-12-24 17:00,,PT_Normal,,,,,P46G2VGhQAi4EYd7i8Y0hA,,,,Y,0,0,,,2013-02-16 15:53,2013-02-16 15:56,admin,admin
501518,6359,124684,13662,0,N,N,N,CP_Drtn,TT_Task,DT_FixedDUR2,TK_NotStart,DUKHCONI1BZ1DRGL5120,Laying of Drainage line,8178,0,0,200,0,265.2,265.2,200,0,0,0,,,,2013-12-02 08:00,2013-12-31 17:00,,2013-12-02 08:00,2013-12-31 17:00,2013-12-02 08:00,2013-12-31 17:00,2013-12-02 08:00,2013-12-31 17:00,2013-12-02 08:00,2013-12-31 17:00,,PT_Normal,,,,,q6JIvoV0SfKBy3N1rqm7MA,,,,Y,0,0,,,2013-02-16 15:53,2013-02-23 09:03,admin,admin
501519,6359,124684,13662,0,N,N,N,CP_Drtn,TT_Task,DT_FixedDUR2,TK_NotStart,DUKHCONI1BZ1DRGL5125,Testing of Drainage line,8178,0,0,200,0,134.4,134.4,200,0,0,0,,,,2013-12-10 08:00,2014-01-08 17:00,,2013-12-10 08:00,2014-01-08 17:00,2013-12-10 08:00,2014-01-08 17:00,2013-12-10 08:00,2014-01-08 17:00,2013-12-10 08:00,2014-01-08 17:00,,PT_Normal,,,,,rjCfM307TAeGLE+7H9vv3Q,,,,Y,0,0,,,2013-02-16 15:53,2013-02-16 15:56,admin,admin
501520,6359,124684,13662,0,N,N,N,CP_Drtn,TT_Task,DT_FixedDUR2,TK_NotStart,DUKHCONI1BZ1DRGL5130,Backfilling Drainage line,8177,0,0,120,0,315,315,120,248.999688,0,248.999688,,,,2013-12-29 08:00,2014-01-14 17:00,,2013-12-29 08:00,2014-01-14 17:00,2013-12-29 08:00,2014-01-14 17:00,2013-12-29 08:00,2014-01-14 17:00,2013-12-29 08:00,2014-01-14 17:00,,PT_Normal,,,,,/nFK/T++S/KaxCyS9JTtBQ,,,,Y,0,0,,,2013-02-16 15:53,2013-02-16 15:56,admin,admin
501521,6359,124685,13662,0,N,N,N,CP_Drtn,TT_Task,DT_FixedDUR2,TK_NotStart,DUKHCONI1BZ1STGL5235,Excavation for Street lighting,8177,0,0,200,0,69,69,200,51,0,51,,,,2014-03-03 08:00,2014-03-31 17:00,,2014-03-03 08:00,2014-03-31 17:00,2014-03-03 08:00,2014-03-31 17:00,2014-03-03 08:00,2014-03-31 17:00,2014-03-03 08:00,2014-03-31 17:00,,PT_Normal,,,,,IcAeZQLaQBaChlqhnIUzUQ,,,,Y,0,0,,,2013-02-16 15:53,2013-02-16 15:56,admin,admin
501522,6359,124685,13662,0,N,N,N,CP_Drtn,TT_Task,DT_FixedDUR2,TK_NotStart,DUKHCONI1BZ1STGL5240,Construction of Duct Banks,8178,0,0,200,0,1494,1494,200,0,0,0,,,,2014-03-09 08:00,2014-04-06 17:00,,2014-03-09 08:00,2014-04-06 17:00,2014-03-09 08:00,2014-04-06 17:00,2014-03-09 08:00,2014-04-06 17:00,2014-03-09 08:00,2014-04-06 17:00,,PT_Normal,,,,,nOsDm2OvSSGpJRgNNWECoA,,,,Y,0,0,,,2013-02-16 15:53,2013-02-16 15:56,admin,admin
501523,6359,124685,13662,0,N,N,N,CP_Drtn,TT_Task,DT_FixedDUR2,TK_NotStart,DUKHCONI1BZ1STGL5245,Construction of Foundation,8172,0,0,200,0,630,630,200,0,0,0,,,,2014-03-09 08:00,2014-04-06 17:00,,2014-03-09 08:00,2014-04-06 17:00,2014-03-09 08:00,2014-04-06 17:00,2014-03-09 08:00,2014-04-06 17:00,2014-03-09 08:00,2014-04-06 17:00,,PT_Normal,,,,,JPwamGVKQFqKKkP+5gGXdA,,,,Y,0,0,,,2013-02-16 15:53,2013-02-16 15:56,admin,admin
501524,6359,124685,13662,0,N,N,N,CP_Drtn,TT_Task,DT_FixedDUR2,TK_NotStart,DUKHCONI1BZ1STGL5250,Backfilling Street Lighting,8177,0,0,200,0,122,122,200,110,0,110,,,,2014-03-15 08:00,2014-04-12 17:00,,2014-03-15 08:00,2014-04-12 17:00,2014-03-15 08:00,2014-04-12 17:00,2014-03-15 08:00,2014-04-12 17:00,2014-03-15 08:00,2014-04-12 17:00,,PT_Normal,,,,,yUpXarHxT5CMWzhf1/oDsQ,,,,Y,0,0,,,2013-02-16 15:53,2013-02-16 15:56,admin,admin
501525,6359,124685,13662,0,N,N,N,CP_Drtn,TT_Task,DT_FixedDUR2,TK_NotStart,DUKHCONI1BZ1STGL5255,Installation of light Post,8178,792,120,200,0,216,216,200,0,0,0,,,,2014-07-20 08:00,2014-08-20 17:00,,2014-03-26 08:00,2014-04-23 17:00,2014-03-26 08:00,2014-04-23 17:00,2014-03-26 08:00,2014-04-23 17:00,2014-07-20 08:00,2014-08-20 17:00,,PT_Normal,,,,,Um1H10k+Rauig4Xg1kNzdQ,,,,N,0,0,,,2013-02-16 15:53,2013-02-16 15:56,admin,admin
501526,6359,124685,13662,0,N,N,N,CP_Drtn,TT_Task,DT_FixedDUR2,TK_NotStart,DUKHCONI1BZ1STGL5260,Electrical Works,8178,632,120,200,0,1039.6,1039.6,200,0,0,0,,,,2014-07-28 08:00,2014-08-28 17:00,,2014-04-27 08:00,2014-05-25 17:00,2014-04-27 08:00,2014-05-25 17:00,2014-04-27 08:00,2014-05-25 17:00,2014-07-28 08:00,2014-08-28 17:00,,PT_Normal,,,,,qTwFTjmYQvyRfS3vQcsX7g,,,,N,0,0,,,2013-02-16 15:53,2013-02-16 15:56,admin,admin
501527,6359,124686,13662,0,N,N,N,CP_Drtn,TT_Task,DT_FixedDUR2,TK_NotStart,DUKHCONI1BZ1IRGL5265,Excavation for irrigation line,8177,56,0,200,0,998,998,200,500,0,500,,,,2014-04-23 08:00,2014-05-21 17:00,,2014-04-15 08:00,2014-05-13 17:00,2014-04-15 08:00,2014-05-13 17:00,2014-04-15 08:00,2014-05-13 17:00,2014-04-23 08:00,2014-05-21 17:00,,PT_Normal,,,,,xDlE82VlSF+ozROa/ZKIYA,,,,N,0,0,,,2013-02-16 15:53,2013-02-16 15:56,admin,admin
501528,6359,124686,13662,0,N,N,N,CP_Drtn,TT_Task,DT_FixedDUR2,TK_NotStart,DUKHCONI1BZ1IRGL5270,Laying of irrigationline,8178,56,0,200,0,352.8,352.8,200,0,0,0,,,,2014-04-29 08:00,2014-05-27 17:00,,2014-04-21 08:00,2014-05-19 17:00,2014-04-21 08:00,2014-05-19 17:00,2014-04-21 08:00,2014-05-19 17:00,2014-04-29 08:00,2014-05-27 17:00,,PT_Normal,,,,,AVT1jqRWS8il1KvDILIIzA,,,,N,0,0,,,2013-02-16 15:53,2013-02-16 15:56,admin,admin
501529,6359,124686,13662,0,N,N,N,CP_Drtn,TT_Task,DT_FixedDUR2,TK_NotStart,DUKHCONI1BZ1IRGL5275,Testing of irrigation line,8178,56,0,200,0,285.6,285.6,200,0,0,0,,,,2014-05-05 08:00,2014-06-02 17:00,,2014-04-27 08:00,2014-05-25 17:00,2014-04-27 08:00,2014-05-25 17:00,2014-04-27 08:00,2014-05-25 17:00,2014-05-05 08:00,2014-06-02 17:00,,PT_Normal,,,,,XbpdVZ9XT8Wbzy9r8Mvy/A,,,,N,0,0,,,2013-02-16 15:53,2013-02-16 15:56,admin,admin
501530,6359,124686,13662,0,N,N,N,CP_Drtn,TT_Task,DT_FixedDUR2,TK_NotStart,DUKHCONI1BZ1IRGL5280,Backfilling irrigation line,8177,56,0,200,0,706,706,200,550,0,550,,,,2014-05-11 08:00,2014-06-08 17:00,,2014-05-03 08:00,2014-05-31 17:00,2014-05-03 08:00,2014-05-31 17:00,2014-05-03 08:00,2014-05-31 17:00,2014-05-11 08:00,2014-06-08 17:00,,PT_Normal,,,,,ntn+Fv6TQvOxthiqHojWIw,,,,N,0,0,,,2013-02-16 15:53,2013-02-16 15:56,admin,admin
501531,6359,124686,13662,0,N,N,N,CP_Drtn,TT_Task,DT_FixedDUR2,TK_NotStart,DUKHCONI1BZ1IRGL5285,"Construction of Thrust Blocks,Pull boxes",8178,176,0,200,0,149.6,149.6,200,0,0,0,,,,2014-06-09 08:00,2014-07-07 17:00,,2014-05-14 08:00,2014-06-11 17:00,2014-05-14 08:00,2014-06-11 17:00,2014-05-14 08:00,2014-06-11 17:00,2014-06-09 08:00,2014-07-07 17:00,,PT_Normal,,,,,zCtsq4vRSBuh6eBXcOxDmA,,,,N,0,0,,,2013-02-16 15:53,2013-02-16 15:56,admin,admin
501532,6359,124686,13662,0,N,N,N,CP_Drtn,TT_Task,DT_FixedDUR2,TK_NotStart,DUKHCONI1BZ1IRGL5290,"Irrigation Fittings (Nozzle,Values)",8178,176,88,200,0,352.8,352.8,200,0,0,0,,,,2014-06-17 08:00,2014-07-15 17:00,,2014-05-22 08:00,2014-06-19 17:00,2014-05-22 08:00,2014-06-19 17:00,2014-05-22 08:00,2014-06-19 17:00,2014-06-17 08:00,2014-07-15 17:00,,PT_Normal,,,,,jbxzboy1Tb6ilXauJDER9Q,,,,N,0,0,,,2013-02-16 15:53,2013-02-16 15:56,admin,admin
501533,6359,124687,13662,0,N,N,N,CP_Drtn,TT_Task,DT_FixedDUR2,TK_NotStart,DUKHCONI1BZ1HDGL7020,Precast Concrete Kerbs works,8173,88,0,160,0,800,800,160,0,0,0,,,,2014-05-13 08:00,2014-06-04 17:00,,2014-04-30 08:00,2014-05-22 17:00,2014-04-30 08:00,2014-05-22 17:00,2014-04-30 08:00,2014-05-22 17:00,2014-05-13 08:00,2014-06-04 17:00,,PT_Normal,,,,,MDUQtW/sSfK9KDhZLCnS0w,,,,N,0,0,,,2013-02-16 15:53,2013-02-16 15:56,admin,admin
501534,6359,124687,13662,0,N,N,N,CP_Drtn,TT_Task,DT_FixedDUR2,TK_NotStart,DUKHCONI1BZ1HDGL7025,Interlocking for Walkways,8174,88,0,200,0,814,814,200,0,0,0,,,,2014-05-25 08:00,2014-06-22 17:00,,2014-05-12 08:00,2014-06-09 17:00,2014-05-12 08:00,2014-06-09 17:00,2014-05-12 08:00,2014-06-09 17:00,2014-05-25 08:00,2014-06-22 17:00,,PT_Normal,,,,,cRJdE/UkTH+Qxax7bTQimA,,,,N,0,0,,,2013-02-16 15:53,2013-02-16 15:56,admin,admin
501535,6359,124687,13662,0,N,N,N,CP_Drtn,TT_Task,DT_FixedDUR2,TK_NotStart,DUKHCONI1BZ1HDGL7030,Construction of Retaining wall,8165,88,0,200,0,3340,3340,200,0,0,0,,,,2014-06-05 08:00,2014-07-03 17:00,,2014-05-24 08:00,2014-06-21 17:00,2014-05-24 08:00,2014-06-21 17:00,2014-05-24 08:00,2014-06-21 17:00,2014-06-05 08:00,2014-07-03 17:00,,PT_Normal,,,,,Dj9EmILvQ9+ArqtDvo8JFg,,,,N,0,0,,,2013-02-16 15:53,2013-02-16 15:56,admin,admin
501536,6359,124687,13662,0,N,N,N,CP_Drtn,TT_Task,DT_FixedDUR2,TK_NotStart,DUKHCONI1BZ1HDGL7035,Construction of Wash Stone Boulders,8170,88,0,200,0,22,22,200,0,0,0,,,,2014-06-05 08:00,2014-07-03 17:00,,2014-05-24 08:00,2014-06-21 17:00,2014-05-24 08:00,2014-06-21 17:00,2014-05-24 08:00,2014-06-21 17:00,2014-06-05 08:00,2014-07-03 17:00,,PT_Normal,,,,,iq+GO5PKSEu4tvfs2tSb8A,,,,N,0,0,,,2013-02-16 15:53,2013-02-16 15:56,admin,admin
501537,6359,124687,13662,0,N,N,N,CP_Drtn,TT_Task,DT_FixedDUR2,TK_NotStart,DUKHCONI1BZ1HDGL7040,Construction of Speed Humps,8167,728,240,80,0,14,14,80,0,0,0,,,,2014-10-29 08:00,2014-11-09 17:00,,2014-07-09 08:00,2014-07-20 17:00,2014-07-09 08:00,2014-07-20 17:00,2014-07-09 08:00,2014-07-20 17:00,2014-10-29 08:00,2014-11-09 17:00,,PT_Normal,,,,,r+fdGXFmQISDLwlf2rC/QQ,,,,N,0,0,,,2013-02-16 15:53,2013-02-16 15:56,admin,admin
501538,6359,124688,13662,0,N,N,N,CP_Drtn,TT_Task,DT_FixedDUR2,TK_NotStart,DUKHCONI1BZ1BWGL5330,Const. of Blockwork fence Wall (Ht-1.85m),8165,704,120,200,0,140,140,200,0,0,0,,,,2014-09-06 08:00,2014-10-04 17:00,,2014-05-22 08:00,2014-06-19 17:00,2014-05-22 08:00,2014-06-19 17:00,2014-05-22 08:00,2014-06-19 17:00,2014-09-06 08:00,2014-10-04 17:00,,PT_Normal,,,,,Y3LYxHS8SgG4xrZnW4SDYg,,,,N,0,0,,,2013-02-16 15:53,2013-02-16 15:56,admin,admin
501539,6359,124688,13662,0,N,N,N,CP_Drtn,TT_Task,DT_FixedDUR2,TK_NotStart,DUKHCONI1BZ1BWGL5315,Construction of Boundary Wall (Ht-3m),8165,200,0,200,0,196,196,200,0,0,0,,,,2014-04-24 08:00,2014-05-22 17:00,,2014-03-26 08:00,2014-04-23 17:00,2014-03-26 08:00,2014-04-23 17:00,2014-03-26 08:00,2014-04-23 17:00,2014-04-24 08:00,2014-05-22 17:00,,PT_Normal,,,,,T62GPiPgRzq3i5egSmkIbw,,,,N,0,0,,,2013-02-16 15:53,2013-02-16 15:56,admin,admin
501540,6359,124688,13662,0,N,N,N,CP_Drtn,TT_Task,DT_FixedDUR2,TK_NotStart,DUKHCONI1BZ1BWGL5320,"Install.Steel Gate,Entance Barrier (3m Wall)",8178,200,0,200,0,14,14,200,0,0,0,,,,2014-05-11 08:00,2014-06-08 17:00,,2014-04-12 08:00,2014-05-10 17:00,2014-04-12 08:00,2014-05-10 17:00,2014-04-12 08:00,2014-05-10 17:00,2014-05-11 08:00,2014-06-08 17:00,,PT_Normal,,,,,XozXnqVQQICmzIM+Uhx9AQ,,,,N,0,0,,,2013-02-16 15:53,2013-02-16 15:56,admin,admin
501541,6359,124688,13662,0,N,N,N,CP_Drtn,TT_Task,DT_FixedDUR2,TK_NotStart,DUKHCONI1BZ1BWGL5325,Const. of Villa Front Boundary Wall (Ht-2m),8165,200,0,200,0,140,140,200,0,0,0,,,,2014-06-09 08:00,2014-07-07 17:00,,2014-05-11 08:00,2014-06-08 17:00,2014-05-11 08:00,2014-06-08 17:00,2014-05-11 08:00,2014-06-08 17:00,2014-06-09 08:00,2014-07-07 17:00,,PT_Normal,,,,,avorwNANRVat/AxWSKEmQQ,,,,N,0,0,,,2013-02-16 15:53,2013-02-16 15:56,admin,admin
501542,6359,124689,13662,0,N,N,N,CP_Drtn,TT_Task,DT_FixedDUR2,TK_NotStart,DUKHCONI1BZ1PSGL7000,Excavation,8177,456,40,120,0,163,163,120,90.999832,0,90.999832,,,,2014-08-19 08:00,2014-09-04 17:00,,2014-06-10 08:00,2014-06-26 17:00,2014-06-10 08:00,2014-06-26 17:00,2014-06-10 08:00,2014-06-26 17:00,2014-08-19 08:00,2014-09-04 17:00,,PT_Normal,,,,,spvEqm83RpCIizr22GOq4g,,,,N,0,0,,,2013-02-16 15:53,2013-02-16 15:56,admin,admin
501543,6359,124689,13662,0,N,N,N,CP_Drtn,TT_Task,DT_FixedDUR2,TK_NotStart,DUKHCONI1BZ1PSGL7005,Foundation casting,8165,416,0,120,0,302,302,120,0,0,0,,,,2014-08-25 08:00,2014-09-10 17:00,,2014-06-22 08:00,2014-07-08 17:00,2014-06-22 08:00,2014-07-08 17:00,2014-06-22 08:00,2014-07-08 17:00,2014-08-25 08:00,2014-09-10 17:00,,PT_Normal,,,,,2YUuWxMRQ1+7nbrV7JriQA,,,,N,0,0,,,2013-02-16 15:53,2013-02-16 15:56,admin,admin
501544,6359,124689,13662,0,N,N,N,CP_Drtn,TT_Task,DT_FixedDUR2,TK_NotStart,DUKHCONI1BZ1PSGL7010,"Column, Frame&  Fabrics  Erection",8178,416,0,200,0,314,314,200,0,0,0,,,,2014-09-06 08:00,2014-10-04 17:00,,2014-07-03 08:00,2014-07-31 17:00,2014-07-03 08:00,2014-07-31 17:00,2014-07-03 08:00,2014-07-31 17:00,2014-09-06 08:00,2014-10-04 17:00,,PT_Normal,,,,,hrKSMKk9ShuDu2UNn5WtZQ,,,,N,0,0,,,2013-02-16 15:53,2013-02-16 15:56,admin,admin
501545,6359,124689,13662,0,N,N,N,CP_Drtn,TT_Task,DT_FixedDUR2,TK_NotStart,DUKHCONI1BZ1PSGL7015,Electrical Works-Parking Shed,8178,416,120,200,0,51.6,51.6,200,0,0,0,,,,2014-09-11 08:00,2014-10-12 17:00,,2014-07-09 08:00,2014-08-10 17:00,2014-07-09 08:00,2014-08-10 17:00,2014-07-09 08:00,2014-08-10 17:00,2014-09-11 08:00,2014-10-12 17:00,,PT_Normal,,,,,oFHzMGKVTvKRQmS8YzI0pA,,,,N,0,0,,,2013-02-16 15:53,2013-02-16 15:56,admin,admin
501546,6359,124690,13662,0,N,N,N,CP_Drtn,TT_Task,DT_FixedDUR2,TK_NotStart,DUKHCONI1BZ1FFGL5185,Excavation for firefighting line,8177,0,0,200,0,190,190,200,100,0,100,,,,2014-02-02 08:00,2014-03-03 17:00,,2014-02-02 08:00,2014-03-03 17:00,2014-02-02 08:00,2014-03-03 17:00,2014-02-02 08:00,2014-03-03 17:00,2014-02-02 08:00,2014-03-03 17:00,,PT_Normal,,,,,J6RE0cduTJy30bb49mteww,,,,Y,0,0,,,2013-02-16 15:53,2013-02-16 15:56,admin,admin
501547,6359,124690,13662,0,N,N,N,CP_Drtn,TT_Task,DT_FixedDUR2,TK_NotStart,DUKHCONI1BZ1FFGL5190,Laying of firefighting line,8178,0,0,200,0,210,210,200,0,0,0,,,,2014-02-10 08:00,2014-03-11 17:00,,2014-02-10 08:00,2014-03-11 17:00,2014-02-10 08:00,2014-03-11 17:00,2014-02-10 08:00,2014-03-11 17:00,2014-02-10 08:00,2014-03-11 17:00,,PT_Normal,,,,,8GNjDgRoQbmgP0PCjeVV2w,,,,Y,0,0,,,2013-02-16 15:53,2013-02-16 15:56,admin,admin
501548,6359,124690,13662,0,N,N,N,CP_Drtn,TT_Task,DT_FixedDUR2,TK_NotStart,DUKHCONI1BZ1FFGL5195,Testing of firefighting line,8178,0,0,200,0,50.4,50.4,200,0,0,0,,,,2014-02-17 08:00,2014-03-17 17:00,,2014-02-17 08:00,2014-03-17 17:00,2014-02-17 08:00,2014-03-17 17:00,2014-02-17 08:00,2014-03-17 17:00,2014-02-17 08:00,2014-03-17 17:00,,PT_Normal,,,,,/HwdGuiSRla4pvzjTPccQg,,,,Y,0,0,,,2013-02-16 15:53,2013-02-16 15:56,admin,admin
501549,6359,124690,13662,0,N,N,N,CP_Drtn,TT_Task,DT_FixedDUR2,TK_NotStart,DUKHCONI1BZ1FFGL5200,Backfilling firefighting line,8177,0,0,200,0,311,311,200,275,0,275,,,,2014-02-23 08:00,2014-03-23 17:00,,2014-02-23 08:00,2014-03-23 17:00,2014-02-23 08:00,2014-03-23 17:00,2014-02-23 08:00,2014-03-23 17:00,2014-02-23 08:00,2014-03-23 17:00,,PT_Normal,,,,,KyG0SbJQQ86U+h8lXsdflA,,,,Y,0,0,,,2013-02-16 15:53,2013-02-16 15:56,admin,admin
501550,6359,124690,13662,0,N,N,N,CP_Drtn,TT_Task,DT_FixedDUR2,TK_NotStart,DUKHCONI1BZ1FFGL5205,Construction of valve chambers & Thrust Blocks,8165,176,0,200,0,266,266,200,0,0,0,,,,2014-03-26 08:00,2014-04-23 17:00,,2014-03-01 08:00,2014-03-29 17:00,2014-03-01 08:00,2014-03-29 17:00,2014-03-01 08:00,2014-03-29 17:00,2014-03-26 08:00,2014-04-23 17:00,,PT_Normal,,,,,+0XRH/22QlG5TDeyJyIYdg,,,,N,0,0,,,2013-02-16 15:53,2013-02-16 15:56,admin,admin
501551,6359,124690,13662,0,N,N,N,CP_Drtn,TT_Task,DT_FixedDUR2,TK_NotStart,DUKHCONI1BZ1FFGL5210,Connection with existing Firewater System,8178,176,120,200,0,84,84,200,0,0,0,,,,2014-04-01 08:00,2014-04-29 17:00,,2014-03-06 08:00,2014-04-03 17:00,2014-03-06 08:00,2014-04-03 17:00,2014-03-06 08:00,2014-04-03 17:00,2014-04-01 08:00,2014-04-29 17:00,,PT_Normal,,,,,nQf2bDR3S9WoBgRxAZHZXg,,,,N,0,0,,,2013-02-16 15:53,2013-02-16 15:56,admin,admin
501552,6359,124691,13662,0,N,N,N,CP_Drtn,TT_Task,DT_FixedDUR2,TK_NotStart,DUKHCONI1BZ1SLGL7200,Excavation,8177,88,0,200,0,926,926,200,500,0,500,,,,2014-06-17 08:00,2014-07-15 17:00,,2014-06-04 08:00,2014-07-02 17:00,2014-06-04 08:00,2014-07-02 17:00,2014-06-04 08:00,2014-07-02 17:00,2014-06-17 08:00,2014-07-15 17:00,,PT_Normal,,,,,Oz0SD61fRz6Y2/hh5y+IAw,,,,N,0,0,,,2013-02-16 15:53,2013-02-16 15:56,admin,admin
501553,6359,124691,13662,0,N,N,N,CP_Drtn,TT_Task,DT_FixedDUR2,TK_NotStart,DUKHCONI1BZ1SLGL7210,Plantation works,8178,328,120,200,0,728,728,200,0,0,0,,,,2014-08-18 08:00,2014-09-15 17:00,,2014-06-28 08:00,2014-07-26 17:00,2014-06-28 08:00,2014-07-26 17:00,2014-06-28 08:00,2014-07-26 17:00,2014-08-18 08:00,2014-09-15 17:00,,PT_Normal,,,,,Bi7VXeEaSUuuYRu6HPLpRw,,,,N,0,0,,,2013-02-16 15:53,2013-02-16 15:56,admin,admin
501554,6359,124691,13662,0,N,N,N,CP_Drtn,TT_Task,DT_FixedDUR2,TK_NotStart,DUKHCONI1BZ1SLGL7205,Sweet Soil Laying,8178,88,0,200,0,4102,4102,200,0,0,0,,,,2014-06-29 08:00,2014-07-27 17:00,,2014-06-16 08:00,2014-07-14 17:00,2014-06-16 08:00,2014-07-14 17:00,2014-06-16 08:00,2014-07-14 17:00,2014-06-29 08:00,2014-07-27 17:00,,PT_Normal,,,,,4Kc7nxR4RL231Zq5W4hf9g,,,,N,0,0,,,2013-02-16 15:53,2013-02-16 15:56,admin,admin
501555,6359,124692,13662,0,N,N,N,CP_Drtn,TT_Task,DT_FixedDUR2,TK_NotStart,DUKHCONI1BZ1WSGL5155,Excavation for water line,8177,0,0,200,0,425,425,200,251,0,251,,,,2014-01-09 08:00,2014-02-06 17:00,,2014-01-09 08:00,2014-02-06 17:00,2014-01-09 08:00,2014-02-06 17:00,2014-01-09 08:00,2014-02-06 17:00,2014-01-09 08:00,2014-02-06 17:00,,PT_Normal,,,,,5f6TkcxnQIuv4/c3R09ZaQ,,,,Y,0,0,,,2013-02-16 15:53,2013-02-16 15:56,admin,admin
501556,6359,124692,13662,0,N,N,N,CP_Drtn,TT_Task,DT_FixedDUR2,TK_NotStart,DUKHCONI1BZ1WSGL5160,Laying of water line,8178,0,0,200,0,319.2,319.2,200,0,0,0,,,,2014-01-15 08:00,2014-02-13 17:00,,2014-01-15 08:00,2014-02-13 17:00,2014-01-15 08:00,2014-02-13 17:00,2014-01-15 08:00,2014-02-13 17:00,2014-01-15 08:00,2014-02-13 17:00,,PT_Normal,,,,,oaVudmipQSyygoNz69dMOA,,,,Y,0,0,,,2013-02-16 15:53,2013-02-23 09:03,admin,admin
501557,6359,124692,13662,0,N,N,N,CP_Drtn,TT_Task,DT_FixedDUR2,TK_NotStart,DUKHCONI1BZ1WSGL5165,Testing of potable water line,8178,0,0,200,0,100.8,100.8,200,0,0,0,,,,2014-01-21 08:00,2014-02-19 17:00,,2014-01-21 08:00,2014-02-19 17:00,2014-01-21 08:00,2014-02-19 17:00,2014-01-21 08:00,2014-02-19 17:00,2014-01-21 08:00,2014-02-19 17:00,,PT_Normal,,,,,fHounxWbRSWi1AkkTIH4ig,,,,Y,0,0,,,2013-02-16 15:53,2013-02-16 15:56,admin,admin
501558,6359,124692,13662,0,N,N,N,CP_Drtn,TT_Task,DT_FixedDUR2,TK_NotStart,DUKHCONI1BZ1WSGL5170,Backfilling potable water line,8177,0,0,200,0,347,347,200,275,0,275,,,,2014-01-27 08:00,2014-02-25 17:00,,2014-01-27 08:00,2014-02-25 17:00,2014-01-27 08:00,2014-02-25 17:00,2014-01-27 08:00,2014-02-25 17:00,2014-01-27 08:00,2014-02-25 17:00,,PT_Normal,,,,,45K8+gtcQTC0XiZTGh9WDw,,,,Y,0,0,,,2013-02-16 15:53,2013-02-16 15:56,admin,admin
501559,6359,124692,13662,0,N,N,N,CP_Drtn,TT_Task,DT_FixedDUR2,TK_NotStart,DUKHCONI1BZ1WSGL5175,Construction of valve chambers & Thrust Blocks,8172,232,0,200,0,88,88,200,0,0,0,,,,2014-03-09 08:00,2014-04-06 17:00,,2014-02-02 08:00,2014-03-03 17:00,2014-02-02 08:00,2014-03-03 17:00,2014-02-02 08:00,2014-03-03 17:00,2014-03-09 08:00,2014-04-06 17:00,,PT_Normal,,,,,xZGTGYczQbuuWYZQo/XD2w,,,,N,0,0,,,2013-02-16 15:53,2013-02-16 15:56,admin,admin
501560,6359,124692,13662,0,N,N,N,CP_Drtn,TT_Task,DT_FixedDUR2,TK_NotStart,DUKHCONI1BZ1WSGL5180,"Installation of meter ,Accessories & Connection",8178,232,56,160,0,50.4,50.4,160,0,0,0,,,,2014-04-07 08:00,2014-04-29 17:00,,2014-03-04 08:00,2014-03-26 17:00,2014-03-04 08:00,2014-03-26 17:00,2014-03-04 08:00,2014-03-26 17:00,2014-04-07 08:00,2014-04-29 17:00,,PT_Normal,,,,,w1Ef5mJfTOScUUbd/w23OA,,,,N,0,0,,,2013-02-16 15:53,2013-02-16 15:56,admin,admin
501561,6359,124693,13662,0,N,N,N,CP_Drtn,TT_Task,DT_FixedDUR2,TK_NotStart,DUKHCONI1BZ1ELGL5215,Excavation Cable  Trenches  & Duct Banks,8177,0,0,200,0,2772,2772,200,876,0,876,,,,2014-03-03 08:00,2014-03-31 17:00,,2014-03-03 08:00,2014-03-31 17:00,2014-03-03 08:00,2014-03-31 17:00,2014-03-03 08:00,2014-03-31 17:00,2014-03-03 08:00,2014-03-31 17:00,,PT_Normal,,,,,jU4Hpms1Q1Cf0wZbEO8+jQ,,,,Y,0,0,,,2013-02-16 15:53,2013-02-16 15:56,admin,admin
501562,6359,124693,13662,0,N,N,N,CP_Drtn,TT_Task,DT_FixedDUR2,TK_NotStart,DUKHCONI1BZ1ELGL5220,Laying of electrical cables,8178,24,0,200,0,4487.2,4487.2,200,0,0,0,,,,2014-03-12 08:00,2014-04-09 17:00,,2014-03-09 08:00,2014-04-06 17:00,2014-03-09 08:00,2014-04-06 17:00,2014-03-09 08:00,2014-04-06 17:00,2014-03-12 08:00,2014-04-09 17:00,,PT_Normal,,,,,9hR6STZUS9qULwVmZSY5cQ,,,,N,0,0,,,2013-02-16 15:53,2013-02-23 09:03,admin,admin
501563,6359,124693,13662,0,N,N,N,CP_Drtn,TT_Task,DT_FixedDUR2,TK_NotStart,DUKHCONI1BZ1ELGL5225,Backfilling Electrical trench,8177,24,0,200,0,1862,1862,200,1100,0,1100,,,,2014-03-20 08:00,2014-04-17 17:00,,2014-03-17 08:00,2014-04-14 17:00,2014-03-17 08:00,2014-04-14 17:00,2014-03-17 08:00,2014-04-14 17:00,2014-03-20 08:00,2014-04-17 17:00,,PT_Normal,,,,,eIyUoc8oTe+tBFSTCYdM9g,,,,N,0,0,,,2013-02-16 15:53,2013-02-16 15:56,admin,admin
501564,6359,124693,13662,0,N,N,N,CP_Drtn,TT_Task,DT_FixedDUR2,TK_NotStart,DUKHCONI1BZ1ELGL5230,Construction of Submain Board & Feeder Pillar,8165,632,0,200,0,276,276,200,0,0,0,,,,2014-06-29 08:00,2014-07-27 17:00,,2014-03-29 08:00,2014-04-26 17:00,2014-03-29 08:00,2014-04-26 17:00,2014-03-29 08:00,2014-04-26 17:00,2014-06-29 08:00,2014-07-27 17:00,,PT_Normal,,,,,GuyqXZuwRFeCOE28o1e2wg,,,,N,0,0,,,2013-02-16 15:53,2013-02-16 15:56,admin,admin
501565,6359,124694,13662,0,N,N,N,CP_Drtn,TT_Task,DT_FixedDUR2,TK_NotStart,DUKHCONI1BZ1RWGL6000,Excavation & Earth Filling,8177,0,0,80,0,1150,1150,80,400,0,400,,,,2014-04-30 08:00,2014-05-11 17:00,,2014-04-30 08:00,2014-05-11 17:00,2014-04-30 08:00,2014-05-11 17:00,2014-04-30 08:00,2014-05-11 17:00,2014-04-30 08:00,2014-05-11 17:00,,PT_Normal,,,,,uua9UjNfT/y3TMAZEkZltw,,,,Y,0,0,,,2013-02-16 15:53,2013-02-16 15:56,admin,admin
501566,6359,124694,13662,0,N,N,N,CP_Drtn,TT_Task,DT_FixedDUR2,TK_NotStart,DUKHCONI1BZ1RWGL6005,Laying of Sub Grade,8178,0,0,200,0,24,24,200,0,0,0,,,,2014-05-12 08:00,2014-06-09 17:00,,2014-05-12 08:00,2014-06-09 17:00,2014-05-12 08:00,2014-06-09 17:00,2014-05-12 08:00,2014-06-09 17:00,2014-05-12 08:00,2014-06-09 17:00,,PT_Normal,,,,,4sioHMEqQ6CVlIkq9qt0FA,,,,Y,0,0,,,2013-02-16 15:53,2013-02-16 15:56,admin,admin
501567,6359,124694,13662,0,N,N,N,CP_Drtn,TT_Task,DT_FixedDUR2,TK_NotStart,DUKHCONI1BZ1RWGL6010,Laying of Precast Kerbs,8178,0,0,200,0,24,24,200,0,0,0,,,,2014-05-24 08:00,2014-06-21 17:00,,2014-05-24 08:00,2014-06-21 17:00,2014-05-24 08:00,2014-06-21 17:00,2014-05-24 08:00,2014-06-21 17:00,2014-05-24 08:00,2014-06-21 17:00,,PT_Normal,,,,,oClptBrzTy2+fmX/3yeqNg,,,,Y,0,0,,,2013-02-16 15:53,2013-02-16 15:56,admin,admin
501568,6359,124694,13662,0,N,N,N,CP_Drtn,TT_Task,DT_FixedDUR2,TK_NotStart,DUKHCONI1BZ1RWGL6015,Laying of Granular Sub Base Coarse,8173,0,0,160,0,1828,1828,160,600,0,600,,,,2014-06-04 08:00,2014-06-26 17:00,,2014-06-04 08:00,2014-06-26 17:00,2014-06-04 08:00,2014-06-26 17:00,2014-06-04 08:00,2014-06-26 17:00,2014-06-04 08:00,2014-06-26 17:00,,PT_Normal,,,,,dmN58+cfSM2Sv5KMWNHKPA,,,,Y,0,0,,,2013-02-16 15:53,2013-02-16 15:56,admin,admin
501569,6359,124694,13662,0,N,N,N,CP_Drtn,TT_Task,DT_FixedDUR2,TK_NotStart,DUKHCONI1BZ1RWGL6020,Laying of Road Base Asphalt Concrete,8178,416,0,40,0,174,174,40,150,0,150,,,,2014-08-31 08:00,2014-09-04 17:00,,2014-06-28 08:00,2014-07-02 17:00,2014-06-28 08:00,2014-07-02 17:00,2014-06-28 08:00,2014-07-02 17:00,2014-08-31 08:00,2014-09-04 17:00,,PT_Normal,,,,,M1OEBTzxQkiKkWU0lpw19Q,,,,N,0,0,,,2013-02-16 15:53,2013-02-16 15:56,admin,admin
501570,6359,124694,13662,0,N,N,N,CP_Drtn,TT_Task,DT_FixedDUR2,TK_NotStart,DUKHCONI1BZ1RWGL6025,Laying of Asphalt Wearing Coarse,8178,536,0,40,0,174,174,40,150,0,150,,,,2014-09-23 08:00,2014-09-28 17:00,,2014-07-03 08:00,2014-07-08 17:00,2014-07-03 08:00,2014-07-08 17:00,2014-07-03 08:00,2014-07-08 17:00,2014-09-23 08:00,2014-09-28 17:00,,PT_Normal,,,,,0zR9fmeHSrqVPjscvJJtDg,,,,N,0,0,,,2013-02-16 15:53,2013-02-16 15:56,admin,admin
501571,6359,124694,13662,0,N,N,N,CP_Drtn,TT_Task,DT_FixedDUR2,TK_NotStart,DUKHCONI1BZ1RWGL6030,Traffic Signage & Road Marking,8178,536,120,40,0,882,882,40,0,0,0,,,,2014-09-29 08:00,2014-10-04 17:00,,2014-07-09 08:00,2014-07-14 17:00,2014-07-09 08:00,2014-07-14 17:00,2014-07-09 08:00,2014-07-14 17:00,2014-09-29 08:00,2014-10-04 17:00,,PT_Normal,,,,,8fJtfLpsTTWSbt2EdnymQQ,,,,N,0,0,,,2013-02-16 15:53,2013-02-16 15:56,admin,admin
501572,6359,124697,13662,0,N,N,N,CP_Drtn,TT_Task,DT_FixedDUR2,TK_NotStart,DUKHCONP03Z2ACTC8000,Pre-Commissioning & Testing of AC Works,8178,0,0,200,0,1500,1500,200,0,0,0,,,,2014-04-17 08:00,2014-05-15 17:00,,2014-04-17 08:00,2014-05-15 17:00,2014-04-17 08:00,2014-05-15 17:00,2014-04-17 08:00,2014-05-15 17:00,2014-04-17 08:00,2014-05-15 17:00,,PT_Normal,,,,,UmncrCEcSwmmSJLdv+6l/Q,,,,N,0,0,,,2013-02-16 15:53,2013-02-16 15:56,admin,admin
501573,6359,124697,13662,0,N,N,N,CP_Drtn,TT_Task,DT_FixedDUR2,TK_NotStart,DUKHCONP03Z2ELTC8010,Pre-Commissioning & Testing of Electrical Works,8178,0,0,200,0,3000,3000,200,0,0,0,,,,2014-04-17 08:00,2014-05-15 17:00,,2014-04-17 08:00,2014-05-15 17:00,2014-04-17 08:00,2014-05-15 17:00,2014-04-17 08:00,2014-05-15 17:00,2014-04-17 08:00,2014-05-15 17:00,,PT_Normal,,,,,I4FVBGV/QKCbefmz6Zodwg,,,,N,0,0,,,2013-02-16 15:53,2013-02-16 15:56,admin,admin
501574,6359,124697,13662,0,N,N,N,CP_Drtn,TT_Task,DT_FixedDUR2,TK_NotStart,DUKHCONP03Z2PLTC8005,Pre-Commissioning & Testing of Plumbing Works,8178,0,0,200,0,3000,3000,200,0,0,0,,,,2014-04-17 08:00,2014-05-15 17:00,,2014-04-17 08:00,2014-05-15 17:00,2014-04-17 08:00,2014-05-15 17:00,2014-04-17 08:00,2014-05-15 17:00,2014-04-17 08:00,2014-05-15 17:00,,PT_Normal,,,,,e8MzXB2rQ3GrK5kr/b3HOA,,,,N,0,0,,,2013-02-16 15:53,2013-02-16 15:56,admin,admin
501575,6359,124700,13662,0,N,N,N,CP_Drtn,TT_Task,DT_FixedDUR2,TK_NotStart,DUKHCONP03Z2AREL3665,External Plastering,8169,424,0,200,0,9159.75,9159.75,200,0,0,0,,,,2014-02-22 08:00,2014-03-22 17:00,,2013-12-21 08:00,2014-01-18 17:00,2013-12-21 08:00,2014-01-18 17:00,2013-12-21 08:00,2014-01-18 17:00,2014-02-22 08:00,2014-03-22 17:00,,PT_Normal,,,,,X6XLtPPtQvauF/UsBNhsyg,,,,N,0,0,,,2013-02-16 15:53,2013-02-16 15:56,admin,admin
501576,6359,124700,13662,0,N,N,N,CP_Drtn,TT_Task,DT_FixedDUR2,TK_NotStart,DUKHCONP03Z2AREL3675,GRC Panel Works,8178,440,40,160,0,550,550,160,0,0,0,,,,2014-03-13 08:00,2014-04-05 17:00,,2014-01-07 08:00,2014-01-29 17:00,2014-01-07 08:00,2014-01-29 17:00,2014-01-07 08:00,2014-01-29 17:00,2014-03-13 08:00,2014-04-05 17:00,,PT_Normal,,,,,WUQiSca2QRebwIaXFHqdUA,,,,N,0,0,,,2013-02-16 15:53,2013-02-16 15:56,admin,admin
501577,6359,124700,13662,0,N,N,N,CP_Drtn,TT_Task,DT_FixedDUR2,TK_NotStart,DUKHCONP03Z2AREL3680,External Painting,8178,384,0,160,0,3234,3234,160,0,0,0,,,,2014-03-25 08:00,2014-04-16 17:00,,2014-01-27 08:00,2014-02-19 17:00,2014-01-27 08:00,2014-02-19 17:00,2014-01-27 08:00,2014-02-19 17:00,2014-03-25 08:00,2014-04-16 17:00,,PT_Normal,,,,,QcFHNkjzSa6C9dNGB3ysgA,,,,N,0,0,,,2013-02-16 15:53,2013-02-16 15:56,admin,admin
501578,6359,124701,13662,0,N,N,N,CP_Drtn,TT_Task,DT_FixedDUR2,TK_NotStart,DUKHCONP03Z2ARRF3630,Leveling Screed for Waterproofing,8164,496,0,200,0,734.75,734.75,200,0,0,0,,,,2014-02-04 08:00,2014-03-05 17:00,,2013-11-23 08:00,2013-12-22 17:00,2013-11-23 08:00,2013-12-22 17:00,2013-11-23 08:00,2013-12-22 17:00,2014-02-04 08:00,2014-03-05 17:00,,PT_Normal,,,,,FC1mN3shR+Sx3mKKSLhP+g,,,,N,0,0,,,2013-02-16 15:53,2013-02-16 15:56,admin,admin
501579,6359,124701,13662,0,N,N,N,CP_Drtn,TT_Task,DT_FixedDUR2,TK_NotStart,DUKHCONP03Z2ARRF3635,Laying of Waterproofing Membrane,8178,496,0,200,0,2042.25,2042.25,200,0,0,0,,,,2014-02-08 08:00,2014-03-09 17:00,,2013-11-26 08:00,2013-12-25 17:00,2013-11-26 08:00,2013-12-25 17:00,2013-11-26 08:00,2013-12-25 17:00,2014-02-08 08:00,2014-03-09 17:00,,PT_Normal,,,,,CMx2Zu2STPekHnByP89JOw,,,,N,0,0,,,2013-02-16 15:53,2013-02-16 15:56,admin,admin
501580,6359,124701,13662,0,N,N,N,CP_Drtn,TT_Task,DT_FixedDUR2,TK_NotStart,DUKHCONP03Z2ARRF3640,Installation of Insulation & Protection,8178,496,0,200,0,1291.5,1291.5,200,0,0,0,,,,2014-02-13 08:00,2014-03-13 17:00,,2013-12-01 08:00,2013-12-30 17:00,2013-12-01 08:00,2013-12-30 17:00,2013-12-01 08:00,2013-12-30 17:00,2014-02-13 08:00,2014-03-13 17:00,,PT_Normal,,,,,yQe7UApTRZO9qh0aJdj1og,,,,N,0,0,,,2013-02-16 15:53,2013-02-16 15:56,admin,admin
501581,6359,124701,13662,0,N,N,N,CP_Drtn,TT_Task,DT_FixedDUR2,TK_NotStart,DUKHCONP03Z2ARRF3645,Lime Stone Chips & Paving slab Installation,8170,496,0,200,0,741.5,741.5,200,0,0,0,,,,2014-02-18 08:00,2014-03-18 17:00,,2013-12-05 08:00,2014-01-04 17:00,2013-12-05 08:00,2014-01-04 17:00,2013-12-05 08:00,2014-01-04 17:00,2014-02-18 08:00,2014-03-18 17:00,,PT_Normal,,,,,E+KZLPc1TcaeKacmwL4Q1A,,,,N,0,0,,,2013-02-16 15:53,2013-02-16 15:56,admin,admin
501582,6359,124701,13662,0,N,N,N,CP_Drtn,TT_Task,DT_FixedDUR2,TK_NotStart,DUKHCONP03Z2ARRF3655,Installation of Pumps Protection cabinets,8178,496,0,160,0,231,231,160,0,0,0,,,,2014-03-13 08:00,2014-04-05 17:00,,2013-12-30 08:00,2014-01-21 17:00,2013-12-30 08:00,2014-01-21 17:00,2013-12-30 08:00,2014-01-21 17:00,2014-03-13 08:00,2014-04-05 17:00,,PT_Normal,,,,,WPUKfQM8RDiwAiQSjC911g,,,,N,0,0,,,2013-02-16 15:53,2013-02-16 15:56,admin,admin
501583,6359,124701,13662,0,N,N,N,CP_Drtn,TT_Task,DT_FixedDUR2,TK_NotStart,DUKHCONP03Z2ARRF3650,Install. of Gal. Frame & Aluminum Slat Screen,8178,496,0,200,0,882,882,200,0,0,0,,,,2014-02-26 08:00,2014-03-26 17:00,,2013-12-14 08:00,2014-01-12 17:00,2013-12-14 08:00,2014-01-12 17:00,2013-12-14 08:00,2014-01-12 17:00,2014-02-26 08:00,2014-03-26 17:00,,PT_Normal,,,,,SjmApVhyR3OeRJhRWC76pw,,,,N,0,0,,,2013-02-16 15:53,2013-02-16 15:56,admin,admin
501584,6359,124701,13662,0,N,N,N,CP_Drtn,TT_Task,DT_FixedDUR2,TK_NotStart,DUKHCONP03Z2ARRF3660,Installation of Access Ladder,8178,536,536,120,0,198,198,120,0,0,0,,,,2014-03-31 08:00,2014-04-16 17:00,,2014-01-11 08:00,2014-01-27 17:00,2014-01-11 08:00,2014-01-27 17:00,2014-01-11 08:00,2014-01-27 17:00,2014-03-31 08:00,2014-04-16 17:00,,PT_Normal,,,,,N/bZKyMUSKmD/rR3lr+r6A,,,,N,0,0,,,2013-02-16 15:53,2013-02-16 15:56,admin,admin
501585,6359,124703,13662,0,N,N,N,CP_Drtn,TT_Task,DT_FixedDUR2,TK_NotStart,DUKHCONP03Z2ARRF3600,Block work,8168,536,0,160,0,487.5,487.5,160,0,0,0,,,,2014-02-04 08:00,2014-02-27 17:00,,2013-11-17 08:00,2013-12-09 17:00,2013-11-17 08:00,2013-12-09 17:00,2013-11-17 08:00,2013-12-09 17:00,2014-02-04 08:00,2014-02-27 17:00,,PT_Normal,,,,,sDIICuPETmC0COE4UnLU4w,,,,N,0,0,,,2013-02-16 15:53,2013-02-16 15:56,admin,admin
501586,6359,124703,13662,0,N,N,N,CP_Drtn,TT_Task,DT_FixedDUR2,TK_NotStart,DUKHCONP03Z2ARRF3605,Plastering work,8169,536,0,160,0,1950,1950,160,0,0,0,,,,2014-02-13 08:00,2014-03-08 17:00,,2013-11-25 08:00,2013-12-17 17:00,2013-11-25 08:00,2013-12-17 17:00,2013-11-25 08:00,2013-12-17 17:00,2014-02-13 08:00,2014-03-08 17:00,,PT_Normal,,,,,jLZH2ojzS6O1R/NEp18Y9Q,,,,N,0,0,,,2013-02-16 15:53,2013-02-16 15:56,admin,admin
501587,6359,124703,13662,0,N,N,N,CP_Drtn,TT_Task,DT_FixedDUR2,TK_NotStart,DUKHCONP03Z2ARRF3610,Flooring screed,8164,576,0,120,0,115.5,115.5,120,0,0,0,,,,2014-03-05 08:00,2014-03-22 17:00,,2013-12-09 08:00,2013-12-26 17:00,2013-12-09 08:00,2013-12-26 17:00,2013-12-09 08:00,2013-12-26 17:00,2014-03-05 08:00,2014-03-22 17:00,,PT_Normal,,,,,PlLkLVS0SH+o8O6D2MBRog,,,,N,0,0,,,2013-02-16 15:53,2013-02-16 15:56,admin,admin
501588,6359,124703,13662,0,N,N,N,CP_Drtn,TT_Task,DT_FixedDUR2,TK_NotStart,DUKHCONP03Z2ARRF3695,Painting,8178,576,0,160,0,504,504,160,0,0,0,,,,2014-03-13 08:00,2014-04-05 17:00,,2013-12-17 08:00,2014-01-09 17:00,2013-12-17 08:00,2014-01-09 17:00,2013-12-17 08:00,2014-01-09 17:00,2014-03-13 08:00,2014-04-05 17:00,,PT_Normal,,,,,BuIQQ9QhQ8iSAAR/MOmNSA,,,,N,0,0,,,2013-02-16 15:53,2013-02-16 15:56,admin,admin
501589,6359,124703,13662,0,N,N,N,CP_Drtn,TT_Task,DT_FixedDUR2,TK_NotStart,DUKHCONP03Z2ARRF3620,Epoxy Painting,8178,576,576,120,0,24.75,24.75,120,0,0,0,,,,2014-03-31 08:00,2014-04-16 17:00,,2014-01-05 08:00,2014-01-21 17:00,2014-01-05 08:00,2014-01-21 17:00,2014-01-05 08:00,2014-01-21 17:00,2014-03-31 08:00,2014-04-16 17:00,,PT_Normal,,,,,kIHwhN6rSCmi4Dr2rYrKBQ,,,,N,0,0,,,2013-02-16 15:53,2013-02-16 15:56,admin,admin
501590,6359,124704,13662,0,N,N,N,CP_Drtn,TT_Task,DT_FixedDUR2,TK_NotStart,DUKHCONP03Z2ARFF3300,Block work,8168,0,0,200,0,5553.5,5553.5,200,0,0,0,,,,2013-10-29 08:00,2013-11-26 17:00,,2013-10-29 08:00,2013-11-26 17:00,2013-10-29 08:00,2013-11-26 17:00,2013-10-29 08:00,2013-11-26 17:00,2013-10-29 08:00,2013-11-26 17:00,,PT_Normal,,,,,96O9zINUTRaDU6CqePc4YA,,,,N,0,0,,,2013-02-16 15:53,2013-02-16 15:56,admin,admin
501591,6359,124704,13662,0,N,N,N,CP_Drtn,TT_Task,DT_FixedDUR2,TK_NotStart,DUKHCONP03Z2ARFF3305,Plastering work,8169,0,0,200,0,5516,5516,200,0,0,0,,,,2013-11-23 08:00,2013-12-22 17:00,,2013-11-23 08:00,2013-12-22 17:00,2013-11-23 08:00,2013-12-22 17:00,2013-11-23 08:00,2013-12-22 17:00,2013-11-23 08:00,2013-12-22 17:00,,PT_Normal,,,,,lRu5k+kAS/2IRmeZhzKD3Q,,,,N,0,0,,,2013-02-16 15:53,2013-02-16 15:56,admin,admin
501592,6359,124704,13662,0,N,N,N,CP_Drtn,TT_Task,DT_FixedDUR2,TK_NotStart,DUKHCONP03Z2ARFF3310,Flooring screed,8164,120,120,168,0,1031.25,1031.25,168,0,0,0,,,,2013-12-19 08:00,2014-01-12 17:00,,2013-12-01 08:00,2013-12-25 17:00,2013-12-01 08:00,2013-12-25 17:00,2013-12-01 08:00,2013-12-25 17:00,2013-12-19 08:00,2014-01-12 17:00,,PT_Normal,,,,,KV2uMyHLQzOctYbDz0jn4g,,,,N,0,0,,,2013-02-16 15:53,2013-02-16 15:56,admin,admin
501593,6359,124704,13662,0,N,N,N,CP_Drtn,TT_Task,DT_FixedDUR2,TK_NotStart,DUKHCONP03Z2ARFF3315,Wet area waterproofing,8178,0,0,120,0,582,582,120,0,0,0,,,,2013-12-14 08:00,2013-12-31 17:00,,2013-12-14 08:00,2013-12-31 17:00,2013-12-14 08:00,2013-12-31 17:00,2013-12-14 08:00,2013-12-31 17:00,2013-12-14 08:00,2013-12-31 17:00,,PT_Normal,,,,,lfu1xezyT+aXp/ALntTJGw,,,,N,0,0,,,2013-02-16 15:53,2013-02-16 15:56,admin,admin
501594,6359,124704,13662,0,N,N,N,CP_Drtn,TT_Task,DT_FixedDUR2,TK_NotStart,DUKHCONP03Z2ARFF3330,Paint First coat,8178,144,144,200,0,3644.75,3644.75,200,0,0,0,,,,2013-12-31 08:00,2014-01-28 17:00,,2013-12-09 08:00,2014-01-07 17:00,2013-12-09 08:00,2014-01-07 17:00,2013-12-09 08:00,2014-01-07 17:00,2013-12-31 08:00,2014-01-28 17:00,,PT_Normal,,,,,xJboz2VpRSWjKjHoMUAz1A,,,,N,0,0,,,2013-02-16 15:53,2013-02-16 15:56,admin,admin
501595,6359,124704,13662,0,N,N,N,CP_Drtn,TT_Task,DT_FixedDUR2,TK_NotStart,DUKHCONP03Z2ARFF3320,Ceramic Wall Tiling,8170,0,0,200,0,2603.5,2603.5,200,0,0,0,,,,2013-12-24 08:00,2014-01-21 17:00,,2013-12-24 08:00,2014-01-21 17:00,2013-12-24 08:00,2014-01-21 17:00,2013-12-24 08:00,2014-01-21 17:00,2013-12-24 08:00,2014-01-21 17:00,,PT_Normal,,,,,WEyvOTqbRxqsdcL5tcWZ0g,,,,N,0,0,,,2013-02-16 15:53,2013-02-16 15:56,admin,admin
501596,6359,124704,13662,0,N,N,N,CP_Drtn,TT_Task,DT_FixedDUR2,TK_NotStart,DUKHCONP03Z2ARFF3325,Porcelain Tile flooring,8170,0,0,200,0,1787.5,1787.5,200,0,0,0,,,,2013-12-31 08:00,2014-01-28 17:00,,2013-12-31 08:00,2014-01-28 17:00,2013-12-31 08:00,2014-01-28 17:00,2013-12-31 08:00,2014-01-28 17:00,2013-12-31 08:00,2014-01-28 17:00,,PT_Normal,,,,,MBiK6Az6SVyHNw7+jN9d4A,,,,N,0,0,,,2013-02-16 15:53,2013-02-16 15:56,admin,admin
501597,6359,124704,13662,0,N,N,N,CP_Drtn,TT_Task,DT_FixedDUR2,TK_NotStart,DUKHCONP03Z2ARFF3335,Slate Tile Flooring & Skirting,8178,80,80,120,0,1350,1350,120,0,0,0,,,,2014-01-29 08:00,2014-02-16 17:00,,2014-01-18 08:00,2014-02-03 17:00,2014-01-18 08:00,2014-02-03 17:00,2014-01-18 08:00,2014-02-03 17:00,2014-01-29 08:00,2014-02-16 17:00,,PT_Normal,,,,,4nv3jBQgRQaiPjlvi0cOMg,,,,N,0,0,,,2013-02-16 15:53,2013-02-16 15:56,admin,admin
501598,6359,124704,13662,0,N,N,N,CP_Drtn,TT_Task,DT_FixedDUR2,TK_NotStart,DUKHCONP03Z2ARFF3350,Granite - Stair case flooring & Skirting,8178,16,16,160,0,150,150,160,0,0,0,,,,2014-01-23 08:00,2014-02-16 17:00,,2014-01-21 08:00,2014-02-13 17:00,2014-01-21 08:00,2014-02-13 17:00,2014-01-21 08:00,2014-02-13 17:00,2014-01-23 08:00,2014-02-16 17:00,,PT_Normal,,,,,PnZe7dxkRyuj2qnyhUdl+g,,,,N,0,0,,,2013-02-16 15:53,2013-02-16 15:56,admin,admin
501599,6359,124704,13662,0,N,N,N,CP_Drtn,TT_Task,DT_FixedDUR2,TK_NotStart,DUKHCONP03Z2ARFF3345,Fixing of Suspension systems,8178,0,0,160,0,1434.75,1434.75,160,0,0,0,,,,2014-01-14 08:00,2014-02-05 17:00,,2014-01-14 08:00,2014-02-05 17:00,2014-01-14 08:00,2014-02-05 17:00,2014-01-14 08:00,2014-02-05 17:00,2014-01-14 08:00,2014-02-05 17:00,,PT_Normal,,,,,HIorjQziR0SDR7uHYb8nzA,,,,N,0,0,,,2013-02-16 15:53,2013-02-16 15:56,admin,admin
501600,6359,124704,13662,0,N,N,N,CP_Drtn,TT_Task,DT_FixedDUR2,TK_NotStart,DUKHCONP03Z2ARFF3355,Aluminum tile false ceiling,8178,16,0,160,0,181.25,181.25,160,0,0,0,,,,2014-01-28 08:00,2014-02-20 17:00,,2014-01-26 08:00,2014-02-18 17:00,2014-01-26 08:00,2014-02-18 17:00,2014-01-26 08:00,2014-02-18 17:00,2014-01-28 08:00,2014-02-20 17:00,,PT_Normal,,,,,ZMDzOXWWSiuB6LllctQQDA,,,,N,0,0,,,2013-02-16 15:53,2013-02-16 15:56,admin,admin
501601,6359,124704,13662,0,N,N,N,CP_Drtn,TT_Task,DT_FixedDUR2,TK_NotStart,DUKHCONP03Z2ARFF3360,Gypsum board false ceiling,8178,0,0,200,0,1298.71,1298.71,200,0,0,0,,,,2014-01-22 08:00,2014-02-20 17:00,,2014-01-22 08:00,2014-02-20 17:00,2014-01-22 08:00,2014-02-20 17:00,2014-01-22 08:00,2014-02-20 17:00,2014-01-22 08:00,2014-02-20 17:00,,PT_Normal,,,,,sFwtpqttSEuRM2WeBBjL8g,,,,N,0,0,,,2013-02-16 15:53,2013-02-16 15:56,admin,admin
501602,6359,124704,13662,0,N,N,N,CP_Drtn,TT_Task,DT_FixedDUR2,TK_NotStart,DUKHCONP03Z2ARFF3365,Wooden door,8178,0,0,120,0,330,330,120,0,0,0,,,,2014-02-06 08:00,2014-02-24 17:00,,2014-02-06 08:00,2014-02-24 17:00,2014-02-06 08:00,2014-02-24 17:00,2014-02-06 08:00,2014-02-24 17:00,2014-02-06 08:00,2014-02-24 17:00,,PT_Normal,,,,,tsbB8IdsRbKdqqZcsAEKXA,,,,N,0,0,,,2013-02-16 15:53,2013-02-16 15:56,admin,admin
501603,6359,124704,13662,0,N,N,N,CP_Drtn,TT_Task,DT_FixedDUR2,TK_NotStart,DUKHCONP03Z2ARFF3370,Aluminum Door,8178,0,0,160,0,99,99,160,0,0,0,,,,2014-02-16 08:00,2014-03-10 17:00,,2014-02-16 08:00,2014-03-10 17:00,2014-02-16 08:00,2014-03-10 17:00,2014-02-16 08:00,2014-03-10 17:00,2014-02-16 08:00,2014-03-10 17:00,,PT_Normal,,,,,S/vD3Z9ERFmlwHD6Xj6kpw,,,,N,0,0,,,2013-02-16 15:53,2013-02-16 15:56,admin,admin
501604,6359,124704,13662,0,N,N,N,CP_Drtn,TT_Task,DT_FixedDUR2,TK_NotStart,DUKHCONP03Z2ARFF3380,Aluminum windows,8178,88,88,160,0,264,264,160,0,0,0,,,,2014-03-08 08:00,2014-03-30 17:00,,2014-02-23 08:00,2014-03-17 17:00,2014-02-23 08:00,2014-03-17 17:00,2014-02-23 08:00,2014-03-17 17:00,2014-03-08 08:00,2014-03-30 17:00,,PT_Normal,,,,,DtcnTPm4SWuzZ8wsWPOCuw,,,,N,0,0,,,2013-02-16 15:53,2013-02-16 15:56,admin,admin
501605,6359,124704,13662,0,N,N,N,CP_Drtn,TT_Task,DT_FixedDUR2,TK_NotStart,DUKHCONP03Z2ARFF3375,Carpentry & Joinery Works,8178,0,0,200,0,300,300,200,0,0,0,,,,2014-02-24 08:00,2014-03-24 17:00,,2014-02-24 08:00,2014-03-24 17:00,2014-02-24 08:00,2014-03-24 17:00,2014-02-24 08:00,2014-03-24 17:00,2014-02-24 08:00,2014-03-24 17:00,,PT_Normal,,,,,GnbF19VOTPWyAbm5UEOVWQ,,,,N,0,0,,,2013-02-16 15:53,2013-02-16 15:56,admin,admin
501606,6359,124704,13662,0,N,N,N,CP_Drtn,TT_Task,DT_FixedDUR2,TK_NotStart,DUKHCONP03Z2ARFF3390,Installation of Granite Counter Top,8171,0,0,160,0,132,132,160,0,0,0,,,,2014-03-10 08:00,2014-04-01 17:00,,2014-03-10 08:00,2014-04-01 17:00,2014-03-10 08:00,2014-04-01 17:00,2014-03-10 08:00,2014-04-01 17:00,2014-03-10 08:00,2014-04-01 17:00,,PT_Normal,,,,,yW7eDwX0SnaRWE3cfqEPmA,,,,N,0,0,,,2013-02-16 15:53,2013-02-16 15:56,admin,admin
501607,6359,124704,13662,0,N,N,N,CP_Drtn,TT_Task,DT_FixedDUR2,TK_NotStart,DUKHCONP03Z2ARFF3385,Handrail &  Balustrade,8178,0,0,160,0,275,275,160,0,0,0,,,,2014-03-08 08:00,2014-03-30 17:00,,2014-03-08 08:00,2014-03-30 17:00,2014-03-08 08:00,2014-03-30 17:00,2014-03-08 08:00,2014-03-30 17:00,2014-03-08 08:00,2014-03-30 17:00,,PT_Normal,,,,,7mmiObvjSByqRbnAXNzt9w,,,,N,0,0,,,2013-02-16 15:53,2013-02-16 15:56,admin,admin
501608,6359,124704,13662,0,N,N,N,CP_Drtn,TT_Task,DT_FixedDUR2,TK_NotStart,DUKHCONP03Z2ARFF3395,Final Painting,8178,0,0,200,0,3644.75,3644.75,200,0,0,0,,,,2014-03-19 08:00,2014-04-16 17:00,,2014-03-19 08:00,2014-04-16 17:00,2014-03-19 08:00,2014-04-16 17:00,2014-03-19 08:00,2014-04-16 17:00,2014-03-19 08:00,2014-04-16 17:00,,PT_Normal,,,,,2meuVwm2RaqfNHBbZeLFUg,,,,N,0,0,,,2013-02-16 15:53,2013-02-16 15:56,admin,admin
501609,6359,124705,13662,0,N,N,N,CP_Drtn,TT_Task,DT_FixedDUR2,TK_NotStart,DUKHCONP03Z2ARGF3020,Ceramic Wall Tiling,8170,280,0,200,0,2603.5,2603.5,200,0,0,0,,,,2013-12-12 08:00,2014-01-11 17:00,,2013-11-02 08:00,2013-11-30 17:00,2013-11-02 08:00,2013-11-30 17:00,2013-11-02 08:00,2013-11-30 17:00,2013-12-12 08:00,2014-01-11 17:00,,PT_Normal,,,,,w0hVq1lxR1WLJkGRUTxxgQ,,,,N,0,0,,,2013-02-16 15:53,2013-02-16 15:56,admin,admin
501610,6359,124705,13662,0,N,N,N,CP_Drtn,TT_Task,DT_FixedDUR2,TK_NotStart,DUKHCONP03Z2ARGF3025,Porcelain Tile flooring,8170,280,0,200,0,1787.5,1787.5,200,0,0,0,,,,2013-12-19 08:00,2014-01-16 17:00,,2013-11-07 08:00,2013-12-05 17:00,2013-11-07 08:00,2013-12-05 17:00,2013-11-07 08:00,2013-12-05 17:00,2013-12-19 08:00,2014-01-16 17:00,,PT_Normal,,,,,L0JnqvIbRnqeqX8V96jPHg,,,,N,0,0,,,2013-02-16 15:53,2013-02-16 15:56,admin,admin
501611,6359,124705,13662,0,N,N,N,CP_Drtn,TT_Task,DT_FixedDUR2,TK_NotStart,DUKHCONP03Z2ARGF3040,Cobble Tile flooring,8170,320,0,120,0,68.75,68.75,120,0,0,0,,,,2014-01-21 08:00,2014-02-06 17:00,,2013-12-04 08:00,2013-12-22 17:00,2013-12-04 08:00,2013-12-22 17:00,2013-12-04 08:00,2013-12-22 17:00,2014-01-21 08:00,2014-02-06 17:00,,PT_Normal,,,,,J+cmMGQ3Rt+isdCI2SPX3A,,,,N,0,0,,,2013-02-16 15:53,2013-02-16 15:56,admin,admin
501612,6359,124705,13662,0,N,N,N,CP_Drtn,TT_Task,DT_FixedDUR2,TK_NotStart,DUKHCONP03Z2ARGF3035,Slate Tile Flooring & Skirting,8170,336,16,120,0,45.5,45.5,120,0,0,0,,,,2014-01-16 08:00,2014-02-02 17:00,,2013-11-27 08:00,2013-12-14 17:00,2013-11-27 08:00,2013-12-14 17:00,2013-11-27 08:00,2013-12-14 17:00,2014-01-16 08:00,2014-02-02 17:00,,PT_Normal,,,,,3bVDxWUNQs+gJ5ndEkpffg,,,,N,0,0,,,2013-02-16 15:53,2013-02-16 15:56,admin,admin
501613,6359,124705,13662,0,N,N,N,CP_Drtn,TT_Task,DT_FixedDUR2,TK_NotStart,DUKHCONP03Z2ARGF3050,Granite - Stair case flooring & Skirting,8171,320,0,160,0,506.25,506.25,160,0,0,0,,,,2014-01-29 08:00,2014-02-22 17:00,,2013-12-12 08:00,2014-01-05 17:00,2013-12-12 08:00,2014-01-05 17:00,2013-12-12 08:00,2014-01-05 17:00,2014-01-29 08:00,2014-02-22 17:00,,PT_Normal,,,,,/jP55/PpQRWlVkTU6G3xKw,,,,N,0,0,,,2013-02-16 15:53,2013-02-16 15:56,admin,admin
501614,6359,124705,13662,0,N,N,N,CP_Drtn,TT_Task,DT_FixedDUR2,TK_NotStart,DUKHCONP03Z2ARGF3045,Fixing of Suspension systems,8178,280,0,160,0,1434.75,1434.75,160,0,0,0,,,,2014-01-06 08:00,2014-01-28 17:00,,2013-11-25 08:00,2013-12-17 17:00,2013-11-25 08:00,2013-12-17 17:00,2013-11-25 08:00,2013-12-17 17:00,2014-01-06 08:00,2014-01-28 17:00,,PT_Normal,,,,,h/Vvid5STs+PkmwMDOsjqQ,,,,N,0,0,,,2013-02-16 15:53,2013-02-16 15:56,admin,admin
501615,6359,124705,13662,0,N,N,N,CP_Drtn,TT_Task,DT_FixedDUR2,TK_NotStart,DUKHCONP03Z2ARGF3055,Aluminum tile false ceiling,8178,312,24,200,0,156.25,156.25,200,0,0,0,,,,2014-01-19 08:00,2014-02-17 17:00,,2013-12-03 08:00,2014-01-01 17:00,2013-12-03 08:00,2014-01-01 17:00,2013-12-03 08:00,2014-01-01 17:00,2014-01-19 08:00,2014-02-17 17:00,,PT_Normal,,,,,wK2O/mj1QTS5NWomTPz+Jg,,,,N,0,0,,,2013-02-16 15:53,2013-02-16 15:56,admin,admin
501616,6359,124705,13662,0,N,N,N,CP_Drtn,TT_Task,DT_FixedDUR2,TK_NotStart,DUKHCONP03Z2ARGF3060,Gypsum board false ceiling,8178,280,0,200,0,1298.71,1298.71,200,0,0,0,,,,2014-01-18 08:00,2014-02-16 17:00,,2013-12-07 08:00,2014-01-05 17:00,2013-12-07 08:00,2014-01-05 17:00,2013-12-07 08:00,2014-01-05 17:00,2014-01-18 08:00,2014-02-16 17:00,,PT_Normal,,,,,rK7RZCajT2KTZQKCWPWmLA,,,,N,0,0,,,2013-02-16 15:53,2013-02-16 15:56,admin,admin
501617,6359,124705,13662,0,N,N,N,CP_Drtn,TT_Task,DT_FixedDUR2,TK_NotStart,DUKHCONP03Z2ARGF3065,Wooden door,8178,320,0,120,0,412.5,412.5,120,0,0,0,,,,2014-02-13 08:00,2014-03-02 17:00,,2013-12-28 08:00,2014-01-13 17:00,2013-12-28 08:00,2014-01-13 17:00,2013-12-28 08:00,2014-01-13 17:00,2014-02-13 08:00,2014-03-02 17:00,,PT_Normal,,,,,Y6jjndZiQ7K3Ezhb+pflnw,,,,N,0,0,,,2013-02-16 15:53,2013-02-16 15:56,admin,admin
501618,6359,124705,13662,0,N,N,N,CP_Drtn,TT_Task,DT_FixedDUR2,TK_NotStart,DUKHCONP03Z2ARGF3070,Aluminum doors,8178,320,0,120,0,99,99,120,0,0,0,,,,2014-02-19 08:00,2014-03-08 17:00,,2014-01-02 08:00,2014-01-19 17:00,2014-01-02 08:00,2014-01-19 17:00,2014-01-02 08:00,2014-01-19 17:00,2014-02-19 08:00,2014-03-08 17:00,,PT_Normal,,,,,fYJ8ts/iR9OT3eLa9WQ84A,,,,N,0,0,,,2013-02-16 15:53,2013-02-16 15:56,admin,admin
501619,6359,124705,13662,0,N,N,N,CP_Drtn,TT_Task,DT_FixedDUR2,TK_NotStart,DUKHCONP03Z2ARGF3080,Aluminum windows,8178,400,40,160,0,220,220,160,0,0,0,,,,2014-03-10 08:00,2014-04-01 17:00,,2014-01-09 08:00,2014-02-01 17:00,2014-01-09 08:00,2014-02-01 17:00,2014-01-09 08:00,2014-02-01 17:00,2014-03-10 08:00,2014-04-01 17:00,,PT_Normal,,,,,hn4DKDpWTlinUbTFEd+W4g,,,,N,0,0,,,2013-02-16 15:53,2013-02-16 15:56,admin,admin
501620,6359,124705,13662,0,N,N,N,CP_Drtn,TT_Task,DT_FixedDUR2,TK_NotStart,DUKHCONP03Z2ARGF3075,Carpentry & Joinery Works,8178,320,0,160,0,792,792,160,0,0,0,,,,2014-02-25 08:00,2014-03-19 17:00,,2014-01-08 08:00,2014-01-30 17:00,2014-01-08 08:00,2014-01-30 17:00,2014-01-08 08:00,2014-01-30 17:00,2014-02-25 08:00,2014-03-19 17:00,,PT_Normal,,,,,Ld8XUHbhR82YkVQGISqxgA,,,,N,0,0,,,2013-02-16 15:53,2013-02-16 15:56,admin,admin
501621,6359,124705,13662,0,N,N,N,CP_Drtn,TT_Task,DT_FixedDUR2,TK_NotStart,DUKHCONP03Z2ARGF3090,Installation of Granite Counter Top,8171,320,0,120,0,132,132,120,0,0,0,,,,2014-03-10 08:00,2014-03-26 17:00,,2014-01-21 08:00,2014-02-06 17:00,2014-01-21 08:00,2014-02-06 17:00,2014-01-21 08:00,2014-02-06 17:00,2014-03-10 08:00,2014-03-26 17:00,,PT_Normal,,,,,6j6yXIrqTpej48YnH5mZyw,,,,N,0,0,,,2013-02-16 15:53,2013-02-16 15:56,admin,admin
501622,6359,124705,13662,0,N,N,N,CP_Drtn,TT_Task,DT_FixedDUR2,TK_NotStart,DUKHCONP03Z2ARGF3085,S.S.Balustrade,8178,360,40,160,0,47.25,47.25,160,0,0,0,,,,2014-03-11 08:00,2014-04-02 17:00,,2014-01-16 08:00,2014-02-08 17:00,2014-01-16 08:00,2014-02-08 17:00,2014-01-16 08:00,2014-02-08 17:00,2014-03-11 08:00,2014-04-02 17:00,,PT_Normal,,,,,at4FmkHZSSqfYT4PmXX21Q,,,,N,0,0,,,2013-02-16 15:53,2013-02-16 15:56,admin,admin
501623,6359,124705,13662,0,N,N,N,CP_Drtn,TT_Task,DT_FixedDUR2,TK_NotStart,DUKHCONP03Z2ARGF3095,Final Painting,8178,320,0,200,0,4136.55,4136.55,200,0,0,0,,,,2014-03-19 08:00,2014-04-16 17:00,,2014-01-30 08:00,2014-03-01 17:00,2014-01-30 08:00,2014-03-01 17:00,2014-01-30 08:00,2014-03-01 17:00,2014-03-19 08:00,2014-04-16 17:00,,PT_Normal,,,,,jMHkMF1oSWarqgVaLu8efA,,,,N,0,0,,,2013-02-16 15:53,2013-02-16 15:56,admin,admin
501624,6359,124705,13662,0,N,N,N,CP_Drtn,TT_Task,DT_FixedDUR2,TK_NotStart,DUKHCONP03Z2ARGF3000,Block work,8168,280,0,200,0,7112.5,7112.5,200,0,0,0,,,,2013-10-28 08:00,2013-11-25 17:00,,2013-09-15 08:00,2013-10-13 17:00,2013-09-15 08:00,2013-10-13 17:00,2013-09-15 08:00,2013-10-13 17:00,2013-10-28 08:00,2013-11-25 17:00,,PT_Normal,,,,,tvuLjp8+SCSLKlgP2YgpMQ,,,,N,0,0,,,2013-02-16 15:53,2013-02-16 15:56,admin,admin
501625,6359,124705,13662,0,N,N,N,CP_Drtn,TT_Task,DT_FixedDUR2,TK_NotStart,DUKHCONP03Z2ARGF3005,Plastering work,8169,280,0,200,0,6268.75,6268.75,200,0,0,0,,,,2013-11-19 08:00,2013-12-17 17:00,,2013-10-07 08:00,2013-11-06 17:00,2013-10-07 08:00,2013-11-06 17:00,2013-10-07 08:00,2013-11-06 17:00,2013-11-19 08:00,2013-12-17 17:00,,PT_Normal,,,,,wC0KHwdoTXOM+VlH32f3+w,,,,N,0,0,,,2013-02-16 15:53,2013-02-16 15:56,admin,admin
501626,6359,124705,13662,0,N,N,N,CP_Drtn,TT_Task,DT_FixedDUR2,TK_NotStart,DUKHCONP03Z2ARGF3010,Flooring screed,8164,344,64,168,0,1234.75,1234.75,168,0,0,0,,,,2013-12-07 08:00,2013-12-31 17:00,,2013-10-15 08:00,2013-11-10 17:00,2013-10-15 08:00,2013-11-10 17:00,2013-10-15 08:00,2013-11-10 17:00,2013-12-07 08:00,2013-12-31 17:00,,PT_Normal,,,,,x0d9l4n+TgivUWISAHj2jg,,,,N,0,0,,,2013-02-16 15:53,2013-02-16 15:56,admin,admin
501627,6359,124705,13662,0,N,N,N,CP_Drtn,TT_Task,DT_FixedDUR2,TK_NotStart,DUKHCONP03Z2ARGF3015,Wet area waterproofing & Protection Screed,8178,280,0,120,0,582,582,120,0,0,0,,,,2013-12-07 08:00,2013-12-24 17:00,,2013-10-27 08:00,2013-11-12 17:00,2013-10-27 08:00,2013-11-12 17:00,2013-10-27 08:00,2013-11-12 17:00,2013-12-07 08:00,2013-12-24 17:00,,PT_Normal,,,,,C8n78WqOSe2f/lEozxLDaA,,,,N,0,0,,,2013-02-16 15:53,2013-02-16 15:56,admin,admin
501628,6359,124705,13662,0,N,N,N,CP_Drtn,TT_Task,DT_FixedDUR2,TK_NotStart,DUKHCONP03Z2ARGF3030,Paint First coat,8178,344,0,200,0,4136.55,4136.55,200,0,0,0,,,,2013-12-23 08:00,2014-01-20 17:00,,2013-11-02 08:00,2013-11-30 17:00,2013-11-02 08:00,2013-11-30 17:00,2013-11-02 08:00,2013-11-30 17:00,2013-12-23 08:00,2014-01-20 17:00,,PT_Normal,,,,,G3VOghAVQUyaK9DyJYe8rg,,,,N,0,0,,,2013-02-16 15:53,2013-02-16 15:56,admin,admin
501629,6359,124707,13662,0,N,N,N,CP_Drtn,TT_Task,DT_FixedDUR2,TK_NotStart,DUKHCONP03Z2WTEX5030,Excavation,8177,464,0,160,0,116,116,160,80,0,80,,,,2014-01-14 08:00,2014-02-05 17:00,,2013-11-06 08:00,2013-11-28 17:00,2013-11-06 08:00,2013-11-28 17:00,2013-11-06 08:00,2013-11-28 17:00,2014-01-14 08:00,2014-02-05 17:00,,PT_Normal,,,,,1nnfuHycS7G6FtBwc88/7Q,,,,N,0,0,,,2013-02-16 15:53,2013-02-16 15:56,admin,admin
501630,6359,124707,13662,0,N,N,N,CP_Drtn,TT_Task,DT_FixedDUR2,TK_NotStart,DUKHCONP03Z2WTEX5035,Construction of Raft,8167,464,0,200,0,210,210,200,0,0,0,,,,2014-01-20 08:00,2014-02-18 17:00,,2013-11-12 08:00,2013-12-10 17:00,2013-11-12 08:00,2013-12-10 17:00,2013-11-12 08:00,2013-12-10 17:00,2014-01-20 08:00,2014-02-18 17:00,,PT_Normal,,,,,PWXyMk3dQsaUtDJaHK/QDg,,,,N,0,0,,,2013-02-16 15:53,2013-02-16 15:56,admin,admin
501631,6359,124707,13662,0,N,N,N,CP_Drtn,TT_Task,DT_FixedDUR2,TK_NotStart,DUKHCONP03Z2WTEX5040,Block works & Plastering,8168,464,0,200,0,2442,2442,200,0,0,0,,,,2014-01-29 08:00,2014-02-27 17:00,,2013-11-21 08:00,2013-12-21 17:00,2013-11-21 08:00,2013-12-21 17:00,2013-11-21 08:00,2013-12-21 17:00,2014-01-29 08:00,2014-02-27 17:00,,PT_Normal,,,,,mOBf8tDwSWavErhOwBCmXg,,,,N,0,0,,,2013-02-16 15:53,2013-02-16 15:56,admin,admin
501632,6359,124707,13662,0,N,N,N,CP_Drtn,TT_Task,DT_FixedDUR2,TK_NotStart,DUKHCONP03Z2WTEX5045,Flooring & Painting,8164,464,296,200,0,900,900,200,0,0,0,,,,2014-02-12 08:00,2014-03-12 17:00,,2013-12-04 08:00,2014-01-02 17:00,2013-12-04 08:00,2014-01-02 17:00,2013-12-04 08:00,2014-01-02 17:00,2014-02-12 08:00,2014-03-12 17:00,,PT_Normal,,,,,vxWVRZ5UTG6cMp9beHM6zg,,,,N,0,0,,,2013-02-16 15:53,2013-02-16 15:56,admin,admin
501633,6359,124707,13662,0,N,N,N,CP_Drtn,TT_Task,DT_FixedDUR2,TK_NotStart,DUKHCONP03Z2WTEX5050,Installation of Steel Gate,8178,168,16,160,0,84,84,160,0,0,0,,,,2014-03-02 08:00,2014-03-24 17:00,,2014-02-04 08:00,2014-02-27 17:00,2014-02-04 08:00,2014-02-27 17:00,2014-02-04 08:00,2014-02-27 17:00,2014-03-02 08:00,2014-03-24 17:00,,PT_Normal,,,,,zdoqgfGsS668IECTXJA09g,,,,N,0,0,,,2013-02-16 15:53,2013-02-16 15:56,admin,admin
501634,6359,124707,13662,0,N,N,N,CP_Drtn,TT_Task,DT_FixedDUR2,TK_NotStart,DUKHCONP03Z2WTEX5060,Structural steel &  SS Shed cover installation,8178,152,0,200,0,588,588,200,0,0,0,,,,2014-03-08 08:00,2014-04-05 17:00,,2014-02-13 08:00,2014-03-13 17:00,2014-02-13 08:00,2014-03-13 17:00,2014-02-13 08:00,2014-03-13 17:00,2014-03-08 08:00,2014-04-05 17:00,,PT_Normal,,,,,bkCR/tMGRSC1aXO8PrDY9A,,,,N,0,0,,,2013-02-16 15:53,2013-02-16 15:56,admin,admin
501635,6359,124707,13662,0,N,N,N,CP_Drtn,TT_Task,DT_FixedDUR2,TK_NotStart,DUKHCONP03Z2WTEX5065,"Install. of Water Tank,Chiller,Pump & Meter",8178,152,0,200,0,152.4,152.4,200,0,0,0,,,,2014-03-19 08:00,2014-04-16 17:00,,2014-02-25 08:00,2014-03-25 17:00,2014-02-25 08:00,2014-03-25 17:00,2014-02-25 08:00,2014-03-25 17:00,2014-03-19 08:00,2014-04-16 17:00,,PT_Normal,,,,,OnjxNIzETueVxJjoHuuT9g,,,,N,0,0,,,2013-02-16 15:53,2013-02-23 09:03,admin,admin
501636,6359,124707,13662,0,N,N,N,CP_Drtn,TT_Task,DT_FixedDUR2,TK_NotStart,DUKHCONP03Z2WTEX5080,Domestic Water Tank Electrical works,8178,464,0,200,0,175,175,200,0,0,0,,,,2014-02-06 08:00,2014-03-08 17:00,,2013-11-30 08:00,2013-12-29 17:00,2013-11-30 08:00,2013-12-29 17:00,2013-11-30 08:00,2013-12-29 17:00,2014-02-06 08:00,2014-03-08 17:00,,PT_Normal,,,,,KSHbnN0NQ+qZCk67PrEPig,,,,N,0,0,,,2013-02-16 15:53,2013-02-16 15:56,admin,admin
501637,6359,124707,13662,0,N,N,N,CP_Drtn,TT_Task,DT_FixedDUR2,TK_NotStart,DUKHCONP03Z2WTEX5070,Domestic Water Tank Plumbings works,8178,464,0,200,0,200,200,200,0,0,0,,,,2014-02-06 08:00,2014-03-08 17:00,,2013-11-30 08:00,2013-12-29 17:00,2013-11-30 08:00,2013-12-29 17:00,2013-11-30 08:00,2013-12-29 17:00,2014-02-06 08:00,2014-03-08 17:00,,PT_Normal,,,,,G4a9YLzVRlmKrpDIlHjqKQ,,,,N,0,0,,,2013-02-16 15:53,2013-02-16 15:56,admin,admin
501638,6359,124707,13662,0,N,N,N,CP_Drtn,TT_Task,DT_FixedDUR2,TK_NotStart,DUKHCONP03Z2WTEX5075,Domestic Water Tank AC works,8178,464,0,200,0,175,175,200,0,0,0,,,,2014-02-06 08:00,2014-03-08 17:00,,2013-11-30 08:00,2013-12-29 17:00,2013-11-30 08:00,2013-12-29 17:00,2013-11-30 08:00,2013-12-29 17:00,2014-02-06 08:00,2014-03-08 17:00,,PT_Normal,,,,,9yQ4cePTTIGL74WbWvT2MA,,,,N,0,0,,,2013-02-16 15:53,2013-02-16 15:56,admin,admin
501639,6359,124707,13662,0,N,N,N,CP_Drtn,TT_Task,DT_FixedDUR2,TK_NotStart,DUKHCONP03Z2WTEX5085,Domestic Water Tank Firefighting works,8178,464,0,200,0,118.8,118.8,200,0,0,0,,,,2014-02-06 08:00,2014-03-08 17:00,,2013-11-30 08:00,2013-12-29 17:00,2013-11-30 08:00,2013-12-29 17:00,2013-11-30 08:00,2013-12-29 17:00,2014-02-06 08:00,2014-03-08 17:00,,PT_Normal,,,,,3BweqIE1SZCQEI83i+oy8Q,,,,N,0,0,,,2013-02-16 15:53,2013-02-16 15:56,admin,admin
501640,6359,124708,13662,0,N,N,N,CP_Drtn,TT_Task,DT_FixedDUR2,TK_NotStart,DUKHCONP03Z2MSEX5020,Construction Entrance Ramp,8164,168,0,200,0,216,216,200,0,0,0,,,,2014-01-30 08:00,2014-03-01 17:00,,2014-01-06 08:00,2014-02-03 17:00,2014-01-06 08:00,2014-02-03 17:00,2014-01-06 08:00,2014-02-03 17:00,2014-01-30 08:00,2014-03-01 17:00,,PT_Normal,,,,,FPEWukrLS7Cf4bn08j2cQA,,,,N,0,0,,,2013-02-16 15:53,2013-02-16 15:56,admin,admin
501641,6359,124708,13662,0,N,N,N,CP_Drtn,TT_Task,DT_FixedDUR2,TK_NotStart,DUKHCONP03Z2MSEX5025,SS.Handrails and Balustrades,8178,168,0,160,0,108,108,160,0,0,0,,,,2014-02-18 08:00,2014-03-12 17:00,,2014-01-23 08:00,2014-02-16 17:00,2014-01-23 08:00,2014-02-16 17:00,2014-01-23 08:00,2014-02-16 17:00,2014-02-18 08:00,2014-03-12 17:00,,PT_Normal,,,,,ODIJB/T0Q6idBPRAMv56ZQ,,,,N,0,0,,,2013-02-16 15:53,2013-02-16 15:56,admin,admin
501642,6359,124708,13662,0,N,N,N,CP_Drtn,TT_Task,DT_FixedDUR2,TK_NotStart,DUKHCONP03Z2MSEX5015,Construction of grease Trap,8178,416,0,160,0,42,42,160,0,0,0,,,,2014-02-02 08:00,2014-02-25 17:00,,2013-12-02 08:00,2013-12-25 17:00,2013-12-02 08:00,2013-12-25 17:00,2013-12-02 08:00,2013-12-25 17:00,2014-02-02 08:00,2014-02-25 17:00,,PT_Normal,,,,,f/IGSabzRUWdS9XyuZgkdA,,,,N,0,0,,,2013-02-16 15:53,2013-02-16 15:56,admin,admin
501643,6359,124708,13662,0,N,N,N,CP_Drtn,TT_Task,DT_FixedDUR2,TK_NotStart,DUKHCONP03Z2MSEX5000,Construction of Manholes,8178,416,0,200,0,132,132,200,0,0,0,,,,2013-12-30 08:00,2014-01-27 17:00,,2013-10-29 08:00,2013-11-26 17:00,2013-10-29 08:00,2013-11-26 17:00,2013-10-29 08:00,2013-11-26 17:00,2013-12-30 08:00,2014-01-27 17:00,,PT_Normal,,,,,C1bdmfSQQ/iaCn1MuBjxnA,,,,N,0,0,,,2013-02-16 15:53,2013-02-16 15:56,admin,admin
501644,6359,124708,13662,0,N,N,N,CP_Drtn,TT_Task,DT_FixedDUR2,TK_NotStart,DUKHCONP03Z2MSEX5005,"Construction  of Soak pit, Chambers",8177,416,0,200,0,275,275,200,0,0,0,,,,2014-01-13 08:00,2014-02-10 17:00,,2013-11-12 08:00,2013-12-10 17:00,2013-11-12 08:00,2013-12-10 17:00,2013-11-12 08:00,2013-12-10 17:00,2014-01-13 08:00,2014-02-10 17:00,,PT_Normal,,,,,ChK0yiFpTFagduveDLemcg,,,,N,0,0,,,2013-02-16 15:53,2013-02-16 15:56,admin,admin
501645,6359,124708,13662,0,N,N,N,CP_Drtn,TT_Task,DT_FixedDUR2,TK_NotStart,DUKHCONP03Z2MSEX5010,Telephone cable laying,8177,416,248,200,0,500,500,200,0,0,0,,,,2014-02-26 08:00,2014-03-26 17:00,,2013-12-26 08:00,2014-01-23 17:00,2013-12-26 08:00,2014-01-23 17:00,2013-12-26 08:00,2014-01-23 17:00,2014-02-26 08:00,2014-03-26 17:00,,PT_Normal,,,,,dSKlUI+fSz+MPj7iw4m0OA,,,,N,0,0,,,2013-02-16 15:53,2013-02-16 15:56,admin,admin
501646,6359,124711,13662,0,N,N,N,CP_Drtn,TT_Task,DT_FixedDUR2,TK_NotStart,DUKHCONP03Z2STUG1045,Construction of slab on grade,8163,0,0,200,0,3327.5,3327.5,200,0,0,0,,,,2013-06-16 08:00,2013-07-14 17:00,,2013-06-16 08:00,2013-07-14 17:00,2013-06-16 08:00,2013-07-14 17:00,2013-06-16 08:00,2013-07-14 17:00,2013-06-16 08:00,2013-07-14 17:00,,PT_Normal,,,,,h2m1VizHTeeTXG2BgphGjA,,,,N,0,0,,,2013-02-16 15:53,2013-02-16 15:56,admin,admin
501647,6359,124711,13662,0,N,N,N,CP_Drtn,TT_Task,DT_FixedDUR2,TK_NotStart,DUKHCONP03Z2STUG1000,Footing Excavation,8177,0,0,200,0,1556,1556,200,732,0,732,,,,2013-02-28 08:00,2013-03-28 17:00,,2013-02-28 08:00,2013-03-28 17:00,2013-02-28 08:00,2013-03-28 17:00,2013-02-28 08:00,2013-03-28 17:00,2013-02-28 08:00,2013-03-28 17:00,,PT_Normal,,,,,dzQ4FUyxSN6/SvOXr/QsrA,,,,N,0,0,,,2013-02-16 15:53,2013-02-16 15:56,admin,admin
501648,6359,124711,13662,0,N,N,N,CP_Drtn,TT_Task,DT_FixedDUR2,TK_NotStart,DUKHCONP03Z2STUG1005,Footing Antitermite,8178,0,0,184,0,634.25,634.25,184,0,0,0,,,,2013-03-11 08:00,2013-04-06 17:00,,2013-03-11 08:00,2013-04-06 17:00,2013-03-11 08:00,2013-04-06 17:00,2013-03-11 08:00,2013-04-06 17:00,2013-03-11 08:00,2013-04-06 17:00,,PT_Normal,,,,,y2J9Xv+IT0+5D08BKs0xmQ,,,,N,0,0,,,2013-02-16 15:53,2013-02-16 15:56,admin,admin
501649,6359,124711,13662,0,N,N,N,CP_Drtn,TT_Task,DT_FixedDUR2,TK_NotStart,DUKHCONP03Z2STUG1010,Footing Blinding,8163,0,0,184,0,588,588,184,0,0,0,,,,2013-03-14 08:00,2013-04-09 17:00,,2013-03-14 08:00,2013-04-09 17:00,2013-03-14 08:00,2013-04-09 17:00,2013-03-14 08:00,2013-04-09 17:00,2013-03-14 08:00,2013-04-09 17:00,,PT_Normal,,,,,r0x0sfnJSsmOM1TASTn60g,,,,N,0,0,,,2013-02-16 15:53,2013-02-16 15:56,admin,admin
501650,6359,124711,13662,0,N,N,N,CP_Drtn,TT_Task,DT_FixedDUR2,TK_NotStart,DUKHCONP03Z2STUG1015,Footing Waterproofing & Screed,8164,0,0,200,0,1368.5,1368.5,200,0,0,0,,,,2013-03-20 08:00,2013-04-17 17:00,,2013-03-20 08:00,2013-04-17 17:00,2013-03-20 08:00,2013-04-17 17:00,2013-03-20 08:00,2013-04-17 17:00,2013-03-20 08:00,2013-04-17 17:00,,PT_Normal,,,,,cVK7ZCIHQVG5OD7SvuZ6ug,,,,N,0,0,,,2013-02-16 15:53,2013-02-16 15:56,admin,admin
501651,6359,124711,13662,0,N,N,N,CP_Drtn,TT_Task,DT_FixedDUR2,TK_NotStart,DUKHCONP03Z2STUG1020,Construction of foundations,8165,0,0,160,0,4817.75,4817.75,160,0,0,0,,,,2013-04-04 08:00,2013-04-27 17:00,,2013-04-04 08:00,2013-04-27 17:00,2013-04-04 08:00,2013-04-27 17:00,2013-04-04 08:00,2013-04-27 17:00,2013-04-04 08:00,2013-04-27 17:00,,PT_Normal,,,,,h2Vgcdt1S8Sha8qHM/UD/A,,,,N,0,0,,,2013-02-16 15:53,2013-02-16 15:56,admin,admin
501652,6359,124711,13662,0,N,N,N,CP_Drtn,TT_Task,DT_FixedDUR2,TK_NotStart,DUKHCONP03Z2STUG1025,Construction of neck of columns,8165,0,0,200,0,1400,1400,200,0,0,0,,,,2013-04-14 08:00,2013-05-12 17:00,,2013-04-14 08:00,2013-05-12 17:00,2013-04-14 08:00,2013-05-12 17:00,2013-04-14 08:00,2013-05-12 17:00,2013-04-14 08:00,2013-05-12 17:00,,PT_Normal,,,,,jHGxjmxURDygS5kATnCXZg,,,,N,0,0,,,2013-02-16 15:53,2013-02-16 15:56,admin,admin
501653,6359,124711,13662,0,N,N,N,CP_Drtn,TT_Task,DT_FixedDUR2,TK_NotStart,DUKHCONP03Z2STUG1030,Waterproofing Footing & Neck Column,8178,0,0,200,0,213.5,213.5,200,0,0,0,,,,2013-04-23 08:00,2013-05-21 17:00,,2013-04-23 08:00,2013-05-21 17:00,2013-04-23 08:00,2013-05-21 17:00,2013-04-23 08:00,2013-05-21 17:00,2013-04-23 08:00,2013-05-21 17:00,,PT_Normal,,,,,XeWGFmdLSjCYc6o+Kux+8A,,,,N,0,0,,,2013-02-16 15:53,2013-02-16 15:56,admin,admin
501654,6359,124711,13662,0,N,N,N,CP_Drtn,TT_Task,DT_FixedDUR2,TK_NotStart,DUKHCONP03Z2STUG1035,Backfilling Upto Grade Beam Bottom,8177,0,0,200,0,2560,2560,200,2200,0,2200,,,,2013-05-04 08:00,2013-06-01 17:00,,2013-05-04 08:00,2013-06-01 17:00,2013-05-04 08:00,2013-06-01 17:00,2013-05-04 08:00,2013-06-01 17:00,2013-05-04 08:00,2013-06-01 17:00,,PT_Normal,,,,,7DJhwwbNRIK+ADSPH5h32g,,,,N,0,0,,,2013-02-16 15:53,2013-02-16 15:56,admin,admin
501655,6359,124711,13662,0,N,N,N,CP_Drtn,TT_Task,DT_FixedDUR2,TK_NotStart,DUKHCONP03Z2STUG1040,Construction of Grade Beams,8163,0,0,200,0,4745,4745,200,0,0,0,,,,2013-05-20 08:00,2013-06-17 17:00,,2013-05-20 08:00,2013-06-17 17:00,2013-05-20 08:00,2013-06-17 17:00,2013-05-20 08:00,2013-06-17 17:00,2013-05-20 08:00,2013-06-17 17:00,,PT_Normal,,,,,1SwMi4n+SOWpw0Pd4bABiQ,,,,N,0,0,,,2013-02-16 15:53,2013-02-16 15:56,admin,admin
501656,6359,124713,13662,0,N,N,N,CP_Drtn,TT_Task,DT_FixedDUR2,TK_NotStart,DUKHCONP03Z2STFF2020,Column-Rebar & Formwork,8165,0,0,200,0,1615.25,1615.25,200,0,0,0,,,,2013-08-17 08:00,2013-09-14 17:00,,2013-08-17 08:00,2013-09-14 17:00,2013-08-17 08:00,2013-09-14 17:00,2013-08-17 08:00,2013-09-14 17:00,2013-08-17 08:00,2013-09-14 17:00,,PT_Normal,,,,,CiebM0+YRcKEzCMrwfr//w,,,,N,0,0,,,2013-02-16 15:53,2013-02-16 15:56,admin,admin
501657,6359,124713,13662,0,N,N,N,CP_Drtn,TT_Task,DT_FixedDUR2,TK_NotStart,DUKHCONP03Z2STFF2025,Column-Concrete,8167,0,0,192,0,87.5,87.5,192,0,0,0,,,,2013-08-27 08:00,2013-09-23 17:00,,2013-08-27 08:00,2013-09-23 17:00,2013-08-27 08:00,2013-09-23 17:00,2013-08-27 08:00,2013-09-23 17:00,2013-08-27 08:00,2013-09-23 17:00,,PT_Normal,,,,,9NUa/FFGQv6nvBzt6LsD4A,,,,N,0,0,,,2013-02-16 15:53,2013-02-16 15:56,admin,admin
501658,6359,124713,13662,0,N,N,N,CP_Drtn,TT_Task,DT_FixedDUR2,TK_NotStart,DUKHCONP03Z2STFF2030,"Beam, Stairs ,Slab-Rebar & Formwork",8165,0,0,200,0,10081.75,10081.75,200,0,0,0,,,,2013-09-11 08:00,2013-10-09 17:00,,2013-09-11 08:00,2013-10-09 17:00,2013-09-11 08:00,2013-10-09 17:00,2013-09-11 08:00,2013-10-09 17:00,2013-09-11 08:00,2013-10-09 17:00,,PT_Normal,,,,,Ah+HSY3XTA6cycuQGPIC3w,,,,N,0,0,,,2013-02-16 15:53,2013-02-16 15:56,admin,admin
501659,6359,124713,13662,0,N,N,N,CP_Drtn,TT_Task,DT_FixedDUR2,TK_NotStart,DUKHCONP03Z2STFF2035,"Beam, Stairs ,Slab-Concrete",8167,0,0,120,0,731.5,731.5,120,0,0,0,,,,2013-10-02 08:00,2013-10-21 17:00,,2013-10-02 08:00,2013-10-21 17:00,2013-10-02 08:00,2013-10-21 17:00,2013-10-02 08:00,2013-10-21 17:00,2013-10-02 08:00,2013-10-21 17:00,,PT_Normal,,,,,U4jiQLB6T6WcV1j7XKqlow,,,,N,0,0,,,2013-02-16 15:53,2013-02-16 15:56,admin,admin
501660,6359,124714,13662,0,N,N,N,CP_Drtn,TT_Task,DT_FixedDUR2,TK_NotStart,DUKHCONP03Z2STRF2040,Column-Rebar & Formwork,8165,288,0,144,0,549.5,549.5,144,0,0,0,,,,2013-11-18 08:00,2013-12-08 17:00,,2013-10-05 08:00,2013-10-27 17:00,2013-10-05 08:00,2013-10-27 17:00,2013-10-05 08:00,2013-10-27 17:00,2013-11-18 08:00,2013-12-08 17:00,,PT_Normal,,,,,yIKChX2NQ42VLZaG6g9Jsg,,,,N,0,0,,,2013-02-16 15:53,2013-02-16 15:56,admin,admin
501661,6359,124714,13662,0,N,N,N,CP_Drtn,TT_Task,DT_FixedDUR2,TK_NotStart,DUKHCONP03Z2STRF2045,Column-Concrete,8167,408,0,136,0,21,21,136,0,0,0,,,,2013-12-09 08:00,2013-12-29 17:00,,2013-10-08 08:00,2013-10-29 17:00,2013-10-08 08:00,2013-10-29 17:00,2013-10-08 08:00,2013-10-29 17:00,2013-12-09 08:00,2013-12-29 17:00,,PT_Normal,,,,,obOC8z7eQP6g9xAXTol0Cg,,,,N,0,0,,,2013-02-16 15:53,2013-02-16 15:56,admin,admin
501662,6359,124714,13662,0,N,N,N,CP_Drtn,TT_Task,DT_FixedDUR2,TK_NotStart,DUKHCONP03Z2STRF2050,Slab-Rebar & Formwork,8165,408,0,160,0,1576.75,1576.75,160,0,0,0,,,,2013-12-11 08:00,2014-01-04 17:00,,2013-10-10 08:00,2013-11-04 17:00,2013-10-10 08:00,2013-11-04 17:00,2013-10-10 08:00,2013-11-04 17:00,2013-12-11 08:00,2014-01-04 17:00,,PT_Normal,,,,,0cH7TqUHQeSC8TknncVkeA,,,,N,0,0,,,2013-02-16 15:53,2013-02-16 15:56,admin,admin
501663,6359,124714,13662,0,N,N,N,CP_Drtn,TT_Task,DT_FixedDUR2,TK_NotStart,DUKHCONP03Z2STRF2055,Slab-Concrete,8167,408,0,104,0,175,175,104,0,0,0,,,,2013-12-23 08:00,2014-01-06 17:00,,2013-10-23 08:00,2013-11-06 17:00,2013-10-23 08:00,2013-11-06 17:00,2013-10-23 08:00,2013-11-06 17:00,2013-12-23 08:00,2014-01-06 17:00,,PT_Normal,,,,,kD+7Ca3jTgGycMc9DVTiVw,,,,N,0,0,,,2013-02-16 15:53,2013-02-16 15:56,admin,admin
501664,6359,124714,13662,0,N,N,N,CP_Drtn,TT_Task,DT_FixedDUR2,TK_NotStart,DUKHCONP03Z2STRF2060,Construction of Parapets,8168,464,0,200,0,1441,1441,200,0,0,0,,,,2014-01-02 08:00,2014-01-30 17:00,,2013-10-26 08:00,2013-11-23 17:00,2013-10-26 08:00,2013-11-23 17:00,2013-10-26 08:00,2013-11-23 17:00,2014-01-02 08:00,2014-01-30 17:00,,PT_Normal,,,,,zCoxaNcPQsym0A0/G/Zgnw,,,,N,0,0,,,2013-02-16 15:53,2013-02-16 15:56,admin,admin
501665,6359,124714,13662,0,N,N,N,CP_Drtn,TT_Task,DT_FixedDUR2,TK_NotStart,DUKHCONP03Z2STRF2065,Construction of up stands/Plinth,8165,464,0,200,0,283.5,283.5,200,0,0,0,,,,2014-01-08 08:00,2014-02-05 17:00,,2013-10-31 08:00,2013-11-28 17:00,2013-10-31 08:00,2013-11-28 17:00,2013-10-31 08:00,2013-11-28 17:00,2014-01-08 08:00,2014-02-05 17:00,,PT_Normal,,,,,22j26i58RaOrUKuDs0GXgA,,,,N,0,0,,,2013-02-16 15:53,2013-02-16 15:56,admin,admin
501666,6359,124715,13662,0,N,N,N,CP_Drtn,TT_Task,DT_FixedDUR2,TK_NotStart,DUKHCONP03Z2STGF2000,Column-Rebar & Formwork,8165,0,0,200,0,1688.75,1688.75,200,0,0,0,,,,2013-07-02 08:00,2013-07-30 17:00,,2013-07-02 08:00,2013-07-30 17:00,2013-07-02 08:00,2013-07-30 17:00,2013-07-02 08:00,2013-07-30 17:00,2013-07-02 08:00,2013-07-30 17:00,,PT_Normal,,,,,uXnJRFGAQRmA/6hzhHSSwg,,,,N,0,0,,,2013-02-16 15:53,2013-02-16 15:56,admin,admin
501667,6359,124715,13662,0,N,N,N,CP_Drtn,TT_Task,DT_FixedDUR2,TK_NotStart,DUKHCONP03Z2STGF2005,Column-Concrete,8167,0,0,192,0,101.5,101.5,192,0,0,0,,,,2013-07-11 08:00,2013-08-07 17:00,,2013-07-11 08:00,2013-08-07 17:00,2013-07-11 08:00,2013-08-07 17:00,2013-07-11 08:00,2013-08-07 17:00,2013-07-11 08:00,2013-08-07 17:00,,PT_Normal,,,,,rKz/zyKBSoG+AywVrP/0pw,,,,N,0,0,,,2013-02-16 15:53,2013-02-16 15:56,admin,admin
501668,6359,124715,13662,0,N,N,N,CP_Drtn,TT_Task,DT_FixedDUR2,TK_NotStart,DUKHCONP03Z2STGF2010,"Beam, Stairs ,Slab-Rebar & Formwork",8165,0,0,200,0,10592.75,10592.75,200,0,0,0,,,,2013-07-27 08:00,2013-08-27 17:00,,2013-07-27 08:00,2013-08-27 17:00,2013-07-27 08:00,2013-08-27 17:00,2013-07-27 08:00,2013-08-27 17:00,2013-07-27 08:00,2013-08-27 17:00,,PT_Normal,,,,,d3+eYgIFTaqx6kEod13kbg,,,,N,0,0,,,2013-02-16 15:53,2013-02-16 15:56,admin,admin
501669,6359,124715,13662,0,N,N,N,CP_Drtn,TT_Task,DT_FixedDUR2,TK_NotStart,DUKHCONP03Z2STGF2015,"Beam, Stairs ,Slab-Concrete",8167,0,0,120,0,868,868,120,0,0,0,,,,2013-08-14 08:00,2013-08-31 17:00,,2013-08-14 08:00,2013-08-31 17:00,2013-08-14 08:00,2013-08-31 17:00,2013-08-14 08:00,2013-08-31 17:00,2013-08-14 08:00,2013-08-31 17:00,,PT_Normal,,,,,4yyiX9qYSKmSg8gEH4FlCA,,,,N,0,0,,,2013-02-16 15:53,2013-02-16 15:56,admin,admin
501670,6359,124718,13662,0,N,N,N,CP_Drtn,TT_Task,DT_FixedDUR2,TK_NotStart,DUKHCONP03Z2ACFF4615,Installation AC Pipes,8178,256,8,160,0,340.8,340.8,160,0,0,0,,,,2014-01-14 08:00,2014-02-05 17:00,,2013-12-07 08:00,2013-12-30 17:00,2013-12-07 08:00,2013-12-30 17:00,2013-12-07 08:00,2013-12-30 17:00,2014-01-14 08:00,2014-02-05 17:00,,PT_Normal,,,,,TsC1tXxfReWVYwtmPC0mIQ,,,,N,0,0,,,2013-02-16 15:53,2013-02-16 15:56,admin,admin
501671,6359,124718,13662,0,N,N,N,CP_Drtn,TT_Task,DT_FixedDUR2,TK_NotStart,DUKHCONP03Z2ACFF4620,Fixing of Ventilation Equipments,8178,72,0,200,0,136.8,136.8,200,0,0,0,,,,2014-02-15 08:00,2014-03-15 17:00,,2014-02-03 08:00,2014-03-04 17:00,2014-02-03 08:00,2014-03-04 17:00,2014-02-03 08:00,2014-03-04 17:00,2014-02-15 08:00,2014-03-15 17:00,,PT_Normal,,,,,QDI47MZURr2/fPsLhZYc0A,,,,N,0,0,,,2013-02-16 15:53,2013-02-16 15:56,admin,admin
501672,6359,124718,13662,0,N,N,N,CP_Drtn,TT_Task,DT_FixedDUR2,TK_NotStart,DUKHCONP03Z2ACFF4625,Fixing of Split AC,8178,72,0,160,0,361.2,361.2,160,0,0,0,,,,2014-03-08 08:00,2014-03-30 17:00,,2014-02-25 08:00,2014-03-19 17:00,2014-02-25 08:00,2014-03-19 17:00,2014-02-25 08:00,2014-03-19 17:00,2014-03-08 08:00,2014-03-30 17:00,,PT_Normal,,,,,TA80Z6QuRa+53M7y8ZJ0Uw,,,,N,0,0,,,2013-02-16 15:53,2013-02-23 09:03,admin,admin
501673,6359,124719,13662,0,N,N,N,CP_Drtn,TT_Task,DT_FixedDUR2,TK_NotStart,DUKHCONP03Z2ACRF4630,Installation of Refrigerant Pipes,8178,584,0,200,0,170.4,170.4,200,0,0,0,,,,2014-03-13 08:00,2014-04-10 17:00,,2013-12-16 08:00,2014-01-14 17:00,2013-12-16 08:00,2014-01-14 17:00,2013-12-16 08:00,2014-01-14 17:00,2014-03-13 08:00,2014-04-10 17:00,,PT_Normal,,,,,0jTRtrlPTPGG6iJCTWEAzw,,,,N,0,0,,,2013-02-16 15:53,2013-02-16 15:56,admin,admin
501674,6359,124719,13662,0,N,N,N,CP_Drtn,TT_Task,DT_FixedDUR2,TK_NotStart,DUKHCONP03Z2ACRF4635,Installation of Condensing Unit,8178,112,0,200,0,562.8,562.8,200,0,0,0,,,,2014-03-19 08:00,2014-04-16 17:00,,2014-03-03 08:00,2014-03-31 17:00,2014-03-03 08:00,2014-03-31 17:00,2014-03-03 08:00,2014-03-31 17:00,2014-03-19 08:00,2014-04-16 17:00,,PT_Normal,,,,,bRneuAP/S8e8K1efvkw9/w,,,,N,0,0,,,2013-02-16 15:53,2013-02-23 09:03,admin,admin
501675,6359,124720,13662,0,N,N,N,CP_Drtn,TT_Task,DT_FixedDUR2,TK_NotStart,DUKHCONP03Z2ACGF4600,Installation AC Pipes,8178,528,40,160,0,340.8,340.8,160,0,0,0,,,,2014-01-09 08:00,2014-02-01 17:00,,2013-10-23 08:00,2013-11-14 17:00,2013-10-23 08:00,2013-11-14 17:00,2013-10-23 08:00,2013-11-14 17:00,2014-01-09 08:00,2014-02-01 17:00,,PT_Normal,,,,,XwqjSqyNSqO7JdeSPeeWsQ,,,,N,0,0,,,2013-02-16 15:53,2013-02-16 15:56,admin,admin
501676,6359,124720,13662,0,N,N,N,CP_Drtn,TT_Task,DT_FixedDUR2,TK_NotStart,DUKHCONP03Z2ACGF4605,Fixing of Ventilation Equipments,8178,408,0,200,0,136.8,136.8,200,0,0,0,,,,2014-02-15 08:00,2014-03-15 17:00,,2013-12-15 08:00,2014-01-13 17:00,2013-12-15 08:00,2014-01-13 17:00,2013-12-15 08:00,2014-01-13 17:00,2014-02-15 08:00,2014-03-15 17:00,,PT_Normal,,,,,gd4qiKbBT3+tzePuRnVk8w,,,,N,0,0,,,2013-02-16 15:53,2013-02-16 15:56,admin,admin
501677,6359,124720,13662,0,N,N,N,CP_Drtn,TT_Task,DT_FixedDUR2,TK_NotStart,DUKHCONP03Z2ACGF4610,Fixing of Split AC,8178,408,40,160,0,361.2,361.2,160,0,0,0,,,,2014-03-08 08:00,2014-03-30 17:00,,2014-01-06 08:00,2014-01-28 17:00,2014-01-06 08:00,2014-01-28 17:00,2014-01-06 08:00,2014-01-28 17:00,2014-03-08 08:00,2014-03-30 17:00,,PT_Normal,,,,,vqNg/RrqSs2gAORobJdFnQ,,,,N,0,0,,,2013-02-16 15:53,2013-02-23 09:03,admin,admin
501678,6359,124722,13662,0,N,N,N,CP_Drtn,TT_Task,DT_FixedDUR2,TK_NotStart,DUKHCONP03Z2PLRF4345,Installation of Plumbing pipes & fittings,8178,568,144,120,0,1623.6,1623.6,120,0,0,0,,,,2014-03-04 08:00,2014-03-20 17:00,,2013-12-09 08:00,2013-12-26 17:00,2013-12-09 08:00,2013-12-26 17:00,2013-12-09 08:00,2013-12-26 17:00,2014-03-04 08:00,2014-03-20 17:00,,PT_Normal,,,,,6GsqsSNfQg2zOBkvf8ms9A,,,,N,0,0,,,2013-02-16 15:53,2013-02-16 15:56,admin,admin
501679,6359,124722,13662,0,N,N,N,CP_Drtn,TT_Task,DT_FixedDUR2,TK_NotStart,DUKHCONP03Z2PLRF4350,Installation of Rain water Pipes,8178,424,80,120,0,82.8,82.8,120,0,0,0,,,,2014-03-13 08:00,2014-03-30 17:00,,2014-01-09 08:00,2014-01-26 17:00,2014-01-09 08:00,2014-01-26 17:00,2014-01-09 08:00,2014-01-26 17:00,2014-03-13 08:00,2014-03-30 17:00,,PT_Normal,,,,,FULjPn8iQ+eGlwweFcPa0Q,,,,N,0,0,,,2013-02-16 15:53,2013-02-16 15:56,admin,admin
501680,6359,124722,13662,0,N,N,N,CP_Drtn,TT_Task,DT_FixedDUR2,TK_NotStart,DUKHCONP03Z2PLRF4355,Roof  Water Tank Installation & Connections,8178,112,0,200,0,100.8,100.8,200,0,0,0,,,,2014-03-19 08:00,2014-04-16 17:00,,2014-03-03 08:00,2014-03-31 17:00,2014-03-03 08:00,2014-03-31 17:00,2014-03-03 08:00,2014-03-31 17:00,2014-03-19 08:00,2014-04-16 17:00,,PT_Normal,,,,,4eoFiUBoQtOxfFGjJdtJYA,,,,N,0,0,,,2013-02-16 15:53,2013-02-16 15:56,admin,admin
501681,6359,124723,13662,0,N,N,N,CP_Drtn,TT_Task,DT_FixedDUR2,TK_NotStart,DUKHCONP03Z2PLFF4325,Installation of Plumbing pipes & testing,8178,0,0,144,0,2732.4,2732.4,144,0,0,0,,,,2013-11-13 08:00,2013-12-03 17:00,,2013-11-13 08:00,2013-12-03 17:00,2013-11-13 08:00,2013-12-03 17:00,2013-11-13 08:00,2013-12-03 17:00,2013-11-13 08:00,2013-12-03 17:00,,PT_Normal,,,,,3DqNoRmUS1+cdqpHY6UHug,,,,N,0,0,,,2013-02-16 15:53,2013-02-16 15:56,admin,admin
501682,6359,124723,13662,0,N,N,N,CP_Drtn,TT_Task,DT_FixedDUR2,TK_NotStart,DUKHCONP03Z2PLFF4330,Installation of Drainage pipes & testing,8178,208,56,144,0,216,216,144,0,0,0,,,,2013-12-15 08:00,2014-01-05 17:00,,2013-11-14 08:00,2013-12-04 17:00,2013-11-14 08:00,2013-12-04 17:00,2013-11-14 08:00,2013-12-04 17:00,2013-12-15 08:00,2014-01-05 17:00,,PT_Normal,,,,,AQ9TGWZnQd2eUS4CXBIsuw,,,,N,0,0,,,2013-02-16 15:53,2013-02-16 15:56,admin,admin
501683,6359,124723,13662,0,N,N,N,CP_Drtn,TT_Task,DT_FixedDUR2,TK_NotStart,DUKHCONP03Z2PLFF4335,Sanitary Fittings & Accessories,8178,112,0,160,0,352.8,352.8,160,0,0,0,,,,2014-03-02 08:00,2014-03-24 17:00,,2014-02-13 08:00,2014-03-08 17:00,2014-02-13 08:00,2014-03-08 17:00,2014-02-13 08:00,2014-03-08 17:00,2014-03-02 08:00,2014-03-24 17:00,,PT_Normal,,,,,2jcK2yVpSHu/LSu+NuCZiA,,,,N,0,0,,,2013-02-16 15:53,2013-02-16 15:56,admin,admin
501684,6359,124723,13662,0,N,N,N,CP_Drtn,TT_Task,DT_FixedDUR2,TK_NotStart,DUKHCONP03Z2PLFF4340,Installation of Water Heater,8178,112,0,120,0,50.4,50.4,120,0,0,0,,,,2014-03-13 08:00,2014-03-30 17:00,,2014-02-25 08:00,2014-03-13 17:00,2014-02-25 08:00,2014-03-13 17:00,2014-02-25 08:00,2014-03-13 17:00,2014-03-13 08:00,2014-03-30 17:00,,PT_Normal,,,,,H3em7B/PSD6qxJPe1jliNA,,,,N,0,0,,,2013-02-16 15:53,2013-02-16 15:56,admin,admin
501685,6359,124724,13662,0,N,N,N,CP_Drtn,TT_Task,DT_FixedDUR2,TK_NotStart,DUKHCONP03Z2PLGF4305,Installation of Plumbing pipes & testing,8178,280,0,144,0,2732.4,2732.4,144,0,0,0,,,,2013-11-13 08:00,2013-12-03 17:00,,2013-10-01 08:00,2013-10-23 17:00,2013-10-01 08:00,2013-10-23 17:00,2013-10-01 08:00,2013-10-23 17:00,2013-11-13 08:00,2013-12-03 17:00,,PT_Normal,,,,,+J7PCksTRfus0Nv8XGM58g,,,,N,0,0,,,2013-02-16 15:53,2013-02-16 15:56,admin,admin
501686,6359,124724,13662,0,N,N,N,CP_Drtn,TT_Task,DT_FixedDUR2,TK_NotStart,DUKHCONP03Z2PLGF4310,Installation of Drainage pipes &testing,8178,448,96,144,0,216,216,144,0,0,0,,,,2013-12-08 08:00,2013-12-29 17:00,,2013-10-01 08:00,2013-10-23 17:00,2013-10-01 08:00,2013-10-23 17:00,2013-10-01 08:00,2013-10-23 17:00,2013-12-08 08:00,2013-12-29 17:00,,PT_Normal,,,,,wuIhcbPsSdKzfPEZTru4dw,,,,N,0,0,,,2013-02-16 15:53,2013-02-16 15:56,admin,admin
501687,6359,124724,13662,0,N,N,N,CP_Drtn,TT_Task,DT_FixedDUR2,TK_NotStart,DUKHCONP03Z2PLGF4315,Sanitary Fittings & Accessories,8178,512,0,160,0,352.8,352.8,160,0,0,0,,,,2014-03-19 08:00,2014-04-10 17:00,,2014-01-02 08:00,2014-01-25 17:00,2014-01-02 08:00,2014-01-25 17:00,2014-01-02 08:00,2014-01-25 17:00,2014-03-19 08:00,2014-04-10 17:00,,PT_Normal,,,,,8ThgjcKyRaOV9y2aqjre5g,,,,N,0,0,,,2013-02-16 15:53,2013-02-16 15:56,admin,admin
501688,6359,124724,13662,0,N,N,N,CP_Drtn,TT_Task,DT_FixedDUR2,TK_NotStart,DUKHCONP03Z2PLGF4320,Installation of Water Heater,8178,512,80,120,0,50.4,50.4,120,0,0,0,,,,2014-03-31 08:00,2014-04-16 17:00,,2014-01-14 08:00,2014-01-30 17:00,2014-01-14 08:00,2014-01-30 17:00,2014-01-14 08:00,2014-01-30 17:00,2014-03-31 08:00,2014-04-16 17:00,,PT_Normal,,,,,JcnAE9e1Rk+6QL4eanfvZA,,,,N,0,0,,,2013-02-16 15:53,2013-02-16 15:56,admin,admin
501689,6359,124724,13662,0,N,N,N,CP_Drtn,TT_Task,DT_FixedDUR2,TK_NotStart,DUKHCONP03Z2PLUG4300,Drainage / Storm Pipes in Grade Slab,8178,0,0,160,0,165.6,165.6,160,0,0,0,,,,2013-06-06 08:00,2013-06-29 17:00,,2013-06-06 08:00,2013-06-29 17:00,2013-06-06 08:00,2013-06-29 17:00,2013-06-06 08:00,2013-06-29 17:00,2013-06-06 08:00,2013-06-29 17:00,,PT_Normal,,,,,KbrS0HFASxejqUl/gJvpsA,,,,N,0,0,,,2013-02-16 15:53,2013-02-16 15:56,admin,admin
501690,6359,124726,13662,0,N,N,N,CP_Drtn,TT_Task,DT_FixedDUR2,TK_NotStart,DUKHCONP03Z2ELFF4035,Fixing of wall conduits & switch socket boxes,8178,88,0,200,0,1102.8,1102.8,200,0,0,0,,,,2013-11-17 08:00,2013-12-15 17:00,,2013-11-04 08:00,2013-12-02 17:00,2013-11-04 08:00,2013-12-02 17:00,2013-11-04 08:00,2013-12-02 17:00,2013-11-17 08:00,2013-12-15 17:00,,PT_Normal,,,,,x1jrnD/tQe+JnJhxS0Aq7g,,,,N,0,0,,,2013-02-16 15:53,2013-02-23 09:03,admin,admin
501691,6359,124726,13662,0,N,N,N,CP_Drtn,TT_Task,DT_FixedDUR2,TK_NotStart,DUKHCONP03Z2ELFF4040,Cable tray & trunking installation,8178,264,24,160,0,1840.8,1840.8,160,0,0,0,,,,2013-12-25 08:00,2014-01-16 17:00,,2013-11-16 08:00,2013-12-08 17:00,2013-11-16 08:00,2013-12-08 17:00,2013-11-16 08:00,2013-12-08 17:00,2013-12-25 08:00,2014-01-16 17:00,,PT_Normal,,,,,kvgWwN8+R5SuBmbKI80ZkA,,,,N,0,0,,,2013-02-16 15:53,2013-02-16 15:56,admin,admin
501692,6359,124726,13662,0,N,N,N,CP_Drtn,TT_Task,DT_FixedDUR2,TK_NotStart,DUKHCONP03Z2ELFF4045,Installation of wiring & Main Cabling,8178,240,0,200,0,648,648,200,0,0,0,,,,2014-01-02 08:00,2014-01-30 17:00,,2013-11-27 08:00,2013-12-26 17:00,2013-11-27 08:00,2013-12-26 17:00,2013-11-27 08:00,2013-12-26 17:00,2014-01-02 08:00,2014-01-30 17:00,,PT_Normal,,,,,2IdmqH/URxOFO2cbhng3sg,,,,N,0,0,,,2013-02-16 15:53,2013-02-16 15:56,admin,admin
501693,6359,124726,13662,0,N,N,N,CP_Drtn,TT_Task,DT_FixedDUR2,TK_NotStart,DUKHCONP03Z2ELFF4060,"Installation  of DBS,MCCB Accessories.",8178,8,0,160,0,188.4,188.4,160,0,0,0,,,,2014-02-08 08:00,2014-03-03 17:00,,2014-02-06 08:00,2014-03-02 17:00,2014-02-06 08:00,2014-03-02 17:00,2014-02-06 08:00,2014-03-02 17:00,2014-02-08 08:00,2014-03-03 17:00,,PT_Normal,,,,,pJjInAchQSWJbJTaJxTaSw,,,,N,0,0,,,2013-02-16 15:53,2013-02-16 15:56,admin,admin
501694,6359,124726,13662,0,N,N,N,CP_Drtn,TT_Task,DT_FixedDUR2,TK_NotStart,DUKHCONP03Z2ELFF4065,Installation of Lighting fixtures & Accessories,8178,8,0,200,0,2528.4,2528.4,200,0,0,0,,,,2014-02-22 08:00,2014-03-22 17:00,,2014-02-20 08:00,2014-03-20 17:00,2014-02-20 08:00,2014-03-20 17:00,2014-02-20 08:00,2014-03-20 17:00,2014-02-22 08:00,2014-03-22 17:00,,PT_Normal,,,,,gL45HN7qRdKzDSHy71aosA,,,,N,0,0,,,2013-02-16 15:53,2013-02-16 15:56,admin,admin
501695,6359,124726,13662,0,N,N,N,CP_Drtn,TT_Task,DT_FixedDUR2,TK_NotStart,DUKHCONP03Z2ELFF4055,Install. of CAMS & Fire Fighting Accessories,8178,96,0,200,0,1612.8,1612.8,200,0,0,0,,,,2014-02-18 08:00,2014-03-18 17:00,,2014-02-03 08:00,2014-03-04 17:00,2014-02-03 08:00,2014-03-04 17:00,2014-02-03 08:00,2014-03-04 17:00,2014-02-18 08:00,2014-03-18 17:00,,PT_Normal,,,,,fcPEcm52SYCFU/Y6Wkvs2g,,,,N,0,0,,,2013-02-16 15:53,2013-02-16 15:56,admin,admin
501696,6359,124726,13662,0,N,N,N,CP_Drtn,TT_Task,DT_FixedDUR2,TK_NotStart,DUKHCONP03Z2ELFF4050,Installation of Telephone System,8178,168,152,200,0,542.4,542.4,200,0,0,0,,,,2014-02-26 08:00,2014-03-26 17:00,,2014-02-01 08:00,2014-03-02 17:00,2014-02-01 08:00,2014-03-02 17:00,2014-02-01 08:00,2014-03-02 17:00,2014-02-26 08:00,2014-03-26 17:00,,PT_Normal,,,,,OkTerOsYSNWMy67YAeRdeA,,,,N,0,0,,,2013-02-16 15:53,2013-02-23 09:03,admin,admin
501697,6359,124727,13662,0,N,N,N,CP_Drtn,TT_Task,DT_FixedDUR2,TK_NotStart,DUKHCONP03Z2ELGF4025,Installation of Lighting fixtures & Accessories,8178,296,0,200,0,2580,2580,200,0,0,0,,,,2014-02-16 08:00,2014-03-16 17:00,,2014-01-02 08:00,2014-01-30 17:00,2014-01-02 08:00,2014-01-30 17:00,2014-01-02 08:00,2014-01-30 17:00,2014-02-16 08:00,2014-03-16 17:00,,PT_Normal,,,,,hMnLeZOjRKeVCV0ydg7uRA,,,,N,0,0,,,2013-02-16 15:53,2013-02-16 15:56,admin,admin
501698,6359,124727,13662,0,N,N,N,CP_Drtn,TT_Task,DT_FixedDUR2,TK_NotStart,DUKHCONP03Z2ELGF4015,Install. of CAMS & Fire Fighting Accessories,8178,392,0,200,0,1461.6,1461.6,200,0,0,0,,,,2014-02-12 08:00,2014-03-12 17:00,,2013-12-15 08:00,2014-01-13 17:00,2013-12-15 08:00,2014-01-13 17:00,2013-12-15 08:00,2014-01-13 17:00,2014-02-12 08:00,2014-03-12 17:00,,PT_Normal,,,,,rw/mv9S1Tv61GDbOkmXcZA,,,,N,0,0,,,2013-02-16 15:53,2013-02-23 09:03,admin,admin
501699,6359,124727,13662,0,N,N,N,CP_Drtn,TT_Task,DT_FixedDUR2,TK_NotStart,DUKHCONP03Z2ELGF4030,Installation of Telephone System,8178,288,40,160,0,542.4,542.4,160,0,0,0,,,,2014-02-15 08:00,2014-03-09 17:00,,2014-01-02 08:00,2014-01-25 17:00,2014-01-02 08:00,2014-01-25 17:00,2014-01-02 08:00,2014-01-25 17:00,2014-02-15 08:00,2014-03-09 17:00,,PT_Normal,,,,,j71or//sRmOwL/zSjL1ULg,,,,N,0,0,,,2013-02-16 15:53,2013-02-23 09:03,admin,admin
501700,6359,124727,13662,0,N,N,N,CP_Drtn,TT_Task,DT_FixedDUR2,TK_NotStart,DUKHCONP03Z2ELGF4000,Fixing of wall conduits & switch socket boxes,8178,352,0,200,0,1102.8,1102.8,200,0,0,0,,,,2013-11-13 08:00,2013-12-11 17:00,,2013-09-21 08:00,2013-10-21 17:00,2013-09-21 08:00,2013-10-21 17:00,2013-09-21 08:00,2013-10-21 17:00,2013-11-13 08:00,2013-12-11 17:00,,PT_Normal,,,,,5pbyL0U8TcCn8jhAHp/1ag,,,,N,0,0,,,2013-02-16 15:53,2013-02-23 09:03,admin,admin
501701,6359,124727,13662,0,N,N,N,CP_Drtn,TT_Task,DT_FixedDUR2,TK_NotStart,DUKHCONP03Z2ELGF4005,Cable tray & trunking installation,8178,496,0,160,0,1840.8,1840.8,160,0,0,0,,,,2013-12-16 08:00,2014-01-08 17:00,,2013-10-02 08:00,2013-10-27 17:00,2013-10-02 08:00,2013-10-27 17:00,2013-10-02 08:00,2013-10-27 17:00,2013-12-16 08:00,2014-01-08 17:00,,PT_Normal,,,,,PeA8IYtlQzO7UDBU1yJk8w,,,,N,0,0,,,2013-02-16 15:53,2013-02-16 15:56,admin,admin
501702,6359,124727,13662,0,N,N,N,CP_Drtn,TT_Task,DT_FixedDUR2,TK_NotStart,DUKHCONP03Z2ELGF4010,Installation of wiring & Main Cabling,8178,496,216,200,0,648,648,200,0,0,0,,,,2013-12-25 08:00,2014-01-22 17:00,,2013-10-10 08:00,2013-11-10 17:00,2013-10-10 08:00,2013-11-10 17:00,2013-10-10 08:00,2013-11-10 17:00,2013-12-25 08:00,2014-01-22 17:00,,PT_Normal,,,,,kPIb2BjvTSC3VAhrC+391Q,,,,N,0,0,,,2013-02-16 15:53,2013-02-16 15:56,admin,admin
501703,6359,124727,13662,0,N,N,N,CP_Drtn,TT_Task,DT_FixedDUR2,TK_NotStart,DUKHCONP03Z2ELGF4020,"Installation  of DBS,MCCB Accessories.",8178,288,0,160,0,222,222,160,0,0,0,,,,2014-02-02 08:00,2014-02-25 17:00,,2013-12-22 08:00,2014-01-13 17:00,2013-12-22 08:00,2014-01-13 17:00,2013-12-22 08:00,2014-01-13 17:00,2014-02-02 08:00,2014-02-25 17:00,,PT_Normal,,,,,9vygB8BuSlCjpTrSC9RqJQ,,,,N,0,0,,,2013-02-16 15:53,2013-02-16 15:56,admin,admin
501704,6359,124728,13662,0,N,N,N,CP_Drtn,TT_Task,DT_FixedDUR2,TK_NotStart,DUKHCONP03Z2ELRF4070,Installation of Isolator,8178,16,0,144,0,309.6,309.6,144,0,0,0,,,,2014-03-15 08:00,2014-04-03 17:00,,2014-03-12 08:00,2014-04-01 17:00,2014-03-12 08:00,2014-04-01 17:00,2014-03-12 08:00,2014-04-01 17:00,2014-03-15 08:00,2014-04-03 17:00,,PT_Normal,,,,,C93oFcE+RomdU3O0JmMleA,,,,N,0,0,,,2013-02-16 15:53,2013-02-16 15:56,admin,admin
501705,6359,124728,13662,0,N,N,N,CP_Drtn,TT_Task,DT_FixedDUR2,TK_NotStart,DUKHCONP03Z2ELRF4075,Installation of TV Dish Antenna,8178,16,16,184,0,4725.6,4725.6,184,0,0,0,,,,2014-03-22 08:00,2014-04-16 17:00,,2014-03-19 08:00,2014-04-14 17:00,2014-03-19 08:00,2014-04-14 17:00,2014-03-19 08:00,2014-04-14 17:00,2014-03-22 08:00,2014-04-16 17:00,,PT_Normal,,,,,HFV78SjOTZWH5510ao+KOg,,,,N,0,0,,,2013-02-16 15:53,2013-02-16 15:56,admin,admin
501706,6359,124731,13662,0,N,N,N,CP_Drtn,TT_Task,DT_FixedDUR2,TK_NotStart,DUKHCONP03Z5MSEX5020,Construction Entrance Ramp,8164,168,0,200,0,216,216,200,0,0,0,,,,2014-04-29 08:00,2014-05-27 17:00,,2014-04-05 08:00,2014-05-03 17:00,2014-04-05 08:00,2014-05-03 17:00,2014-04-05 08:00,2014-05-03 17:00,2014-04-29 08:00,2014-05-27 17:00,,PT_Normal,,,,,5FWonS4GRAWu4Fp2cCI6iw,,,,N,0,0,,,2013-02-16 15:53,2013-02-16 15:56,admin,admin
501707,6359,124731,13662,0,N,N,N,CP_Drtn,TT_Task,DT_FixedDUR2,TK_NotStart,DUKHCONP03Z5MSEX5025,SS.Handrails and Balustrades,8178,168,0,160,0,108,108,160,0,0,0,,,,2014-05-17 08:00,2014-06-08 17:00,,2014-04-22 08:00,2014-05-14 17:00,2014-04-22 08:00,2014-05-14 17:00,2014-04-22 08:00,2014-05-14 17:00,2014-05-17 08:00,2014-06-08 17:00,,PT_Normal,,,,,TGsOHmyUTrm1YiQwn8utuA,,,,N,0,0,,,2013-02-16 15:53,2013-02-16 15:56,admin,admin
501708,6359,124731,13662,0,N,N,N,CP_Drtn,TT_Task,DT_FixedDUR2,TK_NotStart,DUKHCONP03Z5MSEX5015,Construction of grease Trap,8178,424,0,160,0,42,42,160,0,0,0,,,,2014-05-08 08:00,2014-05-31 17:00,,2014-03-08 08:00,2014-03-30 17:00,2014-03-08 08:00,2014-03-30 17:00,2014-03-08 08:00,2014-03-30 17:00,2014-05-08 08:00,2014-05-31 17:00,,PT_Normal,,,,,GgZrbfeyRLWGXjs2bsFlXA,,,,N,0,0,,,2013-02-16 15:53,2013-02-16 15:56,admin,admin
501709,6359,124731,13662,0,N,N,N,CP_Drtn,TT_Task,DT_FixedDUR2,TK_NotStart,DUKHCONP03Z5MSEX5000,Construction of Manholes,8178,424,0,200,0,132,132,200,0,0,0,,,,2014-04-05 08:00,2014-05-03 17:00,,2014-02-01 08:00,2014-03-02 17:00,2014-02-01 08:00,2014-03-02 17:00,2014-02-01 08:00,2014-03-02 17:00,2014-04-05 08:00,2014-05-03 17:00,,PT_Normal,,,,,Yze8L96YSea8uzDZZl3FQQ,,,,N,0,0,,,2013-02-16 15:53,2013-02-16 15:56,admin,admin
501710,6359,124731,13662,0,N,N,N,CP_Drtn,TT_Task,DT_FixedDUR2,TK_NotStart,DUKHCONP03Z5MSEX5005,"Construction  of Soak pit, Chambers",8177,424,0,200,0,275,275,200,0,0,0,,,,2014-04-19 08:00,2014-05-17 17:00,,2014-02-16 08:00,2014-03-16 17:00,2014-02-16 08:00,2014-03-16 17:00,2014-02-16 08:00,2014-03-16 17:00,2014-04-19 08:00,2014-05-17 17:00,,PT_Normal,,,,,nKYKkXZtRc6qSuWLx9VQaA,,,,N,0,0,,,2013-02-16 15:53,2013-02-16 15:56,admin,admin
501711,6359,124731,13662,0,N,N,N,CP_Drtn,TT_Task,DT_FixedDUR2,TK_NotStart,DUKHCONP03Z5MSEX5010,Telephone cable laying,8177,424,208,200,0,500,500,200,0,0,0,,,,2014-06-01 08:00,2014-06-29 17:00,,2014-03-31 08:00,2014-04-28 17:00,2014-03-31 08:00,2014-04-28 17:00,2014-03-31 08:00,2014-04-28 17:00,2014-06-01 08:00,2014-06-29 17:00,,PT_Normal,,,,,WcXH208SQM28A9nF4bpOog,,,,N,0,0,,,2013-02-16 15:53,2013-02-16 15:56,admin,admin
501712,6359,124732,13662,0,N,N,N,CP_Drtn,TT_Task,DT_FixedDUR2,TK_NotStart,DUKHCONP03Z5WTEX5040,Block works & Plastering,8168,464,0,200,0,2442,2442,200,0,0,0,,,,2014-04-28 08:00,2014-05-26 17:00,,2014-02-19 08:00,2014-03-19 17:00,2014-02-19 08:00,2014-03-19 17:00,2014-02-19 08:00,2014-03-19 17:00,2014-04-28 08:00,2014-05-26 17:00,,PT_Normal,,,,,mRqTkLgtSVuShcIKjF4gSQ,,,,N,0,0,,,2013-02-16 15:53,2013-02-16 15:56,admin,admin
501713,6359,124732,13662,0,N,N,N,CP_Drtn,TT_Task,DT_FixedDUR2,TK_NotStart,DUKHCONP03Z5WTEX5045,Flooring & Painting,8164,464,296,200,0,900,900,200,0,0,0,,,,2014-05-11 08:00,2014-06-08 17:00,,2014-03-04 08:00,2014-04-01 17:00,2014-03-04 08:00,2014-04-01 17:00,2014-03-04 08:00,2014-04-01 17:00,2014-05-11 08:00,2014-06-08 17:00,,PT_Normal,,,,,aYZ1yOC2SAK09t3ZsITSEA,,,,N,0,0,,,2013-02-16 15:53,2013-02-16 15:56,admin,admin
501714,6359,124732,13662,0,N,N,N,CP_Drtn,TT_Task,DT_FixedDUR2,TK_NotStart,DUKHCONP03Z5WTEX5050,Installation of Steel Gate,8178,168,16,160,0,84,84,160,0,0,0,,,,2014-05-28 08:00,2014-06-19 17:00,,2014-05-04 08:00,2014-05-26 17:00,2014-05-04 08:00,2014-05-26 17:00,2014-05-04 08:00,2014-05-26 17:00,2014-05-28 08:00,2014-06-19 17:00,,PT_Normal,,,,,xRaNXm3kQTmEKfDNdotgGQ,,,,N,0,0,,,2013-02-16 15:53,2013-02-16 15:56,admin,admin
501715,6359,124732,13662,0,N,N,N,CP_Drtn,TT_Task,DT_FixedDUR2,TK_NotStart,DUKHCONP03Z5WTEX5060,Structural steel &  SS Shed cover installation,8178,152,0,200,0,588,588,200,0,0,0,,,,2014-06-03 08:00,2014-07-01 17:00,,2014-05-12 08:00,2014-06-09 17:00,2014-05-12 08:00,2014-06-09 17:00,2014-05-12 08:00,2014-06-09 17:00,2014-06-03 08:00,2014-07-01 17:00,,PT_Normal,,,,,e/eV9BPqQH2Lfpgs4tYExw,,,,N,0,0,,,2013-02-16 15:53,2013-02-16 15:56,admin,admin
501716,6359,124732,13662,0,N,N,N,CP_Drtn,TT_Task,DT_FixedDUR2,TK_NotStart,DUKHCONP03Z5WTEX5065,"Install. of Water Tank,Chiller,Pump & Meter",8178,152,152,200,0,152.4,152.4,200,0,0,0,,,,2014-06-15 08:00,2014-07-13 17:00,,2014-05-24 08:00,2014-06-21 17:00,2014-05-24 08:00,2014-06-21 17:00,2014-05-24 08:00,2014-06-21 17:00,2014-06-15 08:00,2014-07-13 17:00,,PT_Normal,,,,,pzWPg3ENQ2+Ep+8FJ2I6gw,,,,N,0,0,,,2013-02-16 15:53,2013-02-23 09:03,admin,admin
501717,6359,124732,13662,0,N,N,N,CP_Drtn,TT_Task,DT_FixedDUR2,TK_NotStart,DUKHCONP03Z5WTEX5080,Domestic Water Tank Electrical works,8178,464,0,200,0,175,175,200,0,0,0,,,,2014-05-06 08:00,2014-06-03 17:00,,2014-02-27 08:00,2014-03-27 17:00,2014-02-27 08:00,2014-03-27 17:00,2014-02-27 08:00,2014-03-27 17:00,2014-05-06 08:00,2014-06-03 17:00,,PT_Normal,,,,,SJ27Uv7NSwC8jk/dx8mnUg,,,,N,0,0,,,2013-02-16 15:53,2013-02-16 15:56,admin,admin
501718,6359,124732,13662,0,N,N,N,CP_Drtn,TT_Task,DT_FixedDUR2,TK_NotStart,DUKHCONP03Z5WTEX5070,Domestic Water Tank Plumbings works,8178,464,0,200,0,200,200,200,0,0,0,,,,2014-05-06 08:00,2014-06-03 17:00,,2014-02-27 08:00,2014-03-27 17:00,2014-02-27 08:00,2014-03-27 17:00,2014-02-27 08:00,2014-03-27 17:00,2014-05-06 08:00,2014-06-03 17:00,,PT_Normal,,,,,frsex3noRBuv8Og7TplpnA,,,,N,0,0,,,2013-02-16 15:53,2013-02-16 15:56,admin,admin
501719,6359,124732,13662,0,N,N,N,CP_Drtn,TT_Task,DT_FixedDUR2,TK_NotStart,DUKHCONP03Z5WTEX5075,Domestic Water Tank AC works,8178,464,0,200,0,175,175,200,0,0,0,,,,2014-05-06 08:00,2014-06-03 17:00,,2014-02-27 08:00,2014-03-27 17:00,2014-02-27 08:00,2014-03-27 17:00,2014-02-27 08:00,2014-03-27 17:00,2014-05-06 08:00,2014-06-03 17:00,,PT_Normal,,,,,1D2LnFLUSMWlDsuLEdiGzw,,,,N,0,0,,,2013-02-16 15:53,2013-02-16 15:56,admin,admin
501720,6359,124732,13662,0,N,N,N,CP_Drtn,TT_Task,DT_FixedDUR2,TK_NotStart,DUKHCONP03Z5WTEX5085,Domestic Water Tank Firefighting works,8178,464,0,200,0,118.8,118.8,200,0,0,0,,,,2014-05-06 08:00,2014-06-03 17:00,,2014-02-27 08:00,2014-03-27 17:00,2014-02-27 08:00,2014-03-27 17:00,2014-02-27 08:00,2014-03-27 17:00,2014-05-06 08:00,2014-06-03 17:00,,PT_Normal,,,,,CbNLzHTAQoG4Uhrp2dTdyw,,,,N,0,0,,,2013-02-16 15:53,2013-02-16 15:56,admin,admin
501721,6359,124732,13662,0,N,N,N,CP_Drtn,TT_Task,DT_FixedDUR2,TK_NotStart,DUKHCONP03Z5WTEX5030,Excavation,8177,464,0,160,0,116,116,160,80,0,80,,,,2014-04-13 08:00,2014-05-05 17:00,,2014-02-03 08:00,2014-02-26 17:00,2014-02-03 08:00,2014-02-26 17:00,2014-02-03 08:00,2014-02-26 17:00,2014-04-13 08:00,2014-05-05 17:00,,PT_Normal,,,,,VS5FxkxaRrusr/iehU/Z7Q,,,,N,0,0,,,2013-02-16 15:53,2013-02-16 15:56,admin,admin
501722,6359,124732,13662,0,N,N,N,CP_Drtn,TT_Task,DT_FixedDUR2,TK_NotStart,DUKHCONP03Z5WTEX5035,Construction of Raft,8167,464,0,200,0,210,210,200,0,0,0,,,,2014-04-19 08:00,2014-05-17 17:00,,2014-02-09 08:00,2014-03-10 17:00,2014-02-09 08:00,2014-03-10 17:00,2014-02-09 08:00,2014-03-10 17:00,2014-04-19 08:00,2014-05-17 17:00,,PT_Normal,,,,,jPSEONjlTae3aD5WlWpI2A,,,,N,0,0,,,2013-02-16 15:53,2013-02-16 15:56,admin,admin
501723,6359,124735,13662,0,N,N,N,CP_Drtn,TT_Task,DT_FixedDUR2,TK_NotStart,DUKHCONP03Z5STFF2020,Column-Rebar & Formwork,8165,0,0,200,0,1615.25,1615.25,200,0,0,0,,,,2013-11-14 08:00,2013-12-12 17:00,,2013-11-14 08:00,2013-12-12 17:00,2013-11-14 08:00,2013-12-12 17:00,2013-11-14 08:00,2013-12-12 17:00,2013-11-14 08:00,2013-12-12 17:00,,PT_Normal,,,,,V34Vs5RwQ6KRg40L9w2O5w,,,,N,0,0,,,2013-02-16 15:53,2013-02-16 15:56,admin,admin
501724,6359,124735,13662,0,N,N,N,CP_Drtn,TT_Task,DT_FixedDUR2,TK_NotStart,DUKHCONP03Z5STFF2025,Column-Concrete,8167,0,0,192,0,87.5,87.5,192,0,0,0,,,,2013-11-25 08:00,2013-12-23 17:00,,2013-11-25 08:00,2013-12-23 17:00,2013-11-25 08:00,2013-12-23 17:00,2013-11-25 08:00,2013-12-23 17:00,2013-11-25 08:00,2013-12-23 17:00,,PT_Normal,,,,,Szo+LiacQhq0Hln2FH3+5A,,,,N,0,0,,,2013-02-16 15:53,2013-02-16 15:56,admin,admin
501725,6359,124735,13662,0,N,N,N,CP_Drtn,TT_Task,DT_FixedDUR2,TK_NotStart,DUKHCONP03Z5STFF2030,"Beam, Stairs ,Slab-Rebar & Formwork",8165,0,0,200,0,10081.75,10081.75,200,0,0,0,,,,2013-12-10 08:00,2014-01-08 17:00,,2013-12-10 08:00,2014-01-08 17:00,2013-12-10 08:00,2014-01-08 17:00,2013-12-10 08:00,2014-01-08 17:00,2013-12-10 08:00,2014-01-08 17:00,,PT_Normal,,,,,lHtkkNQ1TfqRXkx6ydulvA,,,,N,0,0,,,2013-02-16 15:53,2013-02-16 15:56,admin,admin
501726,6359,124735,13662,0,N,N,N,CP_Drtn,TT_Task,DT_FixedDUR2,TK_NotStart,DUKHCONP03Z5STFF2035,"Beam, Stairs ,Slab-Concrete",8167,0,0,120,0,731.5,731.5,120,0,0,0,,,,2014-01-01 08:00,2014-01-18 17:00,,2014-01-01 08:00,2014-01-18 17:00,2014-01-01 08:00,2014-01-18 17:00,2014-01-01 08:00,2014-01-18 17:00,2014-01-01 08:00,2014-01-18 17:00,,PT_Normal,,,,,3xgwWSqlR6+bmImLEPwPfQ,,,,N,0,0,,,2013-02-16 15:53,2013-02-16 15:56,admin,admin
501727,6359,124736,13662,0,N,N,N,CP_Drtn,TT_Task,DT_FixedDUR2,TK_NotStart,DUKHCONP03Z5STRF2040,Column-Rebar & Formwork,8165,120,0,144,0,549.5,549.5,144,0,0,0,,,,2014-01-21 08:00,2014-02-10 17:00,,2014-01-04 08:00,2014-01-23 17:00,2014-01-04 08:00,2014-01-23 17:00,2014-01-04 08:00,2014-01-23 17:00,2014-01-21 08:00,2014-02-10 17:00,,PT_Normal,,,,,cGZIV3vGS2+Xk3vr11uBcg,,,,N,0,0,,,2013-02-16 15:53,2013-02-16 15:56,admin,admin
501728,6359,124736,13662,0,N,N,N,CP_Drtn,TT_Task,DT_FixedDUR2,TK_NotStart,DUKHCONP03Z5STRF2045,Column-Concrete,8167,120,0,136,0,21,21,136,0,0,0,,,,2014-01-25 08:00,2014-02-13 17:00,,2014-01-07 08:00,2014-01-26 17:00,2014-01-07 08:00,2014-01-26 17:00,2014-01-07 08:00,2014-01-26 17:00,2014-01-25 08:00,2014-02-13 17:00,,PT_Normal,,,,,+3Qcn5VIQZeU8xi2CoCnjg,,,,N,0,0,,,2013-02-16 15:53,2013-02-16 15:56,admin,admin
501729,6359,124736,13662,0,N,N,N,CP_Drtn,TT_Task,DT_FixedDUR2,TK_NotStart,DUKHCONP03Z5STRF2050,Slab-Rebar & Formwork,8165,120,0,160,0,1576.75,1576.75,160,0,0,0,,,,2014-01-27 08:00,2014-02-19 17:00,,2014-01-09 08:00,2014-02-01 17:00,2014-01-09 08:00,2014-02-01 17:00,2014-01-09 08:00,2014-02-01 17:00,2014-01-27 08:00,2014-02-19 17:00,,PT_Normal,,,,,zV2ayIIlSR2ffAEUxxLLdg,,,,N,0,0,,,2013-02-16 15:53,2013-02-16 15:56,admin,admin
501730,6359,124736,13662,0,N,N,N,CP_Drtn,TT_Task,DT_FixedDUR2,TK_NotStart,DUKHCONP03Z5STRF2055,Slab-Concrete,8167,120,0,104,0,175,175,104,0,0,0,,,,2014-02-06 08:00,2014-02-22 17:00,,2014-01-20 08:00,2014-02-03 17:00,2014-01-20 08:00,2014-02-03 17:00,2014-01-20 08:00,2014-02-03 17:00,2014-02-06 08:00,2014-02-22 17:00,,PT_Normal,,,,,Q8X2Pw0ERnWY8/pFu8jTlg,,,,N,0,0,,,2013-02-16 15:53,2013-02-16 15:56,admin,admin
501731,6359,124736,13662,0,N,N,N,CP_Drtn,TT_Task,DT_FixedDUR2,TK_NotStart,DUKHCONP03Z5STRF2060,Construction of Parapets,8168,464,0,200,0,1441,1441,200,0,0,0,,,,2014-04-01 08:00,2014-04-29 17:00,,2014-01-22 08:00,2014-02-20 17:00,2014-01-22 08:00,2014-02-20 17:00,2014-01-22 08:00,2014-02-20 17:00,2014-04-01 08:00,2014-04-29 17:00,,PT_Normal,,,,,x4FjFZLeSyChmhJFXSU9Zw,,,,N,0,0,,,2013-02-16 15:53,2013-02-16 15:56,admin,admin
501732,6359,124736,13662,0,N,N,N,CP_Drtn,TT_Task,DT_FixedDUR2,TK_NotStart,DUKHCONP03Z5STRF2065,Construction of up stands/Plinth,8165,464,0,200,0,283.5,283.5,200,0,0,0,,,,2014-04-07 08:00,2014-05-05 17:00,,2014-01-28 08:00,2014-02-26 17:00,2014-01-28 08:00,2014-02-26 17:00,2014-01-28 08:00,2014-02-26 17:00,2014-04-07 08:00,2014-05-05 17:00,,PT_Normal,,,,,+x2+sUsLQI66aUMDJPZgGw,,,,N,0,0,,,2013-02-16 15:53,2013-02-16 15:56,admin,admin
501733,6359,124737,13662,0,N,N,N,CP_Drtn,TT_Task,DT_FixedDUR2,TK_NotStart,DUKHCONP03Z5STGF2000,Column-Rebar & Formwork,8165,0,0,200,0,1688.75,1688.75,200,0,0,0,,,,2013-10-01 08:00,2013-10-31 17:00,,2013-10-01 08:00,2013-10-31 17:00,2013-10-01 08:00,2013-10-31 17:00,2013-10-01 08:00,2013-10-31 17:00,2013-10-01 08:00,2013-10-31 17:00,,PT_Normal,,,,,MTMHGv/VTCC5fzDp6oxUWA,,,,N,0,0,,,2013-02-16 15:53,2013-02-16 15:56,admin,admin
501734,6359,124737,13662,0,N,N,N,CP_Drtn,TT_Task,DT_FixedDUR2,TK_NotStart,DUKHCONP03Z5STGF2005,Column-Concrete,8167,0,0,192,0,101.5,101.5,192,0,0,0,,,,2013-10-10 08:00,2013-11-09 17:00,,2013-10-10 08:00,2013-11-09 17:00,2013-10-10 08:00,2013-11-09 17:00,2013-10-10 08:00,2013-11-09 17:00,2013-10-10 08:00,2013-11-09 17:00,,PT_Normal,,,,,t4KbGDt+QtqEq5RIONaKVA,,,,N,0,0,,,2013-02-16 15:53,2013-02-16 15:56,admin,admin
501735,6359,124737,13662,0,N,N,N,CP_Drtn,TT_Task,DT_FixedDUR2,TK_NotStart,DUKHCONP03Z5STGF2010,"Beam, Stairs ,Slab-Rebar & Formwork",8165,0,0,200,0,10592.75,10592.75,200,0,0,0,,,,2013-10-28 08:00,2013-11-25 17:00,,2013-10-28 08:00,2013-11-25 17:00,2013-10-28 08:00,2013-11-25 17:00,2013-10-28 08:00,2013-11-25 17:00,2013-10-28 08:00,2013-11-25 17:00,,PT_Normal,,,,,f7+buwZGRC2TxLerxKIASg,,,,N,0,0,,,2013-02-16 15:53,2013-02-16 15:56,admin,admin
501736,6359,124737,13662,0,N,N,N,CP_Drtn,TT_Task,DT_FixedDUR2,TK_NotStart,DUKHCONP03Z5STGF2015,"Beam, Stairs ,Slab-Concrete",8167,0,0,120,0,868,868,120,0,0,0,,,,2013-11-12 08:00,2013-11-28 17:00,,2013-11-12 08:00,2013-11-28 17:00,2013-11-12 08:00,2013-11-28 17:00,2013-11-12 08:00,2013-11-28 17:00,2013-11-12 08:00,2013-11-28 17:00,,PT_Normal,,,,,HapMw02bSl2ewdQLxE5kVA,,,,N,0,0,,,2013-02-16 15:53,2013-02-16 15:56,admin,admin
501737,6359,124739,13662,0,N,N,N,CP_Drtn,TT_Task,DT_FixedDUR2,TK_NotStart,DUKHCONP03Z5STUG1000,Footing Excavation,8177,0,0,200,0,1556,1556,200,732,0,732,,,,2013-05-27 08:00,2013-06-24 17:00,,2013-05-27 08:00,2013-06-24 17:00,2013-05-27 08:00,2013-06-24 17:00,2013-05-27 08:00,2013-06-24 17:00,2013-05-27 08:00,2013-06-24 17:00,,PT_Normal,,,,,9rlyifg3SY2dC3GcwohY3Q,,,,N,0,0,,,2013-02-16 15:53,2013-02-16 15:56,admin,admin
501738,6359,124739,13662,0,N,N,N,CP_Drtn,TT_Task,DT_FixedDUR2,TK_NotStart,DUKHCONP03Z5STUG1005,Footing Antitermite,8178,0,0,184,0,634.25,634.25,184,0,0,0,,,,2013-06-06 08:00,2013-07-02 17:00,,2013-06-06 08:00,2013-07-02 17:00,2013-06-06 08:00,2013-07-02 17:00,2013-06-06 08:00,2013-07-02 17:00,2013-06-06 08:00,2013-07-02 17:00,,PT_Normal,,,,,11Eo+tlYQfunlHuj0ycU6w,,,,N,0,0,,,2013-02-16 15:53,2013-02-16 15:56,admin,admin
501739,6359,124739,13662,0,N,N,N,CP_Drtn,TT_Task,DT_FixedDUR2,TK_NotStart,DUKHCONP03Z5STUG1010,Footing Blinding,8163,0,0,184,0,588,588,184,0,0,0,,,,2013-06-10 08:00,2013-07-06 17:00,,2013-06-10 08:00,2013-07-06 17:00,2013-06-10 08:00,2013-07-06 17:00,2013-06-10 08:00,2013-07-06 17:00,2013-06-10 08:00,2013-07-06 17:00,,PT_Normal,,,,,buYTZiU/Q3KzuZ4NvkBN6A,,,,N,0,0,,,2013-02-16 15:53,2013-02-16 15:56,admin,admin
501740,6359,124739,13662,0,N,N,N,CP_Drtn,TT_Task,DT_FixedDUR2,TK_NotStart,DUKHCONP03Z5STUG1015,Footing Waterproofing & Screed,8164,0,0,200,0,1368.5,1368.5,200,0,0,0,,,,2013-06-16 08:00,2013-07-14 17:00,,2013-06-16 08:00,2013-07-14 17:00,2013-06-16 08:00,2013-07-14 17:00,2013-06-16 08:00,2013-07-14 17:00,2013-06-16 08:00,2013-07-14 17:00,,PT_Normal,,,,,HoZyPlIQR2SAqlw3UxuoVA,,,,N,0,0,,,2013-02-16 15:53,2013-02-16 15:56,admin,admin
501741,6359,124739,13662,0,N,N,N,CP_Drtn,TT_Task,DT_FixedDUR2,TK_NotStart,DUKHCONP03Z5STUG1020,Construction of foundations,8165,0,0,160,0,4817.75,4817.75,160,0,0,0,,,,2013-07-01 08:00,2013-07-23 17:00,,2013-07-01 08:00,2013-07-23 17:00,2013-07-01 08:00,2013-07-23 17:00,2013-07-01 08:00,2013-07-23 17:00,2013-07-01 08:00,2013-07-23 17:00,,PT_Normal,,,,,0caX5rXwTn61NVpBPI2YeQ,,,,N,0,0,,,2013-02-16 15:53,2013-02-16 15:56,admin,admin
501742,6359,124739,13662,0,N,N,N,CP_Drtn,TT_Task,DT_FixedDUR2,TK_NotStart,DUKHCONP03Z5STUG1025,Construction of neck of columns,8165,0,0,200,0,1400,1400,200,0,0,0,,,,2013-07-10 08:00,2013-08-07 17:00,,2013-07-10 08:00,2013-08-07 17:00,2013-07-10 08:00,2013-08-07 17:00,2013-07-10 08:00,2013-08-07 17:00,2013-07-10 08:00,2013-08-07 17:00,,PT_Normal,,,,,1943Y5nlTnSXJFXxSKseZw,,,,N,0,0,,,2013-02-16 15:53,2013-02-16 15:56,admin,admin
501743,6359,124739,13662,0,N,N,N,CP_Drtn,TT_Task,DT_FixedDUR2,TK_NotStart,DUKHCONP03Z5STUG1030,Waterproofing Footing & Neck Column,8178,0,0,200,0,213.5,213.5,200,0,0,0,,,,2013-07-20 08:00,2013-08-20 17:00,,2013-07-20 08:00,2013-08-20 17:00,2013-07-20 08:00,2013-08-20 17:00,2013-07-20 08:00,2013-08-20 17:00,2013-07-20 08:00,2013-08-20 17:00,,PT_Normal,,,,,mXJeiX+hRV+H8oe84UC0UQ,,,,N,0,0,,,2013-02-16 15:53,2013-02-16 15:56,admin,admin
501744,6359,124739,13662,0,N,N,N,CP_Drtn,TT_Task,DT_FixedDUR2,TK_NotStart,DUKHCONP03Z5STUG1035,Backfilling Upto Grade Beam Bottom,8177,0,0,200,0,2560,2560,200,2200,0,2200,,,,2013-07-30 08:00,2013-08-31 17:00,,2013-07-30 08:00,2013-08-31 17:00,2013-07-30 08:00,2013-08-31 17:00,2013-07-30 08:00,2013-08-31 17:00,2013-07-30 08:00,2013-08-31 17:00,,PT_Normal,,,,,PmVuwGE8RLC2Y3K/UES6IQ,,,,N,0,0,,,2013-02-16 15:53,2013-02-16 15:56,admin,admin
501745,6359,124739,13662,0,N,N,N,CP_Drtn,TT_Task,DT_FixedDUR2,TK_NotStart,DUKHCONP03Z5STUG1040,Construction of Grade Beams,8163,0,0,200,0,4745,4745,200,0,0,0,,,,2013-08-19 08:00,2013-09-16 17:00,,2013-08-19 08:00,2013-09-16 17:00,2013-08-19 08:00,2013-09-16 17:00,2013-08-19 08:00,2013-09-16 17:00,2013-08-19 08:00,2013-09-16 17:00,,PT_Normal,,,,,JFpapZoeRdytdaNLcdfHxA,,,,N,0,0,,,2013-02-16 15:53,2013-02-16 15:56,admin,admin
501746,6359,124739,13662,0,N,N,N,CP_Drtn,TT_Task,DT_FixedDUR2,TK_NotStart,DUKHCONP03Z5STUG1045,Construction of slab on grade,8163,0,0,200,0,3327.5,3327.5,200,0,0,0,,,,2013-09-15 08:00,2013-10-13 17:00,,2013-09-15 08:00,2013-10-13 17:00,2013-09-15 08:00,2013-10-13 17:00,2013-09-15 08:00,2013-10-13 17:00,2013-09-15 08:00,2013-10-13 17:00,,PT_Normal,,,,,KpUQWrroSvizLmCKyNnQow,,,,N,0,0,,,2013-02-16 15:53,2013-02-16 15:56,admin,admin
501747,6359,124740,13662,0,N,N,N,CP_Drtn,TT_Task,DT_FixedDUR2,TK_NotStart,DUKHCONP03Z5ACTC8000,Pre-Commissioning & Testing of AC Works,8178,0,0,200,0,1500,1500,200,0,0,0,,,,2014-07-14 08:00,2014-08-14 17:00,,2014-07-14 08:00,2014-08-14 17:00,2014-07-14 08:00,2014-08-14 17:00,2014-07-14 08:00,2014-08-14 17:00,2014-07-14 08:00,2014-08-14 17:00,,PT_Normal,,,,,1HvYXHqFSKmPcFRggEHPhA,,,,N,0,0,,,2013-02-16 15:53,2013-02-16 16:35,admin,admin
501748,6359,124740,13662,0,N,N,N,CP_Drtn,TT_Task,DT_FixedDUR2,TK_NotStart,DUKHCONP03Z5ELTC8010,Pre-Commissioning & Testing of Electrical Works,8178,0,0,200,0,3000,3000,200,0,0,0,,,,2014-07-14 08:00,2014-08-14 17:00,,2014-07-14 08:00,2014-08-14 17:00,2014-07-14 08:00,2014-08-14 17:00,2014-07-14 08:00,2014-08-14 17:00,2014-07-14 08:00,2014-08-14 17:00,,PT_Normal,,,,,MKjssf29TYONVOxr6zqT8w,,,,N,0,0,,,2013-02-16 15:53,2013-02-16 16:35,admin,admin
501749,6359,124740,13662,0,N,N,N,CP_Drtn,TT_Task,DT_FixedDUR2,TK_NotStart,DUKHCONP03Z5PLTC8005,Pre-Commissioning & Testing of Plumbing Works,8178,0,0,200,0,3000,3000,200,0,0,0,,,,2014-07-14 08:00,2014-08-14 17:00,,2014-07-14 08:00,2014-08-14 17:00,2014-07-14 08:00,2014-08-14 17:00,2014-07-14 08:00,2014-08-14 17:00,2014-07-14 08:00,2014-08-14 17:00,,PT_Normal,,,,,O3LioIObQW6Pv5wfsVqymQ,,,,N,0,0,,,2013-02-16 15:53,2013-02-16 16:35,admin,admin
501750,6359,124743,13662,0,N,N,N,CP_Drtn,TT_Task,DT_FixedDUR2,TK_NotStart,DUKHCONP03Z5PLFF4325,Installation of Plumbing pipes & testing,8178,0,0,144,0,2732.4,2732.4,144,0,0,0,,,,2014-02-10 08:00,2014-03-03 17:00,,2014-02-10 08:00,2014-03-03 17:00,2014-02-10 08:00,2014-03-03 17:00,2014-02-10 08:00,2014-03-03 17:00,2014-02-10 08:00,2014-03-03 17:00,,PT_Normal,,,,,MrHjYy8CQFmlhVrcKYbjqA,,,,N,0,0,,,2013-02-16 15:53,2013-02-16 15:56,admin,admin
501751,6359,124743,13662,0,N,N,N,CP_Drtn,TT_Task,DT_FixedDUR2,TK_NotStart,DUKHCONP03Z5PLFF4330,Installation of Drainage pipes & testing,8178,208,208,144,0,216,216,144,0,0,0,,,,2014-03-15 08:00,2014-04-03 17:00,,2014-02-12 08:00,2014-03-04 17:00,2014-02-12 08:00,2014-03-04 17:00,2014-02-12 08:00,2014-03-04 17:00,2014-03-15 08:00,2014-04-03 17:00,,PT_Normal,,,,,wTn8j64PQEifx9NmllfGjQ,,,,N,0,0,,,2013-02-16 15:53,2013-02-16 15:56,admin,admin
501752,6359,124743,13662,0,N,N,N,CP_Drtn,TT_Task,DT_FixedDUR2,TK_NotStart,DUKHCONP03Z5PLFF4335,Sanitary Fittings & Accessories,8178,96,0,160,0,352.8,352.8,160,0,0,0,,,,2014-05-28 08:00,2014-06-19 17:00,,2014-05-14 08:00,2014-06-05 17:00,2014-05-14 08:00,2014-06-05 17:00,2014-05-14 08:00,2014-06-05 17:00,2014-05-28 08:00,2014-06-19 17:00,,PT_Normal,,,,,zAvEtbjZQ2eqiV/JhPOTNQ,,,,N,0,0,,,2013-02-16 15:53,2013-02-16 15:56,admin,admin
501753,6359,124743,13662,0,N,N,N,CP_Drtn,TT_Task,DT_FixedDUR2,TK_NotStart,DUKHCONP03Z5PLFF4340,Installation of Water Heater,8178,96,0,120,0,50.4,50.4,120,0,0,0,,,,2014-06-09 08:00,2014-06-25 17:00,,2014-05-26 08:00,2014-06-11 17:00,2014-05-26 08:00,2014-06-11 17:00,2014-05-26 08:00,2014-06-11 17:00,2014-06-09 08:00,2014-06-25 17:00,,PT_Normal,,,,,+wNZ7S/OQGS0bXO33OKS0g,,,,N,0,0,,,2013-02-16 15:53,2013-02-16 15:56,admin,admin
501754,6359,124744,13662,0,N,N,N,CP_Drtn,TT_Task,DT_FixedDUR2,TK_NotStart,DUKHCONP03Z5PLRF4345,Installation of Plumbing pipes & fittings,8178,568,144,120,0,1623.6,1623.6,120,0,0,0,,,,2014-05-31 08:00,2014-06-16 17:00,,2014-03-09 08:00,2014-03-25 17:00,2014-03-09 08:00,2014-03-25 17:00,2014-03-09 08:00,2014-03-25 17:00,2014-05-31 08:00,2014-06-16 17:00,,PT_Normal,,,,,lUZUEfBqSVqw2fwBEo7/AQ,,,,N,0,0,,,2013-02-16 15:53,2013-02-16 15:56,admin,admin
501755,6359,124744,13662,0,N,N,N,CP_Drtn,TT_Task,DT_FixedDUR2,TK_NotStart,DUKHCONP03Z5PLRF4350,Installation of Rain water Pipes,8178,424,272,120,0,82.8,82.8,120,0,0,0,,,,2014-06-09 08:00,2014-06-25 17:00,,2014-04-08 08:00,2014-04-24 17:00,2014-04-08 08:00,2014-04-24 17:00,2014-04-08 08:00,2014-04-24 17:00,2014-06-09 08:00,2014-06-25 17:00,,PT_Normal,,,,,hrhA+ZoBQBm998X/KJv/4g,,,,N,0,0,,,2013-02-16 15:53,2013-02-16 15:56,admin,admin
501756,6359,124744,13662,0,N,N,N,CP_Drtn,TT_Task,DT_FixedDUR2,TK_NotStart,DUKHCONP03Z5PLRF4355,Roof  Water Tank Installation & Connections,8178,96,96,200,0,100.8,100.8,200,0,0,0,,,,2014-06-15 08:00,2014-07-13 17:00,,2014-06-01 08:00,2014-06-29 17:00,2014-06-01 08:00,2014-06-29 17:00,2014-06-01 08:00,2014-06-29 17:00,2014-06-15 08:00,2014-07-13 17:00,,PT_Normal,,,,,l3jWUWJ2TCWXLHE+QvbfSg,,,,N,0,0,,,2013-02-16 15:53,2013-02-16 15:56,admin,admin
501757,6359,124745,13662,0,N,N,N,CP_Drtn,TT_Task,DT_FixedDUR2,TK_NotStart,DUKHCONP03Z5PLGF4305,Installation of Plumbing pipes & testing,8178,320,0,144,0,2732.4,2732.4,144,0,0,0,,,,2014-02-17 08:00,2014-03-09 17:00,,2013-12-31 08:00,2014-01-20 17:00,2013-12-31 08:00,2014-01-20 17:00,2013-12-31 08:00,2014-01-20 17:00,2014-02-17 08:00,2014-03-09 17:00,,PT_Normal,,,,,yqo7ksbKS5e4OwiKoNrOLw,,,,N,0,0,,,2013-02-16 15:53,2013-02-16 15:56,admin,admin
501758,6359,124745,13662,0,N,N,N,CP_Drtn,TT_Task,DT_FixedDUR2,TK_NotStart,DUKHCONP03Z5PLGF4310,Installation of Drainage pipes &testing,8178,488,136,144,0,216,216,144,0,0,0,,,,2014-03-13 08:00,2014-04-02 17:00,,2013-12-31 08:00,2014-01-20 17:00,2013-12-31 08:00,2014-01-20 17:00,2013-12-31 08:00,2014-01-20 17:00,2014-03-13 08:00,2014-04-02 17:00,,PT_Normal,,,,,efDbu/FqQCGI/Mm57BUloA,,,,N,0,0,,,2013-02-16 15:53,2013-02-16 15:56,admin,admin
501759,6359,124745,13662,0,N,N,N,CP_Drtn,TT_Task,DT_FixedDUR2,TK_NotStart,DUKHCONP03Z5PLGF4315,Sanitary Fittings & Accessories,8178,512,0,160,0,352.8,352.8,160,0,0,0,,,,2014-06-15 08:00,2014-07-07 17:00,,2014-04-01 08:00,2014-04-23 17:00,2014-04-01 08:00,2014-04-23 17:00,2014-04-01 08:00,2014-04-23 17:00,2014-06-15 08:00,2014-07-07 17:00,,PT_Normal,,,,,G26FcdAwReOeXe9qeF3hhw,,,,N,0,0,,,2013-02-16 15:53,2013-02-16 15:56,admin,admin
501760,6359,124745,13662,0,N,N,N,CP_Drtn,TT_Task,DT_FixedDUR2,TK_NotStart,DUKHCONP03Z5PLGF4320,Installation of Water Heater,8178,512,512,120,0,50.4,50.4,120,0,0,0,,,,2014-06-26 08:00,2014-07-13 17:00,,2014-04-13 08:00,2014-04-29 17:00,2014-04-13 08:00,2014-04-29 17:00,2014-04-13 08:00,2014-04-29 17:00,2014-06-26 08:00,2014-07-13 17:00,,PT_Normal,,,,,v81FcaahSSezHhKfLVBQUA,,,,N,0,0,,,2013-02-16 15:53,2013-02-16 15:56,admin,admin
501761,6359,124745,13662,0,N,N,N,CP_Drtn,TT_Task,DT_FixedDUR2,TK_NotStart,DUKHCONP03Z5PLUG4300,Drainage / Storm Pipes in Grade Slab,8178,0,0,160,0,165.6,165.6,160,0,0,0,,,,2013-09-05 08:00,2013-09-28 17:00,,2013-09-05 08:00,2013-09-28 17:00,2013-09-05 08:00,2013-09-28 17:00,2013-09-05 08:00,2013-09-28 17:00,2013-09-05 08:00,2013-09-28 17:00,,PT_Normal,,,,,Ub/VMm//TQ+8BKqRE3bl1g,,,,N,0,0,,,2013-02-16 15:53,2013-02-16 15:56,admin,admin
501762,6359,124747,13662,0,N,N,N,CP_Drtn,TT_Task,DT_FixedDUR2,TK_NotStart,DUKHCONP03Z5ELFF4035,Fixing of wall conduits & switch socket boxes,8178,88,0,200,0,1102.8,1102.8,200,0,0,0,,,,2014-02-15 08:00,2014-03-15 17:00,,2014-02-01 08:00,2014-03-02 17:00,2014-02-01 08:00,2014-03-02 17:00,2014-02-01 08:00,2014-03-02 17:00,2014-02-15 08:00,2014-03-15 17:00,,PT_Normal,,,,,/ezBU9sFTRmCuXagA8eZdQ,,,,N,0,0,,,2013-02-16 15:53,2013-02-23 09:03,admin,admin
501763,6359,124747,13662,0,N,N,N,CP_Drtn,TT_Task,DT_FixedDUR2,TK_NotStart,DUKHCONP03Z5ELFF4040,Cable tray & trunking installation,8178,264,24,160,0,1840.8,1840.8,160,0,0,0,,,,2014-03-24 08:00,2014-04-15 17:00,,2014-02-13 08:00,2014-03-08 17:00,2014-02-13 08:00,2014-03-08 17:00,2014-02-13 08:00,2014-03-08 17:00,2014-03-24 08:00,2014-04-15 17:00,,PT_Normal,,,,,e+SeLMBARtu02UL04dTb2w,,,,N,0,0,,,2013-02-16 15:53,2013-02-16 15:56,admin,admin
501764,6359,124747,13662,0,N,N,N,CP_Drtn,TT_Task,DT_FixedDUR2,TK_NotStart,DUKHCONP03Z5ELFF4045,Installation of wiring & Main Cabling,8178,240,240,200,0,648,648,200,0,0,0,,,,2014-04-01 08:00,2014-04-29 17:00,,2014-02-25 08:00,2014-03-25 17:00,2014-02-25 08:00,2014-03-25 17:00,2014-02-25 08:00,2014-03-25 17:00,2014-04-01 08:00,2014-04-29 17:00,,PT_Normal,,,,,MDyVsknnRz6kasNHH2y3Qw,,,,N,0,0,,,2013-02-16 15:53,2013-02-16 15:56,admin,admin
501765,6359,124747,13662,0,N,N,N,CP_Drtn,TT_Task,DT_FixedDUR2,TK_NotStart,DUKHCONP03Z5ELFF4060,"Installation  of DBS,MCCB Accessories.",8178,64,0,160,0,188.4,188.4,160,0,0,0,,,,2014-05-15 08:00,2014-06-07 17:00,,2014-05-06 08:00,2014-05-28 17:00,2014-05-06 08:00,2014-05-28 17:00,2014-05-06 08:00,2014-05-28 17:00,2014-05-15 08:00,2014-06-07 17:00,,PT_Normal,,,,,6xWOaYPNQIClW5bCDFK0FQ,,,,N,0,0,,,2013-02-16 15:53,2013-02-16 15:56,admin,admin
501766,6359,124747,13662,0,N,N,N,CP_Drtn,TT_Task,DT_FixedDUR2,TK_NotStart,DUKHCONP03Z5ELFF4065,Installation of Lighting fixtures & Accessories,8178,64,0,200,0,2528.4,2528.4,200,0,0,0,,,,2014-05-28 08:00,2014-06-25 17:00,,2014-05-19 08:00,2014-06-16 17:00,2014-05-19 08:00,2014-06-16 17:00,2014-05-19 08:00,2014-06-16 17:00,2014-05-28 08:00,2014-06-25 17:00,,PT_Normal,,,,,9g+TOFnOSaGmtAMf7LKaKw,,,,N,0,0,,,2013-02-16 15:53,2013-02-16 15:56,admin,admin
501767,6359,124747,13662,0,N,N,N,CP_Drtn,TT_Task,DT_FixedDUR2,TK_NotStart,DUKHCONP03Z5ELFF4055,Install. of CAMS & Fire Fighting Accessories,8178,96,96,200,0,1612.8,1612.8,200,0,0,0,,,,2014-05-17 08:00,2014-06-14 17:00,,2014-05-03 08:00,2014-05-31 17:00,2014-05-03 08:00,2014-05-31 17:00,2014-05-03 08:00,2014-05-31 17:00,2014-05-17 08:00,2014-06-14 17:00,,PT_Normal,,,,,2MgXX/7YRfyR06tuCgcGBg,,,,N,0,0,,,2013-02-16 15:53,2013-02-16 15:56,admin,admin
501768,6359,124747,13662,0,N,N,N,CP_Drtn,TT_Task,DT_FixedDUR2,TK_NotStart,DUKHCONP03Z5ELFF4050,Installation of Telephone System,8178,216,152,200,0,542.4,542.4,200,0,0,0,,,,2014-06-01 08:00,2014-06-29 17:00,,2014-04-30 08:00,2014-05-28 17:00,2014-04-30 08:00,2014-05-28 17:00,2014-04-30 08:00,2014-05-28 17:00,2014-06-01 08:00,2014-06-29 17:00,,PT_Normal,,,,,2cXt7aDPSWiw2jP6Vqhrkw,,,,N,0,0,,,2013-02-16 15:53,2013-02-23 09:03,admin,admin
501769,6359,124748,13662,0,N,N,N,CP_Drtn,TT_Task,DT_FixedDUR2,TK_NotStart,DUKHCONP03Z5ELGF4015,Install. of CAMS & Fire Fighting Accessories,8178,392,296,200,0,1461.6,1461.6,200,0,0,0,,,,2014-05-11 08:00,2014-06-08 17:00,,2014-03-15 08:00,2014-04-12 17:00,2014-03-15 08:00,2014-04-12 17:00,2014-03-15 08:00,2014-04-12 17:00,2014-05-11 08:00,2014-06-08 17:00,,PT_Normal,,,,,4z4Er2gOQ9Ccj3QMN76xXA,,,,N,0,0,,,2013-02-16 15:53,2013-02-23 09:03,admin,admin
501770,6359,124748,13662,0,N,N,N,CP_Drtn,TT_Task,DT_FixedDUR2,TK_NotStart,DUKHCONP03Z5ELGF4030,Installation of Telephone System,8178,336,120,160,0,542.4,542.4,160,0,0,0,,,,2014-05-20 08:00,2014-06-11 17:00,,2014-04-01 08:00,2014-04-23 17:00,2014-04-01 08:00,2014-04-23 17:00,2014-04-01 08:00,2014-04-23 17:00,2014-05-20 08:00,2014-06-11 17:00,,PT_Normal,,,,,rrfiJZeNRz6ArLi1dYoTFw,,,,N,0,0,,,2013-02-16 15:53,2013-02-23 09:03,admin,admin
501771,6359,124748,13662,0,N,N,N,CP_Drtn,TT_Task,DT_FixedDUR2,TK_NotStart,DUKHCONP03Z5ELGF4000,Fixing of wall conduits & switch socket boxes,8178,392,0,200,0,1102.8,1102.8,200,0,0,0,,,,2014-02-17 08:00,2014-03-17 17:00,,2013-12-21 08:00,2014-01-18 17:00,2013-12-21 08:00,2014-01-18 17:00,2013-12-21 08:00,2014-01-18 17:00,2014-02-17 08:00,2014-03-17 17:00,,PT_Normal,,,,,H6ELSAjQRg6DgIUWSJLBig,,,,N,0,0,,,2013-02-16 15:53,2013-02-23 09:03,admin,admin
501772,6359,124748,13662,0,N,N,N,CP_Drtn,TT_Task,DT_FixedDUR2,TK_NotStart,DUKHCONP03Z5ELGF4005,Cable tray & trunking installation,8178,552,0,160,0,1840.8,1840.8,160,0,0,0,,,,2014-03-24 08:00,2014-04-15 17:00,,2014-01-01 08:00,2014-01-23 17:00,2014-01-01 08:00,2014-01-23 17:00,2014-01-01 08:00,2014-01-23 17:00,2014-03-24 08:00,2014-04-15 17:00,,PT_Normal,,,,,9QjwjcymRCqnvS4X18Sh4g,,,,N,0,0,,,2013-02-16 15:53,2013-02-16 15:56,admin,admin
501773,6359,124748,13662,0,N,N,N,CP_Drtn,TT_Task,DT_FixedDUR2,TK_NotStart,DUKHCONP03Z5ELGF4010,Installation of wiring & Main Cabling,8178,552,216,200,0,648,648,200,0,0,0,,,,2014-04-01 08:00,2014-04-29 17:00,,2014-01-09 08:00,2014-02-06 17:00,2014-01-09 08:00,2014-02-06 17:00,2014-01-09 08:00,2014-02-06 17:00,2014-04-01 08:00,2014-04-29 17:00,,PT_Normal,,,,,fYvl+J9SRlKoWBrr2RKzqg,,,,N,0,0,,,2013-02-16 15:53,2013-02-16 15:56,admin,admin
501774,6359,124748,13662,0,N,N,N,CP_Drtn,TT_Task,DT_FixedDUR2,TK_NotStart,DUKHCONP03Z5ELGF4020,"Installation  of DBS,MCCB Accessories.",8178,336,0,160,0,222,222,160,0,0,0,,,,2014-05-08 08:00,2014-05-31 17:00,,2014-03-20 08:00,2014-04-12 17:00,2014-03-20 08:00,2014-04-12 17:00,2014-03-20 08:00,2014-04-12 17:00,2014-05-08 08:00,2014-05-31 17:00,,PT_Normal,,,,,VN/VaUnRSX2iN7yKIoF8Bg,,,,N,0,0,,,2013-02-16 15:53,2013-02-16 15:56,admin,admin
501775,6359,124748,13662,0,N,N,N,CP_Drtn,TT_Task,DT_FixedDUR2,TK_NotStart,DUKHCONP03Z5ELGF4025,Installation of Lighting fixtures & Accessories,8178,352,288,200,0,2580,2580,200,0,0,0,,,,2014-05-22 08:00,2014-06-19 17:00,,2014-04-01 08:00,2014-04-29 17:00,2014-04-01 08:00,2014-04-29 17:00,2014-04-01 08:00,2014-04-29 17:00,2014-05-22 08:00,2014-06-19 17:00,,PT_Normal,,,,,E7SpPI1xSSyzjZYFLwAy1Q,,,,N,0,0,,,2013-02-16 15:53,2013-02-16 15:56,admin,admin
501776,6359,124749,13662,0,N,N,N,CP_Drtn,TT_Task,DT_FixedDUR2,TK_NotStart,DUKHCONP03Z5ELRF4070,Installation of Isolator,8178,64,0,144,0,309.6,309.6,144,0,0,0,,,,2014-06-17 08:00,2014-07-07 17:00,,2014-06-08 08:00,2014-06-28 17:00,2014-06-08 08:00,2014-06-28 17:00,2014-06-08 08:00,2014-06-28 17:00,2014-06-17 08:00,2014-07-07 17:00,,PT_Normal,,,,,0/PXy4m9SICQt4nRKZA/UA,,,,N,0,0,,,2013-02-16 15:53,2013-02-16 15:56,admin,admin
501777,6359,124749,13662,0,N,N,N,CP_Drtn,TT_Task,DT_FixedDUR2,TK_NotStart,DUKHCONP03Z5ELRF4075,Installation of TV Dish Antenna,8178,64,64,184,0,4725.6,4725.6,184,0,0,0,,,,2014-06-29 08:00,2014-07-24 17:00,,2014-06-19 08:00,2014-07-15 17:00,2014-06-19 08:00,2014-07-15 17:00,2014-06-19 08:00,2014-07-15 17:00,2014-06-29 08:00,2014-07-24 17:00,,PT_Normal,,,,,g+dL2Ky8ThqIHcbO/7Jatw,,,,N,0,0,,,2013-02-16 15:53,2013-02-16 15:56,admin,admin
501778,6359,124751,13662,0,N,N,N,CP_Drtn,TT_Task,DT_FixedDUR2,TK_NotStart,DUKHCONP03Z5ACFF4615,Installation AC Pipes,8178,256,8,160,0,340.8,340.8,160,0,0,0,,,,2014-04-13 08:00,2014-05-05 17:00,,2014-03-06 08:00,2014-03-29 17:00,2014-03-06 08:00,2014-03-29 17:00,2014-03-06 08:00,2014-03-29 17:00,2014-04-13 08:00,2014-05-05 17:00,,PT_Normal,,,,,VO0QDkxFSTOdLpiCY0fqrQ,,,,N,0,0,,,2013-02-16 15:53,2013-02-16 15:56,admin,admin
501779,6359,124751,13662,0,N,N,N,CP_Drtn,TT_Task,DT_FixedDUR2,TK_NotStart,DUKHCONP03Z5ACFF4620,Fixing of Ventilation Equipments,8178,72,0,200,0,136.8,136.8,200,0,0,0,,,,2014-05-13 08:00,2014-06-10 17:00,,2014-05-03 08:00,2014-05-31 17:00,2014-05-03 08:00,2014-05-31 17:00,2014-05-03 08:00,2014-05-31 17:00,2014-05-13 08:00,2014-06-10 17:00,,PT_Normal,,,,,q7npsYm2QnikXJ64Mvxl7A,,,,N,0,0,,,2013-02-16 15:53,2013-02-16 15:56,admin,admin
501780,6359,124751,13662,0,N,N,N,CP_Drtn,TT_Task,DT_FixedDUR2,TK_NotStart,DUKHCONP03Z5ACFF4625,Fixing of Split AC,8178,72,0,160,0,361.2,361.2,160,0,0,0,,,,2014-06-03 08:00,2014-06-25 17:00,,2014-05-24 08:00,2014-06-15 17:00,2014-05-24 08:00,2014-06-15 17:00,2014-05-24 08:00,2014-06-15 17:00,2014-06-03 08:00,2014-06-25 17:00,,PT_Normal,,,,,398RN9R9Q/qqLJBz1cm1lQ,,,,N,0,0,,,2013-02-16 15:53,2013-02-23 09:03,admin,admin
501781,6359,124752,13662,0,N,N,N,CP_Drtn,TT_Task,DT_FixedDUR2,TK_NotStart,DUKHCONP03Z5ACGF4600,Installation AC Pipes,8178,584,224,160,0,340.8,340.8,160,0,0,0,,,,2014-04-16 08:00,2014-05-08 17:00,,2014-01-20 08:00,2014-02-12 17:00,2014-01-20 08:00,2014-02-12 17:00,2014-01-20 08:00,2014-02-12 17:00,2014-04-16 08:00,2014-05-08 17:00,,PT_Normal,,,,,EBVt7xFFTimn4CZUKnRRWQ,,,,N,0,0,,,2013-02-16 15:53,2013-02-16 15:56,admin,admin
501782,6359,124752,13662,0,N,N,N,CP_Drtn,TT_Task,DT_FixedDUR2,TK_NotStart,DUKHCONP03Z5ACGF4605,Fixing of Ventilation Equipments,8178,408,0,200,0,136.8,136.8,200,0,0,0,,,,2014-05-13 08:00,2014-06-10 17:00,,2014-03-15 08:00,2014-04-12 17:00,2014-03-15 08:00,2014-04-12 17:00,2014-03-15 08:00,2014-04-12 17:00,2014-05-13 08:00,2014-06-10 17:00,,PT_Normal,,,,,u2k1+L0/TOq+nYHlhK0DSA,,,,N,0,0,,,2013-02-16 15:53,2013-02-16 15:56,admin,admin
501783,6359,124752,13662,0,N,N,N,CP_Drtn,TT_Task,DT_FixedDUR2,TK_NotStart,DUKHCONP03Z5ACGF4610,Fixing of Split AC,8178,408,88,160,0,361.2,361.2,160,0,0,0,,,,2014-06-03 08:00,2014-06-25 17:00,,2014-04-05 08:00,2014-04-27 17:00,2014-04-05 08:00,2014-04-27 17:00,2014-04-05 08:00,2014-04-27 17:00,2014-06-03 08:00,2014-06-25 17:00,,PT_Normal,,,,,pfrT2TQRTFK+dCixbBIhKg,,,,N,0,0,,,2013-02-16 15:53,2013-02-23 09:03,admin,admin
501784,6359,124753,13662,0,N,N,N,CP_Drtn,TT_Task,DT_FixedDUR2,TK_NotStart,DUKHCONP03Z5ACRF4630,Installation of Refrigerant Pipes,8178,584,472,200,0,170.4,170.4,200,0,0,0,,,,2014-06-09 08:00,2014-07-07 17:00,,2014-03-16 08:00,2014-04-13 17:00,2014-03-16 08:00,2014-04-13 17:00,2014-03-16 08:00,2014-04-13 17:00,2014-06-09 08:00,2014-07-07 17:00,,PT_Normal,,,,,CLXg5pZFSaioQ/qDJg+Qzg,,,,N,0,0,,,2013-02-16 15:53,2013-02-16 15:56,admin,admin
501785,6359,124753,13662,0,N,N,N,CP_Drtn,TT_Task,DT_FixedDUR2,TK_NotStart,DUKHCONP03Z5ACRF4635,Installation of Condensing Unit,8178,112,112,200,0,562.8,562.8,200,0,0,0,,,,2014-06-15 08:00,2014-07-13 17:00,,2014-05-29 08:00,2014-06-26 17:00,2014-05-29 08:00,2014-06-26 17:00,2014-05-29 08:00,2014-06-26 17:00,2014-06-15 08:00,2014-07-13 17:00,,PT_Normal,,,,,KjTTreVDQayOlENorXAWeA,,,,N,0,0,,,2013-02-16 15:53,2013-02-23 09:03,admin,admin
501786,6359,124756,13662,0,N,N,N,CP_Drtn,TT_Task,DT_FixedDUR2,TK_NotStart,DUKHCONP03Z5ARRF3630,Leveling Screed for Waterproofing,8164,496,0,200,0,734.75,734.75,200,0,0,0,,,,2014-05-04 08:00,2014-06-01 17:00,,2014-02-20 08:00,2014-03-20 17:00,2014-02-20 08:00,2014-03-20 17:00,2014-02-20 08:00,2014-03-20 17:00,2014-05-04 08:00,2014-06-01 17:00,,PT_Normal,,,,,VoMFp6+dSNSFwSzwy4Clkg,,,,N,0,0,,,2013-02-16 15:53,2013-02-16 15:56,admin,admin
501787,6359,124756,13662,0,N,N,N,CP_Drtn,TT_Task,DT_FixedDUR2,TK_NotStart,DUKHCONP03Z5ARRF3635,Laying of Waterproofing Membrane,8178,496,0,200,0,2042.25,2042.25,200,0,0,0,,,,2014-05-07 08:00,2014-06-04 17:00,,2014-02-24 08:00,2014-03-24 17:00,2014-02-24 08:00,2014-03-24 17:00,2014-02-24 08:00,2014-03-24 17:00,2014-05-07 08:00,2014-06-04 17:00,,PT_Normal,,,,,4qmnENTNSQaskoL/98SqsQ,,,,N,0,0,,,2013-02-16 15:53,2013-02-16 15:56,admin,admin
501788,6359,124756,13662,0,N,N,N,CP_Drtn,TT_Task,DT_FixedDUR2,TK_NotStart,DUKHCONP03Z5ARRF3640,Installation of Insulation & Protection,8178,496,0,200,0,1291.5,1291.5,200,0,0,0,,,,2014-05-12 08:00,2014-06-09 17:00,,2014-03-01 08:00,2014-03-29 17:00,2014-03-01 08:00,2014-03-29 17:00,2014-03-01 08:00,2014-03-29 17:00,2014-05-12 08:00,2014-06-09 17:00,,PT_Normal,,,,,faKIBKecTPGg8yk+WRO5Ww,,,,N,0,0,,,2013-02-16 15:53,2013-02-16 15:56,admin,admin
501789,6359,124756,13662,0,N,N,N,CP_Drtn,TT_Task,DT_FixedDUR2,TK_NotStart,DUKHCONP03Z5ARRF3645,Lime Stone Chips & Paving slab Installation,8170,496,0,200,0,741.5,741.5,200,0,0,0,,,,2014-05-17 08:00,2014-06-14 17:00,,2014-03-05 08:00,2014-04-02 17:00,2014-03-05 08:00,2014-04-02 17:00,2014-03-05 08:00,2014-04-02 17:00,2014-05-17 08:00,2014-06-14 17:00,,PT_Normal,,,,,udjv9UUWR3Kgk4PFYR9tqQ,,,,N,0,0,,,2013-02-16 15:53,2013-02-16 15:56,admin,admin
501790,6359,124756,13662,0,N,N,N,CP_Drtn,TT_Task,DT_FixedDUR2,TK_NotStart,DUKHCONP03Z5ARRF3655,Installation of Pumps Protection cabinets,8178,496,0,160,0,231,231,160,0,0,0,,,,2014-06-09 08:00,2014-07-01 17:00,,2014-03-29 08:00,2014-04-20 17:00,2014-03-29 08:00,2014-04-20 17:00,2014-03-29 08:00,2014-04-20 17:00,2014-06-09 08:00,2014-07-01 17:00,,PT_Normal,,,,,bz8MvYDbTDGgfmRHeM4oCQ,,,,N,0,0,,,2013-02-16 15:53,2013-02-16 15:56,admin,admin
501791,6359,124756,13662,0,N,N,N,CP_Drtn,TT_Task,DT_FixedDUR2,TK_NotStart,DUKHCONP03Z5ARRF3650,Install. of Gal. Frame & Aluminum Slat Screen,8178,496,0,200,0,882,882,200,0,0,0,,,,2014-05-25 08:00,2014-06-22 17:00,,2014-03-13 08:00,2014-04-10 17:00,2014-03-13 08:00,2014-04-10 17:00,2014-03-13 08:00,2014-04-10 17:00,2014-05-25 08:00,2014-06-22 17:00,,PT_Normal,,,,,VnO9EPtAQyOCt9m/ioD30w,,,,N,0,0,,,2013-02-16 15:53,2013-02-16 15:56,admin,admin
501792,6359,124756,13662,0,N,N,N,CP_Drtn,TT_Task,DT_FixedDUR2,TK_NotStart,DUKHCONP03Z5ARRF3660,Installation of Access Ladder,8178,536,536,120,0,198,198,120,0,0,0,,,,2014-06-26 08:00,2014-07-13 17:00,,2014-04-09 08:00,2014-04-26 17:00,2014-04-09 08:00,2014-04-26 17:00,2014-04-09 08:00,2014-04-26 17:00,2014-06-26 08:00,2014-07-13 17:00,,PT_Normal,,,,,OKQd4jrzTQOuZl9kmnk/Gw,,,,N,0,0,,,2013-02-16 15:53,2013-02-16 15:56,admin,admin
501793,6359,124757,13662,0,N,N,N,CP_Drtn,TT_Task,DT_FixedDUR2,TK_NotStart,DUKHCONP03Z5AREL3665,External Plastering,8169,424,0,200,0,9159.75,9159.75,200,0,0,0,,,,2014-05-20 08:00,2014-06-17 17:00,,2014-03-19 08:00,2014-04-16 17:00,2014-03-19 08:00,2014-04-16 17:00,2014-03-19 08:00,2014-04-16 17:00,2014-05-20 08:00,2014-06-17 17:00,,PT_Normal,,,,,7S8xImigQ36FxQf893rwLQ,,,,N,0,0,,,2013-02-16 15:53,2013-02-16 15:56,admin,admin
501794,6359,124757,13662,0,N,N,N,CP_Drtn,TT_Task,DT_FixedDUR2,TK_NotStart,DUKHCONP03Z5AREL3675,GRC Panel Works,8178,440,0,160,0,550,550,160,0,0,0,,,,2014-06-09 08:00,2014-07-01 17:00,,2014-04-06 08:00,2014-04-28 17:00,2014-04-06 08:00,2014-04-28 17:00,2014-04-06 08:00,2014-04-28 17:00,2014-06-09 08:00,2014-07-01 17:00,,PT_Normal,,,,,stvYpJ5WRrSLrh+U4bx02Q,,,,N,0,0,,,2013-02-16 15:53,2013-02-16 15:56,admin,admin
501795,6359,124757,13662,0,N,N,N,CP_Drtn,TT_Task,DT_FixedDUR2,TK_NotStart,DUKHCONP03Z5AREL3680,External Painting,8178,440,440,160,0,3234,3234,160,0,0,0,,,,2014-06-21 08:00,2014-07-13 17:00,,2014-04-17 08:00,2014-05-10 17:00,2014-04-17 08:00,2014-05-10 17:00,2014-04-17 08:00,2014-05-10 17:00,2014-06-21 08:00,2014-07-13 17:00,,PT_Normal,,,,,/EcEAES4S4KE1FRyeqLo5g,,,,N,0,0,,,2013-02-16 15:53,2013-02-16 15:56,admin,admin
501796,6359,124759,13662,0,N,N,N,CP_Drtn,TT_Task,DT_FixedDUR2,TK_NotStart,DUKHCONP03Z5ARGF3000,Block work,8168,320,0,200,0,7112.5,7112.5,200,0,0,0,,,,2014-01-30 08:00,2014-03-01 17:00,,2013-12-14 08:00,2014-01-12 17:00,2013-12-14 08:00,2014-01-12 17:00,2013-12-14 08:00,2014-01-12 17:00,2014-01-30 08:00,2014-03-01 17:00,,PT_Normal,,,,,EHJmJkJ+ThqSIJP9QF5O5w,,,,N,0,0,,,2013-02-16 15:53,2013-02-16 15:56,admin,admin
501797,6359,124759,13662,0,N,N,N,CP_Drtn,TT_Task,DT_FixedDUR2,TK_NotStart,DUKHCONP03Z5ARGF3005,Plastering work,8169,320,0,200,0,6268.75,6268.75,200,0,0,0,,,,2014-02-23 08:00,2014-03-23 17:00,,2014-01-06 08:00,2014-02-03 17:00,2014-01-06 08:00,2014-02-03 17:00,2014-01-06 08:00,2014-02-03 17:00,2014-02-23 08:00,2014-03-23 17:00,,PT_Normal,,,,,76PdZLHLSrmpvTuQHh8X+w,,,,N,0,0,,,2013-02-16 15:53,2013-02-16 15:56,admin,admin
501798,6359,124759,13662,0,N,N,N,CP_Drtn,TT_Task,DT_FixedDUR2,TK_NotStart,DUKHCONP03Z5ARGF3010,Flooring screed,8164,384,64,168,0,1234.75,1234.75,168,0,0,0,,,,2014-03-12 08:00,2014-04-05 17:00,,2014-01-14 08:00,2014-02-06 17:00,2014-01-14 08:00,2014-02-06 17:00,2014-01-14 08:00,2014-02-06 17:00,2014-03-12 08:00,2014-04-05 17:00,,PT_Normal,,,,,amf+brF8RXCRoHX2JIIckw,,,,N,0,0,,,2013-02-16 15:53,2013-02-16 15:56,admin,admin
501799,6359,124759,13662,0,N,N,N,CP_Drtn,TT_Task,DT_FixedDUR2,TK_NotStart,DUKHCONP03Z5ARGF3015,Wet area waterproofing & Protection Screed,8178,320,0,120,0,582,582,120,0,0,0,,,,2014-03-12 08:00,2014-03-29 17:00,,2014-01-23 08:00,2014-02-09 17:00,2014-01-23 08:00,2014-02-09 17:00,2014-01-23 08:00,2014-02-09 17:00,2014-03-12 08:00,2014-03-29 17:00,,PT_Normal,,,,,nC5p9F4VS/G46n1wHAbfSQ,,,,N,0,0,,,2013-02-16 15:53,2013-02-16 15:56,admin,admin
501800,6359,124759,13662,0,N,N,N,CP_Drtn,TT_Task,DT_FixedDUR2,TK_NotStart,DUKHCONP03Z5ARGF3030,Paint First coat,8178,400,64,200,0,4136.55,4136.55,200,0,0,0,,,,2014-03-30 08:00,2014-04-27 17:00,,2014-01-29 08:00,2014-02-27 17:00,2014-01-29 08:00,2014-02-27 17:00,2014-01-29 08:00,2014-02-27 17:00,2014-03-30 08:00,2014-04-27 17:00,,PT_Normal,,,,,ibii99GNR6i+w7HjV/1PVg,,,,N,0,0,,,2013-02-16 15:53,2013-02-16 15:56,admin,admin
501801,6359,124759,13662,0,N,N,N,CP_Drtn,TT_Task,DT_FixedDUR2,TK_NotStart,DUKHCONP03Z5ARGF3020,Ceramic Wall Tiling,8170,320,0,200,0,2603.5,2603.5,200,0,0,0,,,,2014-03-18 08:00,2014-04-15 17:00,,2014-01-29 08:00,2014-02-27 17:00,2014-01-29 08:00,2014-02-27 17:00,2014-01-29 08:00,2014-02-27 17:00,2014-03-18 08:00,2014-04-15 17:00,,PT_Normal,,,,,DG0dV7WdQPqpuo+jQr3f3g,,,,N,0,0,,,2013-02-16 15:53,2013-02-16 15:56,admin,admin
501802,6359,124759,13662,0,N,N,N,CP_Drtn,TT_Task,DT_FixedDUR2,TK_NotStart,DUKHCONP03Z5ARGF3025,Porcelain Tile flooring,8170,320,0,200,0,1787.5,1787.5,200,0,0,0,,,,2014-03-24 08:00,2014-04-21 17:00,,2014-02-04 08:00,2014-03-05 17:00,2014-02-04 08:00,2014-03-05 17:00,2014-02-04 08:00,2014-03-05 17:00,2014-03-24 08:00,2014-04-21 17:00,,PT_Normal,,,,,yMnxyxT7QiqY/RbVbvoWpQ,,,,N,0,0,,,2013-02-16 15:53,2013-02-16 15:56,admin,admin
501803,6359,124759,13662,0,N,N,N,CP_Drtn,TT_Task,DT_FixedDUR2,TK_NotStart,DUKHCONP03Z5ARGF3040,Cobble Tile flooring,8170,320,0,120,0,68.75,68.75,120,0,0,0,,,,2014-04-20 08:00,2014-05-06 17:00,,2014-03-04 08:00,2014-03-20 17:00,2014-03-04 08:00,2014-03-20 17:00,2014-03-04 08:00,2014-03-20 17:00,2014-04-20 08:00,2014-05-06 17:00,,PT_Normal,,,,,1y6E39uiQHOakMcara+5gw,,,,N,0,0,,,2013-02-16 15:53,2013-02-16 15:56,admin,admin
501804,6359,124759,13662,0,N,N,N,CP_Drtn,TT_Task,DT_FixedDUR2,TK_NotStart,DUKHCONP03Z5ARGF3035,Slate Tile Flooring & Skirting,8170,336,16,120,0,45.5,45.5,120,0,0,0,,,,2014-04-15 08:00,2014-05-01 17:00,,2014-02-25 08:00,2014-03-13 17:00,2014-02-25 08:00,2014-03-13 17:00,2014-02-25 08:00,2014-03-13 17:00,2014-04-15 08:00,2014-05-01 17:00,,PT_Normal,,,,,wJdap42hQIe9hR1OQp4TzQ,,,,N,0,0,,,2013-02-16 15:53,2013-02-16 15:56,admin,admin
501805,6359,124759,13662,0,N,N,N,CP_Drtn,TT_Task,DT_FixedDUR2,TK_NotStart,DUKHCONP03Z5ARGF3050,Granite - Stair case flooring & Skirting,8171,320,0,160,0,506.25,506.25,160,0,0,0,,,,2014-04-28 08:00,2014-05-20 17:00,,2014-03-12 08:00,2014-04-03 17:00,2014-03-12 08:00,2014-04-03 17:00,2014-03-12 08:00,2014-04-03 17:00,2014-04-28 08:00,2014-05-20 17:00,,PT_Normal,,,,,/DlMHkk0S+Wg/Qjt5/E6sA,,,,N,0,0,,,2013-02-16 15:53,2013-02-16 15:56,admin,admin
501806,6359,124759,13662,0,N,N,N,CP_Drtn,TT_Task,DT_FixedDUR2,TK_NotStart,DUKHCONP03Z5ARGF3045,Fixing of Suspension systems,8178,336,0,160,0,1434.75,1434.75,160,0,0,0,,,,2014-04-13 08:00,2014-05-05 17:00,,2014-02-23 08:00,2014-03-17 17:00,2014-02-23 08:00,2014-03-17 17:00,2014-02-23 08:00,2014-03-17 17:00,2014-04-13 08:00,2014-05-05 17:00,,PT_Normal,,,,,U7PpbnL8RkeDGz4yHkAhNQ,,,,N,0,0,,,2013-02-16 15:53,2013-02-16 15:56,admin,admin
501807,6359,124759,13662,0,N,N,N,CP_Drtn,TT_Task,DT_FixedDUR2,TK_NotStart,DUKHCONP03Z5ARGF3055,Aluminum tile false ceiling,8178,360,24,200,0,156.25,156.25,200,0,0,0,,,,2014-04-24 08:00,2014-05-22 17:00,,2014-03-03 08:00,2014-03-31 17:00,2014-03-03 08:00,2014-03-31 17:00,2014-03-03 08:00,2014-03-31 17:00,2014-04-24 08:00,2014-05-22 17:00,,PT_Normal,,,,,T9pm6lTkQpOBF+OAkRn/nw,,,,N,0,0,,,2013-02-16 15:53,2013-02-16 15:56,admin,admin
501808,6359,124759,13662,0,N,N,N,CP_Drtn,TT_Task,DT_FixedDUR2,TK_NotStart,DUKHCONP03Z5ARGF3060,Gypsum board false ceiling,8178,336,0,200,0,1298.71,1298.71,200,0,0,0,,,,2014-04-24 08:00,2014-05-22 17:00,,2014-03-06 08:00,2014-04-03 17:00,2014-03-06 08:00,2014-04-03 17:00,2014-03-06 08:00,2014-04-03 17:00,2014-04-24 08:00,2014-05-22 17:00,,PT_Normal,,,,,+R5QYav7QWq720xcXU0oGA,,,,N,0,0,,,2013-02-16 15:53,2013-02-16 15:56,admin,admin
501809,6359,124759,13662,0,N,N,N,CP_Drtn,TT_Task,DT_FixedDUR2,TK_NotStart,DUKHCONP03Z5ARGF3065,Wooden door,8178,320,0,120,0,412.5,412.5,120,0,0,0,,,,2014-05-12 08:00,2014-05-28 17:00,,2014-03-26 08:00,2014-04-12 17:00,2014-03-26 08:00,2014-04-12 17:00,2014-03-26 08:00,2014-04-12 17:00,2014-05-12 08:00,2014-05-28 17:00,,PT_Normal,,,,,QLKqkT5BQAOnp/jC4tY/4Q,,,,N,0,0,,,2013-02-16 15:53,2013-02-16 15:56,admin,admin
501810,6359,124759,13662,0,N,N,N,CP_Drtn,TT_Task,DT_FixedDUR2,TK_NotStart,DUKHCONP03Z5ARGF3070,Aluminum doors,8178,320,0,120,0,99,99,120,0,0,0,,,,2014-05-18 08:00,2014-06-03 17:00,,2014-04-01 08:00,2014-04-17 17:00,2014-04-01 08:00,2014-04-17 17:00,2014-04-01 08:00,2014-04-17 17:00,2014-05-18 08:00,2014-06-03 17:00,,PT_Normal,,,,,zclpRrmITrGqrD0LUN/5zw,,,,N,0,0,,,2013-02-16 15:53,2013-02-16 15:56,admin,admin
501811,6359,124759,13662,0,N,N,N,CP_Drtn,TT_Task,DT_FixedDUR2,TK_NotStart,DUKHCONP03Z5ARGF3080,Aluminum windows,8178,400,80,160,0,220,220,160,0,0,0,,,,2014-06-05 08:00,2014-06-28 17:00,,2014-04-08 08:00,2014-04-30 17:00,2014-04-08 08:00,2014-04-30 17:00,2014-04-08 08:00,2014-04-30 17:00,2014-06-05 08:00,2014-06-28 17:00,,PT_Normal,,,,,Y/pj1bGtQ0K5N7DHXPgd7g,,,,N,0,0,,,2013-02-16 15:53,2013-02-16 15:56,admin,admin
501812,6359,124759,13662,0,N,N,N,CP_Drtn,TT_Task,DT_FixedDUR2,TK_NotStart,DUKHCONP03Z5ARGF3075,Carpentry & Joinery Works,8178,320,0,160,0,792,792,160,0,0,0,,,,2014-05-24 08:00,2014-06-15 17:00,,2014-04-07 08:00,2014-04-29 17:00,2014-04-07 08:00,2014-04-29 17:00,2014-04-07 08:00,2014-04-29 17:00,2014-05-24 08:00,2014-06-15 17:00,,PT_Normal,,,,,az1AzxuHRG6kbbkJlDcx2Q,,,,N,0,0,,,2013-02-16 15:53,2013-02-16 15:56,admin,admin
501813,6359,124759,13662,0,N,N,N,CP_Drtn,TT_Task,DT_FixedDUR2,TK_NotStart,DUKHCONP03Z5ARGF3090,Installation of Granite Counter Top,8171,320,0,120,0,132,132,120,0,0,0,,,,2014-06-05 08:00,2014-06-22 17:00,,2014-04-20 08:00,2014-05-06 17:00,2014-04-20 08:00,2014-05-06 17:00,2014-04-20 08:00,2014-05-06 17:00,2014-06-05 08:00,2014-06-22 17:00,,PT_Normal,,,,,mfAxJDPOTfG2DCQPdicqTg,,,,N,0,0,,,2013-02-16 15:53,2013-02-16 15:56,admin,admin
501814,6359,124759,13662,0,N,N,N,CP_Drtn,TT_Task,DT_FixedDUR2,TK_NotStart,DUKHCONP03Z5ARGF3085,S.S.Balustrade,8178,360,40,160,0,47.25,47.25,160,0,0,0,,,,2014-06-07 08:00,2014-06-29 17:00,,2014-04-15 08:00,2014-05-07 17:00,2014-04-15 08:00,2014-05-07 17:00,2014-04-15 08:00,2014-05-07 17:00,2014-06-07 08:00,2014-06-29 17:00,,PT_Normal,,,,,b3PXbdNRQd+4Byjgt68FUQ,,,,N,0,0,,,2013-02-16 15:53,2013-02-16 15:56,admin,admin
501815,6359,124759,13662,0,N,N,N,CP_Drtn,TT_Task,DT_FixedDUR2,TK_NotStart,DUKHCONP03Z5ARGF3095,Final Painting,8178,320,320,200,0,4136.55,4136.55,200,0,0,0,,,,2014-06-15 08:00,2014-07-13 17:00,,2014-04-29 08:00,2014-05-27 17:00,2014-04-29 08:00,2014-05-27 17:00,2014-04-29 08:00,2014-05-27 17:00,2014-06-15 08:00,2014-07-13 17:00,,PT_Normal,,,,,aanvsrA4SB+MFmKwfMklrQ,,,,N,0,0,,,2013-02-16 15:53,2013-02-16 15:56,admin,admin
501816,6359,124760,13662,0,N,N,N,CP_Drtn,TT_Task,DT_FixedDUR2,TK_NotStart,DUKHCONP03Z5ARRF3600,Block work,8168,536,0,160,0,487.5,487.5,160,0,0,0,,,,2014-05-04 08:00,2014-05-26 17:00,,2014-02-15 08:00,2014-03-09 17:00,2014-02-15 08:00,2014-03-09 17:00,2014-02-15 08:00,2014-03-09 17:00,2014-05-04 08:00,2014-05-26 17:00,,PT_Normal,,,,,8UA0pTg5QjewHC2JtodrtQ,,,,N,0,0,,,2013-02-16 15:53,2013-02-16 15:56,admin,admin
501817,6359,124760,13662,0,N,N,N,CP_Drtn,TT_Task,DT_FixedDUR2,TK_NotStart,DUKHCONP03Z5ARRF3605,Plastering work,8169,536,0,160,0,1950,1950,160,0,0,0,,,,2014-05-12 08:00,2014-06-03 17:00,,2014-02-23 08:00,2014-03-17 17:00,2014-02-23 08:00,2014-03-17 17:00,2014-02-23 08:00,2014-03-17 17:00,2014-05-12 08:00,2014-06-03 17:00,,PT_Normal,,,,,aGvPIIm4SMyDag9E7QdLTg,,,,N,0,0,,,2013-02-16 15:53,2013-02-16 15:56,admin,admin
501818,6359,124760,13662,0,N,N,N,CP_Drtn,TT_Task,DT_FixedDUR2,TK_NotStart,DUKHCONP03Z5ARRF3610,Flooring screed,8164,576,0,120,0,115.5,115.5,120,0,0,0,,,,2014-06-01 08:00,2014-06-17 17:00,,2014-03-09 08:00,2014-03-25 17:00,2014-03-09 08:00,2014-03-25 17:00,2014-03-09 08:00,2014-03-25 17:00,2014-06-01 08:00,2014-06-17 17:00,,PT_Normal,,,,,BKFpttaRS8Op13bvowQMMQ,,,,N,0,0,,,2013-02-16 15:53,2013-02-16 15:56,admin,admin
501819,6359,124760,13662,0,N,N,N,CP_Drtn,TT_Task,DT_FixedDUR2,TK_NotStart,DUKHCONP03Z5ARRF3695,Painting,8178,576,0,160,0,504,504,160,0,0,0,,,,2014-06-09 08:00,2014-07-01 17:00,,2014-03-17 08:00,2014-04-08 17:00,2014-03-17 08:00,2014-04-08 17:00,2014-03-17 08:00,2014-04-08 17:00,2014-06-09 08:00,2014-07-01 17:00,,PT_Normal,,,,,eGWk2u2iQFmF2zILgZHRGA,,,,N,0,0,,,2013-02-16 15:53,2013-02-16 15:56,admin,admin
501820,6359,124760,13662,0,N,N,N,CP_Drtn,TT_Task,DT_FixedDUR2,TK_NotStart,DUKHCONP03Z5ARRF3620,Epoxy Painting,8178,576,576,120,0,24.75,24.75,120,0,0,0,,,,2014-06-26 08:00,2014-07-13 17:00,,2014-04-03 08:00,2014-04-20 17:00,2014-04-03 08:00,2014-04-20 17:00,2014-04-03 08:00,2014-04-20 17:00,2014-06-26 08:00,2014-07-13 17:00,,PT_Normal,,,,,wf+dMNXRR0avjI4HM7UWgg,,,,N,0,0,,,2013-02-16 15:53,2013-02-16 15:56,admin,admin
501821,6359,124761,13662,0,N,N,N,CP_Drtn,TT_Task,DT_FixedDUR2,TK_NotStart,DUKHCONP03Z5ARFF3300,Block work,8168,0,0,200,0,5553.5,5553.5,200,0,0,0,,,,2014-01-26 08:00,2014-02-24 17:00,,2014-01-26 08:00,2014-02-24 17:00,2014-01-26 08:00,2014-02-24 17:00,2014-01-26 08:00,2014-02-24 17:00,2014-01-26 08:00,2014-02-24 17:00,,PT_Normal,,,,,84rWN0yQS6KA8LeHj4y1FQ,,,,N,0,0,,,2013-02-16 15:53,2013-02-16 15:56,admin,admin
501822,6359,124761,13662,0,N,N,N,CP_Drtn,TT_Task,DT_FixedDUR2,TK_NotStart,DUKHCONP03Z5ARFF3305,Plastering work,8169,0,0,200,0,5516,5516,200,0,0,0,,,,2014-02-20 08:00,2014-03-20 17:00,,2014-02-20 08:00,2014-03-20 17:00,2014-02-20 08:00,2014-03-20 17:00,2014-02-20 08:00,2014-03-20 17:00,2014-02-20 08:00,2014-03-20 17:00,,PT_Normal,,,,,jxHptPMRSLaqGebN+4Yg7w,,,,N,0,0,,,2013-02-16 15:53,2013-02-16 15:56,admin,admin
501823,6359,124761,13662,0,N,N,N,CP_Drtn,TT_Task,DT_FixedDUR2,TK_NotStart,DUKHCONP03Z5ARFF3310,Flooring screed,8164,120,120,168,0,1031.25,1031.25,168,0,0,0,,,,2014-03-18 08:00,2014-04-10 17:00,,2014-03-01 08:00,2014-03-24 17:00,2014-03-01 08:00,2014-03-24 17:00,2014-03-01 08:00,2014-03-24 17:00,2014-03-18 08:00,2014-04-10 17:00,,PT_Normal,,,,,2oRWQO4/SJmdgIWqxRLFLg,,,,N,0,0,,,2013-02-16 15:53,2013-02-16 15:56,admin,admin
501824,6359,124761,13662,0,N,N,N,CP_Drtn,TT_Task,DT_FixedDUR2,TK_NotStart,DUKHCONP03Z5ARFF3315,Wet area waterproofing,8178,0,0,120,0,582,582,120,0,0,0,,,,2014-03-13 08:00,2014-03-30 17:00,,2014-03-13 08:00,2014-03-30 17:00,2014-03-13 08:00,2014-03-30 17:00,2014-03-13 08:00,2014-03-30 17:00,2014-03-13 08:00,2014-03-30 17:00,,PT_Normal,,,,,kr/quIT2Sg+cGDEpoWdhnA,,,,N,0,0,,,2013-02-16 15:53,2013-02-16 15:56,admin,admin
501825,6359,124761,13662,0,N,N,N,CP_Drtn,TT_Task,DT_FixedDUR2,TK_NotStart,DUKHCONP03Z5ARFF3330,Paint First coat,8178,144,144,200,0,3644.75,3644.75,200,0,0,0,,,,2014-03-30 08:00,2014-04-27 17:00,,2014-03-09 08:00,2014-04-06 17:00,2014-03-09 08:00,2014-04-06 17:00,2014-03-09 08:00,2014-04-06 17:00,2014-03-30 08:00,2014-04-27 17:00,,PT_Normal,,,,,uivthLpyQ2SSZkjTmal+yA,,,,N,0,0,,,2013-02-16 15:53,2013-02-16 15:56,admin,admin
501826,6359,124761,13662,0,N,N,N,CP_Drtn,TT_Task,DT_FixedDUR2,TK_NotStart,DUKHCONP03Z5ARFF3320,Ceramic Wall Tiling,8170,0,0,200,0,2603.5,2603.5,200,0,0,0,,,,2014-03-23 08:00,2014-04-20 17:00,,2014-03-23 08:00,2014-04-20 17:00,2014-03-23 08:00,2014-04-20 17:00,2014-03-23 08:00,2014-04-20 17:00,2014-03-23 08:00,2014-04-20 17:00,,PT_Normal,,,,,ymirQLHGQSKD437Dz7iwWQ,,,,N,0,0,,,2013-02-16 15:53,2013-02-16 15:56,admin,admin
501827,6359,124761,13662,0,N,N,N,CP_Drtn,TT_Task,DT_FixedDUR2,TK_NotStart,DUKHCONP03Z5ARFF3325,Porcelain Tile flooring,8170,0,0,200,0,1787.5,1787.5,200,0,0,0,,,,2014-03-30 08:00,2014-04-27 17:00,,2014-03-30 08:00,2014-04-27 17:00,2014-03-30 08:00,2014-04-27 17:00,2014-03-30 08:00,2014-04-27 17:00,2014-03-30 08:00,2014-04-27 17:00,,PT_Normal,,,,,qmUkK2phRm+QWWwlTvYdkw,,,,N,0,0,,,2013-02-16 15:53,2013-02-16 15:56,admin,admin
501828,6359,124761,13662,0,N,N,N,CP_Drtn,TT_Task,DT_FixedDUR2,TK_NotStart,DUKHCONP03Z5ARFF3335,Slate Tile Flooring & Skirting,8178,96,96,120,0,1350,1350,120,0,0,0,,,,2014-04-30 08:00,2014-05-17 17:00,,2014-04-16 08:00,2014-05-03 17:00,2014-04-16 08:00,2014-05-03 17:00,2014-04-16 08:00,2014-05-03 17:00,2014-04-30 08:00,2014-05-17 17:00,,PT_Normal,,,,,TCW+mzS3TPaPl2QB2GwWhQ,,,,N,0,0,,,2013-02-16 15:53,2013-02-16 15:56,admin,admin
501829,6359,124761,13662,0,N,N,N,CP_Drtn,TT_Task,DT_FixedDUR2,TK_NotStart,DUKHCONP03Z5ARFF3350,Granite - Stair case flooring & Skirting,8178,32,32,160,0,150,150,160,0,0,0,,,,2014-04-24 08:00,2014-05-17 17:00,,2014-04-20 08:00,2014-05-12 17:00,2014-04-20 08:00,2014-05-12 17:00,2014-04-20 08:00,2014-05-12 17:00,2014-04-24 08:00,2014-05-17 17:00,,PT_Normal,,,,,XdYa0mQiTHuNVqVDaRvprw,,,,N,0,0,,,2013-02-16 15:53,2013-02-16 15:56,admin,admin
501830,6359,124761,13662,0,N,N,N,CP_Drtn,TT_Task,DT_FixedDUR2,TK_NotStart,DUKHCONP03Z5ARFF3345,Fixing of Suspension systems,8178,0,0,160,0,1434.75,1434.75,160,0,0,0,,,,2014-04-13 08:00,2014-05-05 17:00,,2014-04-13 08:00,2014-05-05 17:00,2014-04-13 08:00,2014-05-05 17:00,2014-04-13 08:00,2014-05-05 17:00,2014-04-13 08:00,2014-05-05 17:00,,PT_Normal,,,,,SSmhglQDQHGfw4o2FqLGjg,,,,N,0,0,,,2013-02-16 15:53,2013-02-16 15:56,admin,admin
501831,6359,124761,13662,0,N,N,N,CP_Drtn,TT_Task,DT_FixedDUR2,TK_NotStart,DUKHCONP03Z5ARFF3355,Aluminum tile false ceiling,8178,32,0,160,0,156.25,156.25,160,0,0,0,,,,2014-04-29 08:00,2014-05-21 17:00,,2014-04-24 08:00,2014-05-17 17:00,2014-04-24 08:00,2014-05-17 17:00,2014-04-24 08:00,2014-05-17 17:00,2014-04-29 08:00,2014-05-21 17:00,,PT_Normal,,,,,pTnzw6LMTnKeeW6pOyCLrg,,,,N,0,0,,,2013-02-16 15:53,2013-02-16 15:56,admin,admin
501832,6359,124761,13662,0,N,N,N,CP_Drtn,TT_Task,DT_FixedDUR2,TK_NotStart,DUKHCONP03Z5ARFF3360,Gypsum board false ceiling,8178,0,0,200,0,1298.71,1298.71,200,0,0,0,,,,2014-04-21 08:00,2014-05-19 17:00,,2014-04-21 08:00,2014-05-19 17:00,2014-04-21 08:00,2014-05-19 17:00,2014-04-21 08:00,2014-05-19 17:00,2014-04-21 08:00,2014-05-19 17:00,,PT_Normal,,,,,+wejy8oSTeCe97huw0U4Hw,,,,N,0,0,,,2013-02-16 15:53,2013-02-16 15:56,admin,admin
501833,6359,124761,13662,0,N,N,N,CP_Drtn,TT_Task,DT_FixedDUR2,TK_NotStart,DUKHCONP03Z5ARFF3365,Wooden door,8178,0,0,120,0,330,330,120,0,0,0,,,,2014-05-08 08:00,2014-05-25 17:00,,2014-05-08 08:00,2014-05-25 17:00,2014-05-08 08:00,2014-05-25 17:00,2014-05-08 08:00,2014-05-25 17:00,2014-05-08 08:00,2014-05-25 17:00,,PT_Normal,,,,,52aPL8ECROuK09ZQAfrDiQ,,,,N,0,0,,,2013-02-16 15:53,2013-02-16 15:56,admin,admin
501834,6359,124761,13662,0,N,N,N,CP_Drtn,TT_Task,DT_FixedDUR2,TK_NotStart,DUKHCONP03Z5ARFF3370,Aluminum Door,8178,0,0,160,0,99,99,160,0,0,0,,,,2014-05-14 08:00,2014-06-05 17:00,,2014-05-14 08:00,2014-06-05 17:00,2014-05-14 08:00,2014-06-05 17:00,2014-05-14 08:00,2014-06-05 17:00,2014-05-14 08:00,2014-06-05 17:00,,PT_Normal,,,,,Nb3OuTuZT4q3/GTxsa5xYA,,,,N,0,0,,,2013-02-16 15:53,2013-02-16 15:56,admin,admin
501835,6359,124761,13662,0,N,N,N,CP_Drtn,TT_Task,DT_FixedDUR2,TK_NotStart,DUKHCONP03Z5ARFF3380,Aluminum windows,8178,88,88,160,0,264,264,160,0,0,0,,,,2014-06-03 08:00,2014-06-25 17:00,,2014-05-21 08:00,2014-06-12 17:00,2014-05-21 08:00,2014-06-12 17:00,2014-05-21 08:00,2014-06-12 17:00,2014-06-03 08:00,2014-06-25 17:00,,PT_Normal,,,,,xYISNimcS0iDlRpywx9PUQ,,,,N,0,0,,,2013-02-16 15:53,2013-02-16 15:56,admin,admin
501836,6359,124761,13662,0,N,N,N,CP_Drtn,TT_Task,DT_FixedDUR2,TK_NotStart,DUKHCONP03Z5ARFF3375,Carpentry & Joinery Works,8178,0,0,200,0,300,300,200,0,0,0,,,,2014-05-22 08:00,2014-06-19 17:00,,2014-05-22 08:00,2014-06-19 17:00,2014-05-22 08:00,2014-06-19 17:00,2014-05-22 08:00,2014-06-19 17:00,2014-05-22 08:00,2014-06-19 17:00,,PT_Normal,,,,,L1t6nB2uSHeQCGl28GeoxA,,,,N,0,0,,,2013-02-16 15:53,2013-02-16 15:56,admin,admin
501837,6359,124761,13662,0,N,N,N,CP_Drtn,TT_Task,DT_FixedDUR2,TK_NotStart,DUKHCONP03Z5ARFF3390,Installation of Granite Counter Top,8171,16,16,160,0,132,132,160,0,0,0,,,,2014-06-09 08:00,2014-07-01 17:00,,2014-06-07 08:00,2014-06-29 17:00,2014-06-07 08:00,2014-06-29 17:00,2014-06-07 08:00,2014-06-29 17:00,2014-06-09 08:00,2014-07-01 17:00,,PT_Normal,,,,,wj53KBPhQVyCF5dXQD95pw,,,,N,0,0,,,2013-02-16 15:53,2013-02-16 15:56,admin,admin
501838,6359,124761,13662,0,N,N,N,CP_Drtn,TT_Task,DT_FixedDUR2,TK_NotStart,DUKHCONP03Z5ARFF3385,Handrail &  Balustrade,8178,0,0,160,0,275,275,160,0,0,0,,,,2014-06-03 08:00,2014-06-25 17:00,,2014-06-03 08:00,2014-06-25 17:00,2014-06-03 08:00,2014-06-25 17:00,2014-06-03 08:00,2014-06-25 17:00,2014-06-03 08:00,2014-06-25 17:00,,PT_Normal,,,,,MmT9nFW8SHqITnN5S0u1Xw,,,,N,0,0,,,2013-02-16 15:53,2013-02-16 15:56,admin,admin
501839,6359,124761,13662,0,N,N,N,CP_Drtn,TT_Task,DT_FixedDUR2,TK_NotStart,DUKHCONP03Z5ARFF3395,Final Painting,8178,0,0,200,0,3644.75,3644.75,200,0,0,0,,,,2014-06-15 08:00,2014-07-13 17:00,,2014-06-15 08:00,2014-07-13 17:00,2014-06-15 08:00,2014-07-13 17:00,2014-06-15 08:00,2014-07-13 17:00,2014-06-15 08:00,2014-07-13 17:00,,PT_Normal,,,,,27F7913gT1WlWRx82t/CTQ,,,,N,0,0,,,2013-02-16 15:53,2013-02-16 15:56,admin,admin
501840,6359,124765,13662,0,N,N,N,CP_Drtn,TT_Task,DT_FixedDUR2,TK_NotStart,DUKHCONP03Z1STGF2000,Column-Rebar & Formwork,8165,0,0,200,0,1688.75,1688.75,200,0,0,0,,,,2013-06-03 08:00,2013-07-01 17:00,,2013-06-03 08:00,2013-07-01 17:00,2013-06-03 08:00,2013-07-01 17:00,2013-06-03 08:00,2013-07-01 17:00,2013-06-03 08:00,2013-07-01 17:00,,PT_Normal,,,,,V5GxBs6LRxWUBu5qZ4l+ZQ,,,,N,0,0,,,2013-02-16 15:53,2013-02-16 15:56,admin,admin
501841,6359,124765,13662,0,N,N,N,CP_Drtn,TT_Task,DT_FixedDUR2,TK_NotStart,DUKHCONP03Z1STGF2005,Column-Concrete,8167,0,0,192,0,101.5,101.5,192,0,0,0,,,,2013-06-12 08:00,2013-07-09 17:00,,2013-06-12 08:00,2013-07-09 17:00,2013-06-12 08:00,2013-07-09 17:00,2013-06-12 08:00,2013-07-09 17:00,2013-06-12 08:00,2013-07-09 17:00,,PT_Normal,,,,,7sRsqkFpRX2JMT+S0RpYTQ,,,,N,0,0,,,2013-02-16 15:53,2013-02-16 15:56,admin,admin
501842,6359,124765,13662,0,N,N,N,CP_Drtn,TT_Task,DT_FixedDUR2,TK_NotStart,DUKHCONP03Z1STGF2010,"Beam, Stairs ,Slab-Rebar & Formwork",8165,0,0,200,0,10592.75,10592.75,200,0,0,0,,,,2013-06-27 08:00,2013-07-25 17:00,,2013-06-27 08:00,2013-07-25 17:00,2013-06-27 08:00,2013-07-25 17:00,2013-06-27 08:00,2013-07-25 17:00,2013-06-27 08:00,2013-07-25 17:00,,PT_Normal,,,,,SFTsOo6rRz+8ZwkAxyuVhw,,,,N,0,0,,,2013-02-16 15:53,2013-02-16 15:56,admin,admin
501843,6359,124765,13662,0,N,N,N,CP_Drtn,TT_Task,DT_FixedDUR2,TK_NotStart,DUKHCONP03Z1STGF2015,"Beam, Stairs ,Slab-Concrete",8167,0,0,120,0,868,868,120,0,0,0,,,,2013-07-13 08:00,2013-07-29 17:00,,2013-07-13 08:00,2013-07-29 17:00,2013-07-13 08:00,2013-07-29 17:00,2013-07-13 08:00,2013-07-29 17:00,2013-07-13 08:00,2013-07-29 17:00,,PT_Normal,,,,,NcMzu9A9Td65GIESkYfCLw,,,,N,0,0,,,2013-02-16 15:53,2013-02-16 15:56,admin,admin
501844,6359,124766,13662,0,N,N,N,CP_Drtn,TT_Task,DT_FixedDUR2,TK_NotStart,DUKHCONP03Z1STRF2040,Column-Rebar & Formwork,8165,24,0,144,0,549.5,549.5,144,0,0,0,,,,2013-09-03 08:00,2013-09-23 17:00,,2013-08-31 08:00,2013-09-19 17:00,2013-08-31 08:00,2013-09-19 17:00,2013-08-31 08:00,2013-09-19 17:00,2013-09-03 08:00,2013-09-23 17:00,,PT_Normal,,,,,l4TcK53WQP6ugZ44a0c6tw,,,,N,0,0,,,2013-02-16 15:53,2013-02-16 15:56,admin,admin
501845,6359,124766,13662,0,N,N,N,CP_Drtn,TT_Task,DT_FixedDUR2,TK_NotStart,DUKHCONP03Z1STRF2045,Column-Concrete,8167,24,0,136,0,21,21,136,0,0,0,,,,2013-09-07 08:00,2013-09-25 17:00,,2013-09-03 08:00,2013-09-22 17:00,2013-09-03 08:00,2013-09-22 17:00,2013-09-03 08:00,2013-09-22 17:00,2013-09-07 08:00,2013-09-25 17:00,,PT_Normal,,,,,x5KMKo42TdS3EeCjXnOXHw,,,,N,0,0,,,2013-02-16 15:53,2013-02-16 15:56,admin,admin
501846,6359,124766,13662,0,N,N,N,CP_Drtn,TT_Task,DT_FixedDUR2,TK_NotStart,DUKHCONP03Z1STRF2050,Slab-Rebar & Formwork,8165,24,0,160,0,1576.75,1576.75,160,0,0,0,,,,2013-09-09 08:00,2013-10-01 17:00,,2013-09-05 08:00,2013-09-28 17:00,2013-09-05 08:00,2013-09-28 17:00,2013-09-05 08:00,2013-09-28 17:00,2013-09-09 08:00,2013-10-01 17:00,,PT_Normal,,,,,kmd6FvnFSuykO3drjFDbHg,,,,N,0,0,,,2013-02-16 15:53,2013-02-16 15:56,admin,admin
501847,6359,124766,13662,0,N,N,N,CP_Drtn,TT_Task,DT_FixedDUR2,TK_NotStart,DUKHCONP03Z1STRF2055,Slab-Concrete,8167,24,0,104,0,175,175,104,0,0,0,,,,2013-09-19 08:00,2013-10-03 17:00,,2013-09-16 08:00,2013-09-30 17:00,2013-09-16 08:00,2013-09-30 17:00,2013-09-16 08:00,2013-09-30 17:00,2013-09-19 08:00,2013-10-03 17:00,,PT_Normal,,,,,LYEKpQOnR2ao9h2/0WsdMQ,,,,N,0,0,,,2013-02-16 15:53,2013-02-16 15:56,admin,admin
501848,6359,124766,13662,0,N,N,N,CP_Drtn,TT_Task,DT_FixedDUR2,TK_NotStart,DUKHCONP03Z1STRF2060,Construction of Parapets,8168,144,0,200,0,1441,1441,200,0,0,0,,,,2013-10-09 08:00,2013-11-09 17:00,,2013-09-18 08:00,2013-10-16 17:00,2013-09-18 08:00,2013-10-16 17:00,2013-09-18 08:00,2013-10-16 17:00,2013-10-09 08:00,2013-11-09 17:00,,PT_Normal,,,,,O+Ia9HfvQWuP7zypDOeeWA,,,,N,0,0,,,2013-02-16 15:53,2013-02-16 15:56,admin,admin
501849,6359,124766,13662,0,N,N,N,CP_Drtn,TT_Task,DT_FixedDUR2,TK_NotStart,DUKHCONP03Z1STRF2065,Construction of up stands/Plinth,8165,144,0,200,0,283.5,283.5,200,0,0,0,,,,2013-10-15 08:00,2013-11-14 17:00,,2013-09-24 08:00,2013-10-24 17:00,2013-09-24 08:00,2013-10-24 17:00,2013-09-24 08:00,2013-10-24 17:00,2013-10-15 08:00,2013-11-14 17:00,,PT_Normal,,,,,D+S/6U1xTvKKxCflzHahPg,,,,N,0,0,,,2013-02-16 15:53,2013-02-16 15:56,admin,admin
501850,6359,124767,13662,0,N,N,N,CP_Drtn,TT_Task,DT_FixedDUR2,TK_NotStart,DUKHCONP03Z1STFF2020,Column-Rebar & Formwork,8165,0,0,200,0,1615.25,1615.25,200,0,0,0,,,,2013-07-15 08:00,2013-08-15 17:00,,2013-07-15 08:00,2013-08-15 17:00,2013-07-15 08:00,2013-08-15 17:00,2013-07-15 08:00,2013-08-15 17:00,2013-07-15 08:00,2013-08-15 17:00,,PT_Normal,,,,,2ffKSGXcQJ6seiwpyzerrg,,,,N,0,0,,,2013-02-16 15:53,2013-02-16 15:56,admin,admin
501851,6359,124767,13662,0,N,N,N,CP_Drtn,TT_Task,DT_FixedDUR2,TK_NotStart,DUKHCONP03Z1STFF2025,Column-Concrete,8167,0,0,192,0,87.5,87.5,192,0,0,0,,,,2013-07-25 08:00,2013-08-25 17:00,,2013-07-25 08:00,2013-08-25 17:00,2013-07-25 08:00,2013-08-25 17:00,2013-07-25 08:00,2013-08-25 17:00,2013-07-25 08:00,2013-08-25 17:00,,PT_Normal,,,,,PQWAIFASQzSKdmJbdj5dHA,,,,N,0,0,,,2013-02-16 15:53,2013-02-16 15:56,admin,admin
501852,6359,124767,13662,0,N,N,N,CP_Drtn,TT_Task,DT_FixedDUR2,TK_NotStart,DUKHCONP03Z1STFF2030,"Beam, Stairs ,Slab-Rebar & Formwork",8165,0,0,200,0,10081.75,10081.75,200,0,0,0,,,,2013-08-13 08:00,2013-09-10 17:00,,2013-08-13 08:00,2013-09-10 17:00,2013-08-13 08:00,2013-09-10 17:00,2013-08-13 08:00,2013-09-10 17:00,2013-08-13 08:00,2013-09-10 17:00,,PT_Normal,,,,,RWRtoz1zRnKoAzaNG4pxiw,,,,N,0,0,,,2013-02-16 15:53,2013-02-16 15:56,admin,admin
501853,6359,124767,13662,0,N,N,N,CP_Drtn,TT_Task,DT_FixedDUR2,TK_NotStart,DUKHCONP03Z1STFF2035,"Beam, Stairs ,Slab-Concrete",8167,0,0,120,0,731.5,731.5,120,0,0,0,,,,2013-08-28 08:00,2013-09-14 17:00,,2013-08-28 08:00,2013-09-14 17:00,2013-08-28 08:00,2013-09-14 17:00,2013-08-28 08:00,2013-09-14 17:00,2013-08-28 08:00,2013-09-14 17:00,,PT_Normal,,,,,YMBYhaBaSMiBJxJ/OqbUQA,,,,N,0,0,,,2013-02-16 15:53,2013-02-16 15:56,admin,admin
501854,6359,124769,13662,0,N,N,N,CP_Drtn,TT_Task,DT_FixedDUR2,TK_NotStart,DUKHCONP03Z1STUG1000,Footing Excavation,8177,0,0,200,0,1556,1556,200,732,0,732,,,,2013-01-29 08:00,2013-02-27 17:00,,2013-01-29 08:00,2013-02-27 17:00,2013-01-29 08:00,2013-02-27 17:00,2013-01-29 08:00,2013-02-27 17:00,2013-01-29 08:00,2013-02-27 17:00,,PT_Normal,,,,,3rZukdjaTz2EyzesuO5tqw,,,,N,0,0,,,2013-02-16 15:53,2013-02-16 15:56,admin,admin
501855,6359,124769,13662,0,N,N,N,CP_Drtn,TT_Task,DT_FixedDUR2,TK_NotStart,DUKHCONP03Z1STUG1005,Footing Antitermite,8178,0,0,184,0,634.25,634.25,184,0,0,0,,,,2013-02-09 08:00,2013-03-07 17:00,,2013-02-09 08:00,2013-03-07 17:00,2013-02-09 08:00,2013-03-07 17:00,2013-02-09 08:00,2013-03-07 17:00,2013-02-09 08:00,2013-03-07 17:00,,PT_Normal,,,,,P4GbFtCSQ9WyHufgwDzAmA,,,,N,0,0,,,2013-02-16 15:53,2013-02-16 15:56,admin,admin
501856,6359,124769,13662,0,N,N,N,CP_Drtn,TT_Task,DT_FixedDUR2,TK_NotStart,DUKHCONP03Z1STUG1010,Footing Blinding,8163,0,0,184,0,588,588,184,0,0,0,,,,2013-02-13 08:00,2013-03-11 17:00,,2013-02-13 08:00,2013-03-11 17:00,2013-02-13 08:00,2013-03-11 17:00,2013-02-13 08:00,2013-03-11 17:00,2013-02-13 08:00,2013-03-11 17:00,,PT_Normal,,,,,qFurMJhdSOqjo4GC6j+57A,,,,N,0,0,,,2013-02-16 15:53,2013-02-16 15:56,admin,admin
501857,6359,124769,13662,0,N,N,N,CP_Drtn,TT_Task,DT_FixedDUR2,TK_NotStart,DUKHCONP03Z1STUG1015,Footing Waterproofing & Screed,8178,0,0,200,0,906.5,906.5,200,0,0,0,,,,2013-02-19 08:00,2013-03-19 17:00,,2013-02-19 08:00,2013-03-19 17:00,2013-02-19 08:00,2013-03-19 17:00,2013-02-19 08:00,2013-03-19 17:00,2013-02-19 08:00,2013-03-19 17:00,,PT_Normal,,,,,Paw+SCRbSomBs01GSD4sEg,,,,N,0,0,,,2013-02-16 15:53,2013-02-16 15:56,admin,admin
501858,6359,124769,13662,0,N,N,N,CP_Drtn,TT_Task,DT_FixedDUR2,TK_NotStart,DUKHCONP03Z1STUG1020,Construction of foundations,8165,0,0,160,0,4817.75,4817.75,160,0,0,0,,,,2013-03-06 08:00,2013-03-28 17:00,,2013-03-06 08:00,2013-03-28 17:00,2013-03-06 08:00,2013-03-28 17:00,2013-03-06 08:00,2013-03-28 17:00,2013-03-06 08:00,2013-03-28 17:00,,PT_Normal,,,,,XLY69J+hTBOBIqwrtmFI6Q,,,,N,0,0,,,2013-02-16 15:53,2013-02-16 15:56,admin,admin
501859,6359,124769,13662,0,N,N,N,CP_Drtn,TT_Task,DT_FixedDUR2,TK_NotStart,DUKHCONP03Z1STUG1025,Construction of neck of columns,8165,0,0,200,0,1400,1400,200,0,0,0,,,,2013-03-16 08:00,2013-04-13 17:00,,2013-03-16 08:00,2013-04-13 17:00,2013-03-16 08:00,2013-04-13 17:00,2013-03-16 08:00,2013-04-13 17:00,2013-03-16 08:00,2013-04-13 17:00,,PT_Normal,,,,,FtYD5p0RQJqMDhOJLEwgWQ,,,,N,0,0,,,2013-02-16 15:53,2013-02-16 15:56,admin,admin
501860,6359,124769,13662,0,N,N,N,CP_Drtn,TT_Task,DT_FixedDUR2,TK_NotStart,DUKHCONP03Z1STUG1030,Waterproofing Footing & Neck Column,8178,0,0,200,0,213.5,213.5,200,0,0,0,,,,2013-03-25 08:00,2013-04-22 17:00,,2013-03-25 08:00,2013-04-22 17:00,2013-03-25 08:00,2013-04-22 17:00,2013-03-25 08:00,2013-04-22 17:00,2013-03-25 08:00,2013-04-22 17:00,,PT_Normal,,,,,y8s46tqoQR6R+JCFPVZZvA,,,,N,0,0,,,2013-02-16 15:53,2013-02-16 15:56,admin,admin
501861,6359,124769,13662,0,N,N,N,CP_Drtn,TT_Task,DT_FixedDUR2,TK_NotStart,DUKHCONP03Z1STUG1035,Backfilling Upto Grade Beam Bottom,8177,0,0,200,0,2560,2560,200,2200,0,2200,,,,2013-04-04 08:00,2013-05-02 17:00,,2013-04-04 08:00,2013-05-02 17:00,2013-04-04 08:00,2013-05-02 17:00,2013-04-04 08:00,2013-05-02 17:00,2013-04-04 08:00,2013-05-02 17:00,,PT_Normal,,,,,4bStLizbQdKWw9SaGxxWqQ,,,,N,0,0,,,2013-02-16 15:53,2013-02-16 15:56,admin,admin
501862,6359,124769,13662,0,N,N,N,CP_Drtn,TT_Task,DT_FixedDUR2,TK_NotStart,DUKHCONP03Z1STUG1040,Construction of Grade Beams,8163,0,0,200,0,4745,4745,200,0,0,0,,,,2013-04-21 08:00,2013-05-19 17:00,,2013-04-21 08:00,2013-05-19 17:00,2013-04-21 08:00,2013-05-19 17:00,2013-04-21 08:00,2013-05-19 17:00,2013-04-21 08:00,2013-05-19 17:00,,PT_Normal,,,,,oMu4eyMXTsWZASA1PYj1+w,,,,N,0,0,,,2013-02-16 15:53,2013-02-16 15:56,admin,admin
501863,6359,124769,13662,0,N,N,N,CP_Drtn,TT_Task,DT_FixedDUR2,TK_NotStart,DUKHCONP03Z1STUG1045,Construction of slab on grade,8163,0,0,200,0,3327.5,3327.5,200,0,0,0,,,,2013-05-18 08:00,2013-06-15 17:00,,2013-05-18 08:00,2013-06-15 17:00,2013-05-18 08:00,2013-06-15 17:00,2013-05-18 08:00,2013-06-15 17:00,2013-05-18 08:00,2013-06-15 17:00,,PT_Normal,,,,,YPnD034VTZ+khSfFkfWhaQ,,,,N,0,0,,,2013-02-16 15:53,2013-02-16 15:56,admin,admin
501864,6359,124771,13662,0,N,N,N,CP_Drtn,TT_Task,DT_FixedDUR2,TK_NotStart,DUKHCONP03Z1MSEX5020,Construction Entrance Ramp,8164,152,0,200,0,198,198,200,0,0,0,,,,2013-12-30 08:00,2014-01-27 17:00,,2013-12-07 08:00,2014-01-05 17:00,2013-12-07 08:00,2014-01-05 17:00,2013-12-07 08:00,2014-01-05 17:00,2013-12-30 08:00,2014-01-27 17:00,,PT_Normal,,,,,nLN+jUuZQiOfjdHY2RmVIQ,,,,N,0,0,,,2013-02-16 15:53,2013-02-16 15:56,admin,admin
501865,6359,124771,13662,0,N,N,N,CP_Drtn,TT_Task,DT_FixedDUR2,TK_NotStart,DUKHCONP03Z1MSEX5025,SS.Handrails and Balustrades,8178,152,0,160,0,99,99,160,0,0,0,,,,2014-01-19 08:00,2014-02-10 17:00,,2013-12-28 08:00,2014-01-19 17:00,2013-12-28 08:00,2014-01-19 17:00,2013-12-28 08:00,2014-01-19 17:00,2014-01-19 08:00,2014-02-10 17:00,,PT_Normal,,,,,+w5eZAsyTSa5t8nu0um6tA,,,,N,0,0,,,2013-02-16 15:53,2013-02-16 15:56,admin,admin
501866,6359,124771,13662,0,N,N,N,CP_Drtn,TT_Task,DT_FixedDUR2,TK_NotStart,DUKHCONP03Z1MSEX5015,Construction of grease Trap,8178,312,160,160,0,38.5,38.5,160,0,0,0,,,,2014-02-12 08:00,2014-03-06 17:00,,2013-12-28 08:00,2014-01-19 17:00,2013-12-28 08:00,2014-01-19 17:00,2013-12-28 08:00,2014-01-19 17:00,2014-02-12 08:00,2014-03-06 17:00,,PT_Normal,,,,,ttB2E3W1R3CIBJ0zeRSP5w,,,,N,0,0,,,2013-02-16 15:53,2013-02-16 15:56,admin,admin
501867,6359,124771,13662,0,N,N,N,CP_Drtn,TT_Task,DT_FixedDUR2,TK_NotStart,DUKHCONP03Z1MSEX5000,Construction of Manholes,8178,24,0,200,0,121,121,200,0,0,0,,,,2013-11-26 08:00,2013-12-25 17:00,,2013-11-23 08:00,2013-12-22 17:00,2013-11-23 08:00,2013-12-22 17:00,2013-11-23 08:00,2013-12-22 17:00,2013-11-26 08:00,2013-12-25 17:00,,PT_Normal,,,,,6SHw5n0eSEy8lSxrjarOxg,,,,N,0,0,,,2013-02-16 15:53,2013-02-16 15:56,admin,admin
501868,6359,124771,13662,0,N,N,N,CP_Drtn,TT_Task,DT_FixedDUR2,TK_NotStart,DUKHCONP03Z1MSEX5005,"Construction  of Soak pit, Chambers",8177,144,0,200,0,275,275,200,0,0,0,,,,2013-12-29 08:00,2014-01-26 17:00,,2013-12-07 08:00,2014-01-05 17:00,2013-12-07 08:00,2014-01-05 17:00,2013-12-07 08:00,2014-01-05 17:00,2013-12-29 08:00,2014-01-26 17:00,,PT_Normal,,,,,tlA20hrJRPa5zeb/D7FZ0Q,,,,N,0,0,,,2013-02-16 15:53,2013-02-16 15:56,admin,admin
501869,6359,124771,13662,0,N,N,N,CP_Drtn,TT_Task,DT_FixedDUR2,TK_NotStart,DUKHCONP03Z1MSEX5010,Telephone Cable laying,8177,144,0,200,0,500,500,200,0,0,0,,,,2014-01-27 08:00,2014-02-25 17:00,,2014-01-06 08:00,2014-02-03 17:00,2014-01-06 08:00,2014-02-03 17:00,2014-01-06 08:00,2014-02-03 17:00,2014-01-27 08:00,2014-02-25 17:00,,PT_Normal,,,,,uIXV6dQ7SfKTVuuUc7UfZg,,,,N,0,0,,,2013-02-16 15:53,2013-02-16 15:56,admin,admin
501870,6359,124772,13662,0,N,N,N,CP_Drtn,TT_Task,DT_FixedDUR2,TK_NotStart,DUKHCONP03Z1WTEX5030,Excavation,8177,504,0,160,0,113,113,160,80,0,80,,,,2013-12-15 08:00,2014-01-07 17:00,,2013-09-30 08:00,2013-10-24 17:00,2013-09-30 08:00,2013-10-24 17:00,2013-09-30 08:00,2013-10-24 17:00,2013-12-15 08:00,2014-01-07 17:00,,PT_Normal,,,,,JTUnAOCjT1CkStLeskZXYA,,,,N,0,0,,,2013-02-16 15:53,2013-02-16 15:56,admin,admin
501871,6359,124772,13662,0,N,N,N,CP_Drtn,TT_Task,DT_FixedDUR2,TK_NotStart,DUKHCONP03Z1WTEX5035,Construction of Raft & slab,8167,504,0,200,0,192.5,192.5,200,0,0,0,,,,2013-12-22 08:00,2014-01-19 17:00,,2013-10-06 08:00,2013-11-05 17:00,2013-10-06 08:00,2013-11-05 17:00,2013-10-06 08:00,2013-11-05 17:00,2013-12-22 08:00,2014-01-19 17:00,,PT_Normal,,,,,5d5KGhjET7Weo7tg426Q4Q,,,,N,0,0,,,2013-02-16 15:53,2013-02-16 15:56,admin,admin
501872,6359,124772,13662,0,N,N,N,CP_Drtn,TT_Task,DT_FixedDUR2,TK_NotStart,DUKHCONP03Z1WTEX5040,Block works & Plastering,8168,504,0,200,0,2238.5,2238.5,200,0,0,0,,,,2013-12-31 08:00,2014-01-28 17:00,,2013-10-15 08:00,2013-11-14 17:00,2013-10-15 08:00,2013-11-14 17:00,2013-10-15 08:00,2013-11-14 17:00,2013-12-31 08:00,2014-01-28 17:00,,PT_Normal,,,,,BbkGdbeEQg2nXPYpqxwhOA,,,,N,0,0,,,2013-02-16 15:53,2013-02-16 15:56,admin,admin
501873,6359,124772,13662,0,N,N,N,CP_Drtn,TT_Task,DT_FixedDUR2,TK_NotStart,DUKHCONP03Z1WTEX5045,Flooring & Painting,8164,504,352,200,0,825,825,200,0,0,0,,,,2014-01-13 08:00,2014-02-10 17:00,,2013-10-30 08:00,2013-11-27 17:00,2013-10-30 08:00,2013-11-27 17:00,2013-10-30 08:00,2013-11-27 17:00,2014-01-13 08:00,2014-02-10 17:00,,PT_Normal,,,,,rDng1kPFTkqz+6Uc2AG2aQ,,,,N,0,0,,,2013-02-16 15:53,2013-02-16 15:56,admin,admin
501874,6359,124772,13662,0,N,N,N,CP_Drtn,TT_Task,DT_FixedDUR2,TK_NotStart,DUKHCONP03Z1WTEX5050,Installation of Steel Gate,8178,152,0,160,0,81,81,160,0,0,0,,,,2014-01-30 08:00,2014-02-23 17:00,,2014-01-08 08:00,2014-01-30 17:00,2014-01-08 08:00,2014-01-30 17:00,2014-01-08 08:00,2014-01-30 17:00,2014-01-30 08:00,2014-02-23 17:00,,PT_Normal,,,,,u1eiEjP2QoWjysb6nxpdPg,,,,N,0,0,,,2013-02-16 15:53,2013-02-16 15:56,admin,admin
501875,6359,124772,13662,0,N,N,N,CP_Drtn,TT_Task,DT_FixedDUR2,TK_NotStart,DUKHCONP03Z1WTEX5060,SS Shed cover installation,8178,152,0,200,0,546,546,200,0,0,0,,,,2014-02-05 08:00,2014-03-06 17:00,,2014-01-14 08:00,2014-02-12 17:00,2014-01-14 08:00,2014-02-12 17:00,2014-01-14 08:00,2014-02-12 17:00,2014-02-05 08:00,2014-03-06 17:00,,PT_Normal,,,,,UeN0pj0OQyOdOqX4PInKRg,,,,N,0,0,,,2013-02-16 15:53,2013-02-16 15:56,admin,admin
501876,6359,124772,13662,0,N,N,N,CP_Drtn,TT_Task,DT_FixedDUR2,TK_NotStart,DUKHCONP03Z1WTEX5065,"Install. of Water Tank,Chiller,Pump & Meter",8178,152,0,200,0,146.4,146.4,200,0,0,0,,,,2014-02-18 08:00,2014-03-18 17:00,,2014-01-26 08:00,2014-02-24 17:00,2014-01-26 08:00,2014-02-24 17:00,2014-01-26 08:00,2014-02-24 17:00,2014-02-18 08:00,2014-03-18 17:00,,PT_Normal,,,,,vVb0ZuMrQ1inZd8J7dF7qQ,,,,N,0,0,,,2013-02-16 15:53,2013-02-23 09:03,admin,admin
501877,6359,124772,13662,0,N,N,N,CP_Drtn,TT_Task,DT_FixedDUR2,TK_NotStart,DUKHCONP03Z1WTEX5080,Domestic Water Tank Electrical works,8178,504,0,200,0,175,175,200,0,0,0,,,,2014-01-08 08:00,2014-02-05 17:00,,2013-10-26 08:00,2013-11-23 17:00,2013-10-26 08:00,2013-11-23 17:00,2013-10-26 08:00,2013-11-23 17:00,2014-01-08 08:00,2014-02-05 17:00,,PT_Normal,,,,,OX7zOw6PR7islf0m7jVMZA,,,,N,0,0,,,2013-02-16 15:53,2013-02-16 15:56,admin,admin
501878,6359,124772,13662,0,N,N,N,CP_Drtn,TT_Task,DT_FixedDUR2,TK_NotStart,DUKHCONP03Z1WTEX5070,Domestic Water Tank Plumbings works,8178,504,0,200,0,200,200,200,0,0,0,,,,2014-01-08 08:00,2014-02-05 17:00,,2013-10-26 08:00,2013-11-23 17:00,2013-10-26 08:00,2013-11-23 17:00,2013-10-26 08:00,2013-11-23 17:00,2014-01-08 08:00,2014-02-05 17:00,,PT_Normal,,,,,MnwuDzNCTZ2q908+UorpNg,,,,N,0,0,,,2013-02-16 15:53,2013-02-16 15:56,admin,admin
501879,6359,124772,13662,0,N,N,N,CP_Drtn,TT_Task,DT_FixedDUR2,TK_NotStart,DUKHCONP03Z1WTEX5075,Domestic Water Tank AC works,8178,504,0,200,0,175,175,200,0,0,0,,,,2014-01-08 08:00,2014-02-05 17:00,,2013-10-26 08:00,2013-11-23 17:00,2013-10-26 08:00,2013-11-23 17:00,2013-10-26 08:00,2013-11-23 17:00,2014-01-08 08:00,2014-02-05 17:00,,PT_Normal,,,,,l3Ocyea9QXaRpH6EIhLvoQ,,,,N,0,0,,,2013-02-16 15:53,2013-02-16 15:56,admin,admin
501880,6359,124772,13662,0,N,N,N,CP_Drtn,TT_Task,DT_FixedDUR2,TK_NotStart,DUKHCONP03Z1WTEX5085,Domestic Water Tank Firefighting works,8178,504,0,200,0,116.5,116.5,200,0,0,0,,,,2014-01-08 08:00,2014-02-05 17:00,,2013-10-26 08:00,2013-11-23 17:00,2013-10-26 08:00,2013-11-23 17:00,2013-10-26 08:00,2013-11-23 17:00,2014-01-08 08:00,2014-02-05 17:00,,PT_Normal,,,,,BRwsX+5BSbGyOP23ufPTdg,,,,N,0,0,,,2013-02-16 15:53,2013-02-16 15:56,admin,admin
501881,6359,124775,13662,0,N,N,N,CP_Drtn,TT_Task,DT_FixedDUR2,TK_NotStart,DUKHCONP03Z1ACRF4630,Installation of Refrigerant Pipes,8178,584,0,200,0,156.2,156.2,200,0,0,0,,,,2014-02-12 08:00,2014-03-12 17:00,,2013-11-17 08:00,2013-12-15 17:00,2013-11-17 08:00,2013-12-15 17:00,2013-11-17 08:00,2013-12-15 17:00,2014-02-12 08:00,2014-03-12 17:00,,PT_Normal,,,,,kalhAY6nSVWE9uKNNovMYQ,,,,N,0,0,,,2013-02-16 15:53,2013-02-23 09:03,admin,admin
501882,6359,124775,13662,0,N,N,N,CP_Drtn,TT_Task,DT_FixedDUR2,TK_NotStart,DUKHCONP03Z1ACRF4635,Installation of Condensing Unit,8178,112,0,200,0,515.9,515.9,200,0,0,0,,,,2014-02-18 08:00,2014-03-18 17:00,,2014-02-01 08:00,2014-03-02 17:00,2014-02-01 08:00,2014-03-02 17:00,2014-02-01 08:00,2014-03-02 17:00,2014-02-18 08:00,2014-03-18 17:00,,PT_Normal,,,,,GAPZ++NBRKGGE37o4HGVdQ,,,,N,0,0,,,2013-02-16 15:53,2013-02-23 09:03,admin,admin
501883,6359,124776,13662,0,N,N,N,CP_Drtn,TT_Task,DT_FixedDUR2,TK_NotStart,DUKHCONP03Z1ACGF4600,Installation AC Pipes,8178,528,40,160,0,312.4,312.4,160,0,0,0,,,,2013-12-10 08:00,2014-01-02 17:00,,2013-09-22 08:00,2013-10-14 17:00,2013-09-22 08:00,2013-10-14 17:00,2013-09-22 08:00,2013-10-14 17:00,2013-12-10 08:00,2014-01-02 17:00,,PT_Normal,,,,,tjKsZufqToWwf922QIwnhQ,,,,N,0,0,,,2013-02-16 15:53,2013-02-23 09:03,admin,admin
501884,6359,124776,13662,0,N,N,N,CP_Drtn,TT_Task,DT_FixedDUR2,TK_NotStart,DUKHCONP03Z1ACGF4605,Fixing of Ventilation Equipments,8178,408,0,200,0,125.4,125.4,200,0,0,0,,,,2014-01-15 08:00,2014-02-13 17:00,,2013-11-16 08:00,2013-12-14 17:00,2013-11-16 08:00,2013-12-14 17:00,2013-11-16 08:00,2013-12-14 17:00,2014-01-15 08:00,2014-02-13 17:00,,PT_Normal,,,,,DsVKz5JbTzeqvXL30UDc1A,,,,N,0,0,,,2013-02-16 15:53,2013-02-16 15:56,admin,admin
501885,6359,124776,13662,0,N,N,N,CP_Drtn,TT_Task,DT_FixedDUR2,TK_NotStart,DUKHCONP03Z1ACGF4610,Fixing of Split AC,8178,408,40,160,0,331.1,331.1,160,0,0,0,,,,2014-02-05 08:00,2014-03-01 17:00,,2013-12-07 08:00,2013-12-30 17:00,2013-12-07 08:00,2013-12-30 17:00,2013-12-07 08:00,2013-12-30 17:00,2014-02-05 08:00,2014-03-01 17:00,,PT_Normal,,,,,rjV0EGNgRyGIo3qk9dAbtQ,,,,N,0,0,,,2013-02-16 15:53,2013-02-16 15:56,admin,admin
501886,6359,124777,13662,0,N,N,N,CP_Drtn,TT_Task,DT_FixedDUR2,TK_NotStart,DUKHCONP03Z1ACFF4615,Installation AC Pipes,8178,256,8,160,0,312.4,312.4,160,0,0,0,,,,2013-12-15 08:00,2014-01-07 17:00,,2013-11-07 08:00,2013-11-30 17:00,2013-11-07 08:00,2013-11-30 17:00,2013-11-07 08:00,2013-11-30 17:00,2013-12-15 08:00,2014-01-07 17:00,,PT_Normal,,,,,ALuoNyK/Q/2WiqjeGPhChw,,,,N,0,0,,,2013-02-16 15:53,2013-02-23 09:03,admin,admin
501887,6359,124777,13662,0,N,N,N,CP_Drtn,TT_Task,DT_FixedDUR2,TK_NotStart,DUKHCONP03Z1ACFF4620,Fixing of Ventilation Equipments,8178,72,0,200,0,125.4,125.4,200,0,0,0,,,,2014-01-15 08:00,2014-02-13 17:00,,2014-01-05 08:00,2014-02-02 17:00,2014-01-05 08:00,2014-02-02 17:00,2014-01-05 08:00,2014-02-02 17:00,2014-01-15 08:00,2014-02-13 17:00,,PT_Normal,,,,,AbzNsm3sS16QepKFtLIfng,,,,N,0,0,,,2013-02-16 15:53,2013-02-16 15:56,admin,admin
501888,6359,124777,13662,0,N,N,N,CP_Drtn,TT_Task,DT_FixedDUR2,TK_NotStart,DUKHCONP03Z1ACFF4625,Fixing of Split AC,8178,72,0,160,0,331.1,331.1,160,0,0,0,,,,2014-02-05 08:00,2014-03-01 17:00,,2014-01-26 08:00,2014-02-18 17:00,2014-01-26 08:00,2014-02-18 17:00,2014-01-26 08:00,2014-02-18 17:00,2014-02-05 08:00,2014-03-01 17:00,,PT_Normal,,,,,XkvR9x/VTRiT8DRv1rKFng,,,,N,0,0,,,2013-02-16 15:53,2013-02-16 15:56,admin,admin
501889,6359,124779,13662,0,N,N,N,CP_Drtn,TT_Task,DT_FixedDUR2,TK_NotStart,DUKHCONP03Z1ELGF4000,Fixing of wall conduits & switch socket boxes,8178,352,16,200,0,1012.4,1012.4,200,0,0,0,,,,2013-10-13 08:00,2013-11-12 17:00,,2013-08-22 08:00,2013-09-19 17:00,2013-08-22 08:00,2013-09-19 17:00,2013-08-22 08:00,2013-09-19 17:00,2013-10-13 08:00,2013-11-12 17:00,,PT_Normal,,,,,frApJpygRrar/4kFV6iQdw,,,,N,0,0,,,2013-02-16 15:53,2013-02-16 15:56,admin,admin
501890,6359,124779,13662,0,N,N,N,CP_Drtn,TT_Task,DT_FixedDUR2,TK_NotStart,DUKHCONP03Z1ELGF4005,Cable tray & trunking installation,8178,480,0,160,0,1687.6,1687.6,160,0,0,0,,,,2013-11-17 08:00,2013-12-09 17:00,,2013-09-05 08:00,2013-09-28 17:00,2013-09-05 08:00,2013-09-28 17:00,2013-09-05 08:00,2013-09-28 17:00,2013-11-17 08:00,2013-12-09 17:00,,PT_Normal,,,,,T3moe+/KScK8LMNRmF/raw,,,,N,0,0,,,2013-02-16 15:53,2013-02-16 15:56,admin,admin
501891,6359,124779,13662,0,N,N,N,CP_Drtn,TT_Task,DT_FixedDUR2,TK_NotStart,DUKHCONP03Z1ELGF4010,Installation of wiring & Main Cabling,8178,480,200,200,0,591.2,591.2,200,0,0,0,,,,2013-11-25 08:00,2013-12-24 17:00,,2013-09-14 08:00,2013-10-12 17:00,2013-09-14 08:00,2013-10-12 17:00,2013-09-14 08:00,2013-10-12 17:00,2013-11-25 08:00,2013-12-24 17:00,,PT_Normal,,,,,ibF0zCP6To6dLjs9uc+ROg,,,,N,0,0,,,2013-02-16 15:53,2013-02-16 15:56,admin,admin
501892,6359,124779,13662,0,N,N,N,CP_Drtn,TT_Task,DT_FixedDUR2,TK_NotStart,DUKHCONP03Z1ELGF4020,"Installation  of DBS,MCCB Accessories.",8178,288,0,160,0,204.8,204.8,160,0,0,0,,,,2014-01-04 08:00,2014-01-26 17:00,,2013-11-21 08:00,2013-12-14 17:00,2013-11-21 08:00,2013-12-14 17:00,2013-11-21 08:00,2013-12-14 17:00,2014-01-04 08:00,2014-01-26 17:00,,PT_Normal,,,,,u6LgKDjHQfWvs6plaEf/Fg,,,,N,0,0,,,2013-02-16 15:53,2013-02-16 15:56,admin,admin
501893,6359,124779,13662,0,N,N,N,CP_Drtn,TT_Task,DT_FixedDUR2,TK_NotStart,DUKHCONP03Z1ELGF4025,Installation of Lighting fixtures & Accessories,8178,296,0,200,0,2373.6,2373.6,200,0,0,0,,,,2014-01-16 08:00,2014-02-15 17:00,,2013-12-03 08:00,2014-01-01 17:00,2013-12-03 08:00,2014-01-01 17:00,2013-12-03 08:00,2014-01-01 17:00,2014-01-16 08:00,2014-02-15 17:00,,PT_Normal,,,,,CxEo7DZ7QmCVehZtTX/ZMw,,,,N,0,0,,,2013-02-16 15:53,2013-02-23 09:03,admin,admin
501894,6359,124779,13662,0,N,N,N,CP_Drtn,TT_Task,DT_FixedDUR2,TK_NotStart,DUKHCONP03Z1ELGF4015,Install. of CAMS & Fire Fighting Accessories,8178,392,0,200,0,1344,1344,200,0,0,0,,,,2014-01-13 08:00,2014-02-10 17:00,,2013-11-16 08:00,2013-12-14 17:00,2013-11-16 08:00,2013-12-14 17:00,2013-11-16 08:00,2013-12-14 17:00,2014-01-13 08:00,2014-02-10 17:00,,PT_Normal,,,,,H7EndVUCQACrQ5LRR3oAZw,,,,N,0,0,,,2013-02-16 15:53,2013-02-16 15:56,admin,admin
501895,6359,124779,13662,0,N,N,N,CP_Drtn,TT_Task,DT_FixedDUR2,TK_NotStart,DUKHCONP03Z1ELGF4030,Installation of Telephone System,8178,288,40,160,0,502.8,502.8,160,0,0,0,,,,2014-01-15 08:00,2014-02-06 17:00,,2013-12-03 08:00,2013-12-26 17:00,2013-12-03 08:00,2013-12-26 17:00,2013-12-03 08:00,2013-12-26 17:00,2014-01-15 08:00,2014-02-06 17:00,,PT_Normal,,,,,XF32NHd6QQO+8FlSCI86dw,,,,N,0,0,,,2013-02-16 15:53,2013-02-16 15:56,admin,admin
501896,6359,124780,13662,0,N,N,N,CP_Drtn,TT_Task,DT_FixedDUR2,TK_NotStart,DUKHCONP03Z1ELFF4035,Fixing of wall conduits & switch socket boxes,8178,80,16,200,0,1012.4,1012.4,200,0,0,0,,,,2013-10-16 08:00,2013-11-16 17:00,,2013-10-05 08:00,2013-11-04 17:00,2013-10-05 08:00,2013-11-04 17:00,2013-10-05 08:00,2013-11-04 17:00,2013-10-16 08:00,2013-11-16 17:00,,PT_Normal,,,,,dnO4pSA8S5GyU9JsFna1Vw,,,,N,0,0,,,2013-02-16 15:53,2013-02-16 15:56,admin,admin
501897,6359,124780,13662,0,N,N,N,CP_Drtn,TT_Task,DT_FixedDUR2,TK_NotStart,DUKHCONP03Z1ELFF4040,Cable tray & trunking installation,8178,240,0,160,0,1687.6,1687.6,160,0,0,0,,,,2013-11-25 08:00,2013-12-17 17:00,,2013-10-21 08:00,2013-11-12 17:00,2013-10-21 08:00,2013-11-12 17:00,2013-10-21 08:00,2013-11-12 17:00,2013-11-25 08:00,2013-12-17 17:00,,PT_Normal,,,,,pxwKasfpT0K1e80L4tczww,,,,N,0,0,,,2013-02-16 15:53,2013-02-16 15:56,admin,admin
501898,6359,124780,13662,0,N,N,N,CP_Drtn,TT_Task,DT_FixedDUR2,TK_NotStart,DUKHCONP03Z1ELFF4045,Installation of wiring & Main Cabling,8178,240,0,200,0,591.2,591.2,200,0,0,0,,,,2013-12-03 08:00,2014-01-01 17:00,,2013-10-29 08:00,2013-11-26 17:00,2013-10-29 08:00,2013-11-26 17:00,2013-10-29 08:00,2013-11-26 17:00,2013-12-03 08:00,2014-01-01 17:00,,PT_Normal,,,,,mXi/fk2iSHO0zxzPJXQ/0g,,,,N,0,0,,,2013-02-16 15:53,2013-02-16 15:56,admin,admin
501899,6359,124780,13662,0,N,N,N,CP_Drtn,TT_Task,DT_FixedDUR2,TK_NotStart,DUKHCONP03Z1ELFF4060,"Installation  of DBS,MCCB Accessories.",8178,8,0,160,0,171.2,171.2,160,0,0,0,,,,2014-01-09 08:00,2014-02-01 17:00,,2014-01-08 08:00,2014-01-30 17:00,2014-01-08 08:00,2014-01-30 17:00,2014-01-08 08:00,2014-01-30 17:00,2014-01-09 08:00,2014-02-01 17:00,,PT_Normal,,,,,rxQG79OOTGCTLUQ3RLxGAQ,,,,N,0,0,,,2013-02-16 15:53,2013-02-23 09:03,admin,admin
501900,6359,124780,13662,0,N,N,N,CP_Drtn,TT_Task,DT_FixedDUR2,TK_NotStart,DUKHCONP03Z1ELFF4065,Installation of Lighting fixtures & Accessories,8178,8,0,200,0,2322,2322,200,0,0,0,,,,2014-01-22 08:00,2014-02-20 17:00,,2014-01-21 08:00,2014-02-19 17:00,2014-01-21 08:00,2014-02-19 17:00,2014-01-21 08:00,2014-02-19 17:00,2014-01-22 08:00,2014-02-20 17:00,,PT_Normal,,,,,QKZ95QNkRzO3DxOhOSS+rw,,,,N,0,0,,,2013-02-16 15:53,2013-02-16 15:56,admin,admin
501901,6359,124780,13662,0,N,N,N,CP_Drtn,TT_Task,DT_FixedDUR2,TK_NotStart,DUKHCONP03Z1ELFF4055,Install. of CAMS & Fire Fighting Accessories,8178,96,0,200,0,1478.4,1478.4,200,0,0,0,,,,2014-01-19 08:00,2014-02-17 17:00,,2014-01-05 08:00,2014-02-02 17:00,2014-01-05 08:00,2014-02-02 17:00,2014-01-05 08:00,2014-02-02 17:00,2014-01-19 08:00,2014-02-17 17:00,,PT_Normal,,,,,Bx5A+AXTQJiSwUCsEVdzVA,,,,N,0,0,,,2013-02-16 15:53,2013-02-16 15:56,admin,admin
501902,6359,124780,13662,0,N,N,N,CP_Drtn,TT_Task,DT_FixedDUR2,TK_NotStart,DUKHCONP03Z1ELFF4050,Installation of Telephone System,8178,144,128,200,0,497.2,497.2,200,0,0,0,,,,2014-01-27 08:00,2014-02-25 17:00,,2014-01-06 08:00,2014-02-03 17:00,2014-01-06 08:00,2014-02-03 17:00,2014-01-06 08:00,2014-02-03 17:00,2014-01-27 08:00,2014-02-25 17:00,,PT_Normal,,,,,gSKCGtjQTZucDsP+0srWdg,,,,N,0,0,,,2013-02-16 15:53,2013-02-16 15:56,admin,admin
501903,6359,124781,13662,0,N,N,N,CP_Drtn,TT_Task,DT_FixedDUR2,TK_NotStart,DUKHCONP03Z1ELRF4070,Installation of Isolator,8178,16,0,144,0,283.8,283.8,144,0,0,0,,,,2014-02-13 08:00,2014-03-05 17:00,,2014-02-10 08:00,2014-03-03 17:00,2014-02-10 08:00,2014-03-03 17:00,2014-02-10 08:00,2014-03-03 17:00,2014-02-13 08:00,2014-03-05 17:00,,PT_Normal,,,,,6J5xBK5lSlOgFtLzu4bumA,,,,N,0,0,,,2013-02-16 15:53,2013-02-16 15:56,admin,admin
501904,6359,124781,13662,0,N,N,N,CP_Drtn,TT_Task,DT_FixedDUR2,TK_NotStart,DUKHCONP03Z1ELRF4075,Installation of TV Dish Antenna,8178,16,16,184,0,4331.8,4331.8,184,0,0,0,,,,2014-02-20 08:00,2014-03-18 17:00,,2014-02-18 08:00,2014-03-16 17:00,2014-02-18 08:00,2014-03-16 17:00,2014-02-18 08:00,2014-03-16 17:00,2014-02-20 08:00,2014-03-18 17:00,,PT_Normal,,,,,L5o75fXXSN2Qk/+wserPmQ,,,,N,0,0,,,2013-02-16 15:53,2013-02-16 15:56,admin,admin
501905,6359,124783,13662,0,N,N,N,CP_Drtn,TT_Task,DT_FixedDUR2,TK_NotStart,DUKHCONP03Z1PLFF4340,Installation of Water Heater,8178,112,0,120,0,46.2,46.2,120,0,0,0,,,,2014-02-12 08:00,2014-03-01 17:00,,2014-01-26 08:00,2014-02-12 17:00,2014-01-26 08:00,2014-02-12 17:00,2014-01-26 08:00,2014-02-12 17:00,2014-02-12 08:00,2014-03-01 17:00,,PT_Normal,,,,,MQ2OrMrpSym8sJElEQ07yw,,,,N,0,0,,,2013-02-16 15:53,2013-02-16 15:56,admin,admin
501906,6359,124783,13662,0,N,N,N,CP_Drtn,TT_Task,DT_FixedDUR2,TK_NotStart,DUKHCONP03Z1PLFF4325,Installation of Plumbing pipes & testing,8178,0,0,144,0,2504.7,2504.7,144,0,0,0,,,,2013-10-15 08:00,2013-11-06 17:00,,2013-10-15 08:00,2013-11-06 17:00,2013-10-15 08:00,2013-11-06 17:00,2013-10-15 08:00,2013-11-06 17:00,2013-10-15 08:00,2013-11-06 17:00,,PT_Normal,,,,,iJzXL+9jSreC4L4qNYIdOA,,,,N,0,0,,,2013-02-16 15:53,2013-02-23 09:03,admin,admin
501907,6359,124783,13662,0,N,N,N,CP_Drtn,TT_Task,DT_FixedDUR2,TK_NotStart,DUKHCONP03Z1PLFF4330,Installation of Drainage pipes & testing,8178,200,48,144,0,198,198,144,0,0,0,,,,2013-11-16 08:00,2013-12-05 17:00,,2013-10-15 08:00,2013-11-06 17:00,2013-10-15 08:00,2013-11-06 17:00,2013-10-15 08:00,2013-11-06 17:00,2013-11-16 08:00,2013-12-05 17:00,,PT_Normal,,,,,L6Vvuyp5Rj+ELBuygpfQQA,,,,N,0,0,,,2013-02-16 15:53,2013-02-16 15:56,admin,admin
501908,6359,124783,13662,0,N,N,N,CP_Drtn,TT_Task,DT_FixedDUR2,TK_NotStart,DUKHCONP03Z1PLFF4335,Sanitary Fittings & Accessories,8178,112,0,160,0,323.4,323.4,160,0,0,0,,,,2014-01-30 08:00,2014-02-23 17:00,,2014-01-14 08:00,2014-02-05 17:00,2014-01-14 08:00,2014-02-05 17:00,2014-01-14 08:00,2014-02-05 17:00,2014-01-30 08:00,2014-02-23 17:00,,PT_Normal,,,,,pd7wG1M2T1eh6jMC1MTlQw,,,,N,0,0,,,2013-02-16 15:53,2013-02-23 09:03,admin,admin
501909,6359,124784,13662,0,N,N,N,CP_Drtn,TT_Task,DT_FixedDUR2,TK_NotStart,DUKHCONP03Z1PLRF4345,Installation of Plumbing pipes & fittings,8178,536,112,120,0,1488.3,1488.3,120,0,0,0,,,,2014-02-02 08:00,2014-02-19 17:00,,2013-11-14 08:00,2013-12-01 17:00,2013-11-14 08:00,2013-12-01 17:00,2013-11-14 08:00,2013-12-01 17:00,2014-02-02 08:00,2014-02-19 17:00,,PT_Normal,,,,,P3oYDX8bQeauvUfERjs6ug,,,,N,0,0,,,2013-02-16 15:53,2013-02-16 15:56,admin,admin
501910,6359,124784,13662,0,N,N,N,CP_Drtn,TT_Task,DT_FixedDUR2,TK_NotStart,DUKHCONP03Z1PLRF4350,Installation of Rain water Pipes,8178,424,80,120,0,75.9,75.9,120,0,0,0,,,,2014-02-12 08:00,2014-03-01 17:00,,2013-12-10 08:00,2013-12-28 17:00,2013-12-10 08:00,2013-12-28 17:00,2013-12-10 08:00,2013-12-28 17:00,2014-02-12 08:00,2014-03-01 17:00,,PT_Normal,,,,,W+fFAdRjTIyr+0wNpV+hVg,,,,N,0,0,,,2013-02-16 15:53,2013-02-16 15:56,admin,admin
501911,6359,124784,13662,0,N,N,N,CP_Drtn,TT_Task,DT_FixedDUR2,TK_NotStart,DUKHCONP03Z1PLRF4355,Roof  Water Tank Installation & Connections,8178,112,0,200,0,100.8,100.8,200,0,0,0,,,,2014-02-18 08:00,2014-03-18 17:00,,2014-02-01 08:00,2014-03-02 17:00,2014-02-01 08:00,2014-03-02 17:00,2014-02-01 08:00,2014-03-02 17:00,2014-02-18 08:00,2014-03-18 17:00,,PT_Normal,,,,,3Kz8T1Q1RiOfdgspY7YVJw,,,,N,0,0,,,2013-02-16 15:53,2013-02-16 15:56,admin,admin
501912,6359,124785,13662,0,N,N,N,CP_Drtn,TT_Task,DT_FixedDUR2,TK_NotStart,DUKHCONP03Z1PLGF4305,Installation of Plumbing pipes & testing,8178,280,0,144,0,2504.7,2504.7,144,0,0,0,,,,2013-10-13 08:00,2013-11-04 17:00,,2013-09-02 08:00,2013-09-22 17:00,2013-09-02 08:00,2013-09-22 17:00,2013-09-02 08:00,2013-09-22 17:00,2013-10-13 08:00,2013-11-04 17:00,,PT_Normal,,,,,FNljR2SkSyqU8r8umpwClw,,,,N,0,0,,,2013-02-16 15:53,2013-02-23 09:03,admin,admin
501913,6359,124785,13662,0,N,N,N,CP_Drtn,TT_Task,DT_FixedDUR2,TK_NotStart,DUKHCONP03Z1PLGF4310,Installation of Drainage pipes &testing,8178,448,168,144,0,198,198,144,0,0,0,,,,2013-11-09 08:00,2013-11-28 17:00,,2013-09-02 08:00,2013-09-22 17:00,2013-09-02 08:00,2013-09-22 17:00,2013-09-02 08:00,2013-09-22 17:00,2013-11-09 08:00,2013-11-28 17:00,,PT_Normal,,,,,rmyRH1ZfS4SDYcmJyOG6vg,,,,N,0,0,,,2013-02-16 15:53,2013-02-16 15:56,admin,admin
501914,6359,124785,13662,0,N,N,N,CP_Drtn,TT_Task,DT_FixedDUR2,TK_NotStart,DUKHCONP03Z1PLGF4315,Sanitary Fittings & Accessories,8178,512,0,160,0,323.4,323.4,160,0,0,0,,,,2014-02-18 08:00,2014-03-12 17:00,,2013-12-03 08:00,2013-12-26 17:00,2013-12-03 08:00,2013-12-26 17:00,2013-12-03 08:00,2013-12-26 17:00,2014-02-18 08:00,2014-03-12 17:00,,PT_Normal,,,,,ggahRbk3S1SjGshuJTcB/A,,,,N,0,0,,,2013-02-16 15:53,2013-02-23 09:03,admin,admin
501915,6359,124785,13662,0,N,N,N,CP_Drtn,TT_Task,DT_FixedDUR2,TK_NotStart,DUKHCONP03Z1PLGF4320,Installation of Water Heater,8178,512,80,120,0,46.2,46.2,120,0,0,0,,,,2014-03-02 08:00,2014-03-18 17:00,,2013-12-15 08:00,2014-01-01 17:00,2013-12-15 08:00,2014-01-01 17:00,2013-12-15 08:00,2014-01-01 17:00,2014-03-02 08:00,2014-03-18 17:00,,PT_Normal,,,,,IGHFEPH3SCiH6NCrPq1q0g,,,,N,0,0,,,2013-02-16 15:53,2013-02-16 15:56,admin,admin
501916,6359,124785,13662,0,N,N,N,CP_Drtn,TT_Task,DT_FixedDUR2,TK_NotStart,DUKHCONP03Z1PLUG4300,Drainage / Storm Pipes in Grade Slab,8178,0,0,160,0,165.6,165.6,160,0,0,0,,,,2013-05-08 08:00,2013-05-30 17:00,,2013-05-08 08:00,2013-05-30 17:00,2013-05-08 08:00,2013-05-30 17:00,2013-05-08 08:00,2013-05-30 17:00,2013-05-08 08:00,2013-05-30 17:00,,PT_Normal,,,,,mWMPXWUJTSC0ZrFrPijEGQ,,,,N,0,0,,,2013-02-16 15:53,2013-02-16 15:56,admin,admin
501917,6359,124788,13662,0,N,N,N,CP_Drtn,TT_Task,DT_FixedDUR2,TK_NotStart,DUKHCONP03Z1ARGF3000,Block work,8168,280,0,200,0,4741,4741,200,0,0,0,,,,2013-09-26 08:00,2013-10-27 17:00,,2013-08-17 08:00,2013-09-14 17:00,2013-08-17 08:00,2013-09-14 17:00,2013-08-17 08:00,2013-09-14 17:00,2013-09-26 08:00,2013-10-27 17:00,,PT_Normal,,,,,QO3aSd+UTNaEK2tI0yTSpg,,,,N,0,0,,,2013-02-16 15:53,2013-02-16 15:56,admin,admin
501918,6359,124788,13662,0,N,N,N,CP_Drtn,TT_Task,DT_FixedDUR2,TK_NotStart,DUKHCONP03Z1ARGF3005,Plastering work,8169,280,0,200,0,4178.5,4178.5,200,0,0,0,,,,2013-10-21 08:00,2013-11-18 17:00,,2013-09-08 08:00,2013-10-06 17:00,2013-09-08 08:00,2013-10-06 17:00,2013-09-08 08:00,2013-10-06 17:00,2013-10-21 08:00,2013-11-18 17:00,,PT_Normal,,,,,tqblY2azQkWvZ3pCtHoSRw,,,,N,0,0,,,2013-02-16 15:53,2013-02-16 15:56,admin,admin
501919,6359,124788,13662,0,N,N,N,CP_Drtn,TT_Task,DT_FixedDUR2,TK_NotStart,DUKHCONP03Z1ARGF3010,Flooring screed,8164,344,64,168,0,824,824,168,0,0,0,,,,2013-11-07 08:00,2013-12-01 17:00,,2013-09-16 08:00,2013-10-09 17:00,2013-09-16 08:00,2013-10-09 17:00,2013-09-16 08:00,2013-10-09 17:00,2013-11-07 08:00,2013-12-01 17:00,,PT_Normal,,,,,DyJG8XkTTfOYSbfSrB7oOQ,,,,N,0,0,,,2013-02-16 15:53,2013-02-16 15:56,admin,admin
501920,6359,124788,13662,0,N,N,N,CP_Drtn,TT_Task,DT_FixedDUR2,TK_NotStart,DUKHCONP03Z1ARGF3015,Wet area waterproofing & Protection Screed,8178,280,0,120,0,387.75,387.75,120,0,0,0,,,,2013-11-07 08:00,2013-11-24 17:00,,2013-09-25 08:00,2013-10-12 17:00,2013-09-25 08:00,2013-10-12 17:00,2013-09-25 08:00,2013-10-12 17:00,2013-11-07 08:00,2013-11-24 17:00,,PT_Normal,,,,,ms8d3TKCRG2ImryBiAj9aA,,,,N,0,0,,,2013-02-16 15:53,2013-02-16 15:56,admin,admin
501921,6359,124788,13662,0,N,N,N,CP_Drtn,TT_Task,DT_FixedDUR2,TK_NotStart,DUKHCONP03Z1ARGF3030,Paint First coat,8178,344,0,200,0,2758.25,2758.25,200,0,0,0,,,,2013-11-23 08:00,2013-12-22 17:00,,2013-10-01 08:00,2013-10-31 17:00,2013-10-01 08:00,2013-10-31 17:00,2013-10-01 08:00,2013-10-31 17:00,2013-11-23 08:00,2013-12-22 17:00,,PT_Normal,,,,,2IkLcIETQIeRQyz5pKG4HA,,,,N,0,0,,,2013-02-16 15:53,2013-02-16 15:56,admin,admin
501922,6359,124788,13662,0,N,N,N,CP_Drtn,TT_Task,DT_FixedDUR2,TK_NotStart,DUKHCONP03Z1ARGF3020,Ceramic Wall Tiling,8170,280,0,200,0,1734.75,1734.75,200,0,0,0,,,,2013-11-13 08:00,2013-12-11 17:00,,2013-10-01 08:00,2013-10-31 17:00,2013-10-01 08:00,2013-10-31 17:00,2013-10-01 08:00,2013-10-31 17:00,2013-11-13 08:00,2013-12-11 17:00,,PT_Normal,,,,,NtPy9j/SQr6H6uu9jpHlJQ,,,,N,0,0,,,2013-02-16 15:53,2013-02-16 15:56,admin,admin
501923,6359,124788,13662,0,N,N,N,CP_Drtn,TT_Task,DT_FixedDUR2,TK_NotStart,DUKHCONP03Z1ARGF3025,Porcelain Tile flooring,8170,280,0,200,0,1192.75,1192.75,200,0,0,0,,,,2013-11-19 08:00,2013-12-17 17:00,,2013-10-07 08:00,2013-11-06 17:00,2013-10-07 08:00,2013-11-06 17:00,2013-10-07 08:00,2013-11-06 17:00,2013-11-19 08:00,2013-12-17 17:00,,PT_Normal,,,,,LBX/EYStS26FsgSf4Aj4oQ,,,,N,0,0,,,2013-02-16 15:53,2013-02-16 15:56,admin,admin
501924,6359,124788,13662,0,N,N,N,CP_Drtn,TT_Task,DT_FixedDUR2,TK_NotStart,DUKHCONP03Z1ARGF3040,Cobble Tile flooring,8170,320,0,120,0,45.5,45.5,120,0,0,0,,,,2013-12-23 08:00,2014-01-08 17:00,,2013-11-05 08:00,2013-11-21 17:00,2013-11-05 08:00,2013-11-21 17:00,2013-11-05 08:00,2013-11-21 17:00,2013-12-23 08:00,2014-01-08 17:00,,PT_Normal,,,,,zTFPaOXNSKu0JxGs5ZBiXg,,,,N,0,0,,,2013-02-16 15:53,2013-02-16 15:56,admin,admin
501925,6359,124788,13662,0,N,N,N,CP_Drtn,TT_Task,DT_FixedDUR2,TK_NotStart,DUKHCONP03Z1ARGF3035,Slate Tile Flooring & Skirting,8170,336,16,120,0,31.25,31.25,120,0,0,0,,,,2013-12-17 08:00,2014-01-04 17:00,,2013-10-29 08:00,2013-11-14 17:00,2013-10-29 08:00,2013-11-14 17:00,2013-10-29 08:00,2013-11-14 17:00,2013-12-17 08:00,2014-01-04 17:00,,PT_Normal,,,,,jZl2aLpDRraVnLKJIrzqZw,,,,N,0,0,,,2013-02-16 15:53,2013-02-16 15:56,admin,admin
501926,6359,124788,13662,0,N,N,N,CP_Drtn,TT_Task,DT_FixedDUR2,TK_NotStart,DUKHCONP03Z1ARGF3050,Granite - Stair case flooring & Skirting,8171,320,0,160,0,337.5,337.5,160,0,0,0,,,,2013-12-31 08:00,2014-01-22 17:00,,2013-11-13 08:00,2013-12-05 17:00,2013-11-13 08:00,2013-12-05 17:00,2013-11-13 08:00,2013-12-05 17:00,2013-12-31 08:00,2014-01-22 17:00,,PT_Normal,,,,,nDBv/7zjSRygfS6u9OQEPg,,,,N,0,0,,,2013-02-16 15:53,2013-02-16 15:56,admin,admin
501927,6359,124788,13662,0,N,N,N,CP_Drtn,TT_Task,DT_FixedDUR2,TK_NotStart,DUKHCONP03Z1ARGF3045,Fixing of Suspension systems,8178,280,0,160,0,956.25,956.25,160,0,0,0,,,,2013-12-07 08:00,2013-12-30 17:00,,2013-10-27 08:00,2013-11-18 17:00,2013-10-27 08:00,2013-11-18 17:00,2013-10-27 08:00,2013-11-18 17:00,2013-12-07 08:00,2013-12-30 17:00,,PT_Normal,,,,,y9bHT/A3RZqNHzarYJ5/Kg,,,,N,0,0,,,2013-02-16 15:53,2013-02-16 15:56,admin,admin
501928,6359,124788,13662,0,N,N,N,CP_Drtn,TT_Task,DT_FixedDUR2,TK_NotStart,DUKHCONP03Z1ARGF3055,Aluminum tile false ceiling,8178,312,24,200,0,103.9,103.9,200,0,0,0,,,,2013-12-21 08:00,2014-01-18 17:00,,2013-11-04 08:00,2013-12-02 17:00,2013-11-04 08:00,2013-12-02 17:00,2013-11-04 08:00,2013-12-02 17:00,2013-12-21 08:00,2014-01-18 17:00,,PT_Normal,,,,,UVgpdv3BRDOY/I7vMkheoQ,,,,N,0,0,,,2013-02-16 15:53,2013-02-16 15:56,admin,admin
501929,6359,124788,13662,0,N,N,N,CP_Drtn,TT_Task,DT_FixedDUR2,TK_NotStart,DUKHCONP03Z1ARGF3060,Gypsum board false ceiling,8178,280,0,200,0,866,866,200,0,0,0,,,,2013-12-19 08:00,2014-01-16 17:00,,2013-11-07 08:00,2013-12-05 17:00,2013-11-07 08:00,2013-12-05 17:00,2013-11-07 08:00,2013-12-05 17:00,2013-12-19 08:00,2014-01-16 17:00,,PT_Normal,,,,,HqD7oPscTCiLJUqroMKY7g,,,,N,0,0,,,2013-02-16 15:53,2013-02-16 15:56,admin,admin
501930,6359,124788,13662,0,N,N,N,CP_Drtn,TT_Task,DT_FixedDUR2,TK_NotStart,DUKHCONP03Z1ARGF3065,Wooden door,8178,320,0,120,0,275,275,120,0,0,0,,,,2014-01-14 08:00,2014-01-30 17:00,,2013-11-27 08:00,2013-12-14 17:00,2013-11-27 08:00,2013-12-14 17:00,2013-11-27 08:00,2013-12-14 17:00,2014-01-14 08:00,2014-01-30 17:00,,PT_Normal,,,,,I/dkUpS0SYafdan4SKQcrg,,,,N,0,0,,,2013-02-16 15:53,2013-02-16 15:56,admin,admin
501931,6359,124788,13662,0,N,N,N,CP_Drtn,TT_Task,DT_FixedDUR2,TK_NotStart,DUKHCONP03Z1ARGF3070,Aluminum doors,8178,320,0,120,0,66,66,120,0,0,0,,,,2014-01-20 08:00,2014-02-05 17:00,,2013-12-03 08:00,2013-12-21 17:00,2013-12-03 08:00,2013-12-21 17:00,2013-12-03 08:00,2013-12-21 17:00,2014-01-20 08:00,2014-02-05 17:00,,PT_Normal,,,,,Q07YbMbzSDKpb6HkAzVkbg,,,,N,0,0,,,2013-02-16 15:53,2013-02-16 15:56,admin,admin
501932,6359,124788,13662,0,N,N,N,CP_Drtn,TT_Task,DT_FixedDUR2,TK_NotStart,DUKHCONP03Z1ARGF3080,Aluminum windows,8178,400,40,160,0,147.5,147.5,160,0,0,0,,,,2014-02-08 08:00,2014-03-03 17:00,,2013-12-10 08:00,2014-01-02 17:00,2013-12-10 08:00,2014-01-02 17:00,2013-12-10 08:00,2014-01-02 17:00,2014-02-08 08:00,2014-03-03 17:00,,PT_Normal,,,,,wHtftFCDQ7e3PaTXS4ptng,,,,N,0,0,,,2013-02-16 15:53,2013-02-16 15:56,admin,admin
501933,6359,124788,13662,0,N,N,N,CP_Drtn,TT_Task,DT_FixedDUR2,TK_NotStart,DUKHCONP03Z1ARGF3075,Carpentry & Joinery Works,8178,320,0,160,0,528,528,160,0,0,0,,,,2014-01-26 08:00,2014-02-18 17:00,,2013-12-09 08:00,2014-01-01 17:00,2013-12-09 08:00,2014-01-01 17:00,2013-12-09 08:00,2014-01-01 17:00,2014-01-26 08:00,2014-02-18 17:00,,PT_Normal,,,,,sJCUac0OQnmiZmIjnNjuYw,,,,N,0,0,,,2013-02-16 15:53,2013-02-16 15:56,admin,admin
501934,6359,124788,13662,0,N,N,N,CP_Drtn,TT_Task,DT_FixedDUR2,TK_NotStart,DUKHCONP03Z1ARGF3090,Installation of Granite Counter Top,8171,320,0,120,0,88,88,120,0,0,0,,,,2014-02-08 08:00,2014-02-25 17:00,,2013-12-23 08:00,2014-01-08 17:00,2013-12-23 08:00,2014-01-08 17:00,2013-12-23 08:00,2014-01-08 17:00,2014-02-08 08:00,2014-02-25 17:00,,PT_Normal,,,,,R0OtpuBzTjCt4+HZeBfFMw,,,,N,0,0,,,2013-02-16 15:53,2013-02-16 15:56,admin,admin
501935,6359,124788,13662,0,N,N,N,CP_Drtn,TT_Task,DT_FixedDUR2,TK_NotStart,DUKHCONP03Z1ARGF3085,S.S.Balustrade,8178,360,40,160,0,31.25,31.25,160,0,0,0,,,,2014-02-09 08:00,2014-03-04 17:00,,2013-12-17 08:00,2014-01-09 17:00,2013-12-17 08:00,2014-01-09 17:00,2013-12-17 08:00,2014-01-09 17:00,2014-02-09 08:00,2014-03-04 17:00,,PT_Normal,,,,,s2VxxBbVRc6gH/XrUpaTOQ,,,,N,0,0,,,2013-02-16 15:53,2013-02-16 15:56,admin,admin
501936,6359,124788,13662,0,N,N,N,CP_Drtn,TT_Task,DT_FixedDUR2,TK_NotStart,DUKHCONP03Z1ARGF3095,Final Painting,8178,320,0,200,0,2758.25,2758.25,200,0,0,0,,,,2014-02-18 08:00,2014-03-18 17:00,,2014-01-01 08:00,2014-01-29 17:00,2014-01-01 08:00,2014-01-29 17:00,2014-01-01 08:00,2014-01-29 17:00,2014-02-18 08:00,2014-03-18 17:00,,PT_Normal,,,,,aWVHBVAqT2+ecjj2wZhV+g,,,,N,0,0,,,2013-02-16 15:53,2013-02-16 15:56,admin,admin
501937,6359,124789,13662,0,N,N,N,CP_Drtn,TT_Task,DT_FixedDUR2,TK_NotStart,DUKHCONP03Z1ARFF3320,Ceramic Wall Tiling,8170,0,0,200,0,1734.75,1734.75,200,0,0,0,,,,2013-11-24 08:00,2013-12-23 17:00,,2013-11-24 08:00,2013-12-23 17:00,2013-11-24 08:00,2013-12-23 17:00,2013-11-24 08:00,2013-12-23 17:00,2013-11-24 08:00,2013-12-23 17:00,,PT_Normal,,,,,gH0DHpojSc6Yj1Hmo0LtFg,,,,N,0,0,,,2013-02-16 15:53,2013-02-16 15:56,admin,admin
501938,6359,124789,13662,0,N,N,N,CP_Drtn,TT_Task,DT_FixedDUR2,TK_NotStart,DUKHCONP03Z1ARFF3325,Porcelain Tile flooring,8170,0,0,200,0,1192.75,1192.75,200,0,0,0,,,,2013-12-01 08:00,2013-12-30 17:00,,2013-12-01 08:00,2013-12-30 17:00,2013-12-01 08:00,2013-12-30 17:00,2013-12-01 08:00,2013-12-30 17:00,2013-12-01 08:00,2013-12-30 17:00,,PT_Normal,,,,,7f4sEwIJSruyxyMxqVgWwA,,,,N,0,0,,,2013-02-16 15:53,2013-02-16 15:56,admin,admin
501939,6359,124789,13662,0,N,N,N,CP_Drtn,TT_Task,DT_FixedDUR2,TK_NotStart,DUKHCONP03Z1ARFF3335,Slate Tile Flooring & Skirting,8178,80,80,120,0,1350,1350,120,0,0,0,,,,2013-12-31 08:00,2014-01-16 17:00,,2013-12-19 08:00,2014-01-05 17:00,2013-12-19 08:00,2014-01-05 17:00,2013-12-19 08:00,2014-01-05 17:00,2013-12-31 08:00,2014-01-16 17:00,,PT_Normal,,,,,ab5/HwtvQlGq8s9k+FElWQ,,,,N,0,0,,,2013-02-16 15:53,2013-02-16 15:56,admin,admin
501940,6359,124789,13662,0,N,N,N,CP_Drtn,TT_Task,DT_FixedDUR2,TK_NotStart,DUKHCONP03Z1ARFF3350,Granite - Stair case flooring & Skirting,8178,16,16,160,0,150,150,160,0,0,0,,,,2013-12-25 08:00,2014-01-16 17:00,,2013-12-23 08:00,2014-01-14 17:00,2013-12-23 08:00,2014-01-14 17:00,2013-12-23 08:00,2014-01-14 17:00,2013-12-25 08:00,2014-01-16 17:00,,PT_Normal,,,,,HRj7mB41RZyl0+UcdJ3Lfw,,,,N,0,0,,,2013-02-16 15:53,2013-02-16 15:56,admin,admin
501941,6359,124789,13662,0,N,N,N,CP_Drtn,TT_Task,DT_FixedDUR2,TK_NotStart,DUKHCONP03Z1ARFF3345,Fixing of Suspension systems,8178,0,0,160,0,956.25,956.25,160,0,0,0,,,,2013-12-15 08:00,2014-01-07 17:00,,2013-12-15 08:00,2014-01-07 17:00,2013-12-15 08:00,2014-01-07 17:00,2013-12-15 08:00,2014-01-07 17:00,2013-12-15 08:00,2014-01-07 17:00,,PT_Normal,,,,,x3YYTF+/TX6FiiDQy0MajQ,,,,N,0,0,,,2013-02-16 15:53,2013-02-16 15:56,admin,admin
501942,6359,124789,13662,0,N,N,N,CP_Drtn,TT_Task,DT_FixedDUR2,TK_NotStart,DUKHCONP03Z1ARFF3355,Aluminum tile false ceiling,8178,16,0,160,0,103.9,103.9,160,0,0,0,,,,2013-12-30 08:00,2014-01-21 17:00,,2013-12-28 08:00,2014-01-19 17:00,2013-12-28 08:00,2014-01-19 17:00,2013-12-28 08:00,2014-01-19 17:00,2013-12-30 08:00,2014-01-21 17:00,,PT_Normal,,,,,z30deSdnQxOVYFfotNCDLg,,,,N,0,0,,,2013-02-16 15:53,2013-02-16 15:56,admin,admin
501943,6359,124789,13662,0,N,N,N,CP_Drtn,TT_Task,DT_FixedDUR2,TK_NotStart,DUKHCONP03Z1ARFF3360,Gypsum board false ceiling,8178,0,0,200,0,866,866,200,0,0,0,,,,2013-12-24 08:00,2014-01-21 17:00,,2013-12-24 08:00,2014-01-21 17:00,2013-12-24 08:00,2014-01-21 17:00,2013-12-24 08:00,2014-01-21 17:00,2013-12-24 08:00,2014-01-21 17:00,,PT_Normal,,,,,co8sUmvvQpmw1UYKMbS5Xg,,,,N,0,0,,,2013-02-16 15:53,2013-02-16 15:56,admin,admin
501944,6359,124789,13662,0,N,N,N,CP_Drtn,TT_Task,DT_FixedDUR2,TK_NotStart,DUKHCONP03Z1ARFF3365,Wooden door,8178,0,0,120,0,220,220,120,0,0,0,,,,2014-01-08 08:00,2014-01-25 17:00,,2014-01-08 08:00,2014-01-25 17:00,2014-01-08 08:00,2014-01-25 17:00,2014-01-08 08:00,2014-01-25 17:00,2014-01-08 08:00,2014-01-25 17:00,,PT_Normal,,,,,R6UTwKs1QUaS2MsXWEP24w,,,,N,0,0,,,2013-02-16 15:53,2013-02-16 15:56,admin,admin
501945,6359,124789,13662,0,N,N,N,CP_Drtn,TT_Task,DT_FixedDUR2,TK_NotStart,DUKHCONP03Z1ARFF3370,Aluminum Door,8178,0,0,160,0,66,66,160,0,0,0,,,,2014-01-16 08:00,2014-02-08 17:00,,2014-01-16 08:00,2014-02-08 17:00,2014-01-16 08:00,2014-02-08 17:00,2014-01-16 08:00,2014-02-08 17:00,2014-01-16 08:00,2014-02-08 17:00,,PT_Normal,,,,,mcL72ivxRAGA/gg05vNq4w,,,,N,0,0,,,2013-02-16 15:53,2013-02-16 15:56,admin,admin
501946,6359,124789,13662,0,N,N,N,CP_Drtn,TT_Task,DT_FixedDUR2,TK_NotStart,DUKHCONP03Z1ARFF3380,Aluminum windows,8178,88,88,160,0,176,176,160,0,0,0,,,,2014-02-05 08:00,2014-03-01 17:00,,2014-01-23 08:00,2014-02-16 17:00,2014-01-23 08:00,2014-02-16 17:00,2014-01-23 08:00,2014-02-16 17:00,2014-02-05 08:00,2014-03-01 17:00,,PT_Normal,,,,,NYbk/3F2RvisuTMMEIsUiw,,,,N,0,0,,,2013-02-16 15:53,2013-02-16 15:56,admin,admin
501947,6359,124789,13662,0,N,N,N,CP_Drtn,TT_Task,DT_FixedDUR2,TK_NotStart,DUKHCONP03Z1ARFF3375,Carpentry & Joinery Works,8178,0,0,200,0,278,278,200,0,0,0,,,,2014-01-25 08:00,2014-02-23 17:00,,2014-01-25 08:00,2014-02-23 17:00,2014-01-25 08:00,2014-02-23 17:00,2014-01-25 08:00,2014-02-23 17:00,2014-01-25 08:00,2014-02-23 17:00,,PT_Normal,,,,,LdRJzPsMRrWZNcVfwfbpEg,,,,N,0,0,,,2013-02-16 15:53,2013-02-16 15:56,admin,admin
501948,6359,124789,13662,0,N,N,N,CP_Drtn,TT_Task,DT_FixedDUR2,TK_NotStart,DUKHCONP03Z1ARFF3390,Installation of Granite Counter Top,8171,0,0,160,0,88,88,160,0,0,0,,,,2014-02-08 08:00,2014-03-03 17:00,,2014-02-08 08:00,2014-03-03 17:00,2014-02-08 08:00,2014-03-03 17:00,2014-02-08 08:00,2014-03-03 17:00,2014-02-08 08:00,2014-03-03 17:00,,PT_Normal,,,,,FZpVDyZxTqqTV7w1MAu3tA,,,,N,0,0,,,2013-02-16 15:53,2013-02-16 15:56,admin,admin
501949,6359,124789,13662,0,N,N,N,CP_Drtn,TT_Task,DT_FixedDUR2,TK_NotStart,DUKHCONP03Z1ARFF3385,Handrail &  Balustrade,8301,8,8,160,0,250,250,160,0,0,0,,,,2014-02-06 08:00,2014-03-02 17:00,,2014-02-05 08:00,2014-03-01 17:00,2014-02-05 08:00,2014-03-01 17:00,2014-02-05 08:00,2014-03-01 17:00,2014-02-06 08:00,2014-03-02 17:00,,PT_Normal,,,,,YODHET1NQ1SzBFN+wPIRLw,,,,N,0,0,,,2013-02-16 15:53,2013-02-16 15:56,admin,admin
501950,6359,124789,13662,0,N,N,N,CP_Drtn,TT_Task,DT_FixedDUR2,TK_NotStart,DUKHCONP03Z1ARFF3395,Final Painting,8178,0,0,200,0,2872,2872,200,0,0,0,,,,2014-02-18 08:00,2014-03-18 17:00,,2014-02-18 08:00,2014-03-18 17:00,2014-02-18 08:00,2014-03-18 17:00,2014-02-18 08:00,2014-03-18 17:00,2014-02-18 08:00,2014-03-18 17:00,,PT_Normal,,,,,oqHE0f8ZTUeNVK1S5zwkKw,,,,N,0,0,,,2013-02-16 15:53,2013-02-16 15:56,admin,admin
501951,6359,124789,13662,0,N,N,N,CP_Drtn,TT_Task,DT_FixedDUR2,TK_NotStart,DUKHCONP03Z1ARFF3300,Block work,8168,0,0,192,0,3703.5,3703.5,192,0,0,0,,,,2013-09-29 08:00,2013-10-28 17:00,,2013-09-29 08:00,2013-10-28 17:00,2013-09-29 08:00,2013-10-28 17:00,2013-09-29 08:00,2013-10-28 17:00,2013-09-29 08:00,2013-10-28 17:00,,PT_Normal,,,,,883XaHghQXKjb0qCCdXsiw,,,,N,0,0,,,2013-02-16 15:53,2013-02-16 15:56,admin,admin
501952,6359,124789,13662,0,N,N,N,CP_Drtn,TT_Task,DT_FixedDUR2,TK_NotStart,DUKHCONP03Z1ARFF3305,Plastering work,8169,0,0,200,0,3678.5,3678.5,200,0,0,0,,,,2013-10-24 08:00,2013-11-21 17:00,,2013-10-24 08:00,2013-11-21 17:00,2013-10-24 08:00,2013-11-21 17:00,2013-10-24 08:00,2013-11-21 17:00,2013-10-24 08:00,2013-11-21 17:00,,PT_Normal,,,,,GcMs4cstQbKJlSdi5wKsJA,,,,N,0,0,,,2013-02-16 15:53,2013-02-16 15:56,admin,admin
501953,6359,124789,13662,0,N,N,N,CP_Drtn,TT_Task,DT_FixedDUR2,TK_NotStart,DUKHCONP03Z1ARFF3310,Flooring screed,8164,120,120,168,0,687.5,687.5,168,0,0,0,,,,2013-11-19 08:00,2013-12-12 17:00,,2013-11-02 08:00,2013-11-25 17:00,2013-11-02 08:00,2013-11-25 17:00,2013-11-02 08:00,2013-11-25 17:00,2013-11-19 08:00,2013-12-12 17:00,,PT_Normal,,,,,hWwCtOCBRrWAVudY8E/LBQ,,,,N,0,0,,,2013-02-16 15:53,2013-02-16 15:56,admin,admin
501954,6359,124789,13662,0,N,N,N,CP_Drtn,TT_Task,DT_FixedDUR2,TK_NotStart,DUKHCONP03Z1ARFF3315,Wet area waterproofing,8178,0,0,120,0,387.75,387.75,120,0,0,0,,,,2013-11-14 08:00,2013-12-01 17:00,,2013-11-14 08:00,2013-12-01 17:00,2013-11-14 08:00,2013-12-01 17:00,2013-11-14 08:00,2013-12-01 17:00,2013-11-14 08:00,2013-12-01 17:00,,PT_Normal,,,,,1905RnEFQWSyWBx4oDKcQg,,,,N,0,0,,,2013-02-16 15:53,2013-02-16 15:56,admin,admin
501955,6359,124789,13662,0,N,N,N,CP_Drtn,TT_Task,DT_FixedDUR2,TK_NotStart,DUKHCONP03Z1ARFF3330,Paint First coat,8178,144,144,200,0,2872,2872,200,0,0,0,,,,2013-12-01 08:00,2013-12-30 17:00,,2013-11-10 08:00,2013-12-08 17:00,2013-11-10 08:00,2013-12-08 17:00,2013-11-10 08:00,2013-12-08 17:00,2013-12-01 08:00,2013-12-30 17:00,,PT_Normal,,,,,D8DqXOCjRPSliBk7PEFyLg,,,,N,0,0,,,2013-02-16 15:53,2013-02-16 15:56,admin,admin
501956,6359,124790,13662,0,N,N,N,CP_Drtn,TT_Task,DT_FixedDUR2,TK_NotStart,DUKHCONP03Z1ARRF3600,Block work,8168,536,0,160,0,325,325,160,0,0,0,,,,2014-01-06 08:00,2014-01-28 17:00,,2013-10-16 08:00,2013-11-10 17:00,2013-10-16 08:00,2013-11-10 17:00,2013-10-16 08:00,2013-11-10 17:00,2014-01-06 08:00,2014-01-28 17:00,,PT_Normal,,,,,CqzrzTRiQ0KMbzjN0fLANQ,,,,N,0,0,,,2013-02-16 15:53,2013-02-16 15:56,admin,admin
501957,6359,124790,13662,0,N,N,N,CP_Drtn,TT_Task,DT_FixedDUR2,TK_NotStart,DUKHCONP03Z1ARRF3605,Plastering work,8169,536,0,160,0,1300,1300,160,0,0,0,,,,2014-01-14 08:00,2014-02-05 17:00,,2013-10-27 08:00,2013-11-18 17:00,2013-10-27 08:00,2013-11-18 17:00,2013-10-27 08:00,2013-11-18 17:00,2014-01-14 08:00,2014-02-05 17:00,,PT_Normal,,,,,x2YJz17iTqmkOHLL3GTyDg,,,,N,0,0,,,2013-02-16 15:53,2013-02-16 15:56,admin,admin
501958,6359,124790,13662,0,N,N,N,CP_Drtn,TT_Task,DT_FixedDUR2,TK_NotStart,DUKHCONP03Z1ARRF3610,Flooring screed,8164,576,280,120,0,77,77,120,0,0,0,,,,2014-02-03 08:00,2014-02-20 17:00,,2013-11-10 08:00,2013-11-26 17:00,2013-11-10 08:00,2013-11-26 17:00,2013-11-10 08:00,2013-11-26 17:00,2014-02-03 08:00,2014-02-20 17:00,,PT_Normal,,,,,SQPQlN2PSSKxIordNTGsAQ,,,,N,0,0,,,2013-02-16 15:53,2013-02-16 15:56,admin,admin
501959,6359,124790,13662,0,N,N,N,CP_Drtn,TT_Task,DT_FixedDUR2,TK_NotStart,DUKHCONP03Z1ARRF3695,Painting,8178,296,0,160,0,460,460,160,0,0,0,,,,2014-02-12 08:00,2014-03-06 17:00,,2013-12-30 08:00,2014-01-21 17:00,2013-12-30 08:00,2014-01-21 17:00,2013-12-30 08:00,2014-01-21 17:00,2014-02-12 08:00,2014-03-06 17:00,,PT_Normal,,,,,gJ877H9ZQ7qd2zp5sHdscQ,,,,N,0,0,,,2013-02-16 15:53,2013-02-16 15:56,admin,admin
501960,6359,124790,13662,0,N,N,N,CP_Drtn,TT_Task,DT_FixedDUR2,TK_NotStart,DUKHCONP03Z1ARRF3620,Epoxy Painting,8178,296,296,120,0,16.5,16.5,120,0,0,0,,,,2014-03-02 08:00,2014-03-18 17:00,,2014-01-16 08:00,2014-02-02 17:00,2014-01-16 08:00,2014-02-02 17:00,2014-01-16 08:00,2014-02-02 17:00,2014-03-02 08:00,2014-03-18 17:00,,PT_Normal,,,,,zMlpeygWQhiEq3FCTx2KXg,,,,N,0,0,,,2013-02-16 15:53,2013-02-16 15:56,admin,admin
501961,6359,124792,13662,0,N,N,N,CP_Drtn,TT_Task,DT_FixedDUR2,TK_NotStart,DUKHCONP03Z1ARRF3630,Leveling Screed for Waterproofing,8164,496,0,200,0,489.25,489.25,200,0,0,0,,,,2014-01-06 08:00,2014-02-03 17:00,,2013-10-24 08:00,2013-11-21 17:00,2013-10-24 08:00,2013-11-21 17:00,2013-10-24 08:00,2013-11-21 17:00,2014-01-06 08:00,2014-02-03 17:00,,PT_Normal,,,,,zEZb1eHTQ9S6h0zY/pszaA,,,,N,0,0,,,2013-02-16 15:53,2013-02-16 15:56,admin,admin
501962,6359,124792,13662,0,N,N,N,CP_Drtn,TT_Task,DT_FixedDUR2,TK_NotStart,DUKHCONP03Z1ARRF3635,Laying of Waterproofing Membrane,8178,480,0,200,0,1361.25,1361.25,200,0,0,0,,,,2014-01-09 08:00,2014-02-06 17:00,,2013-10-30 08:00,2013-11-27 17:00,2013-10-30 08:00,2013-11-27 17:00,2013-10-30 08:00,2013-11-27 17:00,2014-01-09 08:00,2014-02-06 17:00,,PT_Normal,,,,,2N4SEpLnTUK32Vn1mlRXjQ,,,,N,0,0,,,2013-02-16 15:53,2013-02-16 15:56,admin,admin
501963,6359,124792,13662,0,N,N,N,CP_Drtn,TT_Task,DT_FixedDUR2,TK_NotStart,DUKHCONP03Z1ARRF3640,Installation of Insulation & Protection,8178,480,0,200,0,860.75,860.75,200,0,0,0,,,,2014-01-14 08:00,2014-02-12 17:00,,2013-11-04 08:00,2013-12-02 17:00,2013-11-04 08:00,2013-12-02 17:00,2013-11-04 08:00,2013-12-02 17:00,2014-01-14 08:00,2014-02-12 17:00,,PT_Normal,,,,,dNsMmfK+T3iQM0pL4ESIcA,,,,N,0,0,,,2013-02-16 15:53,2013-02-16 15:56,admin,admin
501964,6359,124792,13662,0,N,N,N,CP_Drtn,TT_Task,DT_FixedDUR2,TK_NotStart,DUKHCONP03Z1ARRF3645,Lime Stone Chips & Paving slab Installation,8170,480,0,200,0,495,495,200,0,0,0,,,,2014-01-19 08:00,2014-02-17 17:00,,2013-11-09 08:00,2013-12-07 17:00,2013-11-09 08:00,2013-12-07 17:00,2013-11-09 08:00,2013-12-07 17:00,2014-01-19 08:00,2014-02-17 17:00,,PT_Normal,,,,,KoPuMyq/T1SIfhMJ0fsjng,,,,N,0,0,,,2013-02-16 15:53,2013-02-16 15:56,admin,admin
501965,6359,124792,13662,0,N,N,N,CP_Drtn,TT_Task,DT_FixedDUR2,TK_NotStart,DUKHCONP03Z1ARRF3655,Installation of Pumps Protection cabinets,8178,480,0,160,0,154,154,160,0,0,0,,,,2014-02-12 08:00,2014-03-06 17:00,,2013-12-02 08:00,2013-12-25 17:00,2013-12-02 08:00,2013-12-25 17:00,2013-12-02 08:00,2013-12-25 17:00,2014-02-12 08:00,2014-03-06 17:00,,PT_Normal,,,,,+50cTco7T4CLV9H1i6btGA,,,,N,0,0,,,2013-02-16 15:53,2013-02-16 15:56,admin,admin
501966,6359,124792,13662,0,N,N,N,CP_Drtn,TT_Task,DT_FixedDUR2,TK_NotStart,DUKHCONP03Z1ARRF3650,Install. of Gal. Frame & Aluminum Slat Screen,8178,480,0,200,0,588,588,200,0,0,0,,,,2014-01-27 08:00,2014-02-25 17:00,,2013-11-17 08:00,2013-12-15 17:00,2013-11-17 08:00,2013-12-15 17:00,2013-11-17 08:00,2013-12-15 17:00,2014-01-27 08:00,2014-02-25 17:00,,PT_Normal,,,,,lr9rya6iT66fCOKrSK+umg,,,,N,0,0,,,2013-02-16 15:53,2013-02-16 15:56,admin,admin
501967,6359,124792,13662,0,N,N,N,CP_Drtn,TT_Task,DT_FixedDUR2,TK_NotStart,DUKHCONP03Z1ARRF3660,Installation of Access Ladder,8178,520,520,120,0,132,132,120,0,0,0,,,,2014-03-02 08:00,2014-03-18 17:00,,2013-12-14 08:00,2013-12-31 17:00,2013-12-14 08:00,2013-12-31 17:00,2013-12-14 08:00,2013-12-31 17:00,2014-03-02 08:00,2014-03-18 17:00,,PT_Normal,,,,,2/h3lrUHTde3fo3VIezJzQ,,,,N,0,0,,,2013-02-16 15:53,2013-02-16 15:56,admin,admin
501968,6359,124793,13662,0,N,N,N,CP_Drtn,TT_Task,DT_FixedDUR2,TK_NotStart,DUKHCONP03Z1AREL3665,External Plastering,8169,424,0,200,0,6106.25,6106.25,200,0,0,0,,,,2014-01-22 08:00,2014-02-20 17:00,,2013-11-20 08:00,2013-12-19 17:00,2013-11-20 08:00,2013-12-19 17:00,2013-11-20 08:00,2013-12-19 17:00,2014-01-22 08:00,2014-02-20 17:00,,PT_Normal,,,,,AE/jlQ/6R46zjQHgP8xD2Q,,,,N,0,0,,,2013-02-16 15:53,2013-02-16 15:56,admin,admin
501969,6359,124793,13662,0,N,N,N,CP_Drtn,TT_Task,DT_FixedDUR2,TK_NotStart,DUKHCONP03Z1AREL3675,GRC Panel Works,8178,440,40,160,0,550,550,160,0,0,0,,,,2014-02-12 08:00,2014-03-06 17:00,,2013-12-08 08:00,2013-12-31 17:00,2013-12-08 08:00,2013-12-31 17:00,2013-12-08 08:00,2013-12-31 17:00,2014-02-12 08:00,2014-03-06 17:00,,PT_Normal,,,,,VlxJPq+bRNKTbBzsFTIrbg,,,,N,0,0,,,2013-02-16 15:53,2013-02-16 15:56,admin,admin
501970,6359,124793,13662,0,N,N,N,CP_Drtn,TT_Task,DT_FixedDUR2,TK_NotStart,DUKHCONP03Z1AREL3680,External Painting,8178,344,0,160,0,2970,2970,160,0,0,0,,,,2014-02-24 08:00,2014-03-18 17:00,,2014-01-04 08:00,2014-01-26 17:00,2014-01-04 08:00,2014-01-26 17:00,2014-01-04 08:00,2014-01-26 17:00,2014-02-24 08:00,2014-03-18 17:00,,PT_Normal,,,,,VrPOnGoZRGCx6zn3nRmb2g,,,,N,0,0,,,2013-02-16 15:53,2013-02-16 15:56,admin,admin
501971,6359,124794,13662,0,N,N,N,CP_Drtn,TT_Task,DT_FixedDUR2,TK_NotStart,DUKHCONP03Z1ACTC8000,Pre-Commissioning & Testing of AC Works,8178,0,0,200,0,1500,1500,200,0,0,0,,,,2014-03-19 08:00,2014-04-16 17:00,,2014-03-19 08:00,2014-04-16 17:00,2014-03-19 08:00,2014-04-16 17:00,2014-03-19 08:00,2014-04-16 17:00,2014-03-19 08:00,2014-04-16 17:00,,PT_Normal,,,,,s9U8fhxCSLyxRjrgDo/BkQ,,,,N,0,0,,,2013-02-16 15:53,2013-02-16 15:56,admin,admin
501972,6359,124794,13662,0,N,N,N,CP_Drtn,TT_Task,DT_FixedDUR2,TK_NotStart,DUKHCONP03Z1ELTC8010,Pre-Commissioning & Testing of Electrical Works,8178,0,0,200,0,3000,3000,200,0,0,0,,,,2014-03-19 08:00,2014-04-16 17:00,,2014-03-19 08:00,2014-04-16 17:00,2014-03-19 08:00,2014-04-16 17:00,2014-03-19 08:00,2014-04-16 17:00,2014-03-19 08:00,2014-04-16 17:00,,PT_Normal,,,,,lybv+joLTPC7y8Dm8TAaYg,,,,N,0,0,,,2013-02-16 15:53,2013-02-16 15:56,admin,admin
501973,6359,124794,13662,0,N,N,N,CP_Drtn,TT_Task,DT_FixedDUR2,TK_NotStart,DUKHCONP03Z1PLTC8005,Pre-Commissioning & Testing of Plumbing Works,8178,0,0,200,0,3000,3000,200,0,0,0,,,,2014-03-19 08:00,2014-04-16 17:00,,2014-03-19 08:00,2014-04-16 17:00,2014-03-19 08:00,2014-04-16 17:00,2014-03-19 08:00,2014-04-16 17:00,2014-03-19 08:00,2014-04-16 17:00,,PT_Normal,,,,,iDZ//3YvSm6W6IKXk4Fi9g,,,,N,0,0,,,2013-02-16 15:53,2013-02-16 15:56,admin,admin
501974,6359,124798,13662,0,N,N,N,CP_Drtn,TT_Task,DT_FixedDUR2,TK_NotStart,DUKHCONP03Z3ARRF3600,Block work,8168,536,0,160,0,487.5,487.5,160,0,0,0,,,,2014-03-06 08:00,2014-03-29 17:00,,2013-12-16 08:00,2014-01-08 17:00,2013-12-16 08:00,2014-01-08 17:00,2013-12-16 08:00,2014-01-08 17:00,2014-03-06 08:00,2014-03-29 17:00,,PT_Normal,,,,,LKZo8cciQL2SmGBWGGIFOQ,,,,N,0,0,,,2013-02-16 15:53,2013-02-16 15:56,admin,admin
501975,6359,124798,13662,0,N,N,N,CP_Drtn,TT_Task,DT_FixedDUR2,TK_NotStart,DUKHCONP03Z3ARRF3605,Plastering work,8169,536,0,160,0,1950,1950,160,0,0,0,,,,2014-03-15 08:00,2014-04-06 17:00,,2013-12-25 08:00,2014-01-16 17:00,2013-12-25 08:00,2014-01-16 17:00,2013-12-25 08:00,2014-01-16 17:00,2014-03-15 08:00,2014-04-06 17:00,,PT_Normal,,,,,I22UosdXRP2zTUyOXzJxhA,,,,N,0,0,,,2013-02-16 15:53,2013-02-16 15:56,admin,admin
501976,6359,124798,13662,0,N,N,N,CP_Drtn,TT_Task,DT_FixedDUR2,TK_NotStart,DUKHCONP03Z3ARRF3610,Flooring screed,8164,576,0,120,0,115.5,115.5,120,0,0,0,,,,2014-04-03 08:00,2014-04-20 17:00,,2014-01-08 08:00,2014-01-25 17:00,2014-01-08 08:00,2014-01-25 17:00,2014-01-08 08:00,2014-01-25 17:00,2014-04-03 08:00,2014-04-20 17:00,,PT_Normal,,,,,9SrXVtklTjibHJ1t+EQaxg,,,,N,0,0,,,2013-02-16 15:53,2013-02-16 15:56,admin,admin
501977,6359,124798,13662,0,N,N,N,CP_Drtn,TT_Task,DT_FixedDUR2,TK_NotStart,DUKHCONP03Z3ARRF3695,Painting,8178,576,0,160,0,504,504,160,0,0,0,,,,2014-04-12 08:00,2014-05-04 17:00,,2014-01-16 08:00,2014-02-08 17:00,2014-01-16 08:00,2014-02-08 17:00,2014-01-16 08:00,2014-02-08 17:00,2014-04-12 08:00,2014-05-04 17:00,,PT_Normal,,,,,X4Fo4uaLRrSr84FzPnhbIA,,,,N,0,0,,,2013-02-16 15:53,2013-02-16 15:56,admin,admin
501978,6359,124798,13662,0,N,N,N,CP_Drtn,TT_Task,DT_FixedDUR2,TK_NotStart,DUKHCONP03Z3ARRF3620,Epoxy Painting,8178,576,576,120,0,24.75,24.75,120,0,0,0,,,,2014-04-29 08:00,2014-05-15 17:00,,2014-02-03 08:00,2014-02-20 17:00,2014-02-03 08:00,2014-02-20 17:00,2014-02-03 08:00,2014-02-20 17:00,2014-04-29 08:00,2014-05-15 17:00,,PT_Normal,,,,,RJ5GOROLSge8tyHRNYlvtg,,,,N,0,0,,,2013-02-16 15:53,2013-02-16 15:56,admin,admin
501979,6359,124799,13662,0,N,N,N,CP_Drtn,TT_Task,DT_FixedDUR2,TK_NotStart,DUKHCONP03Z3ARGF3040,Cobble Tile flooring,8170,320,0,120,0,68.75,68.75,120,0,0,0,,,,2014-02-20 08:00,2014-03-09 17:00,,2014-01-04 08:00,2014-01-20 17:00,2014-01-04 08:00,2014-01-20 17:00,2014-01-04 08:00,2014-01-20 17:00,2014-02-20 08:00,2014-03-09 17:00,,PT_Normal,,,,,jNBGetzKTUatBe8ljgeRZQ,,,,N,0,0,,,2013-02-16 15:53,2013-02-16 15:56,admin,admin
501980,6359,124799,13662,0,N,N,N,CP_Drtn,TT_Task,DT_FixedDUR2,TK_NotStart,DUKHCONP03Z3ARGF3035,Slate Tile Flooring & Skirting,8170,336,16,120,0,45.5,45.5,120,0,0,0,,,,2014-02-16 08:00,2014-03-04 17:00,,2013-12-28 08:00,2014-01-13 17:00,2013-12-28 08:00,2014-01-13 17:00,2013-12-28 08:00,2014-01-13 17:00,2014-02-16 08:00,2014-03-04 17:00,,PT_Normal,,,,,jTY7idU6S6KABlnhIHvNhQ,,,,N,0,0,,,2013-02-16 15:53,2013-02-16 15:56,admin,admin
501981,6359,124799,13662,0,N,N,N,CP_Drtn,TT_Task,DT_FixedDUR2,TK_NotStart,DUKHCONP03Z3ARGF3050,Granite - Stair case flooring & Skirting,8171,320,0,160,0,506.25,506.25,160,0,0,0,,,,2014-03-01 08:00,2014-03-23 17:00,,2014-01-12 08:00,2014-02-03 17:00,2014-01-12 08:00,2014-02-03 17:00,2014-01-12 08:00,2014-02-03 17:00,2014-03-01 08:00,2014-03-23 17:00,,PT_Normal,,,,,5Nyj0k0AQMKsMnjmyY4rsg,,,,N,0,0,,,2013-02-16 15:53,2013-02-16 15:56,admin,admin
501982,6359,124799,13662,0,N,N,N,CP_Drtn,TT_Task,DT_FixedDUR2,TK_NotStart,DUKHCONP03Z3ARGF3045,Fixing of Suspension systems,8178,280,0,160,0,1434.75,1434.75,160,0,0,0,,,,2014-02-04 08:00,2014-02-27 17:00,,2013-12-25 08:00,2014-01-16 17:00,2013-12-25 08:00,2014-01-16 17:00,2013-12-25 08:00,2014-01-16 17:00,2014-02-04 08:00,2014-02-27 17:00,,PT_Normal,,,,,X7FeHSyTRziJQgOAgoUQ7w,,,,N,0,0,,,2013-02-16 15:53,2013-02-16 15:56,admin,admin
501983,6359,124799,13662,0,N,N,N,CP_Drtn,TT_Task,DT_FixedDUR2,TK_NotStart,DUKHCONP03Z3ARGF3055,Aluminum tile false ceiling,8178,304,24,200,0,136.5,136.5,200,0,0,0,,,,2014-02-17 08:00,2014-03-17 17:00,,2014-01-02 08:00,2014-01-30 17:00,2014-01-02 08:00,2014-01-30 17:00,2014-01-02 08:00,2014-01-30 17:00,2014-02-17 08:00,2014-03-17 17:00,,PT_Normal,,,,,1Wx7+NQTQFS+8CaWfZujcA,,,,N,0,0,,,2013-02-16 15:53,2013-02-16 15:56,admin,admin
501984,6359,124799,13662,0,N,N,N,CP_Drtn,TT_Task,DT_FixedDUR2,TK_NotStart,DUKHCONP03Z3ARGF3060,Gypsum board false ceiling,8178,280,0,200,0,1298.71,1298.71,200,0,0,0,,,,2014-02-17 08:00,2014-03-17 17:00,,2014-01-06 08:00,2014-02-03 17:00,2014-01-06 08:00,2014-02-03 17:00,2014-01-06 08:00,2014-02-03 17:00,2014-02-17 08:00,2014-03-17 17:00,,PT_Normal,,,,,Jt6DELR9Tce6cvPvoZsCXw,,,,N,0,0,,,2013-02-16 15:53,2013-02-16 15:56,admin,admin
501985,6359,124799,13662,0,N,N,N,CP_Drtn,TT_Task,DT_FixedDUR2,TK_NotStart,DUKHCONP03Z3ARGF3065,Wooden door,8178,320,0,120,0,412.5,412.5,120,0,0,0,,,,2014-03-15 08:00,2014-03-31 17:00,,2014-01-26 08:00,2014-02-12 17:00,2014-01-26 08:00,2014-02-12 17:00,2014-01-26 08:00,2014-02-12 17:00,2014-03-15 08:00,2014-03-31 17:00,,PT_Normal,,,,,0rI5eT4XSpiM82i/1X0Htw,,,,N,0,0,,,2013-02-16 15:53,2013-02-16 15:56,admin,admin
501986,6359,124799,13662,0,N,N,N,CP_Drtn,TT_Task,DT_FixedDUR2,TK_NotStart,DUKHCONP03Z3ARGF3070,Aluminum doors,8178,320,0,120,0,99,99,120,0,0,0,,,,2014-03-20 08:00,2014-04-06 17:00,,2014-02-01 08:00,2014-02-18 17:00,2014-02-01 08:00,2014-02-18 17:00,2014-02-01 08:00,2014-02-18 17:00,2014-03-20 08:00,2014-04-06 17:00,,PT_Normal,,,,,M/nFXHkXRbycQqliOmLTjQ,,,,N,0,0,,,2013-02-16 15:53,2013-02-16 15:56,admin,admin
501987,6359,124799,13662,0,N,N,N,CP_Drtn,TT_Task,DT_FixedDUR2,TK_NotStart,DUKHCONP03Z3ARGF3080,Aluminum windows,8178,400,40,160,0,220,220,160,0,0,0,,,,2014-04-08 08:00,2014-04-30 17:00,,2014-02-08 08:00,2014-03-03 17:00,2014-02-08 08:00,2014-03-03 17:00,2014-02-08 08:00,2014-03-03 17:00,2014-04-08 08:00,2014-04-30 17:00,,PT_Normal,,,,,OOiSCfchTMKX3oCvdp8VjQ,,,,N,0,0,,,2013-02-16 15:53,2013-02-16 15:56,admin,admin
501988,6359,124799,13662,0,N,N,N,CP_Drtn,TT_Task,DT_FixedDUR2,TK_NotStart,DUKHCONP03Z3ARGF3075,Carpentry & Joinery Works,8178,320,0,160,0,792,792,160,0,0,0,,,,2014-03-26 08:00,2014-04-17 17:00,,2014-02-06 08:00,2014-03-02 17:00,2014-02-06 08:00,2014-03-02 17:00,2014-02-06 08:00,2014-03-02 17:00,2014-03-26 08:00,2014-04-17 17:00,,PT_Normal,,,,,ltvvBTP3TgaFIJJTOB8tVQ,,,,N,0,0,,,2013-02-16 15:53,2013-02-16 15:56,admin,admin
501989,6359,124799,13662,0,N,N,N,CP_Drtn,TT_Task,DT_FixedDUR2,TK_NotStart,DUKHCONP03Z3ARGF3090,Installation of Granite Counter Top,8171,320,0,120,0,132,132,120,0,0,0,,,,2014-04-08 08:00,2014-04-24 17:00,,2014-02-20 08:00,2014-03-09 17:00,2014-02-20 08:00,2014-03-09 17:00,2014-02-20 08:00,2014-03-09 17:00,2014-04-08 08:00,2014-04-24 17:00,,PT_Normal,,,,,OoMuC3i7QpGVlJLlzx53JQ,,,,N,0,0,,,2013-02-16 15:53,2013-02-16 15:56,admin,admin
501990,6359,124799,13662,0,N,N,N,CP_Drtn,TT_Task,DT_FixedDUR2,TK_NotStart,DUKHCONP03Z3ARGF3085,S.S.Balustrade,8178,360,40,160,0,47.25,47.25,160,0,0,0,,,,2014-04-09 08:00,2014-05-01 17:00,,2014-02-16 08:00,2014-03-10 17:00,2014-02-16 08:00,2014-03-10 17:00,2014-02-16 08:00,2014-03-10 17:00,2014-04-09 08:00,2014-05-01 17:00,,PT_Normal,,,,,qq0adifVSSq5MF35HaBCRQ,,,,N,0,0,,,2013-02-16 15:53,2013-02-16 15:56,admin,admin
501991,6359,124799,13662,0,N,N,N,CP_Drtn,TT_Task,DT_FixedDUR2,TK_NotStart,DUKHCONP03Z3ARGF3095,Final Painting,8178,320,0,200,0,4136.55,4136.55,200,0,0,0,,,,2014-04-17 08:00,2014-05-15 17:00,,2014-03-02 08:00,2014-03-30 17:00,2014-03-02 08:00,2014-03-30 17:00,2014-03-02 08:00,2014-03-30 17:00,2014-04-17 08:00,2014-05-15 17:00,,PT_Normal,,,,,q5aL8wKfTgKBB9Ga9phyZA,,,,N,0,0,,,2013-02-16 15:53,2013-02-16 15:56,admin,admin
501992,6359,124799,13662,0,N,N,N,CP_Drtn,TT_Task,DT_FixedDUR2,TK_NotStart,DUKHCONP03Z3ARGF3000,Block work,8168,280,0,200,0,7112.5,7112.5,200,0,0,0,,,,2013-11-26 08:00,2013-12-25 17:00,,2013-10-14 08:00,2013-11-13 17:00,2013-10-14 08:00,2013-11-13 17:00,2013-10-14 08:00,2013-11-13 17:00,2013-11-26 08:00,2013-12-25 17:00,,PT_Normal,,,,,3AEUDno5R1mCEWGAQd7wqQ,,,,N,0,0,,,2013-02-16 15:53,2013-02-16 15:56,admin,admin
501993,6359,124799,13662,0,N,N,N,CP_Drtn,TT_Task,DT_FixedDUR2,TK_NotStart,DUKHCONP03Z3ARGF3005,Plastering work,8169,280,0,200,0,6268.75,6268.75,200,0,0,0,,,,2013-12-19 08:00,2014-01-16 17:00,,2013-11-07 08:00,2013-12-05 17:00,2013-11-07 08:00,2013-12-05 17:00,2013-11-07 08:00,2013-12-05 17:00,2013-12-19 08:00,2014-01-16 17:00,,PT_Normal,,,,,XUleVh1hQUm/t9prdUGKzg,,,,N,0,0,,,2013-02-16 15:53,2013-02-16 15:56,admin,admin
501994,6359,124799,13662,0,N,N,N,CP_Drtn,TT_Task,DT_FixedDUR2,TK_NotStart,DUKHCONP03Z3ARGF3010,Flooring screed,8164,344,64,168,0,1234.75,1234.75,168,0,0,0,,,,2014-01-06 08:00,2014-01-29 17:00,,2013-11-16 08:00,2013-12-09 17:00,2013-11-16 08:00,2013-12-09 17:00,2013-11-16 08:00,2013-12-09 17:00,2014-01-06 08:00,2014-01-29 17:00,,PT_Normal,,,,,WhA36q/yQNqyv3D41WdCMg,,,,N,0,0,,,2013-02-16 15:53,2013-02-16 15:56,admin,admin
501995,6359,124799,13662,0,N,N,N,CP_Drtn,TT_Task,DT_FixedDUR2,TK_NotStart,DUKHCONP03Z3ARGF3015,Wet area waterproofing & Protection Screed,8178,280,0,120,0,582,582,120,0,0,0,,,,2014-01-06 08:00,2014-01-22 17:00,,2013-11-25 08:00,2013-12-11 17:00,2013-11-25 08:00,2013-12-11 17:00,2013-11-25 08:00,2013-12-11 17:00,2014-01-06 08:00,2014-01-22 17:00,,PT_Normal,,,,,FqC9LPZVTWqA239hVdAsCA,,,,N,0,0,,,2013-02-16 15:53,2013-02-16 15:56,admin,admin
501996,6359,124799,13662,0,N,N,N,CP_Drtn,TT_Task,DT_FixedDUR2,TK_NotStart,DUKHCONP03Z3ARGF3030,Paint First coat,8178,344,0,200,0,4136.55,4136.55,200,0,0,0,,,,2014-01-21 08:00,2014-02-19 17:00,,2013-12-01 08:00,2013-12-30 17:00,2013-12-01 08:00,2013-12-30 17:00,2013-12-01 08:00,2013-12-30 17:00,2014-01-21 08:00,2014-02-19 17:00,,PT_Normal,,,,,TcKRCpepRReQMej61zwVag,,,,N,0,0,,,2013-02-16 15:53,2013-02-16 15:56,admin,admin
501997,6359,124799,13662,0,N,N,N,CP_Drtn,TT_Task,DT_FixedDUR2,TK_NotStart,DUKHCONP03Z3ARGF3020,Ceramic Wall Tiling,8170,280,0,200,0,2603.5,2603.5,200,0,0,0,,,,2014-01-12 08:00,2014-02-09 17:00,,2013-12-01 08:00,2013-12-30 17:00,2013-12-01 08:00,2013-12-30 17:00,2013-12-01 08:00,2013-12-30 17:00,2014-01-12 08:00,2014-02-09 17:00,,PT_Normal,,,,,G9lFdQBbSOyn6GDMm5dKhA,,,,N,0,0,,,2013-02-16 15:53,2013-02-16 15:56,admin,admin
501998,6359,124799,13662,0,N,N,N,CP_Drtn,TT_Task,DT_FixedDUR2,TK_NotStart,DUKHCONP03Z3ARGF3025,Porcelain Tile flooring,8170,280,0,200,0,1787.5,1787.5,200,0,0,0,,,,2014-01-18 08:00,2014-02-16 17:00,,2013-12-07 08:00,2014-01-05 17:00,2013-12-07 08:00,2014-01-05 17:00,2013-12-07 08:00,2014-01-05 17:00,2014-01-18 08:00,2014-02-16 17:00,,PT_Normal,,,,,IYUTXsm9TviSjN1kThskXA,,,,N,0,0,,,2013-02-16 15:53,2013-02-16 15:56,admin,admin
501999,6359,124800,13662,0,N,N,N,CP_Drtn,TT_Task,DT_FixedDUR2,TK_NotStart,DUKHCONP03Z3ARFF3390,Installation of Granite Counter Top,8171,0,0,160,0,132,132,160,0,0,0,,,,2014-04-08 08:00,2014-04-30 17:00,,2014-04-08 08:00,2014-04-30 17:00,2014-04-08 08:00,2014-04-30 17:00,2014-04-08 08:00,2014-04-30 17:00,2014-04-08 08:00,2014-04-30 17:00,,PT_Normal,,,,,uAGnwv57TQm2dT5i31whjw,,,,N,0,0,,,2013-02-16 15:53,2013-02-16 15:56,admin,admin
502000,6359,124800,13662,0,N,N,N,CP_Drtn,TT_Task,DT_FixedDUR2,TK_NotStart,DUKHCONP03Z3ARFF3385,Handrail &  Balustrade,8178,0,0,160,0,275,275,160,0,0,0,,,,2014-04-06 08:00,2014-04-28 17:00,,2014-04-06 08:00,2014-04-28 17:00,2014-04-06 08:00,2014-04-28 17:00,2014-04-06 08:00,2014-04-28 17:00,2014-04-06 08:00,2014-04-28 17:00,,PT_Normal,,,,,JogBFQXWSj+480FwNHJ/Rw,,,,N,0,0,,,2013-02-16 15:53,2013-02-16 15:56,admin,admin
502001,6359,124800,13662,0,N,N,N,CP_Drtn,TT_Task,DT_FixedDUR2,TK_NotStart,DUKHCONP03Z3ARFF3395,Final Painting,8178,0,0,200,0,3644.75,3644.75,200,0,0,0,,,,2014-04-17 08:00,2014-05-15 17:00,,2014-04-17 08:00,2014-05-15 17:00,2014-04-17 08:00,2014-05-15 17:00,2014-04-17 08:00,2014-05-15 17:00,2014-04-17 08:00,2014-05-15 17:00,,PT_Normal,,,,,kOxWJt93Q3CLSSODvABE5g,,,,N,0,0,,,2013-02-16 15:53,2013-02-16 15:56,admin,admin
502002,6359,124800,13662,0,N,N,N,CP_Drtn,TT_Task,DT_FixedDUR2,TK_NotStart,DUKHCONP03Z3ARFF3300,Block work,8168,0,0,200,0,5553.5,5553.5,200,0,0,0,,,,2013-11-27 08:00,2013-12-26 17:00,,2013-11-27 08:00,2013-12-26 17:00,2013-11-27 08:00,2013-12-26 17:00,2013-11-27 08:00,2013-12-26 17:00,2013-11-27 08:00,2013-12-26 17:00,,PT_Normal,,,,,VTOAkEYAR8iNPf3sA5aXpg,,,,N,0,0,,,2013-02-16 15:53,2013-02-16 15:56,admin,admin
502003,6359,124800,13662,0,N,N,N,CP_Drtn,TT_Task,DT_FixedDUR2,TK_NotStart,DUKHCONP03Z3ARFF3305,Plastering work,8169,0,0,200,0,5516,5516,200,0,0,0,,,,2013-12-23 08:00,2014-01-20 17:00,,2013-12-23 08:00,2014-01-20 17:00,2013-12-23 08:00,2014-01-20 17:00,2013-12-23 08:00,2014-01-20 17:00,2013-12-23 08:00,2014-01-20 17:00,,PT_Normal,,,,,Q5hNMxWBQn6gtHiwE3FWXw,,,,N,0,0,,,2013-02-16 15:53,2013-02-16 15:56,admin,admin
502004,6359,124800,13662,0,N,N,N,CP_Drtn,TT_Task,DT_FixedDUR2,TK_NotStart,DUKHCONP03Z3ARFF3310,Flooring screed,8164,120,120,168,0,1031.25,1031.25,168,0,0,0,,,,2014-01-18 08:00,2014-02-10 17:00,,2013-12-31 08:00,2014-01-23 17:00,2013-12-31 08:00,2014-01-23 17:00,2013-12-31 08:00,2014-01-23 17:00,2014-01-18 08:00,2014-02-10 17:00,,PT_Normal,,,,,qeRKTohCSdmY2dClm9yJpg,,,,N,0,0,,,2013-02-16 15:53,2013-02-16 15:56,admin,admin
502005,6359,124800,13662,0,N,N,N,CP_Drtn,TT_Task,DT_FixedDUR2,TK_NotStart,DUKHCONP03Z3ARFF3315,Wet area waterproofing,8178,0,0,120,0,582,582,120,0,0,0,,,,2014-01-13 08:00,2014-01-29 17:00,,2014-01-13 08:00,2014-01-29 17:00,2014-01-13 08:00,2014-01-29 17:00,2014-01-13 08:00,2014-01-29 17:00,2014-01-13 08:00,2014-01-29 17:00,,PT_Normal,,,,,BI2amrQTSTaU4WRm7X8s6w,,,,N,0,0,,,2013-02-16 15:53,2013-02-16 15:56,admin,admin
502006,6359,124800,13662,0,N,N,N,CP_Drtn,TT_Task,DT_FixedDUR2,TK_NotStart,DUKHCONP03Z3ARFF3330,Paint First coat,8178,144,144,200,0,3644.75,3644.75,200,0,0,0,,,,2014-01-29 08:00,2014-02-27 17:00,,2014-01-08 08:00,2014-02-05 17:00,2014-01-08 08:00,2014-02-05 17:00,2014-01-08 08:00,2014-02-05 17:00,2014-01-29 08:00,2014-02-27 17:00,,PT_Normal,,,,,8PbR2ldSQdG6QR1BflBqjA,,,,N,0,0,,,2013-02-16 15:53,2013-02-16 15:56,admin,admin
502007,6359,124800,13662,0,N,N,N,CP_Drtn,TT_Task,DT_FixedDUR2,TK_NotStart,DUKHCONP03Z3ARFF3320,Ceramic Wall Tiling,8170,0,0,200,0,2603.5,2603.5,200,0,0,0,,,,2014-01-22 08:00,2014-02-20 17:00,,2014-01-22 08:00,2014-02-20 17:00,2014-01-22 08:00,2014-02-20 17:00,2014-01-22 08:00,2014-02-20 17:00,2014-01-22 08:00,2014-02-20 17:00,,PT_Normal,,,,,NeuvUSnWSH23N8bj7Cg1GQ,,,,N,0,0,,,2013-02-16 15:53,2013-02-16 15:56,admin,admin
502008,6359,124800,13662,0,N,N,N,CP_Drtn,TT_Task,DT_FixedDUR2,TK_NotStart,DUKHCONP03Z3ARFF3325,Porcelain Tile flooring,8170,0,0,200,0,1787.5,1787.5,200,0,0,0,,,,2014-01-29 08:00,2014-02-27 17:00,,2014-01-29 08:00,2014-02-27 17:00,2014-01-29 08:00,2014-02-27 17:00,2014-01-29 08:00,2014-02-27 17:00,2014-01-29 08:00,2014-02-27 17:00,,PT_Normal,,,,,C4dPY6nISmCTExVvW8alMA,,,,N,0,0,,,2013-02-16 15:53,2013-02-16 15:56,admin,admin
502009,6359,124800,13662,0,N,N,N,CP_Drtn,TT_Task,DT_FixedDUR2,TK_NotStart,DUKHCONP03Z3ARFF3335,Slate Tile Flooring & Skirting,8178,80,80,120,0,1350,1350,120,0,0,0,,,,2014-03-01 08:00,2014-03-17 17:00,,2014-02-17 08:00,2014-03-05 17:00,2014-02-17 08:00,2014-03-05 17:00,2014-02-17 08:00,2014-03-05 17:00,2014-03-01 08:00,2014-03-17 17:00,,PT_Normal,,,,,arscE7haRtC6KLvWDpwbQg,,,,N,0,0,,,2013-02-16 15:53,2013-02-16 15:56,admin,admin
502010,6359,124800,13662,0,N,N,N,CP_Drtn,TT_Task,DT_FixedDUR2,TK_NotStart,DUKHCONP03Z3ARFF3350,Granite - Stair case flooring & Skirting,8178,16,16,160,0,150,150,160,0,0,0,,,,2014-02-23 08:00,2014-03-17 17:00,,2014-02-20 08:00,2014-03-15 17:00,2014-02-20 08:00,2014-03-15 17:00,2014-02-20 08:00,2014-03-15 17:00,2014-02-23 08:00,2014-03-17 17:00,,PT_Normal,,,,,7LugnVqGRDCGpjLaUBaB9Q,,,,N,0,0,,,2013-02-16 15:53,2013-02-16 15:56,admin,admin
502011,6359,124800,13662,0,N,N,N,CP_Drtn,TT_Task,DT_FixedDUR2,TK_NotStart,DUKHCONP03Z3ARFF3345,Fixing of Suspension systems,8178,0,0,160,0,1434.75,1434.75,160,0,0,0,,,,2014-02-13 08:00,2014-03-08 17:00,,2014-02-13 08:00,2014-03-08 17:00,2014-02-13 08:00,2014-03-08 17:00,2014-02-13 08:00,2014-03-08 17:00,2014-02-13 08:00,2014-03-08 17:00,,PT_Normal,,,,,H2sswN6kRVKFJxvzTsMytw,,,,N,0,0,,,2013-02-16 15:53,2013-02-16 15:56,admin,admin
502012,6359,124800,13662,0,N,N,N,CP_Drtn,TT_Task,DT_FixedDUR2,TK_NotStart,DUKHCONP03Z3ARFF3355,Aluminum tile false ceiling,8178,16,0,160,0,256.25,256.25,160,0,0,0,,,,2014-02-27 08:00,2014-03-22 17:00,,2014-02-25 08:00,2014-03-19 17:00,2014-02-25 08:00,2014-03-19 17:00,2014-02-25 08:00,2014-03-19 17:00,2014-02-27 08:00,2014-03-22 17:00,,PT_Normal,,,,,5k5yHFi/QjaFJ0NGFeVkCw,,,,N,0,0,,,2013-02-16 15:53,2013-02-16 15:56,admin,admin
502013,6359,124800,13662,0,N,N,N,CP_Drtn,TT_Task,DT_FixedDUR2,TK_NotStart,DUKHCONP03Z3ARFF3360,Gypsum board false ceiling,8178,0,0,200,0,1298.71,1298.71,200,0,0,0,,,,2014-02-22 08:00,2014-03-22 17:00,,2014-02-22 08:00,2014-03-22 17:00,2014-02-22 08:00,2014-03-22 17:00,2014-02-22 08:00,2014-03-22 17:00,2014-02-22 08:00,2014-03-22 17:00,,PT_Normal,,,,,p31rSGqHSVm6jnTJBc1q0A,,,,N,0,0,,,2013-02-16 15:53,2013-02-16 15:56,admin,admin
502014,6359,124800,13662,0,N,N,N,CP_Drtn,TT_Task,DT_FixedDUR2,TK_NotStart,DUKHCONP03Z3ARFF3365,Wooden door,8178,0,0,120,0,330,330,120,0,0,0,,,,2014-03-09 08:00,2014-03-25 17:00,,2014-03-09 08:00,2014-03-25 17:00,2014-03-09 08:00,2014-03-25 17:00,2014-03-09 08:00,2014-03-25 17:00,2014-03-09 08:00,2014-03-25 17:00,,PT_Normal,,,,,sube1AfGSjOpp7ml90EQ6Q,,,,N,0,0,,,2013-02-16 15:53,2013-02-16 15:56,admin,admin
502015,6359,124800,13662,0,N,N,N,CP_Drtn,TT_Task,DT_FixedDUR2,TK_NotStart,DUKHCONP03Z3ARFF3370,Aluminum Door,8178,0,0,160,0,99,99,160,0,0,0,,,,2014-03-17 08:00,2014-04-08 17:00,,2014-03-17 08:00,2014-04-08 17:00,2014-03-17 08:00,2014-04-08 17:00,2014-03-17 08:00,2014-04-08 17:00,2014-03-17 08:00,2014-04-08 17:00,,PT_Normal,,,,,Cgs6IL7VRSGIZ7PZk42ArQ,,,,N,0,0,,,2013-02-16 15:53,2013-02-16 15:56,admin,admin
502016,6359,124800,13662,0,N,N,N,CP_Drtn,TT_Task,DT_FixedDUR2,TK_NotStart,DUKHCONP03Z3ARFF3380,Aluminum windows,8178,88,88,160,0,264,264,160,0,0,0,,,,2014-04-06 08:00,2014-04-28 17:00,,2014-03-24 08:00,2014-04-15 17:00,2014-03-24 08:00,2014-04-15 17:00,2014-03-24 08:00,2014-04-15 17:00,2014-04-06 08:00,2014-04-28 17:00,,PT_Normal,,,,,an0Kst8nR1KSZXPwYtPLpQ,,,,N,0,0,,,2013-02-16 15:53,2013-02-16 15:56,admin,admin
502017,6359,124800,13662,0,N,N,N,CP_Drtn,TT_Task,DT_FixedDUR2,TK_NotStart,DUKHCONP03Z3ARFF3375,Carpentry & Joinery Works,8178,0,0,200,0,300,300,200,0,0,0,,,,2014-03-25 08:00,2014-04-22 17:00,,2014-03-25 08:00,2014-04-22 17:00,2014-03-25 08:00,2014-04-22 17:00,2014-03-25 08:00,2014-04-22 17:00,2014-03-25 08:00,2014-04-22 17:00,,PT_Normal,,,,,qhwFmXN4SwytxTZoi6howQ,,,,N,0,0,,,2013-02-16 15:53,2013-02-16 15:56,admin,admin
502018,6359,124802,13662,0,N,N,N,CP_Drtn,TT_Task,DT_FixedDUR2,TK_NotStart,DUKHCONP03Z3AREL3665,External Plastering,8169,424,0,200,0,9159.75,9159.75,200,0,0,0,,,,2014-03-23 08:00,2014-04-20 17:00,,2014-01-19 08:00,2014-02-17 17:00,2014-01-19 08:00,2014-02-17 17:00,2014-01-19 08:00,2014-02-17 17:00,2014-03-23 08:00,2014-04-20 17:00,,PT_Normal,,,,,FMjr4+MUS9abIpdgv+D+fw,,,,N,0,0,,,2013-02-16 15:53,2013-02-16 15:56,admin,admin
502019,6359,124802,13662,0,N,N,N,CP_Drtn,TT_Task,DT_FixedDUR2,TK_NotStart,DUKHCONP03Z3AREL3675,GRC Panel Works,8178,440,16,160,0,550,550,160,0,0,0,,,,2014-04-12 08:00,2014-05-04 17:00,,2014-02-05 08:00,2014-03-01 17:00,2014-02-05 08:00,2014-03-01 17:00,2014-02-05 08:00,2014-03-01 17:00,2014-04-12 08:00,2014-05-04 17:00,,PT_Normal,,,,,diPj2P7OQ/aqBsz2HJmE5g,,,,N,0,0,,,2013-02-16 15:53,2013-02-16 15:56,admin,admin
502020,6359,124802,13662,0,N,N,N,CP_Drtn,TT_Task,DT_FixedDUR2,TK_NotStart,DUKHCONP03Z3AREL3680,External Painting,8178,424,24,160,0,3234,3234,160,0,0,0,,,,2014-04-23 08:00,2014-05-15 17:00,,2014-02-20 08:00,2014-03-15 17:00,2014-02-20 08:00,2014-03-15 17:00,2014-02-20 08:00,2014-03-15 17:00,2014-04-23 08:00,2014-05-15 17:00,,PT_Normal,,,,,2cTCVg8ZTgiNOKvS7LytNg,,,,N,0,0,,,2013-02-16 15:53,2013-02-16 15:56,admin,admin
502021,6359,124803,13662,0,N,N,N,CP_Drtn,TT_Task,DT_FixedDUR2,TK_NotStart,DUKHCONP03Z3ARRF3630,Leveling Screed for Waterproofing,8164,496,0,200,0,734.75,734.75,200,0,0,0,,,,2014-03-06 08:00,2014-04-03 17:00,,2013-12-23 08:00,2014-01-20 17:00,2013-12-23 08:00,2014-01-20 17:00,2013-12-23 08:00,2014-01-20 17:00,2014-03-06 08:00,2014-04-03 17:00,,PT_Normal,,,,,VWNEb44jTnuN4uACefX1kA,,,,N,0,0,,,2013-02-16 15:53,2013-02-16 15:56,admin,admin
502022,6359,124803,13662,0,N,N,N,CP_Drtn,TT_Task,DT_FixedDUR2,TK_NotStart,DUKHCONP03Z3ARRF3635,Laying of Waterproofing Membrane,8178,496,0,200,0,2042.25,2042.25,200,0,0,0,,,,2014-03-10 08:00,2014-04-07 17:00,,2013-12-26 08:00,2014-01-23 17:00,2013-12-26 08:00,2014-01-23 17:00,2013-12-26 08:00,2014-01-23 17:00,2014-03-10 08:00,2014-04-07 17:00,,PT_Normal,,,,,1nFz+De5Q+aYnyyVjztOmQ,,,,N,0,0,,,2013-02-16 15:53,2013-02-16 15:56,admin,admin
502023,6359,124803,13662,0,N,N,N,CP_Drtn,TT_Task,DT_FixedDUR2,TK_NotStart,DUKHCONP03Z3ARRF3640,Installation of Insulation & Protection,8178,496,0,200,0,1291.5,1291.5,200,0,0,0,,,,2014-03-15 08:00,2014-04-12 17:00,,2013-12-31 08:00,2014-01-28 17:00,2013-12-31 08:00,2014-01-28 17:00,2013-12-31 08:00,2014-01-28 17:00,2014-03-15 08:00,2014-04-12 17:00,,PT_Normal,,,,,IYR5xDfLTb+bxWOtkFdDNQ,,,,N,0,0,,,2013-02-16 15:53,2013-02-16 15:56,admin,admin
502024,6359,124803,13662,0,N,N,N,CP_Drtn,TT_Task,DT_FixedDUR2,TK_NotStart,DUKHCONP03Z3ARRF3645,Lime Stone Chips & Paving slab Installation,8170,496,0,200,0,741.5,741.5,200,0,0,0,,,,2014-03-19 08:00,2014-04-16 17:00,,2014-01-05 08:00,2014-02-02 17:00,2014-01-05 08:00,2014-02-02 17:00,2014-01-05 08:00,2014-02-02 17:00,2014-03-19 08:00,2014-04-16 17:00,,PT_Normal,,,,,0+9/3mT0RYWiGdxcK8RbtA,,,,N,0,0,,,2013-02-16 15:53,2013-02-16 15:56,admin,admin
502025,6359,124803,13662,0,N,N,N,CP_Drtn,TT_Task,DT_FixedDUR2,TK_NotStart,DUKHCONP03Z3ARRF3655,Installation of Pumps Protection cabinets,8178,496,0,160,0,231,231,160,0,0,0,,,,2014-04-12 08:00,2014-05-04 17:00,,2014-01-28 08:00,2014-02-20 17:00,2014-01-28 08:00,2014-02-20 17:00,2014-01-28 08:00,2014-02-20 17:00,2014-04-12 08:00,2014-05-04 17:00,,PT_Normal,,,,,w68FUA2pRZC4ymG0YjPt9g,,,,N,0,0,,,2013-02-16 15:53,2013-02-16 15:56,admin,admin
502026,6359,124803,13662,0,N,N,N,CP_Drtn,TT_Task,DT_FixedDUR2,TK_NotStart,DUKHCONP03Z3ARRF3650,Install. of Gal. Frame & Aluminum Slat Screen,8178,496,0,200,0,882,882,200,0,0,0,,,,2014-03-27 08:00,2014-04-24 17:00,,2014-01-13 08:00,2014-02-10 17:00,2014-01-13 08:00,2014-02-10 17:00,2014-01-13 08:00,2014-02-10 17:00,2014-03-27 08:00,2014-04-24 17:00,,PT_Normal,,,,,V02un8gySYu298cXerDDPw,,,,N,0,0,,,2013-02-16 15:53,2013-02-16 15:56,admin,admin
502027,6359,124803,13662,0,N,N,N,CP_Drtn,TT_Task,DT_FixedDUR2,TK_NotStart,DUKHCONP03Z3ARRF3660,Installation of Access Ladder,8178,536,536,120,0,198,198,120,0,0,0,,,,2014-04-29 08:00,2014-05-15 17:00,,2014-02-09 08:00,2014-02-26 17:00,2014-02-09 08:00,2014-02-26 17:00,2014-02-09 08:00,2014-02-26 17:00,2014-04-29 08:00,2014-05-15 17:00,,PT_Normal,,,,,StkchXZnRt+F5v/E8T3+zw,,,,N,0,0,,,2013-02-16 15:53,2013-02-16 15:56,admin,admin
502028,6359,124804,13662,0,N,N,N,CP_Drtn,TT_Task,DT_FixedDUR2,TK_NotStart,DUKHCONP03Z3ACTC8000,Pre-Commissioning & Testing of AC Works,8178,0,0,200,0,1500,1500,200,0,0,0,,,,2014-05-17 08:00,2014-06-14 17:00,,2014-05-17 08:00,2014-06-14 17:00,2014-05-17 08:00,2014-06-14 17:00,2014-05-17 08:00,2014-06-14 17:00,2014-05-17 08:00,2014-06-14 17:00,,PT_Normal,,,,,edOuXHX1SiSsKO82K3NV+A,,,,N,0,0,,,2013-02-16 15:53,2013-02-16 15:56,admin,admin
502029,6359,124804,13662,0,N,N,N,CP_Drtn,TT_Task,DT_FixedDUR2,TK_NotStart,DUKHCONP03Z3ELTC8010,Pre-Commissioning & Testing of Electrical Works,8178,0,0,200,0,3000,3000,200,0,0,0,,,,2014-05-17 08:00,2014-06-14 17:00,,2014-05-17 08:00,2014-06-14 17:00,2014-05-17 08:00,2014-06-14 17:00,2014-05-17 08:00,2014-06-14 17:00,2014-05-17 08:00,2014-06-14 17:00,,PT_Normal,,,,,y94rE3qVR3mVXE6Z8MDgYg,,,,N,0,0,,,2013-02-16 15:53,2013-02-16 15:56,admin,admin
502030,6359,124804,13662,0,N,N,N,CP_Drtn,TT_Task,DT_FixedDUR2,TK_NotStart,DUKHCONP03Z3PLTC8005,Pre-Commissioning & Testing of Plumbing Works,8178,0,0,200,0,3000,3000,200,0,0,0,,,,2014-05-17 08:00,2014-06-14 17:00,,2014-05-17 08:00,2014-06-14 17:00,2014-05-17 08:00,2014-06-14 17:00,2014-05-17 08:00,2014-06-14 17:00,2014-05-17 08:00,2014-06-14 17:00,,PT_Normal,,,,,VN94tUdQSwu6OH13nW/52g,,,,N,0,0,,,2013-02-16 15:53,2013-02-16 15:56,admin,admin
502031,6359,124807,13662,0,N,N,N,CP_Drtn,TT_Task,DT_FixedDUR2,TK_NotStart,DUKHCONP03Z3STFF2020,Column-Rebar & Formwork,8165,0,0,200,0,1615.25,1615.25,200,0,0,0,,,,2013-09-15 08:00,2013-10-13 17:00,,2013-09-15 08:00,2013-10-13 17:00,2013-09-15 08:00,2013-10-13 17:00,2013-09-15 08:00,2013-10-13 17:00,2013-09-15 08:00,2013-10-13 17:00,,PT_Normal,,,,,oMbV5HyJS8qTYOJ8UkjHfg,,,,N,0,0,,,2013-02-16 15:53,2013-02-16 15:56,admin,admin
502032,6359,124807,13662,0,N,N,N,CP_Drtn,TT_Task,DT_FixedDUR2,TK_NotStart,DUKHCONP03Z3STFF2025,Column-Concrete,8167,0,0,192,0,87.5,87.5,192,0,0,0,,,,2013-09-25 08:00,2013-10-24 17:00,,2013-09-25 08:00,2013-10-24 17:00,2013-09-25 08:00,2013-10-24 17:00,2013-09-25 08:00,2013-10-24 17:00,2013-09-25 08:00,2013-10-24 17:00,,PT_Normal,,,,,ok5rY/JGRdSYUqKEj4YwUQ,,,,N,0,0,,,2013-02-16 15:53,2013-02-16 15:56,admin,admin
502033,6359,124807,13662,0,N,N,N,CP_Drtn,TT_Task,DT_FixedDUR2,TK_NotStart,DUKHCONP03Z3STFF2030,"Beam, Stairs ,Slab-Rebar & Formwork",8165,0,0,200,0,10081.75,10081.75,200,0,0,0,,,,2013-10-10 08:00,2013-11-10 17:00,,2013-10-10 08:00,2013-11-10 17:00,2013-10-10 08:00,2013-11-10 17:00,2013-10-10 08:00,2013-11-10 17:00,2013-10-10 08:00,2013-11-10 17:00,,PT_Normal,,,,,kOne+9T+TcSOeMc/qSHFPA,,,,N,0,0,,,2013-02-16 15:53,2013-02-16 15:56,admin,admin
502034,6359,124807,13662,0,N,N,N,CP_Drtn,TT_Task,DT_FixedDUR2,TK_NotStart,DUKHCONP03Z3STFF2035,"Beam, Stairs ,Slab-Concrete",8167,0,0,120,0,731.5,731.5,120,0,0,0,,,,2013-11-03 08:00,2013-11-19 17:00,,2013-11-03 08:00,2013-11-19 17:00,2013-11-03 08:00,2013-11-19 17:00,2013-11-03 08:00,2013-11-19 17:00,2013-11-03 08:00,2013-11-19 17:00,,PT_Normal,,,,,rYCcBjIVTBKgv0X2ZH9ZOQ,,,,N,0,0,,,2013-02-16 15:53,2013-02-16 15:56,admin,admin
502035,6359,124808,13662,0,N,N,N,CP_Drtn,TT_Task,DT_FixedDUR2,TK_NotStart,DUKHCONP03Z3STGF2000,Column-Rebar & Formwork,8165,0,0,200,0,1688.75,1688.75,200,0,0,0,,,,2013-07-31 08:00,2013-09-01 17:00,,2013-07-31 08:00,2013-09-01 17:00,2013-07-31 08:00,2013-09-01 17:00,2013-07-31 08:00,2013-09-01 17:00,2013-07-31 08:00,2013-09-01 17:00,,PT_Normal,,,,,9Hek/NY1QNe+rY1QP7FzPA,,,,N,0,0,,,2013-02-16 15:53,2013-02-16 15:56,admin,admin
502036,6359,124808,13662,0,N,N,N,CP_Drtn,TT_Task,DT_FixedDUR2,TK_NotStart,DUKHCONP03Z3STGF2005,Column-Concrete,8167,0,0,192,0,101.5,101.5,192,0,0,0,,,,2013-08-13 08:00,2013-09-09 17:00,,2013-08-13 08:00,2013-09-09 17:00,2013-08-13 08:00,2013-09-09 17:00,2013-08-13 08:00,2013-09-09 17:00,2013-08-13 08:00,2013-09-09 17:00,,PT_Normal,,,,,K8M0FcU9SB22gHCs/hJccw,,,,N,0,0,,,2013-02-16 15:53,2013-02-16 15:56,admin,admin
502037,6359,124808,13662,0,N,N,N,CP_Drtn,TT_Task,DT_FixedDUR2,TK_NotStart,DUKHCONP03Z3STGF2010,"Beam, Stairs ,Slab-Rebar & Formwork",8165,0,0,200,0,10592.75,10592.75,200,0,0,0,,,,2013-08-28 08:00,2013-09-25 17:00,,2013-08-28 08:00,2013-09-25 17:00,2013-08-28 08:00,2013-09-25 17:00,2013-08-28 08:00,2013-09-25 17:00,2013-08-28 08:00,2013-09-25 17:00,,PT_Normal,,,,,fi6bCIiaSQCHbQLj2juYXg,,,,N,0,0,,,2013-02-16 15:53,2013-02-16 15:56,admin,admin
502038,6359,124808,13662,0,N,N,N,CP_Drtn,TT_Task,DT_FixedDUR2,TK_NotStart,DUKHCONP03Z3STGF2015,"Beam, Stairs ,Slab-Concrete",8167,0,0,120,0,868,868,120,0,0,0,,,,2013-09-12 08:00,2013-09-29 17:00,,2013-09-12 08:00,2013-09-29 17:00,2013-09-12 08:00,2013-09-29 17:00,2013-09-12 08:00,2013-09-29 17:00,2013-09-12 08:00,2013-09-29 17:00,,PT_Normal,,,,,fbPR2oBkQlKHU70HK8/g8w,,,,N,0,0,,,2013-02-16 15:53,2013-02-16 15:56,admin,admin
502039,6359,124809,13662,0,N,N,N,CP_Drtn,TT_Task,DT_FixedDUR2,TK_NotStart,DUKHCONP03Z3STRF2040,Column-Rebar & Formwork,8165,232,0,144,0,549.5,549.5,144,0,0,0,,,,2013-12-09 08:00,2013-12-30 17:00,,2013-11-05 08:00,2013-11-25 17:00,2013-11-05 08:00,2013-11-25 17:00,2013-11-05 08:00,2013-11-25 17:00,2013-12-09 08:00,2013-12-30 17:00,,PT_Normal,,,,,vYsMwSpqTru2HQUlUsCeOA,,,,N,0,0,,,2013-02-16 15:53,2013-02-16 15:56,admin,admin
502040,6359,124809,13662,0,N,N,N,CP_Drtn,TT_Task,DT_FixedDUR2,TK_NotStart,DUKHCONP03Z3STRF2045,Column-Concrete,8167,312,0,136,0,21,21,136,0,0,0,,,,2013-12-25 08:00,2014-01-13 17:00,,2013-11-09 08:00,2013-11-27 17:00,2013-11-09 08:00,2013-11-27 17:00,2013-11-09 08:00,2013-11-27 17:00,2013-12-25 08:00,2014-01-13 17:00,,PT_Normal,,,,,b6VTIUECQROvgbj7k7n92w,,,,N,0,0,,,2013-02-16 15:53,2013-02-16 15:56,admin,admin
502041,6359,124809,13662,0,N,N,N,CP_Drtn,TT_Task,DT_FixedDUR2,TK_NotStart,DUKHCONP03Z3STRF2050,Slab-Rebar & Formwork,8165,312,0,160,0,1576.75,1576.75,160,0,0,0,,,,2013-12-28 08:00,2014-01-19 17:00,,2013-11-11 08:00,2013-12-03 17:00,2013-11-11 08:00,2013-12-03 17:00,2013-11-11 08:00,2013-12-03 17:00,2013-12-28 08:00,2014-01-19 17:00,,PT_Normal,,,,,gxX9PjPMRmumqhUVIVfuUg,,,,N,0,0,,,2013-02-16 15:53,2013-02-16 15:56,admin,admin
502042,6359,124809,13662,0,N,N,N,CP_Drtn,TT_Task,DT_FixedDUR2,TK_NotStart,DUKHCONP03Z3STRF2055,Slab-Concrete,8167,312,0,104,0,175,175,104,0,0,0,,,,2014-01-07 08:00,2014-01-21 17:00,,2013-11-21 08:00,2013-12-05 17:00,2013-11-21 08:00,2013-12-05 17:00,2013-11-21 08:00,2013-12-05 17:00,2014-01-07 08:00,2014-01-21 17:00,,PT_Normal,,,,,G5CZ6WFBQzO/rphidPqB8A,,,,N,0,0,,,2013-02-16 15:53,2013-02-16 15:56,admin,admin
502043,6359,124809,13662,0,N,N,N,CP_Drtn,TT_Task,DT_FixedDUR2,TK_NotStart,DUKHCONP03Z3STRF2060,Construction of Parapets,8168,464,0,200,0,1441,1441,200,0,0,0,,,,2014-02-01 08:00,2014-03-02 17:00,,2013-11-24 08:00,2013-12-23 17:00,2013-11-24 08:00,2013-12-23 17:00,2013-11-24 08:00,2013-12-23 17:00,2014-02-01 08:00,2014-03-02 17:00,,PT_Normal,,,,,TdLX3Oe4Sp2P5eZPxE4XbQ,,,,N,0,0,,,2013-02-16 15:53,2013-02-16 15:56,admin,admin
502044,6359,124809,13662,0,N,N,N,CP_Drtn,TT_Task,DT_FixedDUR2,TK_NotStart,DUKHCONP03Z3STRF2065,Construction of up stands/Plinth,8165,464,0,200,0,283.5,283.5,200,0,0,0,,,,2014-02-06 08:00,2014-03-08 17:00,,2013-11-30 08:00,2013-12-29 17:00,2013-11-30 08:00,2013-12-29 17:00,2013-11-30 08:00,2013-12-29 17:00,2014-02-06 08:00,2014-03-08 17:00,,PT_Normal,,,,,zLk4Tja5SYmtOdq04C5z1g,,,,N,0,0,,,2013-02-16 15:53,2013-02-16 15:56,admin,admin
502045,6359,124811,13662,0,N,N,N,CP_Drtn,TT_Task,DT_FixedDUR2,TK_NotStart,DUKHCONP03Z3STUG1010,Footing Blinding,8163,0,0,184,0,588,588,184,0,0,0,,,,2013-04-13 08:00,2013-05-08 17:00,,2013-04-13 08:00,2013-05-08 17:00,2013-04-13 08:00,2013-05-08 17:00,2013-04-13 08:00,2013-05-08 17:00,2013-04-13 08:00,2013-05-08 17:00,,PT_Normal,,,,,YyN5yDMwSTmAKhOLWxt3zw,,,,N,0,0,,,2013-02-16 15:53,2013-02-16 15:56,admin,admin
502046,6359,124811,13662,0,N,N,N,CP_Drtn,TT_Task,DT_FixedDUR2,TK_NotStart,DUKHCONP03Z3STUG1015,Footing Waterproofing & Screed,8164,0,0,200,0,1368.5,1368.5,200,0,0,0,,,,2013-04-18 08:00,2013-05-16 17:00,,2013-04-18 08:00,2013-05-16 17:00,2013-04-18 08:00,2013-05-16 17:00,2013-04-18 08:00,2013-05-16 17:00,2013-04-18 08:00,2013-05-16 17:00,,PT_Normal,,,,,0BaBbRLxSf+2kRkhOGfVkQ,,,,N,0,0,,,2013-02-16 15:53,2013-02-16 15:56,admin,admin
502047,6359,124811,13662,0,N,N,N,CP_Drtn,TT_Task,DT_FixedDUR2,TK_NotStart,DUKHCONP03Z3STUG1020,Construction of foundations,8165,0,0,160,0,4817.75,4817.75,160,0,0,0,,,,2013-05-04 08:00,2013-05-26 17:00,,2013-05-04 08:00,2013-05-26 17:00,2013-05-04 08:00,2013-05-26 17:00,2013-05-04 08:00,2013-05-26 17:00,2013-05-04 08:00,2013-05-26 17:00,,PT_Normal,,,,,ExFfV4gBQXuTb8yURXcn1A,,,,N,0,0,,,2013-02-16 15:53,2013-02-16 15:56,admin,admin
502048,6359,124811,13662,0,N,N,N,CP_Drtn,TT_Task,DT_FixedDUR2,TK_NotStart,DUKHCONP03Z3STUG1025,Construction of neck of columns,8165,0,0,200,0,1400,1400,200,0,0,0,,,,2013-05-13 08:00,2013-06-10 17:00,,2013-05-13 08:00,2013-06-10 17:00,2013-05-13 08:00,2013-06-10 17:00,2013-05-13 08:00,2013-06-10 17:00,2013-05-13 08:00,2013-06-10 17:00,,PT_Normal,,,,,UaE2fDIWR1ubMmR+JML+Ow,,,,N,0,0,,,2013-02-16 15:53,2013-02-16 15:56,admin,admin
502049,6359,124811,13662,0,N,N,N,CP_Drtn,TT_Task,DT_FixedDUR2,TK_NotStart,DUKHCONP03Z3STUG1030,Waterproofing Footing & Neck Column,8178,0,0,200,0,213.5,213.5,200,0,0,0,,,,2013-05-22 08:00,2013-06-19 17:00,,2013-05-22 08:00,2013-06-19 17:00,2013-05-22 08:00,2013-06-19 17:00,2013-05-22 08:00,2013-06-19 17:00,2013-05-22 08:00,2013-06-19 17:00,,PT_Normal,,,,,LEV7DHGSQy6xYBxGXeNnhg,,,,N,0,0,,,2013-02-16 15:53,2013-02-16 15:56,admin,admin
502050,6359,124811,13662,0,N,N,N,CP_Drtn,TT_Task,DT_FixedDUR2,TK_NotStart,DUKHCONP03Z3STUG1035,Backfilling Upto Grade Beam Bottom,8177,0,0,200,0,2560,2560,200,2200,0,2200,,,,2013-06-02 08:00,2013-06-30 17:00,,2013-06-02 08:00,2013-06-30 17:00,2013-06-02 08:00,2013-06-30 17:00,2013-06-02 08:00,2013-06-30 17:00,2013-06-02 08:00,2013-06-30 17:00,,PT_Normal,,,,,WqHXbkVjQfir8eRF7ryAMA,,,,N,0,0,,,2013-02-16 15:53,2013-02-16 15:56,admin,admin
502051,6359,124811,13662,0,N,N,N,CP_Drtn,TT_Task,DT_FixedDUR2,TK_NotStart,DUKHCONP03Z3STUG1040,Construction of Grade Beams,8163,0,0,200,0,4745,4745,200,0,0,0,,,,2013-06-18 08:00,2013-07-16 17:00,,2013-06-18 08:00,2013-07-16 17:00,2013-06-18 08:00,2013-07-16 17:00,2013-06-18 08:00,2013-07-16 17:00,2013-06-18 08:00,2013-07-16 17:00,,PT_Normal,,,,,KkV2dw5eRc+sDdrxCJFn4w,,,,N,0,0,,,2013-02-16 15:53,2013-02-16 15:56,admin,admin
502052,6359,124811,13662,0,N,N,N,CP_Drtn,TT_Task,DT_FixedDUR2,TK_NotStart,DUKHCONP03Z3STUG1045,Construction of slab on grade,8163,0,0,200,0,3327.5,3327.5,200,0,0,0,,,,2013-07-15 08:00,2013-08-15 17:00,,2013-07-15 08:00,2013-08-15 17:00,2013-07-15 08:00,2013-08-15 17:00,2013-07-15 08:00,2013-08-15 17:00,2013-07-15 08:00,2013-08-15 17:00,,PT_Normal,,,,,ocC2AVhiSxO0lAmqDnZe2A,,,,N,0,0,,,2013-02-16 15:53,2013-02-16 15:56,admin,admin
502053,6359,124811,13662,0,N,N,N,CP_Drtn,TT_Task,DT_FixedDUR2,TK_NotStart,DUKHCONP03Z3STUG1000,Footing Excavation,8177,0,0,200,0,1556,1556,200,732,0,732,,,,2013-03-30 08:00,2013-04-27 17:00,,2013-03-30 08:00,2013-04-27 17:00,2013-03-30 08:00,2013-04-27 17:00,2013-03-30 08:00,2013-04-27 17:00,2013-03-30 08:00,2013-04-27 17:00,,PT_Normal,,,,,NKQNG+q7Sumeu2v7pwrfjQ,,,,N,0,0,,,2013-02-16 15:53,2013-02-16 15:56,admin,admin
502054,6359,124811,13662,0,N,N,N,CP_Drtn,TT_Task,DT_FixedDUR2,TK_NotStart,DUKHCONP03Z3STUG1005,Footing Antitermite,8178,0,0,184,0,634.25,634.25,184,0,0,0,,,,2013-04-09 08:00,2013-05-05 17:00,,2013-04-09 08:00,2013-05-05 17:00,2013-04-09 08:00,2013-05-05 17:00,2013-04-09 08:00,2013-05-05 17:00,2013-04-09 08:00,2013-05-05 17:00,,PT_Normal,,,,,bF7XsTaaRVO4zqr8ToINzA,,,,N,0,0,,,2013-02-16 15:53,2013-02-16 15:56,admin,admin
502055,6359,124814,13662,0,N,N,N,CP_Drtn,TT_Task,DT_FixedDUR2,TK_NotStart,DUKHCONP03Z3PLGF4305,Installation of Plumbing pipes & testing,8178,280,0,144,0,2732.4,2732.4,144,0,0,0,,,,2013-12-12 08:00,2014-01-02 17:00,,2013-11-02 08:00,2013-11-21 17:00,2013-11-02 08:00,2013-11-21 17:00,2013-11-02 08:00,2013-11-21 17:00,2013-12-12 08:00,2014-01-02 17:00,,PT_Normal,,,,,g1ZUmgTHT12O/uRaD7DgMQ,,,,N,0,0,,,2013-02-16 15:53,2013-02-16 15:56,admin,admin
502056,6359,124814,13662,0,N,N,N,CP_Drtn,TT_Task,DT_FixedDUR2,TK_NotStart,DUKHCONP03Z3PLGF4310,Installation of Drainage pipes &testing,8178,448,136,144,0,216,216,144,0,0,0,,,,2014-01-07 08:00,2014-01-27 17:00,,2013-11-02 08:00,2013-11-21 17:00,2013-11-02 08:00,2013-11-21 17:00,2013-11-02 08:00,2013-11-21 17:00,2014-01-07 08:00,2014-01-27 17:00,,PT_Normal,,,,,+ix9scCGQeuhPGgWsr4Kwg,,,,N,0,0,,,2013-02-16 15:53,2013-02-16 15:56,admin,admin
502057,6359,124814,13662,0,N,N,N,CP_Drtn,TT_Task,DT_FixedDUR2,TK_NotStart,DUKHCONP03Z3PLGF4315,Sanitary Fittings & Accessories,8178,512,0,160,0,352.8,352.8,160,0,0,0,,,,2014-04-17 08:00,2014-05-10 17:00,,2014-02-01 08:00,2014-02-24 17:00,2014-02-01 08:00,2014-02-24 17:00,2014-02-01 08:00,2014-02-24 17:00,2014-04-17 08:00,2014-05-10 17:00,,PT_Normal,,,,,t7lOiFLvSTq7iiJYPJlqlA,,,,N,0,0,,,2013-02-16 15:53,2013-02-16 15:56,admin,admin
502058,6359,124814,13662,0,N,N,N,CP_Drtn,TT_Task,DT_FixedDUR2,TK_NotStart,DUKHCONP03Z3PLGF4320,Installation of Water Heater,8178,512,80,120,0,50.4,50.4,120,0,0,0,,,,2014-04-29 08:00,2014-05-15 17:00,,2014-02-13 08:00,2014-03-02 17:00,2014-02-13 08:00,2014-03-02 17:00,2014-02-13 08:00,2014-03-02 17:00,2014-04-29 08:00,2014-05-15 17:00,,PT_Normal,,,,,iFdrPKHwSxaN18rqgCm4mg,,,,N,0,0,,,2013-02-16 15:53,2013-02-16 15:56,admin,admin
502059,6359,124814,13662,0,N,N,N,CP_Drtn,TT_Task,DT_FixedDUR2,TK_NotStart,DUKHCONP03Z3PLUG4300,Drainage / Storm Pipes in Grade Slab,8178,0,0,160,0,165.6,165.6,160,0,0,0,,,,2013-07-06 08:00,2013-07-28 17:00,,2013-07-06 08:00,2013-07-28 17:00,2013-07-06 08:00,2013-07-28 17:00,2013-07-06 08:00,2013-07-28 17:00,2013-07-06 08:00,2013-07-28 17:00,,PT_Normal,,,,,Mz607KtDSsmzw+jD0t0IAw,,,,N,0,0,,,2013-02-16 15:53,2013-02-16 15:56,admin,admin
502060,6359,124815,13662,0,N,N,N,CP_Drtn,TT_Task,DT_FixedDUR2,TK_NotStart,DUKHCONP03Z3PLFF4330,Installation of Drainage pipes & testing,8178,208,56,144,0,216,216,144,0,0,0,,,,2014-01-14 08:00,2014-02-03 17:00,,2013-12-14 08:00,2014-01-04 17:00,2013-12-14 08:00,2014-01-04 17:00,2013-12-14 08:00,2014-01-04 17:00,2014-01-14 08:00,2014-02-03 17:00,,PT_Normal,,,,,CBsd7tXMS2icpUBIyp4f1g,,,,N,0,0,,,2013-02-16 15:53,2013-02-16 15:56,admin,admin
502061,6359,124815,13662,0,N,N,N,CP_Drtn,TT_Task,DT_FixedDUR2,TK_NotStart,DUKHCONP03Z3PLFF4335,Sanitary Fittings & Accessories,8178,112,0,160,0,352.8,352.8,160,0,0,0,,,,2014-03-31 08:00,2014-04-22 17:00,,2014-03-15 08:00,2014-04-06 17:00,2014-03-15 08:00,2014-04-06 17:00,2014-03-15 08:00,2014-04-06 17:00,2014-03-31 08:00,2014-04-22 17:00,,PT_Normal,,,,,+zV8y/x4RZifs+9Dchh2EA,,,,N,0,0,,,2013-02-16 15:53,2013-02-16 15:56,admin,admin
502062,6359,124815,13662,0,N,N,N,CP_Drtn,TT_Task,DT_FixedDUR2,TK_NotStart,DUKHCONP03Z3PLFF4340,Installation of Water Heater,8178,112,0,120,0,50.4,50.4,120,0,0,0,,,,2014-04-12 08:00,2014-04-28 17:00,,2014-03-26 08:00,2014-04-12 17:00,2014-03-26 08:00,2014-04-12 17:00,2014-03-26 08:00,2014-04-12 17:00,2014-04-12 08:00,2014-04-28 17:00,,PT_Normal,,,,,nz1wxdooQwydeqdeVZIPwg,,,,N,0,0,,,2013-02-16 15:53,2013-02-16 15:56,admin,admin
502063,6359,124815,13662,0,N,N,N,CP_Drtn,TT_Task,DT_FixedDUR2,TK_NotStart,DUKHCONP03Z3PLFF4325,Installation of Plumbing pipes & testing,8178,0,0,144,0,2732.4,2732.4,144,0,0,0,,,,2013-12-12 08:00,2014-01-02 17:00,,2013-12-12 08:00,2014-01-02 17:00,2013-12-12 08:00,2014-01-02 17:00,2013-12-12 08:00,2014-01-02 17:00,2013-12-12 08:00,2014-01-02 17:00,,PT_Normal,,,,,2/vzwivpTPWUv1ZI5BndRg,,,,N,0,0,,,2013-02-16 15:53,2013-02-16 15:56,admin,admin
502064,6359,124816,13662,0,N,N,N,CP_Drtn,TT_Task,DT_FixedDUR2,TK_NotStart,DUKHCONP03Z3PLRF4345,Installation of Plumbing pipes & fittings,8178,568,144,120,0,1623.6,1623.6,120,0,0,0,,,,2014-04-02 08:00,2014-04-19 17:00,,2014-01-08 08:00,2014-01-25 17:00,2014-01-08 08:00,2014-01-25 17:00,2014-01-08 08:00,2014-01-25 17:00,2014-04-02 08:00,2014-04-19 17:00,,PT_Normal,,,,,DyCjZodLTU6smuIDJRe+5A,,,,N,0,0,,,2013-02-16 15:53,2013-02-16 15:56,admin,admin
502065,6359,124816,13662,0,N,N,N,CP_Drtn,TT_Task,DT_FixedDUR2,TK_NotStart,DUKHCONP03Z3PLRF4350,Installation of Rain water Pipes,8178,424,80,120,0,82.8,82.8,120,0,0,0,,,,2014-04-12 08:00,2014-04-28 17:00,,2014-02-08 08:00,2014-02-25 17:00,2014-02-08 08:00,2014-02-25 17:00,2014-02-08 08:00,2014-02-25 17:00,2014-04-12 08:00,2014-04-28 17:00,,PT_Normal,,,,,OZW2fcF/S/GoM8FbUYLJqw,,,,N,0,0,,,2013-02-16 15:53,2013-02-16 15:56,admin,admin
502066,6359,124816,13662,0,N,N,N,CP_Drtn,TT_Task,DT_FixedDUR2,TK_NotStart,DUKHCONP03Z3PLRF4355,Roof  Water Tank Installation & Connections,8178,112,0,200,0,100.8,100.8,200,0,0,0,,,,2014-04-17 08:00,2014-05-15 17:00,,2014-04-01 08:00,2014-04-29 17:00,2014-04-01 08:00,2014-04-29 17:00,2014-04-01 08:00,2014-04-29 17:00,2014-04-17 08:00,2014-05-15 17:00,,PT_Normal,,,,,KkxvBI0mQ4KARxwqMWZ1xw,,,,N,0,0,,,2013-02-16 15:53,2013-02-16 15:56,admin,admin
502067,6359,124818,13662,0,N,N,N,CP_Drtn,TT_Task,DT_FixedDUR2,TK_NotStart,DUKHCONP03Z3ELFF4035,Fixing of wall conduits & switch socket boxes,8178,88,0,200,0,1102.8,1102.8,200,0,0,0,,,,2013-12-16 08:00,2014-01-14 17:00,,2013-12-03 08:00,2014-01-01 17:00,2013-12-03 08:00,2014-01-01 17:00,2013-12-03 08:00,2014-01-01 17:00,2013-12-16 08:00,2014-01-14 17:00,,PT_Normal,,,,,P20e41sMRRyeM8Tg70lTsw,,,,N,0,0,,,2013-02-16 15:53,2013-02-23 09:03,admin,admin
502068,6359,124818,13662,0,N,N,N,CP_Drtn,TT_Task,DT_FixedDUR2,TK_NotStart,DUKHCONP03Z3ELFF4040,Cable tray & trunking installation,8178,264,24,160,0,1840.8,1840.8,160,0,0,0,,,,2014-01-23 08:00,2014-02-16 17:00,,2013-12-15 08:00,2014-01-07 17:00,2013-12-15 08:00,2014-01-07 17:00,2013-12-15 08:00,2014-01-07 17:00,2014-01-23 08:00,2014-02-16 17:00,,PT_Normal,,,,,K/AtAhhHR9GLI8alQ9B4Rg,,,,N,0,0,,,2013-02-16 15:53,2013-02-16 15:56,admin,admin
502069,6359,124818,13662,0,N,N,N,CP_Drtn,TT_Task,DT_FixedDUR2,TK_NotStart,DUKHCONP03Z3ELFF4045,Installation of wiring & Main Cabling,8178,240,0,200,0,648,648,200,0,0,0,,,,2014-02-01 08:00,2014-03-02 17:00,,2013-12-28 08:00,2014-01-25 17:00,2013-12-28 08:00,2014-01-25 17:00,2013-12-28 08:00,2014-01-25 17:00,2014-02-01 08:00,2014-03-02 17:00,,PT_Normal,,,,,YZuzoXOSQ66Dc0QNYqFaHA,,,,N,0,0,,,2013-02-16 15:53,2013-02-16 15:56,admin,admin
502070,6359,124818,13662,0,N,N,N,CP_Drtn,TT_Task,DT_FixedDUR2,TK_NotStart,DUKHCONP03Z3ELFF4060,"Installation  of DBS,MCCB Accessories.",8178,8,0,160,0,188.4,188.4,160,0,0,0,,,,2014-03-10 08:00,2014-04-01 17:00,,2014-03-09 08:00,2014-03-31 17:00,2014-03-09 08:00,2014-03-31 17:00,2014-03-09 08:00,2014-03-31 17:00,2014-03-10 08:00,2014-04-01 17:00,,PT_Normal,,,,,+ypRq6mERS2OyaNGJTQTXQ,,,,N,0,0,,,2013-02-16 15:53,2013-02-16 15:56,admin,admin
502071,6359,124818,13662,0,N,N,N,CP_Drtn,TT_Task,DT_FixedDUR2,TK_NotStart,DUKHCONP03Z3ELFF4065,Installation of Lighting fixtures & Accessories,8178,8,0,200,0,2528.4,2528.4,200,0,0,0,,,,2014-03-23 08:00,2014-04-20 17:00,,2014-03-22 08:00,2014-04-19 17:00,2014-03-22 08:00,2014-04-19 17:00,2014-03-22 08:00,2014-04-19 17:00,2014-03-23 08:00,2014-04-20 17:00,,PT_Normal,,,,,oDp+JSTCROeuBUnLhI3u/w,,,,N,0,0,,,2013-02-16 15:53,2013-02-16 15:56,admin,admin
502072,6359,124818,13662,0,N,N,N,CP_Drtn,TT_Task,DT_FixedDUR2,TK_NotStart,DUKHCONP03Z3ELFF4055,Install. of CAMS & Fire Fighting Accessories,8178,96,0,200,0,1612.8,1612.8,200,0,0,0,,,,2014-03-19 08:00,2014-04-16 17:00,,2014-03-05 08:00,2014-04-02 17:00,2014-03-05 08:00,2014-04-02 17:00,2014-03-05 08:00,2014-04-02 17:00,2014-03-19 08:00,2014-04-16 17:00,,PT_Normal,,,,,20Bb04CHSs6vxv0NcGFGMg,,,,N,0,0,,,2013-02-16 15:53,2013-02-16 15:56,admin,admin
502073,6359,124818,13662,0,N,N,N,CP_Drtn,TT_Task,DT_FixedDUR2,TK_NotStart,DUKHCONP03Z3ELFF4050,Installation of Telephone System,8178,160,152,200,0,542.4,542.4,200,0,0,0,,,,2014-03-26 08:00,2014-04-23 17:00,,2014-03-03 08:00,2014-03-31 17:00,2014-03-03 08:00,2014-03-31 17:00,2014-03-03 08:00,2014-03-31 17:00,2014-03-26 08:00,2014-04-23 17:00,,PT_Normal,,,,,kDDCs2fTT2e7W/aO0CACew,,,,N,0,0,,,2013-02-16 15:53,2013-02-23 09:03,admin,admin
502074,6359,124819,13662,0,N,N,N,CP_Drtn,TT_Task,DT_FixedDUR2,TK_NotStart,DUKHCONP03Z3ELRF4070,Installation of Isolator,8178,8,0,144,0,309.6,309.6,144,0,0,0,,,,2014-04-12 08:00,2014-05-01 17:00,,2014-04-10 08:00,2014-04-30 17:00,2014-04-10 08:00,2014-04-30 17:00,2014-04-10 08:00,2014-04-30 17:00,2014-04-12 08:00,2014-05-01 17:00,,PT_Normal,,,,,Kcin0xcZTySDUjRfpHCO5A,,,,N,0,0,,,2013-02-16 15:53,2013-02-16 15:56,admin,admin
502075,6359,124819,13662,0,N,N,N,CP_Drtn,TT_Task,DT_FixedDUR2,TK_NotStart,DUKHCONP03Z3ELRF4075,Installation of TV Dish Antenna,8178,8,8,184,0,4725.6,4725.6,184,0,0,0,,,,2014-04-20 08:00,2014-05-15 17:00,,2014-04-19 08:00,2014-05-14 17:00,2014-04-19 08:00,2014-05-14 17:00,2014-04-19 08:00,2014-05-14 17:00,2014-04-20 08:00,2014-05-15 17:00,,PT_Normal,,,,,bQxQgnmYStSBV3NfmfasPw,,,,N,0,0,,,2013-02-16 15:53,2013-02-16 15:56,admin,admin
502076,6359,124820,13662,0,N,N,N,CP_Drtn,TT_Task,DT_FixedDUR2,TK_NotStart,DUKHCONP03Z3ELGF4000,Fixing of wall conduits & switch socket boxes,8178,352,0,200,0,1102.8,1102.8,200,0,0,0,,,,2013-12-12 08:00,2014-01-11 17:00,,2013-10-22 08:00,2013-11-19 17:00,2013-10-22 08:00,2013-11-19 17:00,2013-10-22 08:00,2013-11-19 17:00,2013-12-12 08:00,2014-01-11 17:00,,PT_Normal,,,,,66+Ny2tnT6mgSeYHdwwcAw,,,,N,0,0,,,2013-02-16 15:53,2013-02-23 09:03,admin,admin
502077,6359,124820,13662,0,N,N,N,CP_Drtn,TT_Task,DT_FixedDUR2,TK_NotStart,DUKHCONP03Z3ELGF4005,Cable tray & trunking installation,8178,496,0,160,0,1840.8,1840.8,160,0,0,0,,,,2014-01-15 08:00,2014-02-06 17:00,,2013-11-03 08:00,2013-11-25 17:00,2013-11-03 08:00,2013-11-25 17:00,2013-11-03 08:00,2013-11-25 17:00,2014-01-15 08:00,2014-02-06 17:00,,PT_Normal,,,,,gN/kjsqaT42KPH9vJU00nA,,,,N,0,0,,,2013-02-16 15:53,2013-02-16 15:56,admin,admin
502078,6359,124820,13662,0,N,N,N,CP_Drtn,TT_Task,DT_FixedDUR2,TK_NotStart,DUKHCONP03Z3ELGF4010,Installation of wiring & Main Cabling,8178,496,216,200,0,648,648,200,0,0,0,,,,2014-01-23 08:00,2014-02-22 17:00,,2013-11-11 08:00,2013-12-09 17:00,2013-11-11 08:00,2013-12-09 17:00,2013-11-11 08:00,2013-12-09 17:00,2014-01-23 08:00,2014-02-22 17:00,,PT_Normal,,,,,ZWh6oRTqRriYLzc3V7QU2g,,,,N,0,0,,,2013-02-16 15:53,2013-02-16 15:56,admin,admin
502079,6359,124820,13662,0,N,N,N,CP_Drtn,TT_Task,DT_FixedDUR2,TK_NotStart,DUKHCONP03Z3ELGF4020,"Installation  of DBS,MCCB Accessories.",8178,280,0,160,0,222,222,160,0,0,0,,,,2014-03-03 08:00,2014-03-25 17:00,,2014-01-20 08:00,2014-02-12 17:00,2014-01-20 08:00,2014-02-12 17:00,2014-01-20 08:00,2014-02-12 17:00,2014-03-03 08:00,2014-03-25 17:00,,PT_Normal,,,,,pTb6ja+tQaGlqB3q3/2PCA,,,,N,0,0,,,2013-02-16 15:53,2013-02-16 15:56,admin,admin
502080,6359,124820,13662,0,N,N,N,CP_Drtn,TT_Task,DT_FixedDUR2,TK_NotStart,DUKHCONP03Z3ELGF4025,Installation of Lighting fixtures & Accessories,8178,296,0,200,0,2580,2580,200,0,0,0,,,,2014-03-17 08:00,2014-04-14 17:00,,2014-02-01 08:00,2014-03-02 17:00,2014-02-01 08:00,2014-03-02 17:00,2014-02-01 08:00,2014-03-02 17:00,2014-03-17 08:00,2014-04-14 17:00,,PT_Normal,,,,,wFXksu1GQue3fbxcnQ8kcw,,,,N,0,0,,,2013-02-16 15:53,2013-02-16 15:56,admin,admin
502081,6359,124820,13662,0,N,N,N,CP_Drtn,TT_Task,DT_FixedDUR2,TK_NotStart,DUKHCONP03Z3ELGF4015,Install. of CAMS & Fire Fighting Accessories,8178,392,0,200,0,1461.6,1461.6,200,0,0,0,,,,2014-03-13 08:00,2014-04-10 17:00,,2014-01-14 08:00,2014-02-12 17:00,2014-01-14 08:00,2014-02-12 17:00,2014-01-14 08:00,2014-02-12 17:00,2014-03-13 08:00,2014-04-10 17:00,,PT_Normal,,,,,boBWB/RhQweaQPrgFB1tvA,,,,N,0,0,,,2013-02-16 15:53,2013-02-23 09:03,admin,admin
502082,6359,124820,13662,0,N,N,N,CP_Drtn,TT_Task,DT_FixedDUR2,TK_NotStart,DUKHCONP03Z3ELGF4030,Installation of Telephone System,8178,280,40,160,0,542.4,542.4,160,0,0,0,,,,2014-03-15 08:00,2014-04-06 17:00,,2014-02-01 08:00,2014-02-24 17:00,2014-02-01 08:00,2014-02-24 17:00,2014-02-01 08:00,2014-02-24 17:00,2014-03-15 08:00,2014-04-06 17:00,,PT_Normal,,,,,ey3rCbLNRdy23eFkkuYiGA,,,,N,0,0,,,2013-02-16 15:53,2013-02-23 09:03,admin,admin
502083,6359,124822,13662,0,N,N,N,CP_Drtn,TT_Task,DT_FixedDUR2,TK_NotStart,DUKHCONP03Z3ACFF4615,Installation AC Pipes,8178,256,8,160,0,340.8,340.8,160,0,0,0,,,,2014-02-13 08:00,2014-03-08 17:00,,2014-01-06 08:00,2014-01-28 17:00,2014-01-06 08:00,2014-01-28 17:00,2014-01-06 08:00,2014-01-28 17:00,2014-02-13 08:00,2014-03-08 17:00,,PT_Normal,,,,,3A+V0tQXRA+w8NYs0byVdQ,,,,N,0,0,,,2013-02-16 15:53,2013-02-16 15:56,admin,admin
502084,6359,124822,13662,0,N,N,N,CP_Drtn,TT_Task,DT_FixedDUR2,TK_NotStart,DUKHCONP03Z3ACFF4620,Fixing of Ventilation Equipments,8178,72,0,200,0,136.8,136.8,200,0,0,0,,,,2014-03-16 08:00,2014-04-13 17:00,,2014-03-05 08:00,2014-04-02 17:00,2014-03-05 08:00,2014-04-02 17:00,2014-03-05 08:00,2014-04-02 17:00,2014-03-16 08:00,2014-04-13 17:00,,PT_Normal,,,,,n9n4FJ43Q1WF32UH7/VnLw,,,,N,0,0,,,2013-02-16 15:53,2013-02-16 15:56,admin,admin
502085,6359,124822,13662,0,N,N,N,CP_Drtn,TT_Task,DT_FixedDUR2,TK_NotStart,DUKHCONP03Z3ACFF4625,Fixing of Split AC,8178,72,0,160,0,361.2,361.2,160,0,0,0,,,,2014-04-06 08:00,2014-04-28 17:00,,2014-03-26 08:00,2014-04-17 17:00,2014-03-26 08:00,2014-04-17 17:00,2014-03-26 08:00,2014-04-17 17:00,2014-04-06 08:00,2014-04-28 17:00,,PT_Normal,,,,,9kqsW9YPSKi5BgWSNKPi4w,,,,N,0,0,,,2013-02-16 15:53,2013-02-23 09:03,admin,admin
502086,6359,124823,13662,0,N,N,N,CP_Drtn,TT_Task,DT_FixedDUR2,TK_NotStart,DUKHCONP03Z3ACGF4600,Installation AC Pipes,8178,528,40,160,0,340.8,340.8,160,0,0,0,,,,2014-02-08 08:00,2014-03-03 17:00,,2013-11-21 08:00,2013-12-14 17:00,2013-11-21 08:00,2013-12-14 17:00,2013-11-21 08:00,2013-12-14 17:00,2014-02-08 08:00,2014-03-03 17:00,,PT_Normal,,,,,nanXSZGFQb+xMloTt+Y7Rw,,,,N,0,0,,,2013-02-16 15:53,2013-02-16 15:56,admin,admin
502087,6359,124823,13662,0,N,N,N,CP_Drtn,TT_Task,DT_FixedDUR2,TK_NotStart,DUKHCONP03Z3ACGF4605,Fixing of Ventilation Equipments,8178,408,0,200,0,136.8,136.8,200,0,0,0,,,,2014-03-16 08:00,2014-04-13 17:00,,2014-01-14 08:00,2014-02-12 17:00,2014-01-14 08:00,2014-02-12 17:00,2014-01-14 08:00,2014-02-12 17:00,2014-03-16 08:00,2014-04-13 17:00,,PT_Normal,,,,,cHRtUxx0SpaUUE/bQQdsmQ,,,,N,0,0,,,2013-02-16 15:53,2013-02-16 15:56,admin,admin
502088,6359,124823,13662,0,N,N,N,CP_Drtn,TT_Task,DT_FixedDUR2,TK_NotStart,DUKHCONP03Z3ACGF4610,Fixing of Split AC,8178,408,40,160,0,361.2,361.2,160,0,0,0,,,,2014-04-06 08:00,2014-04-28 17:00,,2014-02-04 08:00,2014-02-27 17:00,2014-02-04 08:00,2014-02-27 17:00,2014-02-04 08:00,2014-02-27 17:00,2014-04-06 08:00,2014-04-28 17:00,,PT_Normal,,,,,TtTJka7ZTXSNrhdjce/YpQ,,,,N,0,0,,,2013-02-16 15:53,2013-02-23 09:03,admin,admin
502089,6359,124824,13662,0,N,N,N,CP_Drtn,TT_Task,DT_FixedDUR2,TK_NotStart,DUKHCONP03Z3ACRF4630,Installation of Refrigerant Pipes,8178,584,0,200,0,170.4,170.4,200,0,0,0,,,,2014-04-12 08:00,2014-05-10 17:00,,2014-01-15 08:00,2014-02-13 17:00,2014-01-15 08:00,2014-02-13 17:00,2014-01-15 08:00,2014-02-13 17:00,2014-04-12 08:00,2014-05-10 17:00,,PT_Normal,,,,,Jn4H9ijxRJSuaNunKAt7aw,,,,N,0,0,,,2013-02-16 15:53,2013-02-16 15:56,admin,admin
502090,6359,124824,13662,0,N,N,N,CP_Drtn,TT_Task,DT_FixedDUR2,TK_NotStart,DUKHCONP03Z3ACRF4635,Installation of Condensing Unit,8178,112,0,200,0,562.8,562.8,200,0,0,0,,,,2014-04-17 08:00,2014-05-15 17:00,,2014-04-01 08:00,2014-04-29 17:00,2014-04-01 08:00,2014-04-29 17:00,2014-04-01 08:00,2014-04-29 17:00,2014-04-17 08:00,2014-05-15 17:00,,PT_Normal,,,,,QcmEDb8dQ+20pol3nzni9Q,,,,N,0,0,,,2013-02-16 15:53,2013-02-23 09:03,admin,admin
502091,6359,124826,13662,0,N,N,N,CP_Drtn,TT_Task,DT_FixedDUR2,TK_NotStart,DUKHCONP03Z3MSEX5020,Construction Entrance Ramp,8164,168,0,200,0,216,216,200,0,0,0,,,,2014-03-02 08:00,2014-03-30 17:00,,2014-02-04 08:00,2014-03-05 17:00,2014-02-04 08:00,2014-03-05 17:00,2014-02-04 08:00,2014-03-05 17:00,2014-03-02 08:00,2014-03-30 17:00,,PT_Normal,,,,,rAO092xVRMG5kyTBUxCQAw,,,,N,0,0,,,2013-02-16 15:53,2013-02-16 15:56,admin,admin
502092,6359,124826,13662,0,N,N,N,CP_Drtn,TT_Task,DT_FixedDUR2,TK_NotStart,DUKHCONP03Z3MSEX5025,SS.Handrails and Balustrades,8178,168,0,160,0,108,108,160,0,0,0,,,,2014-03-19 08:00,2014-04-10 17:00,,2014-02-23 08:00,2014-03-17 17:00,2014-02-23 08:00,2014-03-17 17:00,2014-02-23 08:00,2014-03-17 17:00,2014-03-19 08:00,2014-04-10 17:00,,PT_Normal,,,,,AcqKY9A4QF65p2/f4EWeJg,,,,N,0,0,,,2013-02-16 15:53,2013-02-16 15:56,admin,admin
502093,6359,124826,13662,0,N,N,N,CP_Drtn,TT_Task,DT_FixedDUR2,TK_NotStart,DUKHCONP03Z3MSEX5015,Construction of grease Trap,8178,368,0,160,0,42,42,160,0,0,0,,,,2014-03-03 08:00,2014-03-25 17:00,,2014-01-07 08:00,2014-01-29 17:00,2014-01-07 08:00,2014-01-29 17:00,2014-01-07 08:00,2014-01-29 17:00,2014-03-03 08:00,2014-03-25 17:00,,PT_Normal,,,,,wKwyEA0oQTyIodz/W9FulA,,,,N,0,0,,,2013-02-16 15:53,2013-02-16 15:56,admin,admin
502094,6359,124826,13662,0,N,N,N,CP_Drtn,TT_Task,DT_FixedDUR2,TK_NotStart,DUKHCONP03Z3MSEX5000,Construction of Manholes,8178,368,0,200,0,132,132,200,0,0,0,,,,2014-01-27 08:00,2014-02-25 17:00,,2013-12-03 08:00,2014-01-01 17:00,2013-12-03 08:00,2014-01-01 17:00,2013-12-03 08:00,2014-01-01 17:00,2014-01-27 08:00,2014-02-25 17:00,,PT_Normal,,,,,9Fi4VTMuT/WVwZT3tlFQEg,,,,N,0,0,,,2013-02-16 15:53,2013-02-16 15:56,admin,admin
502095,6359,124826,13662,0,N,N,N,CP_Drtn,TT_Task,DT_FixedDUR2,TK_NotStart,DUKHCONP03Z3MSEX5005,"Construction  of Soak pit, Chambers",8177,368,0,200,0,275,275,200,0,0,0,,,,2014-02-10 08:00,2014-03-11 17:00,,2013-12-17 08:00,2014-01-15 17:00,2013-12-17 08:00,2014-01-15 17:00,2013-12-17 08:00,2014-01-15 17:00,2014-02-10 08:00,2014-03-11 17:00,,PT_Normal,,,,,SzuSEZxbRKiI6jjPOkMZvA,,,,N,0,0,,,2013-02-16 15:53,2013-02-16 15:56,admin,admin
502096,6359,124826,13662,0,N,N,N,CP_Drtn,TT_Task,DT_FixedDUR2,TK_NotStart,DUKHCONP03Z3MSEX5010,Telephone cable laying,8177,368,208,200,0,500,500,200,0,0,0,,,,2014-03-26 08:00,2014-04-23 17:00,,2014-01-30 08:00,2014-03-01 17:00,2014-01-30 08:00,2014-03-01 17:00,2014-01-30 08:00,2014-03-01 17:00,2014-03-26 08:00,2014-04-23 17:00,,PT_Normal,,,,,9X+iI1b2TMyAoQkMV4Y7PA,,,,N,0,0,,,2013-02-16 15:53,2013-02-16 15:56,admin,admin
502097,6359,124827,13662,0,N,N,N,CP_Drtn,TT_Task,DT_FixedDUR2,TK_NotStart,DUKHCONP03Z3WTEX5030,Excavation,8177,464,0,160,0,116,116,160,80,0,80,,,,2014-02-13 08:00,2014-03-08 17:00,,2013-12-05 08:00,2013-12-29 17:00,2013-12-05 08:00,2013-12-29 17:00,2013-12-05 08:00,2013-12-29 17:00,2014-02-13 08:00,2014-03-08 17:00,,PT_Normal,,,,,/gfGIiDXQSuJtiGN/dQj2w,,,,N,0,0,,,2013-02-16 15:53,2013-02-16 15:56,admin,admin
502098,6359,124827,13662,0,N,N,N,CP_Drtn,TT_Task,DT_FixedDUR2,TK_NotStart,DUKHCONP03Z3WTEX5035,Construction of Raft,8167,464,0,200,0,210,210,200,0,0,0,,,,2014-02-19 08:00,2014-03-19 17:00,,2013-12-11 08:00,2014-01-09 17:00,2013-12-11 08:00,2014-01-09 17:00,2013-12-11 08:00,2014-01-09 17:00,2014-02-19 08:00,2014-03-19 17:00,,PT_Normal,,,,,sybhxljpSjCBKm4glTFU8Q,,,,N,0,0,,,2013-02-16 15:53,2013-02-16 15:56,admin,admin
502099,6359,124827,13662,0,N,N,N,CP_Drtn,TT_Task,DT_FixedDUR2,TK_NotStart,DUKHCONP03Z3WTEX5040,Block works & Plastering,8168,464,0,200,0,2442,2442,200,0,0,0,,,,2014-03-01 08:00,2014-03-29 17:00,,2013-12-22 08:00,2014-01-19 17:00,2013-12-22 08:00,2014-01-19 17:00,2013-12-22 08:00,2014-01-19 17:00,2014-03-01 08:00,2014-03-29 17:00,,PT_Normal,,,,,MOMxtWRfSl2uuXyHlUTCAg,,,,N,0,0,,,2013-02-16 15:53,2013-02-16 15:56,admin,admin
502100,6359,124827,13662,0,N,N,N,CP_Drtn,TT_Task,DT_FixedDUR2,TK_NotStart,DUKHCONP03Z3WTEX5045,Flooring & Painting,8164,464,296,200,0,900,900,200,0,0,0,,,,2014-03-13 08:00,2014-04-10 17:00,,2014-01-04 08:00,2014-02-01 17:00,2014-01-04 08:00,2014-02-01 17:00,2014-01-04 08:00,2014-02-01 17:00,2014-03-13 08:00,2014-04-10 17:00,,PT_Normal,,,,,mLmk0EOhTjeYwi+3Tyne5Q,,,,N,0,0,,,2013-02-16 15:53,2013-02-16 15:56,admin,admin
502101,6359,124827,13662,0,N,N,N,CP_Drtn,TT_Task,DT_FixedDUR2,TK_NotStart,DUKHCONP03Z3WTEX5050,Installation of Steel Gate,8178,168,16,160,0,84,84,160,0,0,0,,,,2014-03-31 08:00,2014-04-22 17:00,,2014-03-06 08:00,2014-03-29 17:00,2014-03-06 08:00,2014-03-29 17:00,2014-03-06 08:00,2014-03-29 17:00,2014-03-31 08:00,2014-04-22 17:00,,PT_Normal,,,,,Uf6gkgXGR0eo0QDyqn06RQ,,,,N,0,0,,,2013-02-16 15:53,2013-02-16 15:56,admin,admin
502102,6359,124827,13662,0,N,N,N,CP_Drtn,TT_Task,DT_FixedDUR2,TK_NotStart,DUKHCONP03Z3WTEX5060,Structural steel &  SS Shed cover installation,8178,152,0,200,0,588,588,200,0,0,0,,,,2014-04-06 08:00,2014-05-04 17:00,,2014-03-15 08:00,2014-04-12 17:00,2014-03-15 08:00,2014-04-12 17:00,2014-03-15 08:00,2014-04-12 17:00,2014-04-06 08:00,2014-05-04 17:00,,PT_Normal,,,,,S/ShXbbuQqyJ/gipQ6o3+Q,,,,N,0,0,,,2013-02-16 15:53,2013-02-16 15:56,admin,admin
502103,6359,124827,13662,0,N,N,N,CP_Drtn,TT_Task,DT_FixedDUR2,TK_NotStart,DUKHCONP03Z3WTEX5065,"Install. of Water Tank,Chiller,Pump & Meter",8178,152,0,200,0,152.4,152.4,200,0,0,0,,,,2014-04-17 08:00,2014-05-15 17:00,,2014-03-26 08:00,2014-04-23 17:00,2014-03-26 08:00,2014-04-23 17:00,2014-03-26 08:00,2014-04-23 17:00,2014-04-17 08:00,2014-05-15 17:00,,PT_Normal,,,,,Y5/B6b+IRmOybfmDmWspLA,,,,N,0,0,,,2013-02-16 15:53,2013-02-23 09:03,admin,admin
502104,6359,124827,13662,0,N,N,N,CP_Drtn,TT_Task,DT_FixedDUR2,TK_NotStart,DUKHCONP03Z3WTEX5080,Domestic Water Tank Electrical works,8178,464,0,200,0,175,175,200,0,0,0,,,,2014-03-09 08:00,2014-04-06 17:00,,2013-12-30 08:00,2014-01-27 17:00,2013-12-30 08:00,2014-01-27 17:00,2013-12-30 08:00,2014-01-27 17:00,2014-03-09 08:00,2014-04-06 17:00,,PT_Normal,,,,,h6d6dBNTRmqrvkj5aROn0A,,,,N,0,0,,,2013-02-16 15:53,2013-02-16 15:56,admin,admin
502105,6359,124827,13662,0,N,N,N,CP_Drtn,TT_Task,DT_FixedDUR2,TK_NotStart,DUKHCONP03Z3WTEX5070,Domestic Water Tank Plumbings works,8178,464,0,200,0,200,200,200,0,0,0,,,,2014-03-09 08:00,2014-04-06 17:00,,2013-12-30 08:00,2014-01-27 17:00,2013-12-30 08:00,2014-01-27 17:00,2013-12-30 08:00,2014-01-27 17:00,2014-03-09 08:00,2014-04-06 17:00,,PT_Normal,,,,,lc8ql2fFQCeXkfdbgmeeoQ,,,,N,0,0,,,2013-02-16 15:53,2013-02-16 15:56,admin,admin
502106,6359,124827,13662,0,N,N,N,CP_Drtn,TT_Task,DT_FixedDUR2,TK_NotStart,DUKHCONP03Z3WTEX5075,Domestic Water Tank AC works,8178,464,0,200,0,175,175,200,0,0,0,,,,2014-03-09 08:00,2014-04-06 17:00,,2013-12-30 08:00,2014-01-27 17:00,2013-12-30 08:00,2014-01-27 17:00,2013-12-30 08:00,2014-01-27 17:00,2014-03-09 08:00,2014-04-06 17:00,,PT_Normal,,,,,2nug6e0ZQ/ytJFD1IoqrIA,,,,N,0,0,,,2013-02-16 15:53,2013-02-16 15:56,admin,admin
502107,6359,124827,13662,0,N,N,N,CP_Drtn,TT_Task,DT_FixedDUR2,TK_NotStart,DUKHCONP03Z3WTEX5085,Domestic Water Tank Firefighting works,8178,464,0,200,0,112.8,112.8,200,0,0,0,,,,2014-03-09 08:00,2014-04-06 17:00,,2013-12-30 08:00,2014-01-27 17:00,2013-12-30 08:00,2014-01-27 17:00,2013-12-30 08:00,2014-01-27 17:00,2014-03-09 08:00,2014-04-06 17:00,,PT_Normal,,,,,gg20jv0QQNSXY919MeluRg,,,,N,0,0,,,2013-02-16 15:53,2013-02-16 15:56,admin,admin
502108,6359,124828,13662,0,N,N,N,CP_Drtn,TT_Task,DT_FixedDUR2,TK_NotStart,DUKHCONP03GNSP001000,"Survey works,",8175,0,0,160,0,87.5,87.5,160,0,0,0,,,,2012-12-01 08:00,2012-12-24 17:00,,2012-12-01 08:00,2012-12-24 17:00,2012-12-01 08:00,2012-12-24 17:00,2012-12-01 08:00,2012-12-24 17:00,2012-12-01 08:00,2012-12-24 17:00,,PT_Normal,,,,,oid4w6K0Q6uFwpj/3pp28A,,,,N,0,0,,,2013-02-16 15:53,2013-02-16 15:56,admin,admin
502109,6359,124828,13662,0,N,N,N,CP_Drtn,TT_Task,DT_FixedDUR2,TK_NotStart,DUKHCONP03GNSP002000,Scanning for Existing Services for rerouting,8180,0,0,80,0,325,325,80,0,0,0,,,,2012-12-01 08:00,2012-12-11 17:00,,2012-12-01 08:00,2012-12-11 17:00,2012-12-01 08:00,2012-12-11 17:00,2012-12-01 08:00,2012-12-11 17:00,2012-12-01 08:00,2012-12-11 17:00,,PT_Normal,,,,,fKoPKKPSSXietPJUTQpfiA,,,,N,0,0,,,2013-02-16 15:53,2013-02-16 15:56,admin,admin
502110,6359,124828,13662,0,N,N,N,CP_Drtn,TT_Task,DT_FixedDUR2,TK_NotStart,DUKHCONP03GNSP003000,Site stripping,8177,232,0,160,0,675,675,160,300,0,300,,,,2013-01-12 08:00,2013-02-03 17:00,,2012-12-08 08:00,2012-12-31 17:00,2012-12-08 08:00,2012-12-31 17:00,2012-12-08 08:00,2012-12-31 17:00,2013-01-12 08:00,2013-02-03 17:00,,PT_Normal,,,,,3uBoaI3lTLumWXjAqAmSdg,,,,N,0,0,,,2013-02-16 15:53,2013-02-16 15:56,admin,admin
502111,6359,124828,13662,0,N,N,N,CP_Drtn,TT_Task,DT_FixedDUR2,TK_NotStart,DUKHCONP03GNSP004000,Demolition of Existing building & landscaping,8177,232,0,160,0,2687.5,2687.5,160,1750,0,1750,,,,2013-01-17 08:00,2013-02-09 17:00,,2012-12-13 08:00,2013-01-06 17:00,2012-12-13 08:00,2013-01-06 17:00,2012-12-13 08:00,2013-01-06 17:00,2013-01-17 08:00,2013-02-09 17:00,,PT_Normal,,,,,3P7WO1erQDeW46Bzl9WFOg,,,,N,0,0,,,2013-02-16 15:53,2013-02-16 15:56,admin,admin
502112,6359,124828,13662,0,N,N,N,CP_Drtn,TT_Task,DT_FixedDUR2,TK_NotStart,DUKHCONP03GNSP005000,Demolition of existing services works,8177,232,232,160,0,775,775,160,400,0,400,,,,2013-01-23 08:00,2013-02-16 17:00,,2012-12-20 08:00,2013-01-12 17:00,2012-12-20 08:00,2013-01-12 17:00,2012-12-20 08:00,2013-01-12 17:00,2013-01-23 08:00,2013-02-16 17:00,,PT_Normal,,,,,bE527Oa7TEmd7+bllotdeg,,,,N,0,0,,,2013-02-16 15:53,2013-02-16 15:56,admin,admin
502113,6359,124828,13662,0,N,N,N,CP_Drtn,TT_Task,DT_FixedDUR2,TK_NotStart,DUKHCONP03GNSP002100,Submission of Scanning Reports,,0,0,40,0,40,40,40,0,0,0,,,,2012-12-12 08:00,2012-12-17 17:00,,2012-12-12 08:00,2012-12-17 17:00,2012-12-12 08:00,2012-12-17 17:00,2012-12-12 08:00,2012-12-17 17:00,2012-12-12 08:00,2012-12-17 17:00,,PT_Normal,,,,,79R5EtdWTm2uKvtIEA67Vg,Y75aF4QgRxWhj47ZJVDqQA,,,N,0,0,,,2013-02-16 15:53,2013-02-16 15:56,admin,admin
502114,6359,124828,13662,0,N,N,N,CP_Drtn,TT_Task,DT_FixedDUR2,TK_NotStart,DUKHCONP03GNSP002200,Information Required for  Rerouting,,0,0,112,0,0,0,112,0,0,0,,,,2012-12-19 08:00,2013-01-03 17:00,,2012-12-19 08:00,2013-01-03 17:00,2012-12-19 08:00,2013-01-03 17:00,2012-12-19 08:00,2013-01-03 17:00,2012-12-19 08:00,2013-01-03 17:00,,PT_Normal,,,,,vJaG9y8ETK+XwThhQ/vMCg,Y75aF4QgRxWhj47ZJVDqQA,,,N,0,0,,,2013-02-16 15:53,2013-02-16 15:56,admin,admin
502115,6359,124828,13662,0,N,N,N,CP_Drtn,TT_Task,DT_FixedDUR2,TK_NotStart,DUKHCONP03GNSP002300,Preparation & Submission for New Layout,,0,0,40,0,32,32,40,0,0,0,,,,2013-01-05 08:00,2013-01-09 17:00,,2013-01-05 08:00,2013-01-09 17:00,2013-01-05 08:00,2013-01-09 17:00,2013-01-05 08:00,2013-01-09 17:00,2013-01-05 08:00,2013-01-09 17:00,,PT_Normal,,,,,CMqJTbbkRrq8FZIOGrwl4g,zqt8miC+PE2BOOz6wRLSOw,,,N,0,0,,,2013-02-16 15:53,2013-02-16 15:56,admin,admin
502116,6359,124828,13662,0,N,N,N,CP_Drtn,TT_Task,DT_FixedDUR2,TK_NotStart,DUKHCONP03GNSP002400,Approval for new Layout for rerouting,,0,0,80,0,0,0,80,0,0,0,,,,2013-01-10 08:00,2013-01-21 17:00,,2013-01-10 08:00,2013-01-21 17:00,2013-01-10 08:00,2013-01-21 17:00,2013-01-10 08:00,2013-01-21 17:00,2013-01-10 08:00,2013-01-21 17:00,,PT_Normal,,,,,FhZrDM+OTwK7XYjKQDhZ+g,zI1R+4GvEkS6yTXhRIShOw,,,N,0,0,,,2013-02-16 15:53,2013-02-16 15:56,admin,admin
502117,6359,124828,13662,0,N,N,N,CP_Drtn,TT_Task,DT_FixedDUR2,TK_NotStart,DUKHCONP03GNSP002500,Rerouting Works,8180,0,0,200,0,325,325,200,0,0,0,,,,2013-01-22 08:00,2013-02-20 17:00,,2013-01-22 08:00,2013-02-20 17:00,2013-01-22 08:00,2013-02-20 17:00,2013-01-22 08:00,2013-02-20 17:00,2013-01-22 08:00,2013-02-20 17:00,,PT_Normal,,,,,tuA4M7xkRF+0LcU+I6sAiA,oDyiYv8C1EO7EISJj7AOSA,,,N,0,0,,,2013-02-16 15:53,2013-02-16 15:56,admin,admin
502118,6359,124830,13662,0,N,N,N,CP_Drtn,TT_Task,DT_FixedDUR2,TK_NotStart,DUKHCONP03Z4ACTC8000,Pre-Commissioning & Testing of AC Works,8178,0,0,200,0,1500,1500,200,0,0,0,,,,2014-06-15 08:00,2014-07-13 17:00,,2014-06-15 08:00,2014-07-13 17:00,2014-06-15 08:00,2014-07-13 17:00,2014-06-15 08:00,2014-07-13 17:00,2014-06-15 08:00,2014-07-13 17:00,,PT_Normal,,,,,Kd5agjqsSJKc4PyzZWgqcw,,,,N,0,0,,,2013-02-16 15:53,2013-02-16 15:56,admin,admin
502119,6359,124830,13662,0,N,N,N,CP_Drtn,TT_Task,DT_FixedDUR2,TK_NotStart,DUKHCONP03Z4ELTC8010,Pre-Commissioning & Testing of Electrical Works,8178,0,0,200,0,3000,3000,200,0,0,0,,,,2014-06-15 08:00,2014-07-13 17:00,,2014-06-15 08:00,2014-07-13 17:00,2014-06-15 08:00,2014-07-13 17:00,2014-06-15 08:00,2014-07-13 17:00,2014-06-15 08:00,2014-07-13 17:00,,PT_Normal,,,,,e7LkPhGdQZaRkyWoyeRsBw,,,,N,0,0,,,2013-02-16 15:53,2013-02-16 15:56,admin,admin
502120,6359,124830,13662,0,N,N,N,CP_Drtn,TT_Task,DT_FixedDUR2,TK_NotStart,DUKHCONP03Z4PLTC8005,Pre-Commissioning & Testing of Plumbing Works,8178,0,0,200,0,3000,3000,200,0,0,0,,,,2014-06-15 08:00,2014-07-13 17:00,,2014-06-15 08:00,2014-07-13 17:00,2014-06-15 08:00,2014-07-13 17:00,2014-06-15 08:00,2014-07-13 17:00,2014-06-15 08:00,2014-07-13 17:00,,PT_Normal,,,,,koRrVajOQiSdH8J8QzQudw,,,,N,0,0,,,2013-02-16 15:53,2013-02-16 15:56,admin,admin
502121,6359,124833,13662,0,N,N,N,CP_Drtn,TT_Task,DT_FixedDUR2,TK_NotStart,DUKHCONP03Z4ELRF4070,Installation of Isolator,8178,16,0,144,0,309.6,309.6,144,0,0,0,,,,2014-05-12 08:00,2014-06-01 17:00,,2014-05-10 08:00,2014-05-29 17:00,2014-05-10 08:00,2014-05-29 17:00,2014-05-10 08:00,2014-05-29 17:00,2014-05-12 08:00,2014-06-01 17:00,,PT_Normal,,,,,sAXTUj+EQ/OxtoLhETVLeA,,,,N,0,0,,,2013-02-16 15:53,2013-02-16 15:56,admin,admin
502122,6359,124833,13662,0,N,N,N,CP_Drtn,TT_Task,DT_FixedDUR2,TK_NotStart,DUKHCONP03Z4ELRF4075,Installation of TV Dish Antenna,8178,16,16,184,0,4725.6,4725.6,184,0,0,0,,,,2014-05-19 08:00,2014-06-14 17:00,,2014-05-17 08:00,2014-06-11 17:00,2014-05-17 08:00,2014-06-11 17:00,2014-05-17 08:00,2014-06-11 17:00,2014-05-19 08:00,2014-06-14 17:00,,PT_Normal,,,,,YzxhK4qBTZuXxhzqVeADRA,,,,N,0,0,,,2013-02-16 15:53,2013-02-16 15:56,admin,admin
502123,6359,124834,13662,0,N,N,N,CP_Drtn,TT_Task,DT_FixedDUR2,TK_NotStart,DUKHCONP03Z4ELGF4015,Install. of CAMS & Fire Fighting Accessories,8178,392,0,200,0,1461.6,1461.6,200,0,0,0,,,,2014-04-12 08:00,2014-05-10 17:00,,2014-02-13 08:00,2014-03-13 17:00,2014-02-13 08:00,2014-03-13 17:00,2014-02-13 08:00,2014-03-13 17:00,2014-04-12 08:00,2014-05-10 17:00,,PT_Normal,,,,,qhgH4zrqRnm2DdqX+Cqc6Q,,,,N,0,0,,,2013-02-16 15:53,2013-02-23 09:03,admin,admin
502124,6359,124834,13662,0,N,N,N,CP_Drtn,TT_Task,DT_FixedDUR2,TK_NotStart,DUKHCONP03Z4ELGF4030,Installation of Telephone System,8178,288,40,160,0,542.4,542.4,160,0,0,0,,,,2014-04-14 08:00,2014-05-06 17:00,,2014-03-03 08:00,2014-03-25 17:00,2014-03-03 08:00,2014-03-25 17:00,2014-03-03 08:00,2014-03-25 17:00,2014-04-14 08:00,2014-05-06 17:00,,PT_Normal,,,,,O2WKBkJ6QuGMMtWxXrL2DQ,,,,N,0,0,,,2013-02-16 15:53,2013-02-23 09:03,admin,admin
502125,6359,124834,13662,0,N,N,N,CP_Drtn,TT_Task,DT_FixedDUR2,TK_NotStart,DUKHCONP03Z4ELGF4000,Fixing of wall conduits & switch socket boxes,8178,360,0,200,0,1102.8,1102.8,200,0,0,0,,,,2014-01-13 08:00,2014-02-10 17:00,,2013-11-20 08:00,2013-12-19 17:00,2013-11-20 08:00,2013-12-19 17:00,2013-11-20 08:00,2013-12-19 17:00,2014-01-13 08:00,2014-02-10 17:00,,PT_Normal,,,,,4GHTnivcTLOUtqM0cFBtqQ,,,,N,0,0,,,2013-02-16 15:53,2013-02-23 09:03,admin,admin
502126,6359,124834,13662,0,N,N,N,CP_Drtn,TT_Task,DT_FixedDUR2,TK_NotStart,DUKHCONP03Z4ELGF4005,Cable tray & trunking installation,8178,504,0,160,0,1840.8,1840.8,160,0,0,0,,,,2014-02-16 08:00,2014-03-10 17:00,,2013-12-02 08:00,2013-12-25 17:00,2013-12-02 08:00,2013-12-25 17:00,2013-12-02 08:00,2013-12-25 17:00,2014-02-16 08:00,2014-03-10 17:00,,PT_Normal,,,,,LNOR3i2CRg2nWHfsSGou1w,,,,N,0,0,,,2013-02-16 15:53,2013-02-16 15:56,admin,admin
502127,6359,124834,13662,0,N,N,N,CP_Drtn,TT_Task,DT_FixedDUR2,TK_NotStart,DUKHCONP03Z4ELGF4010,Installation of wiring & Main Cabling,8178,504,216,200,0,648,648,200,0,0,0,,,,2014-02-24 08:00,2014-03-24 17:00,,2013-12-10 08:00,2014-01-08 17:00,2013-12-10 08:00,2014-01-08 17:00,2013-12-10 08:00,2014-01-08 17:00,2014-02-24 08:00,2014-03-24 17:00,,PT_Normal,,,,,ThPXUHGITo6j0pXXh/Bebw,,,,N,0,0,,,2013-02-16 15:53,2013-02-16 15:56,admin,admin
502128,6359,124834,13662,0,N,N,N,CP_Drtn,TT_Task,DT_FixedDUR2,TK_NotStart,DUKHCONP03Z4ELGF4020,"Installation  of DBS,MCCB Accessories.",8178,288,0,160,0,222,222,160,0,0,0,,,,2014-04-02 08:00,2014-04-24 17:00,,2014-02-19 08:00,2014-03-13 17:00,2014-02-19 08:00,2014-03-13 17:00,2014-02-19 08:00,2014-03-13 17:00,2014-04-02 08:00,2014-04-24 17:00,,PT_Normal,,,,,SpmfpNTMRD2MDTI3r3ZjFg,,,,N,0,0,,,2013-02-16 15:53,2013-02-16 15:56,admin,admin
502129,6359,124834,13662,0,N,N,N,CP_Drtn,TT_Task,DT_FixedDUR2,TK_NotStart,DUKHCONP03Z4ELGF4025,Installation of Lighting fixtures & Accessories,8178,304,0,200,0,2580,2580,200,0,0,0,,,,2014-04-16 08:00,2014-05-14 17:00,,2014-03-03 08:00,2014-03-31 17:00,2014-03-03 08:00,2014-03-31 17:00,2014-03-03 08:00,2014-03-31 17:00,2014-04-16 08:00,2014-05-14 17:00,,PT_Normal,,,,,qTMynPjBQ16XySLsmt1Y6Q,,,,N,0,0,,,2013-02-16 15:53,2013-02-16 15:56,admin,admin
502130,6359,124835,13662,0,N,N,N,CP_Drtn,TT_Task,DT_FixedDUR2,TK_NotStart,DUKHCONP03Z4ELFF4035,Fixing of wall conduits & switch socket boxes,8178,88,0,200,0,1102.8,1102.8,200,0,0,0,,,,2014-01-15 08:00,2014-02-13 17:00,,2014-01-02 08:00,2014-01-30 17:00,2014-01-02 08:00,2014-01-30 17:00,2014-01-02 08:00,2014-01-30 17:00,2014-01-15 08:00,2014-02-13 17:00,,PT_Normal,,,,,/w96j/QEQFWR/OIXNhdufA,,,,N,0,0,,,2013-02-16 15:53,2013-02-23 09:03,admin,admin
502131,6359,124835,13662,0,N,N,N,CP_Drtn,TT_Task,DT_FixedDUR2,TK_NotStart,DUKHCONP03Z4ELFF4040,Cable tray & trunking installation,8178,264,24,160,0,1840.8,1840.8,160,0,0,0,,,,2014-02-23 08:00,2014-03-17 17:00,,2014-01-14 08:00,2014-02-05 17:00,2014-01-14 08:00,2014-02-05 17:00,2014-01-14 08:00,2014-02-05 17:00,2014-02-23 08:00,2014-03-17 17:00,,PT_Normal,,,,,7JNe1+C9SgCBNpLdyddJAg,,,,N,0,0,,,2013-02-16 15:53,2013-02-16 15:56,admin,admin
502132,6359,124835,13662,0,N,N,N,CP_Drtn,TT_Task,DT_FixedDUR2,TK_NotStart,DUKHCONP03Z4ELFF4045,Installation of wiring & Main Cabling,8178,240,0,200,0,648,648,200,0,0,0,,,,2014-03-03 08:00,2014-03-31 17:00,,2014-01-26 08:00,2014-02-24 17:00,2014-01-26 08:00,2014-02-24 17:00,2014-01-26 08:00,2014-02-24 17:00,2014-03-03 08:00,2014-03-31 17:00,,PT_Normal,,,,,jquJmlgdSSKECDRaKZ8Veg,,,,N,0,0,,,2013-02-16 15:53,2013-02-16 15:56,admin,admin
502133,6359,124835,13662,0,N,N,N,CP_Drtn,TT_Task,DT_FixedDUR2,TK_NotStart,DUKHCONP03Z4ELFF4060,"Installation  of DBS,MCCB Accessories.",8178,16,0,160,0,188.4,188.4,160,0,0,0,,,,2014-04-09 08:00,2014-05-01 17:00,,2014-04-07 08:00,2014-04-29 17:00,2014-04-07 08:00,2014-04-29 17:00,2014-04-07 08:00,2014-04-29 17:00,2014-04-09 08:00,2014-05-01 17:00,,PT_Normal,,,,,eDdiRc+MTzu9MPE6Ic1WNQ,,,,N,0,0,,,2013-02-16 15:53,2013-02-16 15:56,admin,admin
502134,6359,124835,13662,0,N,N,N,CP_Drtn,TT_Task,DT_FixedDUR2,TK_NotStart,DUKHCONP03Z4ELFF4065,Installation of Lighting fixtures & Accessories,8178,16,0,200,0,2528.4,2528.4,200,0,0,0,,,,2014-04-22 08:00,2014-05-20 17:00,,2014-04-20 08:00,2014-05-18 17:00,2014-04-20 08:00,2014-05-18 17:00,2014-04-20 08:00,2014-05-18 17:00,2014-04-22 08:00,2014-05-20 17:00,,PT_Normal,,,,,Dsp0ADcJRuqHR4odr6hemw,,,,N,0,0,,,2013-02-16 15:53,2013-02-16 15:56,admin,admin
502135,6359,124835,13662,0,N,N,N,CP_Drtn,TT_Task,DT_FixedDUR2,TK_NotStart,DUKHCONP03Z4ELFF4055,Install. of CAMS & Fire Fighting Accessories,8178,96,0,200,0,1612.8,1612.8,200,0,0,0,,,,2014-04-17 08:00,2014-05-15 17:00,,2014-04-03 08:00,2014-05-01 17:00,2014-04-03 08:00,2014-05-01 17:00,2014-04-03 08:00,2014-05-01 17:00,2014-04-17 08:00,2014-05-15 17:00,,PT_Normal,,,,,FCJ0QeOmTzC8zc8p65WEag,,,,N,0,0,,,2013-02-16 15:53,2013-02-16 15:56,admin,admin
502136,6359,124835,13662,0,N,N,N,CP_Drtn,TT_Task,DT_FixedDUR2,TK_NotStart,DUKHCONP03Z4ELFF4050,Installation of Telephone System,8178,168,152,200,0,542.4,542.4,200,0,0,0,,,,2014-04-26 08:00,2014-05-24 17:00,,2014-04-01 08:00,2014-04-29 17:00,2014-04-01 08:00,2014-04-29 17:00,2014-04-01 08:00,2014-04-29 17:00,2014-04-26 08:00,2014-05-24 17:00,,PT_Normal,,,,,IhocrYaPSVS+WruC+s8J+g,,,,N,0,0,,,2013-02-16 15:53,2013-02-23 09:03,admin,admin
502137,6359,124837,13662,0,N,N,N,CP_Drtn,TT_Task,DT_FixedDUR2,TK_NotStart,DUKHCONP03Z4PLGF4305,Installation of Plumbing pipes & testing,8178,288,0,144,0,2732.4,2732.4,144,0,0,0,,,,2014-01-13 08:00,2014-02-02 17:00,,2013-12-01 08:00,2013-12-22 17:00,2013-12-01 08:00,2013-12-22 17:00,2013-12-01 08:00,2013-12-22 17:00,2014-01-13 08:00,2014-02-02 17:00,,PT_Normal,,,,,vRa+Q1LkTyO1eC8HT//8UA,,,,N,0,0,,,2013-02-16 15:53,2013-02-16 15:56,admin,admin
502138,6359,124837,13662,0,N,N,N,CP_Drtn,TT_Task,DT_FixedDUR2,TK_NotStart,DUKHCONP03Z4PLGF4310,Installation of Drainage pipes &testing,8178,456,136,144,0,216,216,144,0,0,0,,,,2014-02-06 08:00,2014-02-27 17:00,,2013-12-01 08:00,2013-12-22 17:00,2013-12-01 08:00,2013-12-22 17:00,2013-12-01 08:00,2013-12-22 17:00,2014-02-06 08:00,2014-02-27 17:00,,PT_Normal,,,,,gfxIiVmdRXiqEO5Hj+/i/w,,,,N,0,0,,,2013-02-16 15:53,2013-02-16 15:56,admin,admin
502139,6359,124837,13662,0,N,N,N,CP_Drtn,TT_Task,DT_FixedDUR2,TK_NotStart,DUKHCONP03Z4PLGF4315,Sanitary Fittings & Accessories,8178,512,0,160,0,352.8,352.8,160,0,0,0,,,,2014-05-17 08:00,2014-06-08 17:00,,2014-03-03 08:00,2014-03-25 17:00,2014-03-03 08:00,2014-03-25 17:00,2014-03-03 08:00,2014-03-25 17:00,2014-05-17 08:00,2014-06-08 17:00,,PT_Normal,,,,,SXquM8zDTJeO14Va58HeuQ,,,,N,0,0,,,2013-02-16 15:53,2013-02-16 15:56,admin,admin
502140,6359,124837,13662,0,N,N,N,CP_Drtn,TT_Task,DT_FixedDUR2,TK_NotStart,DUKHCONP03Z4PLGF4320,Installation of Water Heater,8178,512,80,120,0,50.4,50.4,120,0,0,0,,,,2014-05-28 08:00,2014-06-14 17:00,,2014-03-15 08:00,2014-03-31 17:00,2014-03-15 08:00,2014-03-31 17:00,2014-03-15 08:00,2014-03-31 17:00,2014-05-28 08:00,2014-06-14 17:00,,PT_Normal,,,,,0j6vTNf5ShWu3x0k8z0AIQ,,,,N,0,0,,,2013-02-16 15:53,2013-02-16 15:56,admin,admin
502141,6359,124837,13662,0,N,N,N,CP_Drtn,TT_Task,DT_FixedDUR2,TK_NotStart,DUKHCONP03Z4PLUG4300,Drainage / Storm Pipes in Grade Slab,8178,0,0,160,0,165.6,165.6,160,0,0,0,,,,2013-08-04 08:00,2013-08-29 17:00,,2013-08-04 08:00,2013-08-29 17:00,2013-08-04 08:00,2013-08-29 17:00,2013-08-04 08:00,2013-08-29 17:00,2013-08-04 08:00,2013-08-29 17:00,,PT_Normal,,,,,yjlMn3QSSpapX1XtMF/5LQ,,,,N,0,0,,,2013-02-16 15:53,2013-02-16 15:56,admin,admin
502142,6359,124838,13662,0,N,N,N,CP_Drtn,TT_Task,DT_FixedDUR2,TK_NotStart,DUKHCONP03Z4PLRF4345,Installation of Plumbing pipes & fittings,8178,568,144,120,0,1623.6,1623.6,120,0,0,0,,,,2014-05-01 08:00,2014-05-18 17:00,,2014-02-06 08:00,2014-02-24 17:00,2014-02-06 08:00,2014-02-24 17:00,2014-02-06 08:00,2014-02-24 17:00,2014-05-01 08:00,2014-05-18 17:00,,PT_Normal,,,,,SDsbGvOhSmiTS09wS3rnfA,,,,N,0,0,,,2013-02-16 15:53,2013-02-16 15:56,admin,admin
502143,6359,124838,13662,0,N,N,N,CP_Drtn,TT_Task,DT_FixedDUR2,TK_NotStart,DUKHCONP03Z4PLRF4350,Installation of Rain water Pipes,8178,424,80,120,0,82.8,82.8,120,0,0,0,,,,2014-05-11 08:00,2014-05-27 17:00,,2014-03-10 08:00,2014-03-26 17:00,2014-03-10 08:00,2014-03-26 17:00,2014-03-10 08:00,2014-03-26 17:00,2014-05-11 08:00,2014-05-27 17:00,,PT_Normal,,,,,HC7G7xi8QsGsSp53toa8iQ,,,,N,0,0,,,2013-02-16 15:53,2013-02-16 15:56,admin,admin
502144,6359,124838,13662,0,N,N,N,CP_Drtn,TT_Task,DT_FixedDUR2,TK_NotStart,DUKHCONP03Z4PLRF4355,Roof  Water Tank Installation & Connections,8178,112,16,200,0,100.8,100.8,200,0,0,0,,,,2014-05-17 08:00,2014-06-14 17:00,,2014-04-30 08:00,2014-05-28 17:00,2014-04-30 08:00,2014-05-28 17:00,2014-04-30 08:00,2014-05-28 17:00,2014-05-17 08:00,2014-06-14 17:00,,PT_Normal,,,,,GVWymM7GTzOpKiVV4INXSw,,,,N,0,0,,,2013-02-16 15:53,2013-02-16 15:56,admin,admin
502145,6359,124839,13662,0,N,N,N,CP_Drtn,TT_Task,DT_FixedDUR2,TK_NotStart,DUKHCONP03Z4PLFF4325,Installation of Plumbing pipes & testing,8178,0,0,144,0,2732.4,2732.4,144,0,0,0,,,,2014-01-12 08:00,2014-02-01 17:00,,2014-01-12 08:00,2014-02-01 17:00,2014-01-12 08:00,2014-02-01 17:00,2014-01-12 08:00,2014-02-01 17:00,2014-01-12 08:00,2014-02-01 17:00,,PT_Normal,,,,,92mnQrtbRHuuMgIdMvz+XQ,,,,N,0,0,,,2013-02-16 15:53,2013-02-16 15:56,admin,admin
502146,6359,124839,13662,0,N,N,N,CP_Drtn,TT_Task,DT_FixedDUR2,TK_NotStart,DUKHCONP03Z4PLFF4330,Installation of Drainage pipes & testing,8178,208,56,144,0,216,216,144,0,0,0,,,,2014-02-13 08:00,2014-03-05 17:00,,2014-01-13 08:00,2014-02-02 17:00,2014-01-13 08:00,2014-02-02 17:00,2014-01-13 08:00,2014-02-02 17:00,2014-02-13 08:00,2014-03-05 17:00,,PT_Normal,,,,,k/d4og7yQeGnbipM0cE7yQ,,,,N,0,0,,,2013-02-16 15:53,2013-02-16 15:56,admin,admin
502147,6359,124839,13662,0,N,N,N,CP_Drtn,TT_Task,DT_FixedDUR2,TK_NotStart,DUKHCONP03Z4PLFF4335,Sanitary Fittings & Accessories,8178,112,0,160,0,352.8,352.8,160,0,0,0,,,,2014-04-29 08:00,2014-05-21 17:00,,2014-04-13 08:00,2014-05-05 17:00,2014-04-13 08:00,2014-05-05 17:00,2014-04-13 08:00,2014-05-05 17:00,2014-04-29 08:00,2014-05-21 17:00,,PT_Normal,,,,,h8lMuiiWR1uO/Uax4yr8pA,,,,N,0,0,,,2013-02-16 15:53,2013-02-16 15:56,admin,admin
502148,6359,124839,13662,0,N,N,N,CP_Drtn,TT_Task,DT_FixedDUR2,TK_NotStart,DUKHCONP03Z4PLFF4340,Installation of Water Heater,8178,112,0,120,0,50.4,50.4,120,0,0,0,,,,2014-05-11 08:00,2014-05-27 17:00,,2014-04-24 08:00,2014-05-11 17:00,2014-04-24 08:00,2014-05-11 17:00,2014-04-24 08:00,2014-05-11 17:00,2014-05-11 08:00,2014-05-27 17:00,,PT_Normal,,,,,ZASIwTpEQeuh+CYpFL7TJw,,,,N,0,0,,,2013-02-16 15:53,2013-02-16 15:56,admin,admin
502149,6359,124841,13662,0,N,N,N,CP_Drtn,TT_Task,DT_FixedDUR2,TK_NotStart,DUKHCONP03Z4ACFF4615,Installation AC Pipes,8178,256,8,160,0,340.8,340.8,160,0,0,0,,,,2014-03-15 08:00,2014-04-06 17:00,,2014-02-04 08:00,2014-02-27 17:00,2014-02-04 08:00,2014-02-27 17:00,2014-02-04 08:00,2014-02-27 17:00,2014-03-15 08:00,2014-04-06 17:00,,PT_Normal,,,,,vI2O+piwRfGl0Z5oMKBFdg,,,,N,0,0,,,2013-02-16 15:53,2013-02-16 15:56,admin,admin
502150,6359,124841,13662,0,N,N,N,CP_Drtn,TT_Task,DT_FixedDUR2,TK_NotStart,DUKHCONP03Z4ACFF4620,Fixing of Ventilation Equipments,8178,72,0,200,0,136.8,136.8,200,0,0,0,,,,2014-04-14 08:00,2014-05-12 17:00,,2014-04-03 08:00,2014-05-01 17:00,2014-04-03 08:00,2014-05-01 17:00,2014-04-03 08:00,2014-05-01 17:00,2014-04-14 08:00,2014-05-12 17:00,,PT_Normal,,,,,3+RGDfrNSz+8YHPUb12I1A,,,,N,0,0,,,2013-02-16 15:53,2013-02-16 15:56,admin,admin
502151,6359,124841,13662,0,N,N,N,CP_Drtn,TT_Task,DT_FixedDUR2,TK_NotStart,DUKHCONP03Z4ACFF4625,Fixing of Split AC,8178,72,0,160,0,361.2,361.2,160,0,0,0,,,,2014-05-05 08:00,2014-05-27 17:00,,2014-04-24 08:00,2014-05-17 17:00,2014-04-24 08:00,2014-05-17 17:00,2014-04-24 08:00,2014-05-17 17:00,2014-05-05 08:00,2014-05-27 17:00,,PT_Normal,,,,,YVSgarIjSteJnG2XC+biHg,,,,N,0,0,,,2013-02-16 15:53,2013-02-23 09:03,admin,admin
502152,6359,124842,13662,0,N,N,N,CP_Drtn,TT_Task,DT_FixedDUR2,TK_NotStart,DUKHCONP03Z4ACGF4600,Installation AC Pipes,8178,536,40,160,0,340.8,340.8,160,0,0,0,,,,2014-03-11 08:00,2014-04-02 17:00,,2013-12-22 08:00,2014-01-13 17:00,2013-12-22 08:00,2014-01-13 17:00,2013-12-22 08:00,2014-01-13 17:00,2014-03-11 08:00,2014-04-02 17:00,,PT_Normal,,,,,vYAhVyD1Qgq+rMhOI8wy9g,,,,N,0,0,,,2013-02-16 15:53,2013-02-16 15:56,admin,admin
502153,6359,124842,13662,0,N,N,N,CP_Drtn,TT_Task,DT_FixedDUR2,TK_NotStart,DUKHCONP03Z4ACGF4605,Fixing of Ventilation Equipments,8178,408,0,200,0,136.8,136.8,200,0,0,0,,,,2014-04-14 08:00,2014-05-12 17:00,,2014-02-13 08:00,2014-03-13 17:00,2014-02-13 08:00,2014-03-13 17:00,2014-02-13 08:00,2014-03-13 17:00,2014-04-14 08:00,2014-05-12 17:00,,PT_Normal,,,,,hCto/uzNRPCyCglG8LDi8A,,,,N,0,0,,,2013-02-16 15:53,2013-02-16 15:56,admin,admin
502154,6359,124842,13662,0,N,N,N,CP_Drtn,TT_Task,DT_FixedDUR2,TK_NotStart,DUKHCONP03Z4ACGF4610,Fixing of Split AC,8178,408,40,160,0,361.2,361.2,160,0,0,0,,,,2014-05-05 08:00,2014-05-27 17:00,,2014-03-06 08:00,2014-03-29 17:00,2014-03-06 08:00,2014-03-29 17:00,2014-03-06 08:00,2014-03-29 17:00,2014-05-05 08:00,2014-05-27 17:00,,PT_Normal,,,,,KofZkfmTS1eTe7RVkzj/iA,,,,N,0,0,,,2013-02-16 15:53,2013-02-23 09:03,admin,admin
502155,6359,124843,13662,0,N,N,N,CP_Drtn,TT_Task,DT_FixedDUR2,TK_NotStart,DUKHCONP03Z4ACRF4630,Installation of Refrigerant Pipes,8178,584,0,200,0,170.4,170.4,200,0,0,0,,,,2014-05-11 08:00,2014-06-08 17:00,,2014-02-15 08:00,2014-03-15 17:00,2014-02-15 08:00,2014-03-15 17:00,2014-02-15 08:00,2014-03-15 17:00,2014-05-11 08:00,2014-06-08 17:00,,PT_Normal,,,,,tYJQTO7RSP20L9D4Ne0fyQ,,,,N,0,0,,,2013-02-16 15:53,2013-02-16 15:56,admin,admin
502156,6359,124843,13662,0,N,N,N,CP_Drtn,TT_Task,DT_FixedDUR2,TK_NotStart,DUKHCONP03Z4ACRF4635,Installation of Condensing Unit,8178,112,0,200,0,562.8,562.8,200,0,0,0,,,,2014-05-17 08:00,2014-06-14 17:00,,2014-04-30 08:00,2014-05-28 17:00,2014-04-30 08:00,2014-05-28 17:00,2014-04-30 08:00,2014-05-28 17:00,2014-05-17 08:00,2014-06-14 17:00,,PT_Normal,,,,,U+DbYRktQ+SLTC2DudJnIg,,,,N,0,0,,,2013-02-16 15:53,2013-02-23 09:03,admin,admin
502157,6359,124846,13662,0,N,N,N,CP_Drtn,TT_Task,DT_FixedDUR2,TK_NotStart,DUKHCONP03Z4ARRF3610,Flooring screed,8164,576,0,120,0,115.5,115.5,120,0,0,0,,,,2014-05-03 08:00,2014-05-19 17:00,,2014-02-06 08:00,2014-02-24 17:00,2014-02-06 08:00,2014-02-24 17:00,2014-02-06 08:00,2014-02-24 17:00,2014-05-03 08:00,2014-05-19 17:00,,PT_Normal,,,,,fvKiUHUSRZamlYmD6qfyow,,,,N,0,0,,,2013-02-16 15:53,2013-02-16 15:56,admin,admin
502158,6359,124846,13662,0,N,N,N,CP_Drtn,TT_Task,DT_FixedDUR2,TK_NotStart,DUKHCONP03Z4ARRF3695,Painting,8178,576,0,160,0,504,504,160,0,0,0,,,,2014-05-11 08:00,2014-06-02 17:00,,2014-02-16 08:00,2014-03-10 17:00,2014-02-16 08:00,2014-03-10 17:00,2014-02-16 08:00,2014-03-10 17:00,2014-05-11 08:00,2014-06-02 17:00,,PT_Normal,,,,,RY5JO+zwQrCcj8eOR18+RQ,,,,N,0,0,,,2013-02-16 15:53,2013-02-16 15:56,admin,admin
502159,6359,124846,13662,0,N,N,N,CP_Drtn,TT_Task,DT_FixedDUR2,TK_NotStart,DUKHCONP03Z4ARRF3620,Epoxy Painting,8178,576,576,120,0,24.75,24.75,120,0,0,0,,,,2014-05-28 08:00,2014-06-14 17:00,,2014-03-05 08:00,2014-03-22 17:00,2014-03-05 08:00,2014-03-22 17:00,2014-03-05 08:00,2014-03-22 17:00,2014-05-28 08:00,2014-06-14 17:00,,PT_Normal,,,,,7lxHU+zlRUueXvjKnpOMcQ,,,,N,0,0,,,2013-02-16 15:53,2013-02-16 15:56,admin,admin
502160,6359,124846,13662,0,N,N,N,CP_Drtn,TT_Task,DT_FixedDUR2,TK_NotStart,DUKHCONP03Z4ARRF3600,Block work,8168,536,0,160,0,487.5,487.5,160,0,0,0,,,,2014-04-05 08:00,2014-04-27 17:00,,2014-01-15 08:00,2014-02-06 17:00,2014-01-15 08:00,2014-02-06 17:00,2014-01-15 08:00,2014-02-06 17:00,2014-04-05 08:00,2014-04-27 17:00,,PT_Normal,,,,,Awe2hlWpTomw+Isd8VPqlA,,,,N,0,0,,,2013-02-16 15:53,2013-02-16 15:56,admin,admin
502161,6359,124846,13662,0,N,N,N,CP_Drtn,TT_Task,DT_FixedDUR2,TK_NotStart,DUKHCONP03Z4ARRF3605,Plastering work,8169,536,0,160,0,1950,1950,160,0,0,0,,,,2014-04-13 08:00,2014-05-05 17:00,,2014-01-23 08:00,2014-02-16 17:00,2014-01-23 08:00,2014-02-16 17:00,2014-01-23 08:00,2014-02-16 17:00,2014-04-13 08:00,2014-05-05 17:00,,PT_Normal,,,,,45yG2Z8fTUaUsCDoWAJZBw,,,,N,0,0,,,2013-02-16 15:53,2013-02-16 15:56,admin,admin
502162,6359,124847,13662,0,N,N,N,CP_Drtn,TT_Task,DT_FixedDUR2,TK_NotStart,DUKHCONP03Z4ARFF3300,Block work,8168,0,0,200,0,5553.5,5553.5,200,0,0,0,,,,2013-12-28 08:00,2014-01-25 17:00,,2013-12-28 08:00,2014-01-25 17:00,2013-12-28 08:00,2014-01-25 17:00,2013-12-28 08:00,2014-01-25 17:00,2013-12-28 08:00,2014-01-25 17:00,,PT_Normal,,,,,CIkW+oWVQgmPm0aGFZsffQ,,,,N,0,0,,,2013-02-16 15:53,2013-02-16 15:56,admin,admin
502163,6359,124847,13662,0,N,N,N,CP_Drtn,TT_Task,DT_FixedDUR2,TK_NotStart,DUKHCONP03Z4ARFF3305,Plastering work,8169,0,0,200,0,5516,5516,200,0,0,0,,,,2014-01-21 08:00,2014-02-19 17:00,,2014-01-21 08:00,2014-02-19 17:00,2014-01-21 08:00,2014-02-19 17:00,2014-01-21 08:00,2014-02-19 17:00,2014-01-21 08:00,2014-02-19 17:00,,PT_Normal,,,,,BeyJbLLGTZuHtOnPamkh3Q,,,,N,0,0,,,2013-02-16 15:53,2013-02-16 15:56,admin,admin
502164,6359,124847,13662,0,N,N,N,CP_Drtn,TT_Task,DT_FixedDUR2,TK_NotStart,DUKHCONP03Z4ARFF3310,Flooring screed,8164,120,120,168,0,1031.25,1031.25,168,0,0,0,,,,2014-02-17 08:00,2014-03-12 17:00,,2014-01-29 08:00,2014-02-23 17:00,2014-01-29 08:00,2014-02-23 17:00,2014-01-29 08:00,2014-02-23 17:00,2014-02-17 08:00,2014-03-12 17:00,,PT_Normal,,,,,DtfTacbmTxit3KnLt5IL6g,,,,N,0,0,,,2013-02-16 15:53,2013-02-16 15:56,admin,admin
502165,6359,124847,13662,0,N,N,N,CP_Drtn,TT_Task,DT_FixedDUR2,TK_NotStart,DUKHCONP03Z4ARFF3315,Wet area waterproofing,8178,0,0,120,0,582,582,120,0,0,0,,,,2014-02-12 08:00,2014-03-01 17:00,,2014-02-12 08:00,2014-03-01 17:00,2014-02-12 08:00,2014-03-01 17:00,2014-02-12 08:00,2014-03-01 17:00,2014-02-12 08:00,2014-03-01 17:00,,PT_Normal,,,,,Ijr1mjYMTd63FfS5KtlZ3A,,,,N,0,0,,,2013-02-16 15:53,2013-02-16 15:56,admin,admin
502166,6359,124847,13662,0,N,N,N,CP_Drtn,TT_Task,DT_FixedDUR2,TK_NotStart,DUKHCONP03Z4ARFF3330,Paint First coat,8178,144,144,200,0,3644.75,3644.75,200,0,0,0,,,,2014-03-01 08:00,2014-03-29 17:00,,2014-02-06 08:00,2014-03-08 17:00,2014-02-06 08:00,2014-03-08 17:00,2014-02-06 08:00,2014-03-08 17:00,2014-03-01 08:00,2014-03-29 17:00,,PT_Normal,,,,,0+RHJOwUS1W5PKH1oPh7sA,,,,N,0,0,,,2013-02-16 15:53,2013-02-16 15:56,admin,admin
502167,6359,124847,13662,0,N,N,N,CP_Drtn,TT_Task,DT_FixedDUR2,TK_NotStart,DUKHCONP03Z4ARFF3320,Ceramic Wall Tiling,8170,0,0,200,0,2603.5,2603.5,200,0,0,0,,,,2014-02-22 08:00,2014-03-22 17:00,,2014-02-22 08:00,2014-03-22 17:00,2014-02-22 08:00,2014-03-22 17:00,2014-02-22 08:00,2014-03-22 17:00,2014-02-22 08:00,2014-03-22 17:00,,PT_Normal,,,,,jidYp+5kTJedNiul3htxTA,,,,N,0,0,,,2013-02-16 15:53,2013-02-16 15:56,admin,admin
502168,6359,124847,13662,0,N,N,N,CP_Drtn,TT_Task,DT_FixedDUR2,TK_NotStart,DUKHCONP03Z4ARFF3325,Porcelain Tile flooring,8170,0,0,200,0,1787.5,1787.5,200,0,0,0,,,,2014-03-01 08:00,2014-03-29 17:00,,2014-03-01 08:00,2014-03-29 17:00,2014-03-01 08:00,2014-03-29 17:00,2014-03-01 08:00,2014-03-29 17:00,2014-03-01 08:00,2014-03-29 17:00,,PT_Normal,,,,,lKpp4cL0TXa/JRScSHr61Q,,,,N,0,0,,,2013-02-16 15:53,2013-02-16 15:56,admin,admin
502169,6359,124847,13662,0,N,N,N,CP_Drtn,TT_Task,DT_FixedDUR2,TK_NotStart,DUKHCONP03Z4ARFF3335,Slate Tile Flooring & Skirting,8178,80,80,120,0,1350,1350,120,0,0,0,,,,2014-03-30 08:00,2014-04-15 17:00,,2014-03-18 08:00,2014-04-03 17:00,2014-03-18 08:00,2014-04-03 17:00,2014-03-18 08:00,2014-04-03 17:00,2014-03-30 08:00,2014-04-15 17:00,,PT_Normal,,,,,VR3Xrx/vToSU41k4SINSgg,,,,N,0,0,,,2013-02-16 15:53,2013-02-16 15:56,admin,admin
502170,6359,124847,13662,0,N,N,N,CP_Drtn,TT_Task,DT_FixedDUR2,TK_NotStart,DUKHCONP03Z4ARFF3350,Granite - Stair case flooring & Skirting,8178,16,16,160,0,150,150,160,0,0,0,,,,2014-03-24 08:00,2014-04-15 17:00,,2014-03-22 08:00,2014-04-13 17:00,2014-03-22 08:00,2014-04-13 17:00,2014-03-22 08:00,2014-04-13 17:00,2014-03-24 08:00,2014-04-15 17:00,,PT_Normal,,,,,J3y5u0GAQDeVnSfm4IqQjg,,,,N,0,0,,,2013-02-16 15:53,2013-02-16 15:56,admin,admin
502171,6359,124847,13662,0,N,N,N,CP_Drtn,TT_Task,DT_FixedDUR2,TK_NotStart,DUKHCONP03Z4ARFF3345,Fixing of Suspension systems,8178,0,0,160,0,1434.75,1434.75,160,0,0,0,,,,2014-03-15 08:00,2014-04-06 17:00,,2014-03-15 08:00,2014-04-06 17:00,2014-03-15 08:00,2014-04-06 17:00,2014-03-15 08:00,2014-04-06 17:00,2014-03-15 08:00,2014-04-06 17:00,,PT_Normal,,,,,ct5jwHmdSueeO+nzp/+IQg,,,,N,0,0,,,2013-02-16 15:53,2013-02-16 15:56,admin,admin
502172,6359,124847,13662,0,N,N,N,CP_Drtn,TT_Task,DT_FixedDUR2,TK_NotStart,DUKHCONP03Z4ARFF3355,Aluminum tile false ceiling,8178,16,0,160,0,156.25,156.25,160,0,0,0,,,,2014-03-29 08:00,2014-04-20 17:00,,2014-03-26 08:00,2014-04-17 17:00,2014-03-26 08:00,2014-04-17 17:00,2014-03-26 08:00,2014-04-17 17:00,2014-03-29 08:00,2014-04-20 17:00,,PT_Normal,,,,,fIlrKg4NTIibJgK1U51W2g,,,,N,0,0,,,2013-02-16 15:53,2013-02-16 15:56,admin,admin
502173,6359,124847,13662,0,N,N,N,CP_Drtn,TT_Task,DT_FixedDUR2,TK_NotStart,DUKHCONP03Z4ARFF3360,Gypsum board false ceiling,8178,0,0,200,0,1298.71,1298.71,200,0,0,0,,,,2014-03-23 08:00,2014-04-20 17:00,,2014-03-23 08:00,2014-04-20 17:00,2014-03-23 08:00,2014-04-20 17:00,2014-03-23 08:00,2014-04-20 17:00,2014-03-23 08:00,2014-04-20 17:00,,PT_Normal,,,,,AoZkDOqITF2oOfOt90GMqg,,,,N,0,0,,,2013-02-16 15:53,2013-02-16 15:56,admin,admin
502174,6359,124847,13662,0,N,N,N,CP_Drtn,TT_Task,DT_FixedDUR2,TK_NotStart,DUKHCONP03Z4ARFF3365,Wooden door,8178,0,0,120,0,330,330,120,0,0,0,,,,2014-04-07 08:00,2014-04-23 17:00,,2014-04-07 08:00,2014-04-23 17:00,2014-04-07 08:00,2014-04-23 17:00,2014-04-07 08:00,2014-04-23 17:00,2014-04-07 08:00,2014-04-23 17:00,,PT_Normal,,,,,rmcQSzR6Qz2/IDdVQch43w,,,,N,0,0,,,2013-02-16 15:53,2013-02-16 15:56,admin,admin
502175,6359,124847,13662,0,N,N,N,CP_Drtn,TT_Task,DT_FixedDUR2,TK_NotStart,DUKHCONP03Z4ARFF3370,Aluminum Door,8178,0,0,160,0,99,99,160,0,0,0,,,,2014-04-15 08:00,2014-05-07 17:00,,2014-04-15 08:00,2014-05-07 17:00,2014-04-15 08:00,2014-05-07 17:00,2014-04-15 08:00,2014-05-07 17:00,2014-04-15 08:00,2014-05-07 17:00,,PT_Normal,,,,,2an3KR6LStO6DWvRVlPGgA,,,,N,0,0,,,2013-02-16 15:53,2013-02-16 15:56,admin,admin
502176,6359,124847,13662,0,N,N,N,CP_Drtn,TT_Task,DT_FixedDUR2,TK_NotStart,DUKHCONP03Z4ARFF3380,Aluminum windows,8178,88,88,160,0,264,264,160,0,0,0,,,,2014-05-05 08:00,2014-05-27 17:00,,2014-04-22 08:00,2014-05-14 17:00,2014-04-22 08:00,2014-05-14 17:00,2014-04-22 08:00,2014-05-14 17:00,2014-05-05 08:00,2014-05-27 17:00,,PT_Normal,,,,,oLxDUDPpR9qu/8BEdklVnw,,,,N,0,0,,,2013-02-16 15:53,2013-02-16 15:56,admin,admin
502177,6359,124847,13662,0,N,N,N,CP_Drtn,TT_Task,DT_FixedDUR2,TK_NotStart,DUKHCONP03Z4ARFF3375,Carpentry & Joinery Works,8178,0,0,200,0,300,300,200,0,0,0,,,,2014-04-23 08:00,2014-05-21 17:00,,2014-04-23 08:00,2014-05-21 17:00,2014-04-23 08:00,2014-05-21 17:00,2014-04-23 08:00,2014-05-21 17:00,2014-04-23 08:00,2014-05-21 17:00,,PT_Normal,,,,,LcCC8TyDQrqWR46JcYdWMg,,,,N,0,0,,,2013-02-16 15:53,2013-02-16 15:56,admin,admin
502178,6359,124847,13662,0,N,N,N,CP_Drtn,TT_Task,DT_FixedDUR2,TK_NotStart,DUKHCONP03Z4ARFF3390,Installation of Granite Counter Top,8171,0,0,160,0,132,132,160,0,0,0,,,,2014-05-07 08:00,2014-05-29 17:00,,2014-05-07 08:00,2014-05-29 17:00,2014-05-07 08:00,2014-05-29 17:00,2014-05-07 08:00,2014-05-29 17:00,2014-05-07 08:00,2014-05-29 17:00,,PT_Normal,,,,,HjWpILOJQsK0hihEJQXYWg,,,,N,0,0,,,2013-02-16 15:53,2013-02-16 15:56,admin,admin
502179,6359,124847,13662,0,N,N,N,CP_Drtn,TT_Task,DT_FixedDUR2,TK_NotStart,DUKHCONP03Z4ARFF3385,Handrail &  Balustrade,8178,0,0,160,0,275,275,160,0,0,0,,,,2014-05-05 08:00,2014-05-27 17:00,,2014-05-05 08:00,2014-05-27 17:00,2014-05-05 08:00,2014-05-27 17:00,2014-05-05 08:00,2014-05-27 17:00,2014-05-05 08:00,2014-05-27 17:00,,PT_Normal,,,,,5I7aGG07QyWfjKgLnqp1YA,,,,N,0,0,,,2013-02-16 15:53,2013-02-16 15:56,admin,admin
502180,6359,124847,13662,0,N,N,N,CP_Drtn,TT_Task,DT_FixedDUR2,TK_NotStart,DUKHCONP03Z4ARFF3395,Final Painting,8178,0,0,200,0,3644.75,3644.75,200,0,0,0,,,,2014-05-17 08:00,2014-06-14 17:00,,2014-05-17 08:00,2014-06-14 17:00,2014-05-17 08:00,2014-06-14 17:00,2014-05-17 08:00,2014-06-14 17:00,2014-05-17 08:00,2014-06-14 17:00,,PT_Normal,,,,,zlvkLs3ES4GbG4H2YXHKvw,,,,N,0,0,,,2013-02-16 15:53,2013-02-16 15:56,admin,admin
502181,6359,124848,13662,0,N,N,N,CP_Drtn,TT_Task,DT_FixedDUR2,TK_NotStart,DUKHCONP03Z4ARGF3000,Block work,8168,288,0,200,0,7112.5,7112.5,200,0,0,0,,,,2013-12-28 08:00,2014-01-25 17:00,,2013-11-14 08:00,2013-12-12 17:00,2013-11-14 08:00,2013-12-12 17:00,2013-11-14 08:00,2013-12-12 17:00,2013-12-28 08:00,2014-01-25 17:00,,PT_Normal,,,,,8HlBKH6XRDml9OF59P+gqg,,,,N,0,0,,,2013-02-16 15:53,2013-02-16 15:56,admin,admin
502182,6359,124848,13662,0,N,N,N,CP_Drtn,TT_Task,DT_FixedDUR2,TK_NotStart,DUKHCONP03Z4ARGF3005,Plastering work,8169,288,0,200,0,6268.75,6268.75,200,0,0,0,,,,2014-01-19 08:00,2014-02-17 17:00,,2013-12-07 08:00,2014-01-05 17:00,2013-12-07 08:00,2014-01-05 17:00,2013-12-07 08:00,2014-01-05 17:00,2014-01-19 08:00,2014-02-17 17:00,,PT_Normal,,,,,/WphrVZNTZSeqzq3oNhngw,,,,N,0,0,,,2013-02-16 15:53,2013-02-16 15:56,admin,admin
502183,6359,124848,13662,0,N,N,N,CP_Drtn,TT_Task,DT_FixedDUR2,TK_NotStart,DUKHCONP03Z4ARGF3010,Flooring screed,8164,352,64,168,0,1234.75,1234.75,168,0,0,0,,,,2014-02-05 08:00,2014-03-02 17:00,,2013-12-15 08:00,2014-01-08 17:00,2013-12-15 08:00,2014-01-08 17:00,2013-12-15 08:00,2014-01-08 17:00,2014-02-05 08:00,2014-03-02 17:00,,PT_Normal,,,,,F55HwyOyQ+G5RwJPN1dYFA,,,,N,0,0,,,2013-02-16 15:53,2013-02-16 15:56,admin,admin
502184,6359,124848,13662,0,N,N,N,CP_Drtn,TT_Task,DT_FixedDUR2,TK_NotStart,DUKHCONP03Z4ARGF3015,Wet area waterproofing & Protection Screed,8178,288,0,120,0,582,582,120,0,0,0,,,,2014-02-05 08:00,2014-02-23 17:00,,2013-12-25 08:00,2014-01-11 17:00,2013-12-25 08:00,2014-01-11 17:00,2013-12-25 08:00,2014-01-11 17:00,2014-02-05 08:00,2014-02-23 17:00,,PT_Normal,,,,,wz00B7taTq6i4f9y9pHuhw,,,,N,0,0,,,2013-02-16 15:53,2013-02-16 15:56,admin,admin
502185,6359,124848,13662,0,N,N,N,CP_Drtn,TT_Task,DT_FixedDUR2,TK_NotStart,DUKHCONP03Z4ARGF3030,Paint First coat,8178,352,0,200,0,4136.55,4136.55,200,0,0,0,,,,2014-02-22 08:00,2014-03-22 17:00,,2013-12-31 08:00,2014-01-28 17:00,2013-12-31 08:00,2014-01-28 17:00,2013-12-31 08:00,2014-01-28 17:00,2014-02-22 08:00,2014-03-22 17:00,,PT_Normal,,,,,q9E7KJxzSouh+n8oqLLp9Q,,,,N,0,0,,,2013-02-16 15:53,2013-02-16 15:56,admin,admin
502186,6359,124848,13662,0,N,N,N,CP_Drtn,TT_Task,DT_FixedDUR2,TK_NotStart,DUKHCONP03Z4ARGF3020,Ceramic Wall Tiling,8170,288,0,200,0,2603.5,2603.5,200,0,0,0,,,,2014-02-12 08:00,2014-03-12 17:00,,2013-12-31 08:00,2014-01-28 17:00,2013-12-31 08:00,2014-01-28 17:00,2013-12-31 08:00,2014-01-28 17:00,2014-02-12 08:00,2014-03-12 17:00,,PT_Normal,,,,,wPfHN2ZDQ0ieN8iOs4Ey1w,,,,N,0,0,,,2013-02-16 15:53,2013-02-16 15:56,admin,admin
502187,6359,124848,13662,0,N,N,N,CP_Drtn,TT_Task,DT_FixedDUR2,TK_NotStart,DUKHCONP03Z4ARGF3025,Porcelain Tile flooring,8170,288,0,200,0,1787.5,1787.5,200,0,0,0,,,,2014-02-18 08:00,2014-03-18 17:00,,2014-01-06 08:00,2014-02-03 17:00,2014-01-06 08:00,2014-02-03 17:00,2014-01-06 08:00,2014-02-03 17:00,2014-02-18 08:00,2014-03-18 17:00,,PT_Normal,,,,,9XEOdBAwSfG9VxYXXYq65w,,,,N,0,0,,,2013-02-16 15:53,2013-02-16 15:56,admin,admin
502188,6359,124848,13662,0,N,N,N,CP_Drtn,TT_Task,DT_FixedDUR2,TK_NotStart,DUKHCONP03Z4ARGF3040,Cobble Tile flooring,8170,320,0,120,0,68.75,68.75,120,0,0,0,,,,2014-03-22 08:00,2014-04-07 17:00,,2014-02-02 08:00,2014-02-19 17:00,2014-02-02 08:00,2014-02-19 17:00,2014-02-02 08:00,2014-02-19 17:00,2014-03-22 08:00,2014-04-07 17:00,,PT_Normal,,,,,eDDTTZmvR/afOfG5K6SNCQ,,,,N,0,0,,,2013-02-16 15:53,2013-02-16 15:56,admin,admin
502189,6359,124848,13662,0,N,N,N,CP_Drtn,TT_Task,DT_FixedDUR2,TK_NotStart,DUKHCONP03Z4ARGF3035,Slate Tile Flooring & Skirting,8170,336,16,120,0,45.5,45.5,120,0,0,0,,,,2014-03-17 08:00,2014-04-02 17:00,,2014-01-26 08:00,2014-02-12 17:00,2014-01-26 08:00,2014-02-12 17:00,2014-01-26 08:00,2014-02-12 17:00,2014-03-17 08:00,2014-04-02 17:00,,PT_Normal,,,,,DcfegP5eRJKh4guChhgWfw,,,,N,0,0,,,2013-02-16 15:53,2013-02-16 15:56,admin,admin
502190,6359,124848,13662,0,N,N,N,CP_Drtn,TT_Task,DT_FixedDUR2,TK_NotStart,DUKHCONP03Z4ARGF3050,Granite - Stair case flooring & Skirting,8171,320,0,160,0,506.25,506.25,160,0,0,0,,,,2014-03-30 08:00,2014-04-21 17:00,,2014-02-10 08:00,2014-03-05 17:00,2014-02-10 08:00,2014-03-05 17:00,2014-02-10 08:00,2014-03-05 17:00,2014-03-30 08:00,2014-04-21 17:00,,PT_Normal,,,,,H3XcCsWYTfesTnDLgnudiA,,,,N,0,0,,,2013-02-16 15:53,2013-02-16 15:56,admin,admin
502191,6359,124848,13662,0,N,N,N,CP_Drtn,TT_Task,DT_FixedDUR2,TK_NotStart,DUKHCONP03Z4ARGF3045,Fixing of Suspension systems,8178,288,0,160,0,1434.75,1434.75,160,0,0,0,,,,2014-03-08 08:00,2014-03-30 17:00,,2014-01-23 08:00,2014-02-16 17:00,2014-01-23 08:00,2014-02-16 17:00,2014-01-23 08:00,2014-02-16 17:00,2014-03-08 08:00,2014-03-30 17:00,,PT_Normal,,,,,r4L63an5Qpu65BpWJxbYzw,,,,N,0,0,,,2013-02-16 15:53,2013-02-16 15:56,admin,admin
502192,6359,124848,13662,0,N,N,N,CP_Drtn,TT_Task,DT_FixedDUR2,TK_NotStart,DUKHCONP03Z4ARGF3055,Aluminum tile false ceiling,8178,312,24,200,0,156.25,156.25,200,0,0,0,,,,2014-03-19 08:00,2014-04-16 17:00,,2014-02-01 08:00,2014-03-02 17:00,2014-02-01 08:00,2014-03-02 17:00,2014-02-01 08:00,2014-03-02 17:00,2014-03-19 08:00,2014-04-16 17:00,,PT_Normal,,,,,tnUnrkS3Si627/qtasSjhA,,,,N,0,0,,,2013-02-16 15:53,2013-02-16 15:56,admin,admin
502193,6359,124848,13662,0,N,N,N,CP_Drtn,TT_Task,DT_FixedDUR2,TK_NotStart,DUKHCONP03Z4ARGF3060,Gypsum board false ceiling,8178,288,0,200,0,1298.71,1298.71,200,0,0,0,,,,2014-03-19 08:00,2014-04-16 17:00,,2014-02-04 08:00,2014-03-05 17:00,2014-02-04 08:00,2014-03-05 17:00,2014-02-04 08:00,2014-03-05 17:00,2014-03-19 08:00,2014-04-16 17:00,,PT_Normal,,,,,bPi7MpxxRRi0b7HJ9MSNiA,,,,N,0,0,,,2013-02-16 15:53,2013-02-16 15:56,admin,admin
502194,6359,124848,13662,0,N,N,N,CP_Drtn,TT_Task,DT_FixedDUR2,TK_NotStart,DUKHCONP03Z4ARGF3065,Wooden door,8178,320,0,120,0,412.5,412.5,120,0,0,0,,,,2014-04-13 08:00,2014-04-29 17:00,,2014-02-25 08:00,2014-03-13 17:00,2014-02-25 08:00,2014-03-13 17:00,2014-02-25 08:00,2014-03-13 17:00,2014-04-13 08:00,2014-04-29 17:00,,PT_Normal,,,,,OkRWs58OTce7f1egwaVgVQ,,,,N,0,0,,,2013-02-16 15:53,2013-02-16 15:56,admin,admin
502195,6359,124848,13662,0,N,N,N,CP_Drtn,TT_Task,DT_FixedDUR2,TK_NotStart,DUKHCONP03Z4ARGF3070,Aluminum doors,8178,320,0,120,0,99,99,120,0,0,0,,,,2014-04-19 08:00,2014-05-05 17:00,,2014-03-03 08:00,2014-03-19 17:00,2014-03-03 08:00,2014-03-19 17:00,2014-03-03 08:00,2014-03-19 17:00,2014-04-19 08:00,2014-05-05 17:00,,PT_Normal,,,,,5FbY9hpqR3CoFbwmIv7OTQ,,,,N,0,0,,,2013-02-16 15:53,2013-02-16 15:56,admin,admin
502196,6359,124848,13662,0,N,N,N,CP_Drtn,TT_Task,DT_FixedDUR2,TK_NotStart,DUKHCONP03Z4ARGF3080,Aluminum windows,8178,400,40,160,0,220,220,160,0,0,0,,,,2014-05-07 08:00,2014-05-29 17:00,,2014-03-10 08:00,2014-04-01 17:00,2014-03-10 08:00,2014-04-01 17:00,2014-03-10 08:00,2014-04-01 17:00,2014-05-07 08:00,2014-05-29 17:00,,PT_Normal,,,,,OexWbYSqQMiVDUHUu6Cgmg,,,,N,0,0,,,2013-02-16 15:53,2013-02-16 15:56,admin,admin
502197,6359,124848,13662,0,N,N,N,CP_Drtn,TT_Task,DT_FixedDUR2,TK_NotStart,DUKHCONP03Z4ARGF3075,Carpentry & Joinery Works,8178,320,0,160,0,792,792,160,0,0,0,,,,2014-04-24 08:00,2014-05-17 17:00,,2014-03-09 08:00,2014-03-31 17:00,2014-03-09 08:00,2014-03-31 17:00,2014-03-09 08:00,2014-03-31 17:00,2014-04-24 08:00,2014-05-17 17:00,,PT_Normal,,,,,rrr6FXzBTuCig9VzKl1n5w,,,,N,0,0,,,2013-02-16 15:53,2013-02-16 15:56,admin,admin
502198,6359,124848,13662,0,N,N,N,CP_Drtn,TT_Task,DT_FixedDUR2,TK_NotStart,DUKHCONP03Z4ARGF3090,Installation of Granite Counter Top,8171,320,0,120,0,132,132,120,0,0,0,,,,2014-05-07 08:00,2014-05-24 17:00,,2014-03-22 08:00,2014-04-07 17:00,2014-03-22 08:00,2014-04-07 17:00,2014-03-22 08:00,2014-04-07 17:00,2014-05-07 08:00,2014-05-24 17:00,,PT_Normal,,,,,Ls3s6Sa3SHWCz8p/KElH2Q,,,,N,0,0,,,2013-02-16 15:53,2013-02-16 15:56,admin,admin
502199,6359,124848,13662,0,N,N,N,CP_Drtn,TT_Task,DT_FixedDUR2,TK_NotStart,DUKHCONP03Z4ARGF3085,S.S.Balustrade,8178,360,40,160,0,47.25,47.25,160,0,0,0,,,,2014-05-08 08:00,2014-05-31 17:00,,2014-03-17 08:00,2014-04-08 17:00,2014-03-17 08:00,2014-04-08 17:00,2014-03-17 08:00,2014-04-08 17:00,2014-05-08 08:00,2014-05-31 17:00,,PT_Normal,,,,,LhGB7GhfSDeGNZ8C2XxIbw,,,,N,0,0,,,2013-02-16 15:53,2013-02-16 15:56,admin,admin
502200,6359,124848,13662,0,N,N,N,CP_Drtn,TT_Task,DT_FixedDUR2,TK_NotStart,DUKHCONP03Z4ARGF3095,Final Painting,8178,320,0,200,0,4136.55,4136.55,200,0,0,0,,,,2014-05-17 08:00,2014-06-14 17:00,,2014-03-31 08:00,2014-04-28 17:00,2014-03-31 08:00,2014-04-28 17:00,2014-03-31 08:00,2014-04-28 17:00,2014-05-17 08:00,2014-06-14 17:00,,PT_Normal,,,,,bkUdV4+TQZi5+sn4HyxgcQ,,,,N,0,0,,,2013-02-16 15:53,2013-02-16 15:56,admin,admin
502201,6359,124850,13662,0,N,N,N,CP_Drtn,TT_Task,DT_FixedDUR2,TK_NotStart,DUKHCONP03Z4ARRF3630,Leveling Screed for Waterproofing,8164,496,0,200,0,734.75,734.75,200,0,0,0,,,,2014-04-05 08:00,2014-05-03 17:00,,2014-01-21 08:00,2014-02-19 17:00,2014-01-21 08:00,2014-02-19 17:00,2014-01-21 08:00,2014-02-19 17:00,2014-04-05 08:00,2014-05-03 17:00,,PT_Normal,,,,,D62RlF7YQC2dN8QBUyOi4w,,,,N,0,0,,,2013-02-16 15:53,2013-02-16 15:56,admin,admin
502202,6359,124850,13662,0,N,N,N,CP_Drtn,TT_Task,DT_FixedDUR2,TK_NotStart,DUKHCONP03Z4ARRF3635,Laying of Waterproofing Membrane,8178,496,0,200,0,2042.25,2042.25,200,0,0,0,,,,2014-04-08 08:00,2014-05-06 17:00,,2014-01-25 08:00,2014-02-23 17:00,2014-01-25 08:00,2014-02-23 17:00,2014-01-25 08:00,2014-02-23 17:00,2014-04-08 08:00,2014-05-06 17:00,,PT_Normal,,,,,ltoVXZGBT12gHAf4l8C2zg,,,,N,0,0,,,2013-02-16 15:53,2013-02-16 15:56,admin,admin
502203,6359,124850,13662,0,N,N,N,CP_Drtn,TT_Task,DT_FixedDUR2,TK_NotStart,DUKHCONP03Z4ARRF3640,Installation of Insulation & Protection,8178,496,0,200,0,1291.5,1291.5,200,0,0,0,,,,2014-04-13 08:00,2014-05-11 17:00,,2014-01-29 08:00,2014-02-27 17:00,2014-01-29 08:00,2014-02-27 17:00,2014-01-29 08:00,2014-02-27 17:00,2014-04-13 08:00,2014-05-11 17:00,,PT_Normal,,,,,TyBFMljQR1at6qBU65ngWA,,,,N,0,0,,,2013-02-16 15:53,2013-02-16 15:56,admin,admin
502204,6359,124850,13662,0,N,N,N,CP_Drtn,TT_Task,DT_FixedDUR2,TK_NotStart,DUKHCONP03Z4ARRF3645,Lime Stone Chips & Paving slab Installation,8170,496,0,200,0,741.5,741.5,200,0,0,0,,,,2014-04-17 08:00,2014-05-15 17:00,,2014-02-03 08:00,2014-03-04 17:00,2014-02-03 08:00,2014-03-04 17:00,2014-02-03 08:00,2014-03-04 17:00,2014-04-17 08:00,2014-05-15 17:00,,PT_Normal,,,,,VX3ERW/3TU+p+rnx8IKbKQ,,,,N,0,0,,,2013-02-16 15:53,2013-02-16 15:56,admin,admin
502205,6359,124850,13662,0,N,N,N,CP_Drtn,TT_Task,DT_FixedDUR2,TK_NotStart,DUKHCONP03Z4ARRF3655,Installation of Pumps Protection cabinets,8178,496,0,160,0,231,231,160,0,0,0,,,,2014-05-11 08:00,2014-06-02 17:00,,2014-02-27 08:00,2014-03-22 17:00,2014-02-27 08:00,2014-03-22 17:00,2014-02-27 08:00,2014-03-22 17:00,2014-05-11 08:00,2014-06-02 17:00,,PT_Normal,,,,,tEI7vwSdTkSIPj3mFgS79A,,,,N,0,0,,,2013-02-16 15:53,2013-02-16 15:56,admin,admin
502206,6359,124850,13662,0,N,N,N,CP_Drtn,TT_Task,DT_FixedDUR2,TK_NotStart,DUKHCONP03Z4ARRF3650,Install. of Gal. Frame & Aluminum Slat Screen,8178,496,0,200,0,882,882,200,0,0,0,,,,2014-04-26 08:00,2014-05-24 17:00,,2014-02-12 08:00,2014-03-12 17:00,2014-02-12 08:00,2014-03-12 17:00,2014-02-12 08:00,2014-03-12 17:00,2014-04-26 08:00,2014-05-24 17:00,,PT_Normal,,,,,KSa0uY3xTIKO3v3iS4ZlYg,,,,N,0,0,,,2013-02-16 15:53,2013-02-16 15:56,admin,admin
502207,6359,124850,13662,0,N,N,N,CP_Drtn,TT_Task,DT_FixedDUR2,TK_NotStart,DUKHCONP03Z4ARRF3660,Installation of Access Ladder,8178,536,536,120,0,198,198,120,0,0,0,,,,2014-05-28 08:00,2014-06-14 17:00,,2014-03-11 08:00,2014-03-27 17:00,2014-03-11 08:00,2014-03-27 17:00,2014-03-11 08:00,2014-03-27 17:00,2014-05-28 08:00,2014-06-14 17:00,,PT_Normal,,,,,Jwyd0hxTQdK1FahIkHoSNg,,,,N,0,0,,,2013-02-16 15:53,2013-02-16 15:56,admin,admin
502208,6359,124851,13662,0,N,N,N,CP_Drtn,TT_Task,DT_FixedDUR2,TK_NotStart,DUKHCONP03Z4AREL3665,External Plastering,8169,424,0,200,0,9159.75,9159.75,200,0,0,0,,,,2014-04-21 08:00,2014-05-19 17:00,,2014-02-18 08:00,2014-03-18 17:00,2014-02-18 08:00,2014-03-18 17:00,2014-02-18 08:00,2014-03-18 17:00,2014-04-21 08:00,2014-05-19 17:00,,PT_Normal,,,,,+oHt02j0RjGy3Utb2t3fMA,,,,N,0,0,,,2013-02-16 15:53,2013-02-16 15:56,admin,admin
502209,6359,124851,13662,0,N,N,N,CP_Drtn,TT_Task,DT_FixedDUR2,TK_NotStart,DUKHCONP03Z4AREL3675,GRC Panel Works,8178,440,0,160,0,550,550,160,0,0,0,,,,2014-05-11 08:00,2014-06-02 17:00,,2014-03-08 08:00,2014-03-30 17:00,2014-03-08 08:00,2014-03-30 17:00,2014-03-08 08:00,2014-03-30 17:00,2014-05-11 08:00,2014-06-02 17:00,,PT_Normal,,,,,WnITZUxpRvato+RQMvF2nQ,,,,N,0,0,,,2013-02-16 15:53,2013-02-16 15:56,admin,admin
502210,6359,124851,13662,0,N,N,N,CP_Drtn,TT_Task,DT_FixedDUR2,TK_NotStart,DUKHCONP03Z4AREL3680,External Painting,8178,440,40,160,0,3234,3234,160,0,0,0,,,,2014-05-22 08:00,2014-06-14 17:00,,2014-03-19 08:00,2014-04-10 17:00,2014-03-19 08:00,2014-04-10 17:00,2014-03-19 08:00,2014-04-10 17:00,2014-05-22 08:00,2014-06-14 17:00,,PT_Normal,,,,,YvQY48J7RKq2K2ZeSva3LQ,,,,N,0,0,,,2013-02-16 15:53,2013-02-16 15:56,admin,admin
502211,6359,124853,13662,0,N,N,N,CP_Drtn,TT_Task,DT_FixedDUR2,TK_NotStart,DUKHCONP03Z4MSEX5020,Construction Entrance Ramp,8164,168,0,200,0,216,216,200,0,0,0,,,,2014-03-31 08:00,2014-04-28 17:00,,2014-03-06 08:00,2014-04-03 17:00,2014-03-06 08:00,2014-04-03 17:00,2014-03-06 08:00,2014-04-03 17:00,2014-03-31 08:00,2014-04-28 17:00,,PT_Normal,,,,,hFEcG3dATKCd687yJ24k7Q,,,,N,0,0,,,2013-02-16 15:53,2013-02-16 15:56,admin,admin
502212,6359,124853,13662,0,N,N,N,CP_Drtn,TT_Task,DT_FixedDUR2,TK_NotStart,DUKHCONP03Z4MSEX5025,SS.Handrails and Balustrades,8178,168,0,160,0,108,108,160,0,0,0,,,,2014-04-17 08:00,2014-05-10 17:00,,2014-03-24 08:00,2014-04-15 17:00,2014-03-24 08:00,2014-04-15 17:00,2014-03-24 08:00,2014-04-15 17:00,2014-04-17 08:00,2014-05-10 17:00,,PT_Normal,,,,,+lTuCgWUQdSsigGN8Q9jiw,,,,N,0,0,,,2013-02-16 15:53,2013-02-16 15:56,admin,admin
502213,6359,124853,13662,0,N,N,N,CP_Drtn,TT_Task,DT_FixedDUR2,TK_NotStart,DUKHCONP03Z4MSEX5015,Construction of grease Trap,8178,376,0,160,0,42,42,160,0,0,0,,,,2014-04-02 08:00,2014-04-24 17:00,,2014-02-05 08:00,2014-03-01 17:00,2014-02-05 08:00,2014-03-01 17:00,2014-02-05 08:00,2014-03-01 17:00,2014-04-02 08:00,2014-04-24 17:00,,PT_Normal,,,,,RcvPgMHyQLaX3JG+oXnW6A,,,,N,0,0,,,2013-02-16 15:53,2013-02-16 15:56,admin,admin
502214,6359,124853,13662,0,N,N,N,CP_Drtn,TT_Task,DT_FixedDUR2,TK_NotStart,DUKHCONP03Z4MSEX5000,Construction of Manholes,8178,376,0,200,0,132,132,200,0,0,0,,,,2014-02-27 08:00,2014-03-27 17:00,,2014-01-02 08:00,2014-01-30 17:00,2014-01-02 08:00,2014-01-30 17:00,2014-01-02 08:00,2014-01-30 17:00,2014-02-27 08:00,2014-03-27 17:00,,PT_Normal,,,,,5GnsIwA+T5CeRe3dWPhtEA,,,,N,0,0,,,2013-02-16 15:53,2013-02-16 15:56,admin,admin
502215,6359,124853,13662,0,N,N,N,CP_Drtn,TT_Task,DT_FixedDUR2,TK_NotStart,DUKHCONP03Z4MSEX5005,"Construction  of Soak pit, Chambers",8177,376,0,200,0,275,275,200,0,0,0,,,,2014-03-13 08:00,2014-04-10 17:00,,2014-01-16 08:00,2014-02-15 17:00,2014-01-16 08:00,2014-02-15 17:00,2014-01-16 08:00,2014-02-15 17:00,2014-03-13 08:00,2014-04-10 17:00,,PT_Normal,,,,,xe+LON5ySu+zLCmEK7dpmw,,,,N,0,0,,,2013-02-16 15:53,2013-02-16 15:56,admin,admin
502216,6359,124853,13662,0,N,N,N,CP_Drtn,TT_Task,DT_FixedDUR2,TK_NotStart,DUKHCONP03Z4MSEX5010,Telephone cable laying,8177,376,208,200,0,500,500,200,0,0,0,,,,2014-04-26 08:00,2014-05-24 17:00,,2014-03-02 08:00,2014-03-30 17:00,2014-03-02 08:00,2014-03-30 17:00,2014-03-02 08:00,2014-03-30 17:00,2014-04-26 08:00,2014-05-24 17:00,,PT_Normal,,,,,oCMYkqjqQRCBy18yncesnA,,,,N,0,0,,,2013-02-16 15:53,2013-02-16 15:56,admin,admin
502217,6359,124854,13662,0,N,N,N,CP_Drtn,TT_Task,DT_FixedDUR2,TK_NotStart,DUKHCONP03Z4WTEX5030,Excavation,8177,464,0,160,0,116,116,160,80,0,80,,,,2014-03-15 08:00,2014-04-06 17:00,,2014-01-05 08:00,2014-01-27 17:00,2014-01-05 08:00,2014-01-27 17:00,2014-01-05 08:00,2014-01-27 17:00,2014-03-15 08:00,2014-04-06 17:00,,PT_Normal,,,,,2HI2xwP4RY+6wWnVs+89pA,,,,N,0,0,,,2013-02-16 15:53,2013-02-16 15:56,admin,admin
502218,6359,124854,13662,0,N,N,N,CP_Drtn,TT_Task,DT_FixedDUR2,TK_NotStart,DUKHCONP03Z4WTEX5035,Construction of Raft,8167,464,0,200,0,210,210,200,0,0,0,,,,2014-03-20 08:00,2014-04-17 17:00,,2014-01-11 08:00,2014-02-08 17:00,2014-01-11 08:00,2014-02-08 17:00,2014-01-11 08:00,2014-02-08 17:00,2014-03-20 08:00,2014-04-17 17:00,,PT_Normal,,,,,yuhyyprFRgSVyUBEYzEltA,,,,N,0,0,,,2013-02-16 15:53,2013-02-16 15:56,admin,admin
502219,6359,124854,13662,0,N,N,N,CP_Drtn,TT_Task,DT_FixedDUR2,TK_NotStart,DUKHCONP03Z4WTEX5040,Block works & Plastering,8168,464,0,200,0,2442,2442,200,0,0,0,,,,2014-03-30 08:00,2014-04-27 17:00,,2014-01-20 08:00,2014-02-18 17:00,2014-01-20 08:00,2014-02-18 17:00,2014-01-20 08:00,2014-02-18 17:00,2014-03-30 08:00,2014-04-27 17:00,,PT_Normal,,,,,QtP7sGwSRqetYC8cJ5jFuA,,,,N,0,0,,,2013-02-16 15:53,2013-02-16 15:56,admin,admin
502220,6359,124854,13662,0,N,N,N,CP_Drtn,TT_Task,DT_FixedDUR2,TK_NotStart,DUKHCONP03Z4WTEX5045,Flooring & Painting,8164,464,296,200,0,900,900,200,0,0,0,,,,2014-04-12 08:00,2014-05-10 17:00,,2014-02-02 08:00,2014-03-03 17:00,2014-02-02 08:00,2014-03-03 17:00,2014-02-02 08:00,2014-03-03 17:00,2014-04-12 08:00,2014-05-10 17:00,,PT_Normal,,,,,p5B9A/ZhRJamqV6lpGffeQ,,,,N,0,0,,,2013-02-16 15:53,2013-02-16 15:56,admin,admin
502221,6359,124854,13662,0,N,N,N,CP_Drtn,TT_Task,DT_FixedDUR2,TK_NotStart,DUKHCONP03Z4WTEX5050,Installation of Steel Gate,8178,168,16,160,0,84,84,160,0,0,0,,,,2014-04-29 08:00,2014-05-21 17:00,,2014-04-05 08:00,2014-04-27 17:00,2014-04-05 08:00,2014-04-27 17:00,2014-04-05 08:00,2014-04-27 17:00,2014-04-29 08:00,2014-05-21 17:00,,PT_Normal,,,,,uAdMM6+FSkqZCy7q+jtJgw,,,,N,0,0,,,2013-02-16 15:53,2013-02-16 15:56,admin,admin
502222,6359,124854,13662,0,N,N,N,CP_Drtn,TT_Task,DT_FixedDUR2,TK_NotStart,DUKHCONP03Z4WTEX5060,Structural steel &  SS Shed cover installation,8178,152,0,200,0,588,588,200,0,0,0,,,,2014-05-05 08:00,2014-06-02 17:00,,2014-04-13 08:00,2014-05-11 17:00,2014-04-13 08:00,2014-05-11 17:00,2014-04-13 08:00,2014-05-11 17:00,2014-05-05 08:00,2014-06-02 17:00,,PT_Normal,,,,,fjsGzH0gTGCTOOHkPVN8jg,,,,N,0,0,,,2013-02-16 15:53,2013-02-16 15:56,admin,admin
502223,6359,124854,13662,0,N,N,N,CP_Drtn,TT_Task,DT_FixedDUR2,TK_NotStart,DUKHCONP03Z4WTEX5065,"Install. of Water Tank,Chiller,Pump & Meter",8178,152,0,200,0,152.4,152.4,200,0,0,0,,,,2014-05-17 08:00,2014-06-14 17:00,,2014-04-24 08:00,2014-05-22 17:00,2014-04-24 08:00,2014-05-22 17:00,2014-04-24 08:00,2014-05-22 17:00,2014-05-17 08:00,2014-06-14 17:00,,PT_Normal,,,,,WbUfY7gwRm+o/ELs7zx9Yw,,,,N,0,0,,,2013-02-16 15:53,2013-02-23 09:03,admin,admin
502224,6359,124854,13662,0,N,N,N,CP_Drtn,TT_Task,DT_FixedDUR2,TK_NotStart,DUKHCONP03Z4WTEX5080,Domestic Water Tank Electrical works,8178,464,0,200,0,175,175,200,0,0,0,,,,2014-04-07 08:00,2014-05-05 17:00,,2014-01-28 08:00,2014-02-26 17:00,2014-01-28 08:00,2014-02-26 17:00,2014-01-28 08:00,2014-02-26 17:00,2014-04-07 08:00,2014-05-05 17:00,,PT_Normal,,,,,fWPLSlUbQfmNz01PAvZsgw,,,,N,0,0,,,2013-02-16 15:53,2013-02-16 15:56,admin,admin
502225,6359,124854,13662,0,N,N,N,CP_Drtn,TT_Task,DT_FixedDUR2,TK_NotStart,DUKHCONP03Z4WTEX5070,Domestic Water Tank Plumbings works,8178,464,0,200,0,200,200,200,0,0,0,,,,2014-04-07 08:00,2014-05-05 17:00,,2014-01-28 08:00,2014-02-26 17:00,2014-01-28 08:00,2014-02-26 17:00,2014-01-28 08:00,2014-02-26 17:00,2014-04-07 08:00,2014-05-05 17:00,,PT_Normal,,,,,wLFvZCtwQmmR+a7vI0CcjQ,,,,N,0,0,,,2013-02-16 15:53,2013-02-16 15:56,admin,admin
502226,6359,124854,13662,0,N,N,N,CP_Drtn,TT_Task,DT_FixedDUR2,TK_NotStart,DUKHCONP03Z4WTEX5075,Domestic Water Tank AC works,8178,464,0,200,0,175,175,200,0,0,0,,,,2014-04-07 08:00,2014-05-05 17:00,,2014-01-28 08:00,2014-02-26 17:00,2014-01-28 08:00,2014-02-26 17:00,2014-01-28 08:00,2014-02-26 17:00,2014-04-07 08:00,2014-05-05 17:00,,PT_Normal,,,,,6xeW+SpZTOaSKWaiDYS5mQ,,,,N,0,0,,,2013-02-16 15:53,2013-02-16 15:56,admin,admin
502227,6359,124854,13662,0,N,N,N,CP_Drtn,TT_Task,DT_FixedDUR2,TK_NotStart,DUKHCONP03Z4WTEX5085,Domestic Water Tank Firefighting works,8178,464,0,200,0,118.8,118.8,200,0,0,0,,,,2014-04-07 08:00,2014-05-05 17:00,,2014-01-28 08:00,2014-02-26 17:00,2014-01-28 08:00,2014-02-26 17:00,2014-01-28 08:00,2014-02-26 17:00,2014-04-07 08:00,2014-05-05 17:00,,PT_Normal,,,,,AX5U7h8ZTm2NazsyeyQIAw,,,,N,0,0,,,2013-02-16 15:53,2013-02-16 15:56,admin,admin
502228,6359,124857,13662,0,N,N,N,CP_Drtn,TT_Task,DT_FixedDUR2,TK_NotStart,DUKHCONP03Z4STUG1000,Footing Excavation,8177,0,0,200,0,1556,1556,200,732,0,732,,,,2013-04-28 08:00,2013-05-26 17:00,,2013-04-28 08:00,2013-05-26 17:00,2013-04-28 08:00,2013-05-26 17:00,2013-04-28 08:00,2013-05-26 17:00,2013-04-28 08:00,2013-05-26 17:00,,PT_Normal,,,,,XIwQ4QsDSCGq81Vb/W6ECw,,,,N,0,0,,,2013-02-16 15:53,2013-02-16 15:56,admin,admin
502229,6359,124857,13662,0,N,N,N,CP_Drtn,TT_Task,DT_FixedDUR2,TK_NotStart,DUKHCONP03Z4STUG1005,Footing Antitermite,8178,0,0,184,0,634.25,634.25,184,0,0,0,,,,2013-05-08 08:00,2013-06-03 17:00,,2013-05-08 08:00,2013-06-03 17:00,2013-05-08 08:00,2013-06-03 17:00,2013-05-08 08:00,2013-06-03 17:00,2013-05-08 08:00,2013-06-03 17:00,,PT_Normal,,,,,YPZweAh+ThSDjMlpjZZ9YQ,,,,N,0,0,,,2013-02-16 15:53,2013-02-16 15:56,admin,admin
502230,6359,124857,13662,0,N,N,N,CP_Drtn,TT_Task,DT_FixedDUR2,TK_NotStart,DUKHCONP03Z4STUG1010,Footing Blinding,8163,0,0,184,0,588,588,184,0,0,0,,,,2013-05-12 08:00,2013-06-06 17:00,,2013-05-12 08:00,2013-06-06 17:00,2013-05-12 08:00,2013-06-06 17:00,2013-05-12 08:00,2013-06-06 17:00,2013-05-12 08:00,2013-06-06 17:00,,PT_Normal,,,,,UUz5hjJJReG+EJBQ0STVhg,,,,N,0,0,,,2013-02-16 15:53,2013-02-16 15:56,admin,admin
502231,6359,124857,13662,0,N,N,N,CP_Drtn,TT_Task,DT_FixedDUR2,TK_NotStart,DUKHCONP03Z4STUG1015,Footing Waterproofing & Screed,8164,0,0,200,0,1368.5,1368.5,200,0,0,0,,,,2013-05-18 08:00,2013-06-15 17:00,,2013-05-18 08:00,2013-06-15 17:00,2013-05-18 08:00,2013-06-15 17:00,2013-05-18 08:00,2013-06-15 17:00,2013-05-18 08:00,2013-06-15 17:00,,PT_Normal,,,,,Q8Tb0pBxQ/KdcXua813h8g,,,,N,0,0,,,2013-02-16 15:53,2013-02-16 15:56,admin,admin
502232,6359,124857,13662,0,N,N,N,CP_Drtn,TT_Task,DT_FixedDUR2,TK_NotStart,DUKHCONP03Z4STUG1020,Construction of foundations,8165,0,0,160,0,4817.75,4817.75,160,0,0,0,,,,2013-06-02 08:00,2013-06-24 17:00,,2013-06-02 08:00,2013-06-24 17:00,2013-06-02 08:00,2013-06-24 17:00,2013-06-02 08:00,2013-06-24 17:00,2013-06-02 08:00,2013-06-24 17:00,,PT_Normal,,,,,nRxKNF9RTVasX9RoXmqFQg,,,,N,0,0,,,2013-02-16 15:53,2013-02-16 15:56,admin,admin
502233,6359,124857,13662,0,N,N,N,CP_Drtn,TT_Task,DT_FixedDUR2,TK_NotStart,DUKHCONP03Z4STUG1025,Construction of neck of columns,8165,0,0,200,0,1400,1400,200,0,0,0,,,,2013-06-11 08:00,2013-07-09 17:00,,2013-06-11 08:00,2013-07-09 17:00,2013-06-11 08:00,2013-07-09 17:00,2013-06-11 08:00,2013-07-09 17:00,2013-06-11 08:00,2013-07-09 17:00,,PT_Normal,,,,,XRPr2WBtRuCx9ksLtt5KeQ,,,,N,0,0,,,2013-02-16 15:53,2013-02-16 15:56,admin,admin
502234,6359,124857,13662,0,N,N,N,CP_Drtn,TT_Task,DT_FixedDUR2,TK_NotStart,DUKHCONP03Z4STUG1030,Waterproofing Footing & Neck Column,8178,0,0,200,0,213.5,213.5,200,0,0,0,,,,2013-06-20 08:00,2013-07-18 17:00,,2013-06-20 08:00,2013-07-18 17:00,2013-06-20 08:00,2013-07-18 17:00,2013-06-20 08:00,2013-07-18 17:00,2013-06-20 08:00,2013-07-18 17:00,,PT_Normal,,,,,+imy/8c2TVeYFVxAui1nmQ,,,,N,0,0,,,2013-02-16 15:53,2013-02-16 15:56,admin,admin
502235,6359,124857,13662,0,N,N,N,CP_Drtn,TT_Task,DT_FixedDUR2,TK_NotStart,DUKHCONP03Z4STUG1035,Backfilling Upto Grade Beam Bottom,8177,0,0,200,0,2560,2560,200,2200,0,2200,,,,2013-07-01 08:00,2013-07-29 17:00,,2013-07-01 08:00,2013-07-29 17:00,2013-07-01 08:00,2013-07-29 17:00,2013-07-01 08:00,2013-07-29 17:00,2013-07-01 08:00,2013-07-29 17:00,,PT_Normal,,,,,czI/ZhIZTdqwznGeLORjqw,,,,N,0,0,,,2013-02-16 15:53,2013-02-16 15:56,admin,admin
502236,6359,124857,13662,0,N,N,N,CP_Drtn,TT_Task,DT_FixedDUR2,TK_NotStart,DUKHCONP03Z4STUG1040,Construction of Grade Beams,8163,0,0,200,0,4745,4745,200,0,0,0,,,,2013-07-17 08:00,2013-08-18 17:00,,2013-07-17 08:00,2013-08-18 17:00,2013-07-17 08:00,2013-08-18 17:00,2013-07-17 08:00,2013-08-18 17:00,2013-07-17 08:00,2013-08-18 17:00,,PT_Normal,,,,,Bn9peGwNSAG2xB7XJlMSJA,,,,N,0,0,,,2013-02-16 15:53,2013-02-16 15:56,admin,admin
502237,6359,124857,13662,0,N,N,N,CP_Drtn,TT_Task,DT_FixedDUR2,TK_NotStart,DUKHCONP03Z4STUG1045,Construction of slab on grade,8163,0,0,200,0,3327.5,3327.5,200,0,0,0,,,,2013-08-17 08:00,2013-09-14 17:00,,2013-08-17 08:00,2013-09-14 17:00,2013-08-17 08:00,2013-09-14 17:00,2013-08-17 08:00,2013-09-14 17:00,2013-08-17 08:00,2013-09-14 17:00,,PT_Normal,,,,,VzsoV3WETYuZxhrk4N8gzg,,,,N,0,0,,,2013-02-16 15:53,2013-02-16 15:56,admin,admin
502238,6359,124859,13662,0,N,N,N,CP_Drtn,TT_Task,DT_FixedDUR2,TK_NotStart,DUKHCONP03Z4STFF2020,Column-Rebar & Formwork,8165,0,0,200,0,1615.25,1615.25,200,0,0,0,,,,2013-10-14 08:00,2013-11-13 17:00,,2013-10-14 08:00,2013-11-13 17:00,2013-10-14 08:00,2013-11-13 17:00,2013-10-14 08:00,2013-11-13 17:00,2013-10-14 08:00,2013-11-13 17:00,,PT_Normal,,,,,kum8pk0mSVWqyIZbsQhKnw,,,,N,0,0,,,2013-02-16 15:53,2013-02-16 15:56,admin,admin
502239,6359,124859,13662,0,N,N,N,CP_Drtn,TT_Task,DT_FixedDUR2,TK_NotStart,DUKHCONP03Z4STFF2025,Column-Concrete,8167,0,0,192,0,87.5,87.5,192,0,0,0,,,,2013-10-27 08:00,2013-11-23 17:00,,2013-10-27 08:00,2013-11-23 17:00,2013-10-27 08:00,2013-11-23 17:00,2013-10-27 08:00,2013-11-23 17:00,2013-10-27 08:00,2013-11-23 17:00,,PT_Normal,,,,,njVkx7a8RRmPadMypVW9DA,,,,N,0,0,,,2013-02-16 15:53,2013-02-16 15:56,admin,admin
502240,6359,124859,13662,0,N,N,N,CP_Drtn,TT_Task,DT_FixedDUR2,TK_NotStart,DUKHCONP03Z4STFF2030,"Beam, Stairs ,Slab-Rebar & Formwork",8165,0,0,200,0,10081.75,10081.75,200,0,0,0,,,,2013-11-11 08:00,2013-12-09 17:00,,2013-11-11 08:00,2013-12-09 17:00,2013-11-11 08:00,2013-12-09 17:00,2013-11-11 08:00,2013-12-09 17:00,2013-11-11 08:00,2013-12-09 17:00,,PT_Normal,,,,,RMfQiI7WSMyR5VY6p3rgLA,,,,N,0,0,,,2013-02-16 15:53,2013-02-16 15:56,admin,admin
502241,6359,124859,13662,0,N,N,N,CP_Drtn,TT_Task,DT_FixedDUR2,TK_NotStart,DUKHCONP03Z4STFF2035,"Beam, Stairs ,Slab-Concrete",8167,0,0,120,0,731.5,731.5,120,0,0,0,,,,2013-12-02 08:00,2013-12-19 17:00,,2013-12-02 08:00,2013-12-19 17:00,2013-12-02 08:00,2013-12-19 17:00,2013-12-02 08:00,2013-12-19 17:00,2013-12-02 08:00,2013-12-19 17:00,,PT_Normal,,,,,0VmJ/UySTWGvhB2lNqb75g,,,,N,0,0,,,2013-02-16 15:53,2013-02-16 15:56,admin,admin
502242,6359,124860,13662,0,N,N,N,CP_Drtn,TT_Task,DT_FixedDUR2,TK_NotStart,DUKHCONP03Z4STRF2045,Column-Concrete,8167,216,0,136,0,21,21,136,0,0,0,,,,2014-01-09 08:00,2014-01-28 17:00,,2013-12-08 08:00,2013-12-28 17:00,2013-12-08 08:00,2013-12-28 17:00,2013-12-08 08:00,2013-12-28 17:00,2014-01-09 08:00,2014-01-28 17:00,,PT_Normal,,,,,o6t+iQnpTImfkPh8tpe1LA,,,,N,0,0,,,2013-02-16 15:53,2013-02-16 15:56,admin,admin
502243,6359,124860,13662,0,N,N,N,CP_Drtn,TT_Task,DT_FixedDUR2,TK_NotStart,DUKHCONP03Z4STRF2050,Slab-Rebar & Formwork,8165,216,0,160,0,1576.75,1576.75,160,0,0,0,,,,2014-01-12 08:00,2014-02-03 17:00,,2013-12-10 08:00,2014-01-02 17:00,2013-12-10 08:00,2014-01-02 17:00,2013-12-10 08:00,2014-01-02 17:00,2014-01-12 08:00,2014-02-03 17:00,,PT_Normal,,,,,bXFwD6FrTrqF4SQvY61RoQ,,,,N,0,0,,,2013-02-16 15:53,2013-02-16 15:56,admin,admin
502244,6359,124860,13662,0,N,N,N,CP_Drtn,TT_Task,DT_FixedDUR2,TK_NotStart,DUKHCONP03Z4STRF2055,Slab-Concrete,8167,216,0,104,0,175,175,104,0,0,0,,,,2014-01-22 08:00,2014-02-05 17:00,,2013-12-22 08:00,2014-01-05 17:00,2013-12-22 08:00,2014-01-05 17:00,2013-12-22 08:00,2014-01-05 17:00,2014-01-22 08:00,2014-02-05 17:00,,PT_Normal,,,,,sikTZMWKRj+CzzlUq/SIkQ,,,,N,0,0,,,2013-02-16 15:53,2013-02-16 15:56,admin,admin
502245,6359,124860,13662,0,N,N,N,CP_Drtn,TT_Task,DT_FixedDUR2,TK_NotStart,DUKHCONP03Z4STRF2060,Construction of Parapets,8168,464,0,200,0,1441,1441,200,0,0,0,,,,2014-03-03 08:00,2014-03-31 17:00,,2013-12-24 08:00,2014-01-21 17:00,2013-12-24 08:00,2014-01-21 17:00,2013-12-24 08:00,2014-01-21 17:00,2014-03-03 08:00,2014-03-31 17:00,,PT_Normal,,,,,uGQUZ8SqR9qCtREhhwh55A,,,,N,0,0,,,2013-02-16 15:53,2013-02-16 15:56,admin,admin
502246,6359,124860,13662,0,N,N,N,CP_Drtn,TT_Task,DT_FixedDUR2,TK_NotStart,DUKHCONP03Z4STRF2065,Construction of up stands/Plinth,8165,464,0,200,0,283.5,283.5,200,0,0,0,,,,2014-03-09 08:00,2014-04-06 17:00,,2013-12-30 08:00,2014-01-27 17:00,2013-12-30 08:00,2014-01-27 17:00,2013-12-30 08:00,2014-01-27 17:00,2014-03-09 08:00,2014-04-06 17:00,,PT_Normal,,,,,JtFq+iGsTt+axBACtuoa+g,,,,N,0,0,,,2013-02-16 15:53,2013-02-16 15:56,admin,admin
502247,6359,124860,13662,0,N,N,N,CP_Drtn,TT_Task,DT_FixedDUR2,TK_NotStart,DUKHCONP03Z4STRF2040,Column-Rebar & Formwork,8165,176,0,144,0,549.5,549.5,144,0,0,0,,,,2013-12-31 08:00,2014-01-20 17:00,,2013-12-04 08:00,2013-12-25 17:00,2013-12-04 08:00,2013-12-25 17:00,2013-12-04 08:00,2013-12-25 17:00,2013-12-31 08:00,2014-01-20 17:00,,PT_Normal,,,,,li0MlXZcQK2Yo9RRPlu0vw,,,,N,0,0,,,2013-02-16 15:53,2013-02-16 15:56,admin,admin
502248,6359,124861,13662,0,N,N,N,CP_Drtn,TT_Task,DT_FixedDUR2,TK_NotStart,DUKHCONP03Z4STGF2000,Column-Rebar & Formwork,8165,0,0,200,0,1688.75,1688.75,200,0,0,0,,,,2013-09-02 08:00,2013-09-30 17:00,,2013-09-02 08:00,2013-09-30 17:00,2013-09-02 08:00,2013-09-30 17:00,2013-09-02 08:00,2013-09-30 17:00,2013-09-02 08:00,2013-09-30 17:00,,PT_Normal,,,,,hW1vzVs9Q5ifMgefyO7Ufg,,,,N,0,0,,,2013-02-16 15:53,2013-02-16 15:56,admin,admin
502249,6359,124861,13662,0,N,N,N,CP_Drtn,TT_Task,DT_FixedDUR2,TK_NotStart,DUKHCONP03Z4STGF2005,Column-Concrete,8167,0,0,192,0,101.5,101.5,192,0,0,0,,,,2013-09-11 08:00,2013-10-08 17:00,,2013-09-11 08:00,2013-10-08 17:00,2013-09-11 08:00,2013-10-08 17:00,2013-09-11 08:00,2013-10-08 17:00,2013-09-11 08:00,2013-10-08 17:00,,PT_Normal,,,,,gFWsl/lkQteKUX+URHItJw,,,,N,0,0,,,2013-02-16 15:53,2013-02-16 15:56,admin,admin
502250,6359,124861,13662,0,N,N,N,CP_Drtn,TT_Task,DT_FixedDUR2,TK_NotStart,DUKHCONP03Z4STGF2010,"Beam, Stairs ,Slab-Rebar & Formwork",8165,0,0,200,0,10592.75,10592.75,200,0,0,0,,,,2013-09-26 08:00,2013-10-27 17:00,,2013-09-26 08:00,2013-10-27 17:00,2013-09-26 08:00,2013-10-27 17:00,2013-09-26 08:00,2013-10-27 17:00,2013-09-26 08:00,2013-10-27 17:00,,PT_Normal,,,,,sfVZDJsWQyerUvAoXlxPfg,,,,N,0,0,,,2013-02-16 15:53,2013-02-16 15:56,admin,admin
502251,6359,124861,13662,0,N,N,N,CP_Drtn,TT_Task,DT_FixedDUR2,TK_NotStart,DUKHCONP03Z4STGF2015,"Beam, Stairs ,Slab-Concrete",8167,0,0,120,0,868,868,120,0,0,0,,,,2013-10-12 08:00,2013-10-30 17:00,,2013-10-12 08:00,2013-10-30 17:00,2013-10-12 08:00,2013-10-30 17:00,2013-10-12 08:00,2013-10-30 17:00,2013-10-12 08:00,2013-10-30 17:00,,PT_Normal,,,,,SgUD/6cfTFagr+eK0mmg8Q,,,,N,0,0,,,2013-02-16 15:53,2013-02-16 15:56,admin,admin
502252,6359,124864,13662,0,N,N,N,CP_Drtn,TT_Task,DT_FixedDUR2,TK_NotStart,DUKHCONP03MKMSEX5020,Construction Entrance Ramp,8164,152,0,56,0,30,30,56,0,0,0,,,,2013-12-22 08:00,2013-12-29 17:00,,2013-11-28 08:00,2013-12-05 17:00,2013-11-28 08:00,2013-12-05 17:00,2013-11-28 08:00,2013-12-05 17:00,2013-12-22 08:00,2013-12-29 17:00,,PT_Normal,,,,,XPQ9wn15T0WcpPzFx7jvDg,,,,N,0,0,,,2013-02-16 15:53,2013-02-16 15:56,admin,admin
502253,6359,124864,13662,0,N,N,N,CP_Drtn,TT_Task,DT_FixedDUR2,TK_NotStart,DUKHCONP03MKMSEX5025,SS.Handrails and Balustrades,8178,248,96,40,0,14,14,40,0,0,0,,,,2014-01-13 08:00,2014-01-18 17:00,,2013-12-07 08:00,2013-12-11 17:00,2013-12-07 08:00,2013-12-11 17:00,2013-12-07 08:00,2013-12-11 17:00,2014-01-13 08:00,2014-01-18 17:00,,PT_Normal,,,,,wTS+ksYJT2yI4ulrZ7hOQQ,,,,N,0,0,,,2013-02-16 15:53,2013-02-16 15:56,admin,admin
502254,6359,124864,13662,0,N,N,N,CP_Drtn,TT_Task,DT_FixedDUR2,TK_NotStart,DUKHCONP03MKMSEX5015,Construction of grease Trap,,432,120,56,0,0,0,56,0,0,0,,,,2014-02-03 08:00,2014-02-10 17:00,,2013-12-01 08:00,2013-12-08 17:00,2013-12-01 08:00,2013-12-08 17:00,2013-12-01 08:00,2013-12-08 17:00,2014-02-03 08:00,2014-02-10 17:00,,PT_Normal,,,,,xCUTkmB5SqqwfxIao0clZw,,,,N,0,0,,,2013-02-16 15:53,2013-02-16 15:56,admin,admin
502255,6359,124864,13662,0,N,N,N,CP_Drtn,TT_Task,DT_FixedDUR2,TK_NotStart,DUKHCONP03MKMSEX5000,Construction of Manholes,8178,24,0,56,0,14,14,56,0,0,0,,,,2013-11-18 08:00,2013-11-25 17:00,,2013-11-14 08:00,2013-11-21 17:00,2013-11-14 08:00,2013-11-21 17:00,2013-11-14 08:00,2013-11-21 17:00,2013-11-18 08:00,2013-11-25 17:00,,PT_Normal,,,,,gmcyZW1oQzefndyPSS5c7w,,,,N,0,0,,,2013-02-16 15:53,2013-02-16 15:56,admin,admin
502256,6359,124864,13662,0,N,N,N,CP_Drtn,TT_Task,DT_FixedDUR2,TK_NotStart,DUKHCONP03MKMSEX5005,"Construction  of Soak pit, Chambers",8172,184,0,56,0,275,275,56,0,0,0,,,,2013-12-21 08:00,2013-12-28 17:00,,2013-11-23 08:00,2013-11-30 17:00,2013-11-23 08:00,2013-11-30 17:00,2013-11-23 08:00,2013-11-30 17:00,2013-12-21 08:00,2013-12-28 17:00,,PT_Normal,,,,,fODsgiv2THSKuqWjkt80ZA,,,,N,0,0,,,2013-02-16 15:53,2013-02-16 15:56,admin,admin
502257,6359,124867,13662,0,N,N,N,CP_Drtn,TT_Task,DT_FixedDUR2,TK_NotStart,DUKHCONP03MKARGF3000,Block work,8168,280,0,48,0,2372.25,2372.25,48,0,0,0,,,,2013-09-19 08:00,2013-09-25 17:00,,2013-08-06 08:00,2013-08-15 17:00,2013-08-06 08:00,2013-08-15 17:00,2013-08-06 08:00,2013-08-15 17:00,2013-09-19 08:00,2013-09-25 17:00,,PT_Normal,,,,,sLq82hOgRoqIK05jnD6Quw,,,,N,0,0,,,2013-02-16 15:53,2013-02-16 15:56,admin,admin
502258,6359,124867,13662,0,N,N,N,CP_Drtn,TT_Task,DT_FixedDUR2,TK_NotStart,DUKHCONP03MKARGF3005,Plastering work,8169,336,0,56,0,2091,2091,56,0,0,0,,,,2013-10-10 08:00,2013-10-20 17:00,,2013-08-22 08:00,2013-08-29 17:00,2013-08-22 08:00,2013-08-29 17:00,2013-08-22 08:00,2013-08-29 17:00,2013-10-10 08:00,2013-10-20 17:00,,PT_Normal,,,,,xJa2kUV/QVqKZ4X2cFZxqA,,,,N,0,0,,,2013-02-16 15:53,2013-02-16 15:56,admin,admin
502259,6359,124867,13662,0,N,N,N,CP_Drtn,TT_Task,DT_FixedDUR2,TK_NotStart,DUKHCONP03MKARGF3010,Flooring screed,8164,408,0,56,0,412.5,412.5,56,0,0,0,,,,2013-10-27 08:00,2013-11-03 17:00,,2013-08-26 08:00,2013-09-02 17:00,2013-08-26 08:00,2013-09-02 17:00,2013-08-26 08:00,2013-09-02 17:00,2013-10-27 08:00,2013-11-03 17:00,,PT_Normal,,,,,D0wZ8pq/RYiRis2rMCbt1A,,,,N,0,0,,,2013-02-16 15:53,2013-02-16 15:56,admin,admin
502260,6359,124867,13662,0,N,N,N,CP_Drtn,TT_Task,DT_FixedDUR2,TK_NotStart,DUKHCONP03MKARGF3015,Wet area waterproofing & Protection Screed,8178,408,0,40,0,194.25,194.25,40,0,0,0,,,,2013-10-30 08:00,2013-11-04 17:00,,2013-08-29 08:00,2013-09-03 17:00,2013-08-29 08:00,2013-09-03 17:00,2013-08-29 08:00,2013-09-03 17:00,2013-10-30 08:00,2013-11-04 17:00,,PT_Normal,,,,,2C+X1bNlQUOZz8um+PEZWQ,,,,N,0,0,,,2013-02-16 15:53,2013-02-16 15:56,admin,admin
502261,6359,124867,13662,0,N,N,N,CP_Drtn,TT_Task,DT_FixedDUR2,TK_NotStart,DUKHCONP03MKARGF3030,Paint First coat,8178,344,0,40,0,1378.85,1378.85,40,0,0,0,,,,2013-11-17 08:00,2013-11-21 17:00,,2013-09-25 08:00,2013-09-30 17:00,2013-09-25 08:00,2013-09-30 17:00,2013-09-25 08:00,2013-09-30 17:00,2013-11-17 08:00,2013-11-21 17:00,,PT_Normal,,,,,vKORmcg5SZuM8SrObnSglw,,,,N,0,0,,,2013-02-16 15:53,2013-02-16 15:56,admin,admin
502262,6359,124867,13662,0,N,N,N,CP_Drtn,TT_Task,DT_FixedDUR2,TK_NotStart,DUKHCONP03MKARGF3020,Ceramic Wall Tiling,8170,408,0,48,0,868.75,868.75,48,0,0,0,,,,2013-11-05 08:00,2013-11-11 17:00,,2013-09-04 08:00,2013-09-10 17:00,2013-09-04 08:00,2013-09-10 17:00,2013-09-04 08:00,2013-09-10 17:00,2013-11-05 08:00,2013-11-11 17:00,,PT_Normal,,,,,tWHRKt0BSwWe2uY9PeHD+Q,,,,N,0,0,,,2013-02-16 15:53,2013-02-16 15:56,admin,admin
502263,6359,124867,13662,0,N,N,N,CP_Drtn,TT_Task,DT_FixedDUR2,TK_NotStart,DUKHCONP03MKARGF3025,Porcelain Tile flooring,8170,408,0,48,0,597.25,597.25,48,0,0,0,,,,2013-11-12 08:00,2013-11-18 17:00,,2013-09-11 08:00,2013-09-17 17:00,2013-09-11 08:00,2013-09-17 17:00,2013-09-11 08:00,2013-09-17 17:00,2013-11-12 08:00,2013-11-18 17:00,,PT_Normal,,,,,pLc7M2jFRLCsJ6W93dT6rQ,,,,N,0,0,,,2013-02-16 15:53,2013-02-16 15:56,admin,admin
502264,6359,124867,13662,0,N,N,N,CP_Drtn,TT_Task,DT_FixedDUR2,TK_NotStart,DUKHCONP03MKARGF3040,Cobble Tile flooring,8170,520,0,40,0,24,24,40,0,0,0,,,,2013-12-05 08:00,2013-12-10 17:00,,2013-09-18 08:00,2013-09-23 17:00,2013-09-18 08:00,2013-09-23 17:00,2013-09-18 08:00,2013-09-23 17:00,2013-12-05 08:00,2013-12-10 17:00,,PT_Normal,,,,,TXOoqFWYSkCwGlQFYIJCcg,,,,N,0,0,,,2013-02-16 15:53,2013-02-16 15:56,admin,admin
502265,6359,124867,13662,0,N,N,N,CP_Drtn,TT_Task,DT_FixedDUR2,TK_NotStart,DUKHCONP03MKARGF3035,Slate Tile Flooring & Skirting,8170,520,184,40,0,16,16,40,0,0,0,,,,2013-12-11 08:00,2013-12-16 17:00,,2013-09-24 08:00,2013-09-29 17:00,2013-09-24 08:00,2013-09-29 17:00,2013-09-24 08:00,2013-09-29 17:00,2013-12-11 08:00,2013-12-16 17:00,,PT_Normal,,,,,N3W/UaSqRxmBnfurYBwV2Q,,,,N,0,0,,,2013-02-16 15:53,2013-02-16 15:56,admin,admin
502266,6359,124867,13662,0,N,N,N,CP_Drtn,TT_Task,DT_FixedDUR2,TK_NotStart,DUKHCONP03MKARGF3050,Granite - Stair case flooring & Skirting,8171,432,0,56,0,168.75,168.75,56,0,0,0,,,,2013-12-23 08:00,2013-12-30 17:00,,2013-10-20 08:00,2013-10-27 17:00,2013-10-20 08:00,2013-10-27 17:00,2013-10-20 08:00,2013-10-27 17:00,2013-12-23 08:00,2013-12-30 17:00,,PT_Normal,,,,,ppHc/wAOR2GhzsZpo2ziyQ,,,,N,0,0,,,2013-02-16 15:53,2013-02-16 15:56,admin,admin
502267,6359,124867,13662,0,N,N,N,CP_Drtn,TT_Task,DT_FixedDUR2,TK_NotStart,DUKHCONP03MKARGF3045,Fixing of Suspension systems,8178,384,0,56,0,478.5,478.5,56,0,0,0,,,,2013-11-28 08:00,2013-12-05 17:00,,2013-10-01 08:00,2013-10-08 17:00,2013-10-01 08:00,2013-10-08 17:00,2013-10-01 08:00,2013-10-08 17:00,2013-11-28 08:00,2013-12-05 17:00,,PT_Normal,,,,,Z3LYDwiiRxa2CJ9KQmjA6w,,,,N,0,0,,,2013-02-16 15:53,2013-02-16 15:56,admin,admin
502268,6359,124867,13662,0,N,N,N,CP_Drtn,TT_Task,DT_FixedDUR2,TK_NotStart,DUKHCONP03MKARGF3055,Aluminum tile false ceiling,8178,360,0,56,0,51.95,51.95,56,0,0,0,,,,2013-12-11 08:00,2013-12-19 17:00,,2013-10-20 08:00,2013-10-27 17:00,2013-10-20 08:00,2013-10-27 17:00,2013-10-20 08:00,2013-10-27 17:00,2013-12-11 08:00,2013-12-19 17:00,,PT_Normal,,,,,f7wVPrQORwON45I6HOiZZg,,,,N,0,0,,,2013-02-16 15:53,2013-02-16 15:56,admin,admin
502269,6359,124867,13662,0,N,N,N,CP_Drtn,TT_Task,DT_FixedDUR2,TK_NotStart,DUKHCONP03MKARGF3060,Gypsum board false ceiling,8178,408,56,56,0,433,433,56,0,0,0,,,,2013-12-10 08:00,2013-12-17 17:00,,2013-10-09 08:00,2013-10-16 17:00,2013-10-09 08:00,2013-10-16 17:00,2013-10-09 08:00,2013-10-16 17:00,2013-12-10 08:00,2013-12-17 17:00,,PT_Normal,,,,,KOeYi0hgQdC6zk2/ezQkGQ,,,,N,0,0,,,2013-02-16 15:53,2013-02-16 15:56,admin,admin
502270,6359,124867,13662,0,N,N,N,CP_Drtn,TT_Task,DT_FixedDUR2,TK_NotStart,DUKHCONP03MKARGF3065,Wooden door,8178,448,0,40,0,137.5,137.5,40,0,0,0,,,,2014-01-02 08:00,2014-01-07 17:00,,2013-10-28 08:00,2013-11-02 17:00,2013-10-28 08:00,2013-11-02 17:00,2013-10-28 08:00,2013-11-02 17:00,2014-01-02 08:00,2014-01-07 17:00,,PT_Normal,,,,,rg/NUgOKTY6NrS3ubLyZ5A,,,,N,0,0,,,2013-02-16 15:53,2013-02-16 15:56,admin,admin
502271,6359,124867,13662,0,N,N,N,CP_Drtn,TT_Task,DT_FixedDUR2,TK_NotStart,DUKHCONP03MKARGF3070,Aluminum doors,8178,448,0,40,0,33,33,40,0,0,0,,,,2014-01-08 08:00,2014-01-13 17:00,,2013-11-03 08:00,2013-11-07 17:00,2013-11-03 08:00,2013-11-07 17:00,2013-11-03 08:00,2013-11-07 17:00,2014-01-08 08:00,2014-01-13 17:00,,PT_Normal,,,,,cXjwmSkiSjW7zpicjaIrDQ,,,,N,0,0,,,2013-02-16 15:53,2013-02-16 15:56,admin,admin
502272,6359,124867,13662,0,N,N,N,CP_Drtn,TT_Task,DT_FixedDUR2,TK_NotStart,DUKHCONP03MKARGF3080,Aluminum windows,8178,576,120,40,0,74.25,74.25,40,0,0,0,,,,2014-02-02 08:00,2014-02-06 17:00,,2013-11-09 08:00,2013-11-13 17:00,2013-11-09 08:00,2013-11-13 17:00,2013-11-09 08:00,2013-11-13 17:00,2014-02-02 08:00,2014-02-06 17:00,,PT_Normal,,,,,eTmNS/ceS8ucsAGPj5DXJw,,,,N,0,0,,,2013-02-16 15:53,2013-02-16 15:56,admin,admin
502273,6359,124867,13662,0,N,N,N,CP_Drtn,TT_Task,DT_FixedDUR2,TK_NotStart,DUKHCONP03MKARGF3075,Carpentry & Joinery Works,8178,424,0,80,0,264,264,80,0,0,0,,,,2014-01-14 08:00,2014-01-25 17:00,,2013-11-12 08:00,2013-11-23 17:00,2013-11-12 08:00,2013-11-23 17:00,2013-11-12 08:00,2013-11-23 17:00,2014-01-14 08:00,2014-01-25 17:00,,PT_Normal,,,,,t2XYCM1eQQK6+rbswwoVMQ,,,,N,0,0,,,2013-02-16 15:53,2013-02-16 15:56,admin,admin
502274,6359,124867,13662,0,N,N,N,CP_Drtn,TT_Task,DT_FixedDUR2,TK_NotStart,DUKHCONP03MKARGF3090,Installation of Granite Counter Top,8171,456,0,56,0,44,44,56,0,0,0,,,,2014-01-30 08:00,2014-02-06 17:00,,2013-11-24 08:00,2013-12-01 17:00,2013-11-24 08:00,2013-12-01 17:00,2013-11-24 08:00,2013-12-01 17:00,2014-01-30 08:00,2014-02-06 17:00,,PT_Normal,,,,,UTv0YvibTyu0zD+ncSm44A,,,,N,0,0,,,2013-02-16 15:53,2013-02-16 15:56,admin,admin
502275,6359,124867,13662,0,N,N,N,CP_Drtn,TT_Task,DT_FixedDUR2,TK_NotStart,DUKHCONP03MKARGF3085,S.S.Handrails & Balustrade,8178,464,0,56,0,16,16,56,0,0,0,,,,2014-02-01 08:00,2014-02-08 17:00,,2013-11-24 08:00,2013-12-01 17:00,2013-11-24 08:00,2013-12-01 17:00,2013-11-24 08:00,2013-12-01 17:00,2014-02-01 08:00,2014-02-08 17:00,,PT_Normal,,,,,46j4fMmGSjGIr+C9rO3u6w,,,,N,0,0,,,2013-02-16 15:53,2013-02-16 15:56,admin,admin
502276,6359,124867,13662,0,N,N,N,CP_Drtn,TT_Task,DT_FixedDUR2,TK_NotStart,DUKHCONP03MKARGF3095,Final Painting,8178,464,144,56,0,1378.85,1378.85,56,0,0,0,,,,2014-02-09 08:00,2014-02-17 17:00,,2013-12-02 08:00,2013-12-09 17:00,2013-12-02 08:00,2013-12-09 17:00,2013-12-02 08:00,2013-12-09 17:00,2014-02-09 08:00,2014-02-17 17:00,,PT_Normal,,,,,gB4wNJvDQkapJ7kHVC3cqA,,,,N,0,0,,,2013-02-16 15:53,2013-02-16 15:56,admin,admin
502277,6359,124868,13662,0,N,N,N,CP_Drtn,TT_Task,DT_FixedDUR2,TK_NotStart,DUKHCONP03MKARFF3300,Block work,8168,0,0,48,0,1850,1850,48,0,0,0,,,,2013-09-22 08:00,2013-09-28 17:00,,2013-09-22 08:00,2013-09-28 17:00,2013-09-22 08:00,2013-09-28 17:00,2013-09-22 08:00,2013-09-28 17:00,2013-09-22 08:00,2013-09-28 17:00,,PT_Normal,,,,,423C9x7HRK+TLTPDGHTSUA,,,,N,0,0,,,2013-02-16 15:53,2013-02-16 15:56,admin,admin
502278,6359,124868,13662,0,N,N,N,CP_Drtn,TT_Task,DT_FixedDUR2,TK_NotStart,DUKHCONP03MKARFF3305,Plastering work,8169,64,0,56,0,1837.5,1837.5,56,0,0,0,,,,2013-10-14 08:00,2013-10-23 17:00,,2013-10-05 08:00,2013-10-12 17:00,2013-10-05 08:00,2013-10-12 17:00,2013-10-05 08:00,2013-10-12 17:00,2013-10-14 08:00,2013-10-23 17:00,,PT_Normal,,,,,ejm2BGUHSWyuk07X5VGXGA,,,,N,0,0,,,2013-02-16 15:53,2013-02-16 15:56,admin,admin
502279,6359,124868,13662,0,N,N,N,CP_Drtn,TT_Task,DT_FixedDUR2,TK_NotStart,DUKHCONP03MKARFF3310,Flooring screed,8164,176,0,56,0,343.75,343.75,56,0,0,0,,,,2013-11-05 08:00,2013-11-12 17:00,,2013-10-08 08:00,2013-10-15 17:00,2013-10-08 08:00,2013-10-15 17:00,2013-10-08 08:00,2013-10-15 17:00,2013-11-05 08:00,2013-11-12 17:00,,PT_Normal,,,,,xrcrZPIJSR2eOmrdBMm9ZA,,,,N,0,0,,,2013-02-16 15:53,2013-02-16 15:56,admin,admin
502280,6359,124868,13662,0,N,N,N,CP_Drtn,TT_Task,DT_FixedDUR2,TK_NotStart,DUKHCONP03MKARFF3315,Wet area waterproofing & Protection Screed,8178,176,0,40,0,194.25,194.25,40,0,0,0,,,,2013-11-09 08:00,2013-11-13 17:00,,2013-10-12 08:00,2013-10-16 17:00,2013-10-12 08:00,2013-10-16 17:00,2013-10-12 08:00,2013-10-16 17:00,2013-11-09 08:00,2013-11-13 17:00,,PT_Normal,,,,,nutWWgmzS4+6E9Fpsgw+vg,,,,N,0,0,,,2013-02-16 15:53,2013-02-16 15:56,admin,admin
502281,6359,124868,13662,0,N,N,N,CP_Drtn,TT_Task,DT_FixedDUR2,TK_NotStart,DUKHCONP03MKARFF3330,Paint First coat,8178,224,32,40,0,1436,1436,40,0,0,0,,,,2013-11-25 08:00,2013-11-30 17:00,,2013-10-23 08:00,2013-10-28 17:00,2013-10-23 08:00,2013-10-28 17:00,2013-10-23 08:00,2013-10-28 17:00,2013-11-25 08:00,2013-11-30 17:00,,PT_Normal,,,,,s7v9is3BRuWE6JWJvfTaQQ,,,,N,0,0,,,2013-02-16 15:53,2013-02-16 15:56,admin,admin
502282,6359,124868,13662,0,N,N,N,CP_Drtn,TT_Task,DT_FixedDUR2,TK_NotStart,DUKHCONP03MKARFF3320,Ceramic Wall Tiling,8170,192,0,48,0,868.75,868.75,48,0,0,0,,,,2013-11-17 08:00,2013-11-23 17:00,,2013-10-20 08:00,2013-10-26 17:00,2013-10-20 08:00,2013-10-26 17:00,2013-10-20 08:00,2013-10-26 17:00,2013-11-17 08:00,2013-11-23 17:00,,PT_Normal,,,,,SUn32wEeQSSvzdkgXn27Cw,,,,N,0,0,,,2013-02-16 15:53,2013-02-16 15:56,admin,admin
502283,6359,124868,13662,0,N,N,N,CP_Drtn,TT_Task,DT_FixedDUR2,TK_NotStart,DUKHCONP03MKARFF3325,Porcelain Tile flooring,8170,192,0,48,0,597.25,597.25,48,0,0,0,,,,2013-11-24 08:00,2013-11-30 17:00,,2013-10-27 08:00,2013-11-02 17:00,2013-10-27 08:00,2013-11-02 17:00,2013-10-27 08:00,2013-11-02 17:00,2013-11-24 08:00,2013-11-30 17:00,,PT_Normal,,,,,mKQPnGusQJGqUDxKNpelsw,,,,N,0,0,,,2013-02-16 15:53,2013-02-16 15:56,admin,admin
502284,6359,124868,13662,0,N,N,N,CP_Drtn,TT_Task,DT_FixedDUR2,TK_NotStart,DUKHCONP03MKARFF3335,Slate Tile Flooring & Skirting,8177,352,0,40,0,275,275,40,0,0,0,,,,2013-12-25 08:00,2013-12-30 17:00,,2013-11-03 08:00,2013-11-07 17:00,2013-11-03 08:00,2013-11-07 17:00,2013-11-03 08:00,2013-11-07 17:00,2013-12-25 08:00,2013-12-30 17:00,,PT_Normal,,,,,7myWD22jSbC1BXfx0UdIMA,,,,N,0,0,,,2013-02-16 15:53,2013-02-16 15:56,admin,admin
502285,6359,124868,13662,0,N,N,N,CP_Drtn,TT_Task,DT_FixedDUR2,TK_NotStart,DUKHCONP03MKARFF3350,Granite - Stair case flooring & Skirting,8177,296,56,56,0,275,275,56,0,0,0,,,,2013-12-16 08:00,2013-12-24 17:00,,2013-11-03 08:00,2013-11-10 17:00,2013-11-03 08:00,2013-11-10 17:00,2013-11-03 08:00,2013-11-10 17:00,2013-12-16 08:00,2013-12-24 17:00,,PT_Normal,,,,,uHQ+OGYxTsKd4yD5ZlirkA,,,,N,0,0,,,2013-02-16 15:53,2013-02-16 15:56,admin,admin
502286,6359,124868,13662,0,N,N,N,CP_Drtn,TT_Task,DT_FixedDUR2,TK_NotStart,DUKHCONP03MKARFF3345,Fixing of Suspension systems,8178,232,0,56,0,478.5,478.5,56,0,0,0,,,,2013-12-07 08:00,2013-12-14 17:00,,2013-11-03 08:00,2013-11-10 17:00,2013-11-03 08:00,2013-11-10 17:00,2013-11-03 08:00,2013-11-10 17:00,2013-12-07 08:00,2013-12-14 17:00,,PT_Normal,,,,,HSUZrH7OQWGp8HdUiOzDJw,,,,N,0,0,,,2013-02-16 15:53,2013-02-16 15:56,admin,admin
502287,6359,124868,13662,0,N,N,N,CP_Drtn,TT_Task,DT_FixedDUR2,TK_NotStart,DUKHCONP03MKARFF3360,Gypsum board false ceiling,8178,232,0,56,0,433,433,56,0,0,0,,,,2013-12-15 08:00,2013-12-23 17:00,,2013-11-11 08:00,2013-11-18 17:00,2013-11-11 08:00,2013-11-18 17:00,2013-11-11 08:00,2013-11-18 17:00,2013-12-15 08:00,2013-12-23 17:00,,PT_Normal,,,,,8WtUs8WQSl+dgB3l4iKzvA,,,,N,0,0,,,2013-02-16 15:53,2013-02-16 15:56,admin,admin
502288,6359,124868,13662,0,N,N,N,CP_Drtn,TT_Task,DT_FixedDUR2,TK_NotStart,DUKHCONP03MKARFF3365,Wooden door,8178,288,0,40,0,110,110,40,0,0,0,,,,2014-01-01 08:00,2014-01-06 17:00,,2013-11-19 08:00,2013-11-24 17:00,2013-11-19 08:00,2013-11-24 17:00,2013-11-19 08:00,2013-11-24 17:00,2014-01-01 08:00,2014-01-06 17:00,,PT_Normal,,,,,7UBcHRyLQiKnHmr9ztsqFA,,,,N,0,0,,,2013-02-16 15:53,2013-02-16 15:56,admin,admin
502289,6359,124868,13662,0,N,N,N,CP_Drtn,TT_Task,DT_FixedDUR2,TK_NotStart,DUKHCONP03MKARFF3370,Aluminum doors,8178,288,0,40,0,33,33,40,0,0,0,,,,2014-01-07 08:00,2014-01-12 17:00,,2013-11-25 08:00,2013-11-30 17:00,2013-11-25 08:00,2013-11-30 17:00,2013-11-25 08:00,2013-11-30 17:00,2014-01-07 08:00,2014-01-12 17:00,,PT_Normal,,,,,QK5YbffqRqGhjCWuuKe4sg,,,,N,0,0,,,2013-02-16 15:53,2013-02-16 15:56,admin,admin
502290,6359,124868,13662,0,N,N,N,CP_Drtn,TT_Task,DT_FixedDUR2,TK_NotStart,DUKHCONP03MKARFF3380,Aluminum windows,8178,392,96,40,0,88,88,40,0,0,0,,,,2014-01-28 08:00,2014-02-02 17:00,,2013-12-01 08:00,2013-12-05 17:00,2013-12-01 08:00,2013-12-05 17:00,2013-12-01 08:00,2013-12-05 17:00,2014-01-28 08:00,2014-02-02 17:00,,PT_Normal,,,,,Xq6JnNtaRq6LZzUfkw/+Lw,,,,N,0,0,,,2013-02-16 15:53,2013-02-16 15:56,admin,admin
502291,6359,124868,13662,0,N,N,N,CP_Drtn,TT_Task,DT_FixedDUR2,TK_NotStart,DUKHCONP03MKARFF3375,Carpentry & Joinery Works,8178,288,0,80,0,28,28,80,0,0,0,,,,2014-01-13 08:00,2014-01-23 17:00,,2013-12-01 08:00,2013-12-11 17:00,2013-12-01 08:00,2013-12-11 17:00,2013-12-01 08:00,2013-12-11 17:00,2014-01-13 08:00,2014-01-23 17:00,,PT_Normal,,,,,v8QQQKgrQ32RnmdW10dzAg,,,,N,0,0,,,2013-02-16 15:53,2013-02-16 15:56,admin,admin
502292,6359,124868,13662,0,N,N,N,CP_Drtn,TT_Task,DT_FixedDUR2,TK_NotStart,DUKHCONP03MKARFF3390,Installation of Granite Counter Top,8171,296,0,56,0,44,44,56,0,0,0,,,,2014-01-26 08:00,2014-02-02 17:00,,2013-12-12 08:00,2013-12-21 17:00,2013-12-12 08:00,2013-12-21 17:00,2013-12-12 08:00,2013-12-21 17:00,2014-01-26 08:00,2014-02-02 17:00,,PT_Normal,,,,,QEBdTCreS4eeGkPK9A+ZPg,,,,N,0,0,,,2013-02-16 15:53,2013-02-16 15:56,admin,admin
502293,6359,124868,13662,0,N,N,N,CP_Drtn,TT_Task,DT_FixedDUR2,TK_NotStart,DUKHCONP03MKARFF3385,S.S.Handrails & Balustrade,8178,296,0,56,0,275,275,56,0,0,0,,,,2014-01-26 08:00,2014-02-02 17:00,,2013-12-12 08:00,2013-12-21 17:00,2013-12-12 08:00,2013-12-21 17:00,2013-12-12 08:00,2013-12-21 17:00,2014-01-26 08:00,2014-02-02 17:00,,PT_Normal,,,,,SDe/kMjwS0+09DoJFgJ39w,,,,N,0,0,,,2013-02-16 15:53,2013-02-16 15:56,admin,admin
502294,6359,124868,13662,0,N,N,N,CP_Drtn,TT_Task,DT_FixedDUR2,TK_NotStart,DUKHCONP03MKARFF3395,Final Painting,8178,296,0,56,0,1436,1436,56,0,0,0,,,,2014-02-03 08:00,2014-02-10 17:00,,2013-12-22 08:00,2013-12-29 17:00,2013-12-22 08:00,2013-12-29 17:00,2013-12-22 08:00,2013-12-29 17:00,2014-02-03 08:00,2014-02-10 17:00,,PT_Normal,,,,,o/ZVAmbHTzGnugZSh0E2wQ,,,,N,0,0,,,2013-02-16 15:53,2013-02-16 15:56,admin,admin
502295,6359,124868,13662,0,N,N,N,CP_Drtn,TT_Task,DT_FixedDUR2,TK_NotStart,DUKHCONP03MKARFF3355,Aluminum tile false ceiling,8178,272,0,56,0,51.95,51.95,56,0,0,0,,,,2013-12-22 08:00,2013-12-29 17:00,,2013-11-11 08:00,2013-11-18 17:00,2013-11-11 08:00,2013-11-18 17:00,2013-11-11 08:00,2013-11-18 17:00,2013-12-22 08:00,2013-12-29 17:00,,PT_Normal,,,,,3sJmurqATH6L16tzEdbQzw,,,,N,0,0,,,2013-02-16 15:53,2013-02-16 15:56,admin,admin
502296,6359,124869,13662,0,N,N,N,CP_Drtn,TT_Task,DT_FixedDUR2,TK_NotStart,DUKHCONP03MKARRF3600,Block work,8168,24,0,40,0,162.5,162.5,40,0,0,0,,,,2013-10-14 08:00,2013-10-21 17:00,,2013-10-10 08:00,2013-10-15 17:00,2013-10-10 08:00,2013-10-15 17:00,2013-10-10 08:00,2013-10-15 17:00,2013-10-14 08:00,2013-10-21 17:00,,PT_Normal,,,,,WL1uL59/RRmcwTAUxy8hJQ,,,,N,0,0,,,2013-02-16 15:53,2013-02-16 15:56,admin,admin
502297,6359,124869,13662,0,N,N,N,CP_Drtn,TT_Task,DT_FixedDUR2,TK_NotStart,DUKHCONP03MKARRF3605,Plastering work,8169,24,0,40,0,650,650,40,0,0,0,,,,2013-10-20 08:00,2013-10-24 17:00,,2013-10-14 08:00,2013-10-21 17:00,2013-10-14 08:00,2013-10-21 17:00,2013-10-14 08:00,2013-10-21 17:00,2013-10-20 08:00,2013-10-24 17:00,,PT_Normal,,,,,xiy08CdLSkuYbHsJT28Gmg,,,,N,0,0,,,2013-02-16 15:53,2013-02-16 15:56,admin,admin
502298,6359,124869,13662,0,N,N,N,CP_Drtn,TT_Task,DT_FixedDUR2,TK_NotStart,DUKHCONP03MKARRF3610,Flooring screed,8164,584,288,48,0,38.5,38.5,48,0,0,0,,,,2014-01-29 08:00,2014-02-04 17:00,,2013-11-04 08:00,2013-11-10 17:00,2013-11-04 08:00,2013-11-10 17:00,2013-11-04 08:00,2013-11-10 17:00,2014-01-29 08:00,2014-02-04 17:00,,PT_Normal,,,,,xLO56g9GTBqDlOVjDqK0fg,,,,N,0,0,,,2013-02-16 15:53,2013-02-16 15:56,admin,admin
502299,6359,124869,13662,0,N,N,N,CP_Drtn,TT_Task,DT_FixedDUR2,TK_NotStart,DUKHCONP03MKARRF3695,Painting,8178,296,0,40,0,44,44,40,0,0,0,,,,2014-02-05 08:00,2014-02-10 17:00,,2013-12-24 08:00,2013-12-29 17:00,2013-12-24 08:00,2013-12-29 17:00,2013-12-24 08:00,2013-12-29 17:00,2014-02-05 08:00,2014-02-10 17:00,,PT_Normal,,,,,oSrvCkZsRLWS8kqb9U6X1Q,,,,N,0,0,,,2013-02-16 15:53,2013-02-16 15:56,admin,admin
502300,6359,124869,13662,0,N,N,N,CP_Drtn,TT_Task,DT_FixedDUR2,TK_NotStart,DUKHCONP03MKARRF3620,Epoxy Painting,8178,376,80,40,0,8.25,8.25,40,0,0,0,,,,2014-02-24 08:00,2014-03-01 17:00,,2013-12-30 08:00,2014-01-04 17:00,2013-12-30 08:00,2014-01-04 17:00,2013-12-30 08:00,2014-01-04 17:00,2014-02-24 08:00,2014-03-01 17:00,,PT_Normal,,,,,cuIa+gojT+SLAEsixka2Dw,,,,N,0,0,,,2013-02-16 15:53,2013-02-16 15:56,admin,admin
502301,6359,124871,13662,0,N,N,N,CP_Drtn,TT_Task,DT_FixedDUR2,TK_NotStart,DUKHCONP03MKAREL3675,GRC Panel Works,8178,152,0,56,0,550,550,56,0,0,0,,,,2013-12-12 08:00,2013-12-21 17:00,,2013-11-20 08:00,2013-11-27 17:00,2013-11-20 08:00,2013-11-27 17:00,2013-11-20 08:00,2013-11-27 17:00,2013-12-12 08:00,2013-12-21 17:00,,PT_Normal,,,,,6i8/tCDqRTiPZQbad3NcnQ,,,,N,0,0,,,2013-02-16 15:53,2013-02-16 15:56,admin,admin
502302,6359,124871,13662,0,N,N,N,CP_Drtn,TT_Task,DT_FixedDUR2,TK_NotStart,DUKHCONP03MKAREL3680,External Painting,8178,528,184,56,0,272,272,56,0,0,0,,,,2014-02-16 08:00,2014-02-23 17:00,,2013-11-28 08:00,2013-12-05 17:00,2013-11-28 08:00,2013-12-05 17:00,2013-11-28 08:00,2013-12-05 17:00,2014-02-16 08:00,2014-02-23 17:00,,PT_Normal,,,,,i39g1QERQmeDGIfaUOIUdw,,,,N,0,0,,,2013-02-16 15:53,2013-02-16 15:56,admin,admin
502303,6359,124871,13662,0,N,N,N,CP_Drtn,TT_Task,DT_FixedDUR2,TK_NotStart,DUKHCONP03MKAREL3665,External Plastering,8169,152,0,80,0,3053.5,3053.5,80,0,0,0,,,,2013-12-01 08:00,2013-12-11 17:00,,2013-11-09 08:00,2013-11-19 17:00,2013-11-09 08:00,2013-11-19 17:00,2013-11-09 08:00,2013-11-19 17:00,2013-12-01 08:00,2013-12-11 17:00,,PT_Normal,,,,,JV2hnl3gT06kPdq9J0Nwzg,,,,N,0,0,,,2013-02-16 15:53,2013-02-16 15:56,admin,admin
502304,6359,124872,13662,0,N,N,N,CP_Drtn,TT_Task,DT_FixedDUR2,TK_NotStart,DUKHCONP03MKARRF3630,Leveling Screed for Waterproofing,8164,24,0,16,0,245.5,245.5,16,0,0,0,,,,2013-10-26 08:00,2013-10-27 17:00,,2013-10-22 08:00,2013-10-23 17:00,2013-10-22 08:00,2013-10-23 17:00,2013-10-22 08:00,2013-10-23 17:00,2013-10-26 08:00,2013-10-27 17:00,,PT_Normal,,,,,DqCHpPwgR6OXEkIbFE7fBg,,,,N,0,0,,,2013-02-16 15:53,2013-02-16 15:56,admin,admin
502305,6359,124872,13662,0,N,N,N,CP_Drtn,TT_Task,DT_FixedDUR2,TK_NotStart,DUKHCONP03MKARRF3635,Laying of Waterproofing Membrane,8178,24,0,40,0,681,681,40,0,0,0,,,,2013-10-28 08:00,2013-11-02 17:00,,2013-10-24 08:00,2013-10-29 17:00,2013-10-24 08:00,2013-10-29 17:00,2013-10-24 08:00,2013-10-29 17:00,2013-10-28 08:00,2013-11-02 17:00,,PT_Normal,,,,,Pn8935pKTeu8Ot+6TlsLiQ,,,,N,0,0,,,2013-02-16 15:53,2013-02-16 15:56,admin,admin
502306,6359,124872,13662,0,N,N,N,CP_Drtn,TT_Task,DT_FixedDUR2,TK_NotStart,DUKHCONP03MKARRF3640,Installation of Insulation & Protection,8178,24,0,32,0,430.75,430.75,32,0,0,0,,,,2013-11-03 08:00,2013-11-06 17:00,,2013-10-30 08:00,2013-11-03 17:00,2013-10-30 08:00,2013-11-03 17:00,2013-10-30 08:00,2013-11-03 17:00,2013-11-03 08:00,2013-11-06 17:00,,PT_Normal,,,,,AjnLwfWZSWOd6qi4vDlSEA,,,,N,0,0,,,2013-02-16 15:53,2013-02-16 15:56,admin,admin
502307,6359,124872,13662,0,N,N,N,CP_Drtn,TT_Task,DT_FixedDUR2,TK_NotStart,DUKHCONP03MKARRF3645,Lime Stone Chips & Paving slab Installation,8170,24,0,32,0,247.5,247.5,32,0,0,0,,,,2013-11-07 08:00,2013-11-11 17:00,,2013-11-04 08:00,2013-11-07 17:00,2013-11-04 08:00,2013-11-07 17:00,2013-11-04 08:00,2013-11-07 17:00,2013-11-07 08:00,2013-11-11 17:00,,PT_Normal,,,,,MeRiOwtNRhiesq8EZwvUJg,,,,N,0,0,,,2013-02-16 15:53,2013-02-16 15:56,admin,admin
502308,6359,124872,13662,0,N,N,N,CP_Drtn,TT_Task,DT_FixedDUR2,TK_NotStart,DUKHCONP03MKARRF3655,Installation of Pumps Protection cabinets,8178,528,0,48,0,77,77,48,0,0,0,,,,2014-02-02 08:00,2014-02-08 17:00,,2013-11-16 08:00,2013-11-21 17:00,2013-11-16 08:00,2013-11-21 17:00,2013-11-16 08:00,2013-11-21 17:00,2014-02-02 08:00,2014-02-08 17:00,,PT_Normal,,,,,7rY/aB2eRwWdrzpP8kcspg,,,,N,0,0,,,2013-02-16 15:53,2013-02-16 15:56,admin,admin
502309,6359,124872,13662,0,N,N,N,CP_Drtn,TT_Task,DT_FixedDUR2,TK_NotStart,DUKHCONP03MKARRF3650,Install. of Gal. Frame & Aluminum Slat Screen,8178,488,0,48,0,294,294,48,0,0,0,,,,2014-01-20 08:00,2014-01-26 17:00,,2013-11-09 08:00,2013-11-14 17:00,2013-11-09 08:00,2013-11-14 17:00,2013-11-09 08:00,2013-11-14 17:00,2014-01-20 08:00,2014-01-26 17:00,,PT_Normal,,,,,oXsg8ANwQBis1prVrLo0Ug,,,,N,0,0,,,2013-02-16 15:53,2013-02-16 15:56,admin,admin
502310,6359,124872,13662,0,N,N,N,CP_Drtn,TT_Task,DT_FixedDUR2,TK_NotStart,DUKHCONP03MKARRF3660,Installation of Access Ladder,8178,624,104,40,0,66,66,40,0,0,0,,,,2014-02-24 08:00,2014-03-01 17:00,,2013-11-23 08:00,2013-11-27 17:00,2013-11-23 08:00,2013-11-27 17:00,2013-11-23 08:00,2013-11-27 17:00,2014-02-24 08:00,2014-03-01 17:00,,PT_Normal,,,,,9hEn3haeTKivWvz01zlGug,,,,N,0,0,,,2013-02-16 15:53,2013-02-16 15:56,admin,admin
502311,6359,124875,13662,0,N,N,N,CP_Drtn,TT_Task,DT_FixedDUR2,TK_NotStart,DUKHCONP03MKELGF4000,Fixing of wall conduits & switch socket boxes,8178,336,0,40,0,90.4,90.4,40,0,0,0,,,,2013-10-05 08:00,2013-10-09 17:00,,2013-08-17 08:00,2013-08-21 17:00,2013-08-17 08:00,2013-08-21 17:00,2013-08-17 08:00,2013-08-21 17:00,2013-10-05 08:00,2013-10-09 17:00,,PT_Normal,,,,,qFx52e7rRiSvMIVPcOfqhA,,,,N,0,0,,,2013-02-16 15:53,2013-02-16 15:56,admin,admin
502312,6359,124875,13662,0,N,N,N,CP_Drtn,TT_Task,DT_FixedDUR2,TK_NotStart,DUKHCONP03MKELGF4005,Cable tray & trunking installation,8178,480,0,40,0,159.2,159.2,40,0,0,0,,,,2013-11-11 08:00,2013-11-16 17:00,,2013-08-31 08:00,2013-09-04 17:00,2013-08-31 08:00,2013-09-04 17:00,2013-08-31 08:00,2013-09-04 17:00,2013-11-11 08:00,2013-11-16 17:00,,PT_Normal,,,,,dDrdeBAWRQ+b4UWeWzOm2g,,,,N,0,0,,,2013-02-16 15:53,2013-02-23 09:03,admin,admin
502313,6359,124875,13662,0,N,N,N,CP_Drtn,TT_Task,DT_FixedDUR2,TK_NotStart,DUKHCONP03MKELGF4010,Installation of wiring & Main Cabling,8178,496,16,40,0,56.8,56.8,40,0,0,0,,,,2013-11-19 08:00,2013-11-24 17:00,,2013-09-05 08:00,2013-09-10 17:00,2013-09-05 08:00,2013-09-10 17:00,2013-09-05 08:00,2013-09-10 17:00,2013-11-19 08:00,2013-11-24 17:00,,PT_Normal,,,,,qU3KZwwXS1qWLQB0V1hbEg,,,,N,0,0,,,2013-02-16 15:53,2013-02-16 15:56,admin,admin
502314,6359,124875,13662,0,N,N,N,CP_Drtn,TT_Task,DT_FixedDUR2,TK_NotStart,DUKHCONP03MKELGF4020,"Installation  of DBS,MCCB Accessories.",8178,416,0,40,0,17.2,17.2,40,0,0,0,,,,2013-12-29 08:00,2014-01-02 17:00,,2013-10-28 08:00,2013-11-02 17:00,2013-10-28 08:00,2013-11-02 17:00,2013-10-28 08:00,2013-11-02 17:00,2013-12-29 08:00,2014-01-02 17:00,,PT_Normal,,,,,NnSUuU8CSKu34Lz4ADPK+w,,,,N,0,0,,,2013-02-16 15:53,2013-02-23 09:03,admin,admin
502315,6359,124875,13662,0,N,N,N,CP_Drtn,TT_Task,DT_FixedDUR2,TK_NotStart,DUKHCONP03MKELGF4025,Installation of Lighting fixtures & Accessories,8178,464,112,40,0,223.6,223.6,40,0,0,0,,,,2014-01-11 08:00,2014-01-15 17:00,,2013-11-03 08:00,2013-11-07 17:00,2013-11-03 08:00,2013-11-07 17:00,2013-11-03 08:00,2013-11-07 17:00,2014-01-11 08:00,2014-01-15 17:00,,PT_Normal,,,,,jwPGPUlvT16l5lC7joKltg,,,,N,0,0,,,2013-02-16 15:53,2013-02-16 15:56,admin,admin
502316,6359,124875,13662,0,N,N,N,CP_Drtn,TT_Task,DT_FixedDUR2,TK_NotStart,DUKHCONP03MKELGF4015,Install. of CAMS & Fire Fighting Accessories,8178,416,40,56,0,117.6,117.6,56,0,0,0,,,,2014-01-02 08:00,2014-01-09 17:00,,2013-11-02 08:00,2013-11-09 17:00,2013-11-02 08:00,2013-11-09 17:00,2013-11-02 08:00,2013-11-09 17:00,2014-01-02 08:00,2014-01-09 17:00,,PT_Normal,,,,,0QT8UJswSx+XEy4TDBaCKQ,,,,N,0,0,,,2013-02-16 15:53,2013-02-16 15:56,admin,admin
502317,6359,124875,13662,0,N,N,N,CP_Drtn,TT_Task,DT_FixedDUR2,TK_NotStart,DUKHCONP03MKELGF4030,Installation of Telephone System,8178,456,112,40,0,50.8,50.8,40,0,0,0,,,,2014-01-09 08:00,2014-01-14 17:00,,2013-11-03 08:00,2013-11-07 17:00,2013-11-03 08:00,2013-11-07 17:00,2013-11-03 08:00,2013-11-07 17:00,2014-01-09 08:00,2014-01-14 17:00,,PT_Normal,,,,,8e7c3TIaR5W232XAzUrzMA,,,,N,0,0,,,2013-02-16 15:53,2013-02-16 15:56,admin,admin
502318,6359,124876,13662,0,N,N,N,CP_Drtn,TT_Task,DT_FixedDUR2,TK_NotStart,DUKHCONP03MKELRF4070,Installation of Isolator,8178,448,0,40,0,34.4,34.4,40,0,0,0,,,,2014-02-05 08:00,2014-02-10 17:00,,2013-12-01 08:00,2013-12-05 17:00,2013-12-01 08:00,2013-12-05 17:00,2013-12-01 08:00,2013-12-05 17:00,2014-02-05 08:00,2014-02-10 17:00,,PT_Normal,,,,,SETd3ExKR/uiZJ+94zVO9w,,,,N,0,0,,,2013-02-16 15:53,2013-02-23 09:03,admin,admin
502319,6359,124876,13662,0,N,N,N,CP_Drtn,TT_Task,DT_FixedDUR2,TK_NotStart,DUKHCONP03MKELRF4075,Installation of TV Dish Antenna,8178,448,432,56,0,394,394,56,0,0,0,,,,2014-02-12 08:00,2014-02-19 17:00,,2013-12-07 08:00,2013-12-14 17:00,2013-12-07 08:00,2013-12-14 17:00,2013-12-07 08:00,2013-12-14 17:00,2014-02-12 08:00,2014-02-19 17:00,,PT_Normal,,,,,sxR5zMJnQteisjDKR5OggQ,,,,N,0,0,,,2013-02-16 15:53,2013-02-16 15:56,admin,admin
502320,6359,124877,13662,0,N,N,N,CP_Drtn,TT_Task,DT_FixedDUR2,TK_NotStart,DUKHCONP03MKELFF4035,Fixing of wall conduits & switch socket boxes,8178,64,0,40,0,90.4,90.4,40,0,0,0,,,,2013-10-08 08:00,2013-10-13 17:00,,2013-09-29 08:00,2013-10-03 17:00,2013-09-29 08:00,2013-10-03 17:00,2013-09-29 08:00,2013-10-03 17:00,2013-10-08 08:00,2013-10-13 17:00,,PT_Normal,,,,,Lctie4KeRDCJMHEO2sSDOg,,,,N,0,0,,,2013-02-16 15:53,2013-02-16 15:56,admin,admin
502321,6359,124877,13662,0,N,N,N,CP_Drtn,TT_Task,DT_FixedDUR2,TK_NotStart,DUKHCONP03MKELFF4040,Cable tray & trunking installation,8178,240,0,40,0,159.2,159.2,40,0,0,0,,,,2013-11-19 08:00,2013-11-24 17:00,,2013-10-13 08:00,2013-10-20 17:00,2013-10-13 08:00,2013-10-20 17:00,2013-10-13 08:00,2013-10-20 17:00,2013-11-19 08:00,2013-11-24 17:00,,PT_Normal,,,,,VuYPEcgaSXmp0j5UfFxkCw,,,,N,0,0,,,2013-02-16 15:53,2013-02-23 09:03,admin,admin
502322,6359,124877,13662,0,N,N,N,CP_Drtn,TT_Task,DT_FixedDUR2,TK_NotStart,DUKHCONP03MKELFF4045,Installation of wiring & Main Cabling,8178,256,16,40,0,56.8,56.8,40,0,0,0,,,,2013-11-27 08:00,2013-12-02 17:00,,2013-10-21 08:00,2013-10-26 17:00,2013-10-21 08:00,2013-10-26 17:00,2013-10-21 08:00,2013-10-26 17:00,2013-11-27 08:00,2013-12-02 17:00,,PT_Normal,,,,,Mod//ZNKRrSOkNfPtrCr/A,,,,N,0,0,,,2013-02-16 15:53,2013-02-16 15:56,admin,admin
502323,6359,124877,13662,0,N,N,N,CP_Drtn,TT_Task,DT_FixedDUR2,TK_NotStart,DUKHCONP03MKELFF4060,"Installation  of DBS,MCCB Accessories.",8178,304,0,40,0,17.2,17.2,40,0,0,0,,,,2014-01-04 08:00,2014-01-08 17:00,,2013-11-19 08:00,2013-11-24 17:00,2013-11-19 08:00,2013-11-24 17:00,2013-11-19 08:00,2013-11-24 17:00,2014-01-04 08:00,2014-01-08 17:00,,PT_Normal,,,,,7i3dNftrTtOFOvwV1k3Vqg,,,,N,0,0,,,2013-02-16 15:53,2013-02-23 09:03,admin,admin
502324,6359,124877,13662,0,N,N,N,CP_Drtn,TT_Task,DT_FixedDUR2,TK_NotStart,DUKHCONP03MKELFF4065,Installation of Lighting fixtures & Accessories,8178,352,0,40,0,206.4,206.4,40,0,0,0,,,,2014-01-16 08:00,2014-01-21 17:00,,2013-11-25 08:00,2013-11-30 17:00,2013-11-25 08:00,2013-11-30 17:00,2013-11-25 08:00,2013-11-30 17:00,2014-01-16 08:00,2014-01-21 17:00,,PT_Normal,,,,,s52kGyOhQze4Fwp99wgMKQ,,,,N,0,0,,,2013-02-16 15:53,2013-02-16 15:56,admin,admin
502325,6359,124877,13662,0,N,N,N,CP_Drtn,TT_Task,DT_FixedDUR2,TK_NotStart,DUKHCONP03MKELFF4055,Install. of CAMS & Fire Fighting Accessories,8178,352,256,56,0,134.4,134.4,56,0,0,0,,,,2014-01-11 08:00,2014-01-18 17:00,,2013-11-19 08:00,2013-11-26 17:00,2013-11-19 08:00,2013-11-26 17:00,2013-11-19 08:00,2013-11-26 17:00,2014-01-11 08:00,2014-01-18 17:00,,PT_Normal,,,,,BSkGG3QZTWCge9PYcLlraA,,,,N,0,0,,,2013-02-16 15:53,2013-02-16 15:56,admin,admin
502326,6359,124877,13662,0,N,N,N,CP_Drtn,TT_Task,DT_FixedDUR2,TK_NotStart,DUKHCONP03MKELFF4050,Installation of Telephone System,8178,384,0,40,0,50.8,50.8,40,0,0,0,,,,2014-01-21 08:00,2014-01-26 17:00,,2013-11-25 08:00,2013-11-30 17:00,2013-11-25 08:00,2013-11-30 17:00,2013-11-25 08:00,2013-11-30 17:00,2014-01-21 08:00,2014-01-26 17:00,,PT_Normal,,,,,QqCYq5pGR0OhQT59Fqy1ig,,,,N,0,0,,,2013-02-16 15:53,2013-02-16 15:56,admin,admin
502327,6359,124879,13662,0,N,N,N,CP_Drtn,TT_Task,DT_FixedDUR2,TK_NotStart,DUKHCONP03MKPLRF4345,Installation of Plumbing pipes & fittings,8178,24,0,40,0,138,138,40,0,0,0,,,,2013-11-12 08:00,2013-11-17 17:00,,2013-11-09 08:00,2013-11-13 17:00,2013-11-09 08:00,2013-11-13 17:00,2013-11-09 08:00,2013-11-13 17:00,2013-11-12 08:00,2013-11-17 17:00,,PT_Normal,,,,,zPSWbjaYQ3CaupUTIhHaUA,,,,N,0,0,,,2013-02-16 15:53,2013-02-16 15:56,admin,admin
502328,6359,124879,13662,0,N,N,N,CP_Drtn,TT_Task,DT_FixedDUR2,TK_NotStart,DUKHCONP03MKPLRF4350,Installation of Rain water Pipes,8181,544,128,40,0,10.8,10.8,40,0,0,0,,,,2014-02-03 08:00,2014-02-08 17:00,,2013-11-14 08:00,2013-11-19 17:00,2013-11-14 08:00,2013-11-19 17:00,2013-11-14 08:00,2013-11-19 17:00,2014-02-03 08:00,2014-02-08 17:00,,PT_Normal,,,,,4UFoWe1/Tmyi6L3gAU6mlA,,,,N,0,0,,,2013-02-16 15:53,2013-02-16 15:56,admin,admin
502329,6359,124879,13662,0,N,N,N,CP_Drtn,TT_Task,DT_FixedDUR2,TK_NotStart,DUKHCONP03MKPLRF4355,Roof  Water Tank Installation & Connections,8178,416,304,56,0,16.8,16.8,56,0,0,0,,,,2014-02-09 08:00,2014-02-17 17:00,,2013-12-09 08:00,2013-12-16 17:00,2013-12-09 08:00,2013-12-16 17:00,2013-12-09 08:00,2013-12-16 17:00,2014-02-09 08:00,2014-02-17 17:00,,PT_Normal,,,,,4L9/fSDtTy6Sd4KfCZ0Jvw,,,,N,0,0,,,2013-02-16 15:53,2013-02-16 15:56,admin,admin
502330,6359,124880,13662,0,N,N,N,CP_Drtn,TT_Task,DT_FixedDUR2,TK_NotStart,DUKHCONP03MKPLGF4305,Installation of Plumbing pipes & testing,8178,352,0,40,0,231.6,231.6,40,0,0,0,,,,2013-10-07 08:00,2013-10-12 17:00,,2013-08-17 08:00,2013-08-21 17:00,2013-08-17 08:00,2013-08-21 17:00,2013-08-17 08:00,2013-08-21 17:00,2013-10-07 08:00,2013-10-12 17:00,,PT_Normal,,,,,TnfOH6Y3TxeRWxilM4DjIg,,,,N,0,0,,,2013-02-16 15:53,2013-02-16 15:56,admin,admin
502331,6359,124880,13662,0,N,N,N,CP_Drtn,TT_Task,DT_FixedDUR2,TK_NotStart,DUKHCONP03MKPLGF4310,Installation of Drainage pipes &testing,8178,496,72,40,0,16.8,16.8,40,0,0,0,,,,2013-10-30 08:00,2013-11-04 17:00,,2013-08-17 08:00,2013-08-21 17:00,2013-08-17 08:00,2013-08-21 17:00,2013-08-17 08:00,2013-08-21 17:00,2013-10-30 08:00,2013-11-04 17:00,,PT_Normal,,,,,q8ZaoVCWT9e9c6LzjRElYA,,,,N,0,0,,,2013-02-16 15:53,2013-02-16 15:56,admin,admin
502332,6359,124880,13662,0,N,N,N,CP_Drtn,TT_Task,DT_FixedDUR2,TK_NotStart,DUKHCONP03MKPLGF4315,Sanitary Fittings & Accessories,8178,400,0,56,0,33.6,33.6,56,0,0,0,,,,2014-01-14 08:00,2014-01-21 17:00,,2013-11-16 08:00,2013-11-23 17:00,2013-11-16 08:00,2013-11-23 17:00,2013-11-16 08:00,2013-11-23 17:00,2014-01-14 08:00,2014-01-21 17:00,,PT_Normal,,,,,M8zZHmeDQ+qcqj93koOAPw,,,,N,0,0,,,2013-02-16 15:53,2013-02-16 15:56,admin,admin
502333,6359,124880,13662,0,N,N,N,CP_Drtn,TT_Task,DT_FixedDUR2,TK_NotStart,DUKHCONP03MKPLGF4320,Installation of Water Heater,,616,104,40,0,0,0,40,0,0,0,,,,2014-02-24 08:00,2014-03-01 17:00,,2013-11-24 08:00,2013-11-28 17:00,2013-11-24 08:00,2013-11-28 17:00,2013-11-24 08:00,2013-11-28 17:00,2014-02-24 08:00,2014-03-01 17:00,,PT_Normal,,,,,Uvml2fxNR9KrmHFPOGwF7w,,,,N,0,0,,,2013-02-16 15:53,2013-02-16 15:56,admin,admin
502334,6359,124881,13662,0,N,N,N,CP_Drtn,TT_Task,DT_FixedDUR2,TK_NotStart,DUKHCONP03MKPLFF4325,Installation of Plumbing pipes & testing,8178,72,0,40,0,231.6,231.6,40,0,0,0,,,,2013-10-09 08:00,2013-10-14 17:00,,2013-09-29 08:00,2013-10-03 17:00,2013-09-29 08:00,2013-10-03 17:00,2013-09-29 08:00,2013-10-03 17:00,2013-10-09 08:00,2013-10-14 17:00,,PT_Normal,,,,,55raHiLhRUadBu8noaKIVg,,,,N,0,0,,,2013-02-16 15:53,2013-02-16 15:56,admin,admin
502335,6359,124881,13662,0,N,N,N,CP_Drtn,TT_Task,DT_FixedDUR2,TK_NotStart,DUKHCONP03MKPLFF4330,Installation of Drainage pipes & testing,8178,272,72,40,0,16.8,16.8,40,0,0,0,,,,2013-11-10 08:00,2013-11-14 17:00,,2013-09-29 08:00,2013-10-03 17:00,2013-09-29 08:00,2013-10-03 17:00,2013-09-29 08:00,2013-10-03 17:00,2013-11-10 08:00,2013-11-14 17:00,,PT_Normal,,,,,cO0h5j7JSI6wJzim9s1gQg,,,,N,0,0,,,2013-02-16 15:53,2013-02-16 15:56,admin,admin
502336,6359,124881,13662,0,N,N,N,CP_Drtn,TT_Task,DT_FixedDUR2,TK_NotStart,DUKHCONP03MKPLFF4335,Sanitary Fittings & Accessories,8178,392,0,56,0,33.6,33.6,56,0,0,0,,,,2014-01-22 08:00,2014-01-29 17:00,,2013-11-25 08:00,2013-12-02 17:00,2013-11-25 08:00,2013-12-02 17:00,2013-11-25 08:00,2013-12-02 17:00,2014-01-22 08:00,2014-01-29 17:00,,PT_Normal,,,,,cf45N85OS6ai4+zN04AmYQ,,,,N,0,0,,,2013-02-16 15:53,2013-02-16 15:56,admin,admin
502337,6359,124881,13662,0,N,N,N,CP_Drtn,TT_Task,DT_FixedDUR2,TK_NotStart,DUKHCONP03MKPLFF4340,Installation of Water Heater,,416,0,40,0,0,0,40,0,0,0,,,,2014-02-03 08:00,2014-02-08 17:00,,2013-12-03 08:00,2013-12-08 17:00,2013-12-03 08:00,2013-12-08 17:00,2013-12-03 08:00,2013-12-08 17:00,2014-02-03 08:00,2014-02-08 17:00,,PT_Normal,,,,,6RCdHWMATlK/Zk754HRLWg,,,,N,0,0,,,2013-02-16 15:53,2013-02-16 15:56,admin,admin
502338,6359,124883,13662,0,N,N,N,CP_Drtn,TT_Task,DT_FixedDUR2,TK_NotStart,DUKHCONP03MKACGF4600,Installation AC Pipes,8178,632,112,40,0,28.4,28.4,40,0,0,0,,,,2013-12-03 08:00,2013-12-08 17:00,,2013-08-31 08:00,2013-09-04 17:00,2013-08-31 08:00,2013-09-04 17:00,2013-08-31 08:00,2013-09-04 17:00,2013-12-03 08:00,2013-12-08 17:00,,PT_Normal,,,,,a3bz9e1+QR6HSsrjS6koWQ,,,,N,0,0,,,2013-02-16 15:53,2013-02-16 15:56,admin,admin
502339,6359,124883,13662,0,N,N,N,CP_Drtn,TT_Task,DT_FixedDUR2,TK_NotStart,DUKHCONP03MKACGF4605,Fixing of Ventilation Equipments,8178,456,0,40,0,17.2,17.2,40,0,0,0,,,,2014-01-04 08:00,2014-01-08 17:00,,2013-10-28 08:00,2013-11-02 17:00,2013-10-28 08:00,2013-11-02 17:00,2013-10-28 08:00,2013-11-02 17:00,2014-01-04 08:00,2014-01-08 17:00,,PT_Normal,,,,,oL4IJPOHRmaxEEhvJGKHoA,,,,N,0,0,,,2013-02-16 15:53,2013-02-23 09:03,admin,admin
502340,6359,124883,13662,0,N,N,N,CP_Drtn,TT_Task,DT_FixedDUR2,TK_NotStart,DUKHCONP03MKACGF4610,Fixing of Split AC,8178,560,112,40,0,34.4,34.4,40,0,0,0,,,,2014-01-25 08:00,2014-01-29 17:00,,2013-11-03 08:00,2013-11-07 17:00,2013-11-03 08:00,2013-11-07 17:00,2013-11-03 08:00,2013-11-07 17:00,2014-01-25 08:00,2014-01-29 17:00,,PT_Normal,,,,,Tt+QrP4wSeKl8oSXQ3W1jg,,,,N,0,0,,,2013-02-16 15:53,2013-02-23 09:03,admin,admin
502341,6359,124884,13662,0,N,N,N,CP_Drtn,TT_Task,DT_FixedDUR2,TK_NotStart,DUKHCONP03MKACRF4630,Installation of Refrigerant Pipes,8178,584,0,56,0,17.2,17.2,56,0,0,0,,,,2014-02-03 08:00,2014-02-10 17:00,,2013-11-09 08:00,2013-11-16 17:00,2013-11-09 08:00,2013-11-16 17:00,2013-11-09 08:00,2013-11-16 17:00,2014-02-03 08:00,2014-02-10 17:00,,PT_Normal,,,,,h1C7gMDxQG+mqH85TN7zUw,,,,N,0,0,,,2013-02-16 15:53,2013-02-23 09:03,admin,admin
502342,6359,124884,13662,0,N,N,N,CP_Drtn,TT_Task,DT_FixedDUR2,TK_NotStart,DUKHCONP03MKACRF4635,Installation of Condensing Unit,8178,488,376,40,0,45.6,45.6,40,0,0,0,,,,2014-02-12 08:00,2014-02-17 17:00,,2013-12-01 08:00,2013-12-05 17:00,2013-12-01 08:00,2013-12-05 17:00,2013-12-01 08:00,2013-12-05 17:00,2014-02-12 08:00,2014-02-17 17:00,,PT_Normal,,,,,zECNBNeLTMWt5WeS0CRA6w,,,,N,0,0,,,2013-02-16 15:53,2013-02-16 15:56,admin,admin
502343,6359,124885,13662,0,N,N,N,CP_Drtn,TT_Task,DT_FixedDUR2,TK_NotStart,DUKHCONP03MKACFF4615,Installation AC Pipes,8178,376,120,40,0,28.4,28.4,40,0,0,0,,,,2013-12-09 08:00,2013-12-14 17:00,,2013-10-13 08:00,2013-10-20 17:00,2013-10-13 08:00,2013-10-20 17:00,2013-10-13 08:00,2013-10-20 17:00,2013-12-09 08:00,2013-12-14 17:00,,PT_Normal,,,,,rirwpQjOSMG45Eq8OhZgmA,,,,N,0,0,,,2013-02-16 15:53,2013-02-16 15:56,admin,admin
502344,6359,124885,13662,0,N,N,N,CP_Drtn,TT_Task,DT_FixedDUR2,TK_NotStart,DUKHCONP03MKACFF4620,Fixing of Ventilation Equipments,8178,344,0,40,0,17.2,17.2,40,0,0,0,,,,2014-01-09 08:00,2014-01-14 17:00,,2013-11-19 08:00,2013-11-24 17:00,2013-11-19 08:00,2013-11-24 17:00,2013-11-19 08:00,2013-11-24 17:00,2014-01-09 08:00,2014-01-14 17:00,,PT_Normal,,,,,Ps6YhS5/Q6Kp2J6Y45hD3g,,,,N,0,0,,,2013-02-16 15:53,2013-02-23 09:03,admin,admin
502345,6359,124885,13662,0,N,N,N,CP_Drtn,TT_Task,DT_FixedDUR2,TK_NotStart,DUKHCONP03MKACFF4625,Fixing of Split AC,8178,448,0,40,0,34.4,34.4,40,0,0,0,,,,2014-01-30 08:00,2014-02-04 17:00,,2013-11-25 08:00,2013-11-30 17:00,2013-11-25 08:00,2013-11-30 17:00,2013-11-25 08:00,2013-11-30 17:00,2014-01-30 08:00,2014-02-04 17:00,,PT_Normal,,,,,ptI6B2zjSz6nBiAfHTr/BA,,,,N,0,0,,,2013-02-16 15:53,2013-02-23 09:03,admin,admin
502346,6359,124889,13662,0,N,N,N,CP_Drtn,TT_Task,DT_FixedDUR2,TK_NotStart,DUKHCONI03Z3PSGL7000,Excavation,8177,104,40,120,0,37,37,120,31.000038,0,31.000038,,,,2014-06-21 08:00,2014-07-07 17:00,,2014-06-05 08:00,2014-06-22 17:00,2014-06-05 08:00,2014-06-22 17:00,2014-06-05 08:00,2014-06-22 17:00,2014-06-21 08:00,2014-07-07 17:00,,PT_Normal,,,,,R7Bn80MBTFurg5AcZOjCqA,,,,N,0,0,,,2013-02-16 15:53,2013-02-23 09:03,admin,admin
502347,6359,124889,13662,0,N,N,N,CP_Drtn,TT_Task,DT_FixedDUR2,TK_NotStart,DUKHCONI03Z3PSGL7005,Foundation casting,8165,64,0,120,0,1100,1100,120,0,0,0,,,,2014-06-26 08:00,2014-07-13 17:00,,2014-06-17 08:00,2014-07-03 17:00,2014-06-17 08:00,2014-07-03 17:00,2014-06-17 08:00,2014-07-03 17:00,2014-06-26 08:00,2014-07-13 17:00,,PT_Normal,,,,,CvOZZimcQfq534FCeyciPg,,,,N,0,0,,,2013-02-16 15:53,2013-02-16 16:35,admin,admin
502348,6359,124889,13662,0,N,N,N,CP_Drtn,TT_Task,DT_FixedDUR2,TK_NotStart,DUKHCONI03Z3PSGL7010,"Column, Frame&  Fabrics  Erection",8178,64,0,200,0,364,364,200,0,0,0,,,,2014-07-08 08:00,2014-08-09 17:00,,2014-06-29 08:00,2014-07-27 17:00,2014-06-29 08:00,2014-07-27 17:00,2014-06-29 08:00,2014-07-27 17:00,2014-07-08 08:00,2014-08-09 17:00,,PT_Normal,,,,,VBe7e0Y2RQume008YYznUA,,,,N,0,0,,,2013-02-16 15:53,2013-02-16 16:35,admin,admin
502349,6359,124889,13662,0,N,N,N,CP_Drtn,TT_Task,DT_FixedDUR2,TK_NotStart,DUKHCONI03Z3PSGL7015,Electrical Works-Parking Shed,8178,64,64,200,0,172,172,200,0,0,0,,,,2014-07-14 08:00,2014-08-14 17:00,,2014-07-05 08:00,2014-08-05 17:00,2014-07-05 08:00,2014-08-05 17:00,2014-07-05 08:00,2014-08-05 17:00,2014-07-14 08:00,2014-08-14 17:00,,PT_Normal,,,,,L28dTET5TpKXUT79LRqp2A,,,,N,0,0,,,2013-02-16 15:53,2013-02-16 16:35,admin,admin
502350,6359,124890,13662,0,N,N,N,CP_Drtn,TT_Task,DT_FixedDUR2,TK_NotStart,DUKHCONI03Z3DRGL5120,Laying of Drainage line,8178,96,0,200,0,662.4,662.4,200,0,0,0,,,,2013-12-19 08:00,2014-01-16 17:00,,2013-12-04 08:00,2014-01-02 17:00,2013-12-04 08:00,2014-01-02 17:00,2013-12-04 08:00,2014-01-02 17:00,2013-12-19 08:00,2014-01-16 17:00,,PT_Normal,,,,,1me0AVgDS1iQv4R+X/mOLA,,,,N,0,0,,,2013-02-16 15:53,2013-02-16 15:56,admin,admin
502351,6359,124890,13662,0,N,N,N,CP_Drtn,TT_Task,DT_FixedDUR2,TK_NotStart,DUKHCONI03Z3DRGL5125,Testing of Drainage line,8178,96,0,200,0,662.4,662.4,200,0,0,0,,,,2013-12-28 08:00,2014-01-25 17:00,,2013-12-12 08:00,2014-01-11 17:00,2013-12-12 08:00,2014-01-11 17:00,2013-12-12 08:00,2014-01-11 17:00,2013-12-28 08:00,2014-01-25 17:00,,PT_Normal,,,,,QvsO2e6vTH6jkOEEyq1IGw,,,,N,0,0,,,2013-02-16 15:53,2013-02-16 15:56,admin,admin
502352,6359,124890,13662,0,N,N,N,CP_Drtn,TT_Task,DT_FixedDUR2,TK_NotStart,DUKHCONI03Z3DRGL5130,Backfilling Drainage line,8177,96,0,120,0,450,450,120,330,0,330,,,,2014-01-14 08:00,2014-01-30 17:00,,2013-12-31 08:00,2014-01-16 17:00,2013-12-31 08:00,2014-01-16 17:00,2013-12-31 08:00,2014-01-16 17:00,2014-01-14 08:00,2014-01-30 17:00,,PT_Normal,,,,,+Kq5FnqTR9aaaKuvSyJOoQ,,,,N,0,0,,,2013-02-16 15:53,2013-02-16 15:56,admin,admin
502353,6359,124890,13662,0,N,N,N,CP_Drtn,TT_Task,DT_FixedDUR2,TK_NotStart,DUKHCONI03Z3DRGL5115,Excavation for Drainage line,8177,96,0,200,0,688,688,200,400,0,400,,,,2013-12-11 08:00,2014-01-09 17:00,,2013-11-27 08:00,2013-12-26 17:00,2013-11-27 08:00,2013-12-26 17:00,2013-11-27 08:00,2013-12-26 17:00,2013-12-11 08:00,2014-01-09 17:00,,PT_Normal,,,,,i0FTywpFTWGhEpchycuZ2w,,,,N,0,0,,,2013-02-16 15:53,2013-02-16 15:56,admin,admin
502354,6359,124891,13662,0,N,N,N,CP_Drtn,TT_Task,DT_FixedDUR2,TK_NotStart,DUKHCONI03Z3WSGL5155,Excavation for water line,8177,96,0,200,0,908,908,200,500,0,500,,,,2014-01-26 08:00,2014-02-24 17:00,,2014-01-12 08:00,2014-02-09 17:00,2014-01-12 08:00,2014-02-09 17:00,2014-01-12 08:00,2014-02-09 17:00,2014-01-26 08:00,2014-02-24 17:00,,PT_Normal,,,,,nwVcf6u8S7Ox7NZMGAmzzQ,,,,N,0,0,,,2013-02-16 15:53,2013-02-16 15:56,admin,admin
502355,6359,124891,13662,0,N,N,N,CP_Drtn,TT_Task,DT_FixedDUR2,TK_NotStart,DUKHCONI03Z3WSGL5160,Laying of water line,8178,96,0,200,0,938.4,938.4,200,0,0,0,,,,2014-02-01 08:00,2014-03-02 17:00,,2014-01-18 08:00,2014-02-16 17:00,2014-01-18 08:00,2014-02-16 17:00,2014-01-18 08:00,2014-02-16 17:00,2014-02-01 08:00,2014-03-02 17:00,,PT_Normal,,,,,0A9FYr03QT64vnBxx3ioBg,,,,N,0,0,,,2013-02-16 15:53,2013-02-16 15:56,admin,admin
502356,6359,124891,13662,0,N,N,N,CP_Drtn,TT_Task,DT_FixedDUR2,TK_NotStart,DUKHCONI03Z3WSGL5165,Testing of potable water line,8178,96,0,200,0,469.2,469.2,200,0,0,0,,,,2014-02-06 08:00,2014-03-08 17:00,,2014-01-23 08:00,2014-02-22 17:00,2014-01-23 08:00,2014-02-22 17:00,2014-01-23 08:00,2014-02-22 17:00,2014-02-06 08:00,2014-03-08 17:00,,PT_Normal,,,,,Npwdh0wIRQyT1zUxm0Uq7A,,,,N,0,0,,,2013-02-16 15:53,2013-02-16 15:56,admin,admin
502357,6359,124891,13662,0,N,N,N,CP_Drtn,TT_Task,DT_FixedDUR2,TK_NotStart,DUKHCONI03Z3WSGL5170,Backfilling potable water line,8177,96,0,200,0,712,712,200,550,0,550,,,,2014-02-13 08:00,2014-03-13 17:00,,2014-01-29 08:00,2014-02-27 17:00,2014-01-29 08:00,2014-02-27 17:00,2014-01-29 08:00,2014-02-27 17:00,2014-02-13 08:00,2014-03-13 17:00,,PT_Normal,,,,,5kNJgLXbRK6SDDMVpFg+Dg,,,,N,0,0,,,2013-02-16 15:53,2013-02-16 15:56,admin,admin
502358,6359,124891,13662,0,N,N,N,CP_Drtn,TT_Task,DT_FixedDUR2,TK_NotStart,DUKHCONI03Z3WSGL5175,Construction of valve chambers & Thrust Blocks,8177,248,0,200,0,66,66,200,0,0,0,,,,2014-03-13 08:00,2014-04-10 17:00,,2014-02-04 08:00,2014-03-05 17:00,2014-02-04 08:00,2014-03-05 17:00,2014-02-04 08:00,2014-03-05 17:00,2014-03-13 08:00,2014-04-10 17:00,,PT_Normal,,,,,k7xzHktbTUu/d+jQYApjvQ,,,,N,0,0,,,2013-02-16 15:53,2013-02-16 15:56,admin,admin
502359,6359,124891,13662,0,N,N,N,CP_Drtn,TT_Task,DT_FixedDUR2,TK_NotStart,DUKHCONI03Z3WSGL5180,"Installation of meter ,Accessories & Connection",8178,248,88,160,0,33.6,33.6,160,0,0,0,,,,2014-04-12 08:00,2014-05-04 17:00,,2014-03-06 08:00,2014-03-29 17:00,2014-03-06 08:00,2014-03-29 17:00,2014-03-06 08:00,2014-03-29 17:00,2014-04-12 08:00,2014-05-04 17:00,,PT_Normal,,,,,xguT3ggPSe6XcWCBrMn/9Q,,,,N,0,0,,,2013-02-16 15:53,2013-02-16 16:35,admin,admin
502360,6359,124892,13662,0,N,N,N,CP_Drtn,TT_Task,DT_FixedDUR2,TK_NotStart,DUKHCONI03Z3IRGL5265,Excavation for irrigation line,8177,152,0,200,0,812,812,200,500,0,500,,,,2014-05-14 08:00,2014-06-11 17:00,,2014-04-22 08:00,2014-05-20 17:00,2014-04-22 08:00,2014-05-20 17:00,2014-04-22 08:00,2014-05-20 17:00,2014-05-14 08:00,2014-06-11 17:00,,PT_Normal,,,,,k84g78F3TkSOoXlwdlwENw,,,,N,0,0,,,2013-02-16 15:53,2013-02-16 16:35,admin,admin
502361,6359,124892,13662,0,N,N,N,CP_Drtn,TT_Task,DT_FixedDUR2,TK_NotStart,DUKHCONI03Z3IRGL5270,Laying of irrigationline,8178,152,0,200,0,1159.2,1159.2,200,0,0,0,,,,2014-05-20 08:00,2014-06-17 17:00,,2014-04-28 08:00,2014-05-26 17:00,2014-04-28 08:00,2014-05-26 17:00,2014-04-28 08:00,2014-05-26 17:00,2014-05-20 08:00,2014-06-17 17:00,,PT_Normal,,,,,rqiN3qzWSe2lAWVNE2VdVA,,,,N,0,0,,,2013-02-16 15:53,2013-02-16 16:35,admin,admin
502362,6359,124892,13662,0,N,N,N,CP_Drtn,TT_Task,DT_FixedDUR2,TK_NotStart,DUKHCONI03Z3IRGL5275,Testing of irrigation line,8178,152,0,200,0,1021.2,1021.2,200,0,0,0,,,,2014-05-26 08:00,2014-06-23 17:00,,2014-05-04 08:00,2014-06-01 17:00,2014-05-04 08:00,2014-06-01 17:00,2014-05-04 08:00,2014-06-01 17:00,2014-05-26 08:00,2014-06-23 17:00,,PT_Normal,,,,,M0EfxLzGR1qSSnUgBPXSRg,,,,N,0,0,,,2013-02-16 15:53,2013-02-16 16:35,admin,admin
502363,6359,124892,13662,0,N,N,N,CP_Drtn,TT_Task,DT_FixedDUR2,TK_NotStart,DUKHCONI03Z3IRGL5280,Backfilling irrigation line,8177,152,0,200,0,676,676,200,550,0,550,,,,2014-06-01 08:00,2014-06-29 17:00,,2014-05-10 08:00,2014-06-07 17:00,2014-05-10 08:00,2014-06-07 17:00,2014-05-10 08:00,2014-06-07 17:00,2014-06-01 08:00,2014-06-29 17:00,,PT_Normal,,,,,pB9qKUBeSC+rJh78moZKkg,,,,N,0,0,,,2013-02-16 15:53,2013-02-16 16:35,admin,admin
502364,6359,124892,13662,0,N,N,N,CP_Drtn,TT_Task,DT_FixedDUR2,TK_NotStart,DUKHCONI03Z3IRGL5285,"Construction of Thrust Blocks,Pull boxes",8165,152,0,200,0,528,528,200,0,0,0,,,,2014-06-12 08:00,2014-07-10 17:00,,2014-05-21 08:00,2014-06-18 17:00,2014-05-21 08:00,2014-06-18 17:00,2014-05-21 08:00,2014-06-18 17:00,2014-06-12 08:00,2014-07-10 17:00,,PT_Normal,,,,,fLutT93ST6KdUy1zgdDeFw,,,,N,0,0,,,2013-02-16 15:53,2013-02-16 16:35,admin,admin
502365,6359,124892,13662,0,N,N,N,CP_Drtn,TT_Task,DT_FixedDUR2,TK_NotStart,DUKHCONI03Z3IRGL5290,"Irrigation Fittings (Nozzle,Values)",8178,152,8,200,0,355,355,200,0,0,0,,,,2014-06-21 08:00,2014-07-19 17:00,,2014-05-29 08:00,2014-06-26 17:00,2014-05-29 08:00,2014-06-26 17:00,2014-05-29 08:00,2014-06-26 17:00,2014-06-21 08:00,2014-07-19 17:00,,PT_Normal,,,,,r5GaBYEVQ0aqGmN6nBo1tA,,,,N,0,0,,,2013-02-16 15:53,2013-02-16 16:35,admin,admin
502366,6359,124893,13662,0,N,N,N,CP_Drtn,TT_Task,DT_FixedDUR2,TK_NotStart,DUKHCONI03Z3RWGL6000,Excavation & Earth Filling,8177,64,0,80,0,1614,1614,80,600,0,600,,,,2014-05-05 08:00,2014-05-15 17:00,,2014-04-26 08:00,2014-05-06 17:00,2014-04-26 08:00,2014-05-06 17:00,2014-04-26 08:00,2014-05-06 17:00,2014-05-05 08:00,2014-05-15 17:00,,PT_Normal,,,,,jrxpeeCzQS+DPJzDZ553+Q,,,,N,0,0,,,2013-02-16 15:53,2013-02-16 16:35,admin,admin
502367,6359,124893,13662,0,N,N,N,CP_Drtn,TT_Task,DT_FixedDUR2,TK_NotStart,DUKHCONI03Z3RWGL6005,Laying of Sub Grade,8178,64,0,200,0,30,30,200,0,0,0,,,,2014-05-17 08:00,2014-06-14 17:00,,2014-05-07 08:00,2014-06-04 17:00,2014-05-07 08:00,2014-06-04 17:00,2014-05-07 08:00,2014-06-04 17:00,2014-05-17 08:00,2014-06-14 17:00,,PT_Normal,,,,,rpFt9bKRSueymhhh7sL1xQ,,,,N,0,0,,,2013-02-16 15:53,2013-02-16 16:35,admin,admin
502368,6359,124893,13662,0,N,N,N,CP_Drtn,TT_Task,DT_FixedDUR2,TK_NotStart,DUKHCONI03Z3RWGL6010,Laying of Precast Kerbs,8178,64,0,200,0,1014,1014,200,0,0,0,,,,2014-05-28 08:00,2014-06-25 17:00,,2014-05-19 08:00,2014-06-16 17:00,2014-05-19 08:00,2014-06-16 17:00,2014-05-19 08:00,2014-06-16 17:00,2014-05-28 08:00,2014-06-25 17:00,,PT_Normal,,,,,8BMkbG8AScqt9drbc65mSQ,,,,N,0,0,,,2013-02-16 15:53,2013-02-16 16:35,admin,admin
502369,6359,124893,13662,0,N,N,N,CP_Drtn,TT_Task,DT_FixedDUR2,TK_NotStart,DUKHCONI03Z3RWGL6015,Laying of Granular Sub Base Coarse,8178,64,0,160,0,630,630,160,600,0,600,,,,2014-06-09 08:00,2014-07-01 17:00,,2014-05-31 08:00,2014-06-22 17:00,2014-05-31 08:00,2014-06-22 17:00,2014-05-31 08:00,2014-06-22 17:00,2014-06-09 08:00,2014-07-01 17:00,,PT_Normal,,,,,if0D/LbNQayn8kcnP6vcLA,,,,N,0,0,,,2013-02-16 15:53,2013-02-16 16:35,admin,admin
502370,6359,124893,13662,0,N,N,N,CP_Drtn,TT_Task,DT_FixedDUR2,TK_NotStart,DUKHCONI03Z3RWGL6020,Laying of Road Base Asphalt Concrete,8178,64,0,40,0,180,180,40,150,0,150,,,,2014-07-02 08:00,2014-07-07 17:00,,2014-06-23 08:00,2014-06-28 17:00,2014-06-23 08:00,2014-06-28 17:00,2014-06-23 08:00,2014-06-28 17:00,2014-07-02 08:00,2014-07-07 17:00,,PT_Normal,,,,,mCqaqRUeRhaGvcIYg3qT5w,,,,N,0,0,,,2013-02-16 15:53,2013-02-16 16:35,admin,admin
502371,6359,124893,13662,0,N,N,N,CP_Drtn,TT_Task,DT_FixedDUR2,TK_NotStart,DUKHCONI03Z3RWGL6025,Laying of Asphalt Wearing Coarse,8178,184,0,40,0,180,180,40,150,0,150,,,,2014-07-26 08:00,2014-07-30 17:00,,2014-06-29 08:00,2014-07-03 17:00,2014-06-29 08:00,2014-07-03 17:00,2014-06-29 08:00,2014-07-03 17:00,2014-07-26 08:00,2014-07-30 17:00,,PT_Normal,,,,,aiYXUC5eRpiAjwMiF4eKCQ,,,,N,0,0,,,2013-02-16 15:53,2013-02-16 16:35,admin,admin
502372,6359,124893,13662,0,N,N,N,CP_Drtn,TT_Task,DT_FixedDUR2,TK_NotStart,DUKHCONI03Z3RWGL6030,Traffic Signage & Road Marking,8178,184,120,40,0,366,366,40,0,0,0,,,,2014-07-31 08:00,2014-08-09 17:00,,2014-07-05 08:00,2014-07-09 17:00,2014-07-05 08:00,2014-07-09 17:00,2014-07-05 08:00,2014-07-09 17:00,2014-07-31 08:00,2014-08-09 17:00,,PT_Normal,,,,,al8bCveoRiavOikpovBs5g,,,,N,0,0,,,2013-02-16 15:53,2013-02-16 16:35,admin,admin
502373,6359,124894,13662,0,N,N,N,CP_Drtn,TT_Task,DT_FixedDUR2,TK_NotStart,DUKHCONI03Z3BWGL5315,Construction of Boundary Wall (Ht-3m),8165,152,0,200,0,182,182,200,0,0,0,,,,2014-04-24 08:00,2014-05-22 17:00,,2014-04-02 08:00,2014-04-30 17:00,2014-04-02 08:00,2014-04-30 17:00,2014-04-02 08:00,2014-04-30 17:00,2014-04-24 08:00,2014-05-22 17:00,,PT_Normal,,,,,sE1rvkQtRIuEnOPDXIsW8Q,,,,N,0,0,,,2013-02-16 15:53,2013-02-16 16:35,admin,admin
502374,6359,124894,13662,0,N,N,N,CP_Drtn,TT_Task,DT_FixedDUR2,TK_NotStart,DUKHCONI03Z3BWGL5320,"Install.Steel Gate,Entance Barrier (3m Wall)",8306,152,8,200,0,14,14,200,0,0,0,,,,2014-05-11 08:00,2014-06-08 17:00,,2014-04-19 08:00,2014-05-17 17:00,2014-04-19 08:00,2014-05-17 17:00,2014-04-19 08:00,2014-05-17 17:00,2014-05-11 08:00,2014-06-08 17:00,,PT_Normal,,,,,gnxjBDj8QX63O56D4u07kA,,,,N,0,0,,,2013-02-16 15:53,2013-02-16 16:35,admin,admin
502375,6359,124895,13662,0,N,N,N,CP_Drtn,TT_Task,DT_FixedDUR2,TK_NotStart,DUKHCONI03Z3STGL5235,Excavation for Street lighting,8177,64,0,200,0,69,69,200,51,0,51,,,,2014-03-19 08:00,2014-04-16 17:00,,2014-03-10 08:00,2014-04-07 17:00,2014-03-10 08:00,2014-04-07 17:00,2014-03-10 08:00,2014-04-07 17:00,2014-03-19 08:00,2014-04-16 17:00,,PT_Normal,,,,,0ThlJ3YpTqy57NJrO4Cciw,,,,N,0,0,,,2013-02-16 15:53,2013-02-16 16:35,admin,admin
502376,6359,124895,13662,0,N,N,N,CP_Drtn,TT_Task,DT_FixedDUR2,TK_NotStart,DUKHCONI03Z3STGL5240,Construction of Duct Banks,8178,64,0,200,0,1181.6,1181.6,200,0,0,0,,,,2014-03-25 08:00,2014-04-22 17:00,,2014-03-16 08:00,2014-04-13 17:00,2014-03-16 08:00,2014-04-13 17:00,2014-03-16 08:00,2014-04-13 17:00,2014-03-25 08:00,2014-04-22 17:00,,PT_Normal,,,,,X0hZ8YhNTLmErzdCwX+U+A,,,,N,0,0,,,2013-02-16 15:53,2013-02-23 09:03,admin,admin
502377,6359,124895,13662,0,N,N,N,CP_Drtn,TT_Task,DT_FixedDUR2,TK_NotStart,DUKHCONI03Z3STGL5245,Construction of Foundation,8177,64,0,200,0,594,594,200,0,0,0,,,,2014-03-25 08:00,2014-04-22 17:00,,2014-03-16 08:00,2014-04-13 17:00,2014-03-16 08:00,2014-04-13 17:00,2014-03-16 08:00,2014-04-13 17:00,2014-03-25 08:00,2014-04-22 17:00,,PT_Normal,,,,,+T5kF2XHShC+Of0tlEey1Q,,,,N,0,0,,,2013-02-16 15:53,2013-02-16 16:35,admin,admin
502378,6359,124895,13662,0,N,N,N,CP_Drtn,TT_Task,DT_FixedDUR2,TK_NotStart,DUKHCONI03Z3STGL5250,Backfilling Street Lighting,8177,64,0,200,0,61,61,200,55,0,55,,,,2014-03-31 08:00,2014-04-28 17:00,,2014-03-22 08:00,2014-04-19 17:00,2014-03-22 08:00,2014-04-19 17:00,2014-03-22 08:00,2014-04-19 17:00,2014-03-31 08:00,2014-04-28 17:00,,PT_Normal,,,,,egWD/JgRRk6ITSRzc4p6wg,,,,N,0,0,,,2013-02-16 15:53,2013-02-16 16:35,admin,admin
502379,6359,124895,13662,0,N,N,N,CP_Drtn,TT_Task,DT_FixedDUR2,TK_NotStart,DUKHCONI03Z3STGL5255,Installation of light Post,8178,448,160,200,0,198.8,198.8,200,0,0,0,,,,2014-06-07 08:00,2014-07-05 17:00,,2014-04-02 08:00,2014-04-30 17:00,2014-04-02 08:00,2014-04-30 17:00,2014-04-02 08:00,2014-04-30 17:00,2014-06-07 08:00,2014-07-05 17:00,,PT_Normal,,,,,a9h/y7nlQz21juYpGCfU8Q,,,,N,0,0,,,2013-02-16 15:53,2013-02-16 16:35,admin,admin
502380,6359,124895,13662,0,N,N,N,CP_Drtn,TT_Task,DT_FixedDUR2,TK_NotStart,DUKHCONI03Z3STGL5260,Electrical Works,8178,288,224,200,0,482.8,482.8,200,0,0,0,,,,2014-06-15 08:00,2014-07-13 17:00,,2014-05-04 08:00,2014-06-01 17:00,2014-05-04 08:00,2014-06-01 17:00,2014-05-04 08:00,2014-06-01 17:00,2014-06-15 08:00,2014-07-13 17:00,,PT_Normal,,,,,FAqa6+kKTXa20Npc0/1Slw,,,,N,0,0,,,2013-02-16 15:53,2013-02-16 16:35,admin,admin
502381,6359,124896,13662,0,N,N,N,CP_Drtn,TT_Task,DT_FixedDUR2,TK_NotStart,DUKHCONI03Z3FFGL5185,Excavation for firefighting line,8177,64,0,200,0,437,437,200,251,0,251,,,,2014-02-19 08:00,2014-03-19 17:00,,2014-02-09 08:00,2014-03-10 17:00,2014-02-09 08:00,2014-03-10 17:00,2014-02-09 08:00,2014-03-10 17:00,2014-02-19 08:00,2014-03-19 17:00,,PT_Normal,,,,,z+0P0VSSQ466VitOA455Qw,,,,N,0,0,,,2013-02-16 15:53,2013-02-16 16:35,admin,admin
502382,6359,124896,13662,0,N,N,N,CP_Drtn,TT_Task,DT_FixedDUR2,TK_NotStart,DUKHCONI03Z3FFGL5190,Laying of firefighting line,8178,64,0,200,0,430.8,430.8,200,0,0,0,,,,2014-02-27 08:00,2014-03-27 17:00,,2014-02-18 08:00,2014-03-18 17:00,2014-02-18 08:00,2014-03-18 17:00,2014-02-18 08:00,2014-03-18 17:00,2014-02-27 08:00,2014-03-27 17:00,,PT_Normal,,,,,W7lzg6gKQXOhEnICPuZD/A,,,,N,0,0,,,2013-02-16 15:53,2013-02-16 16:35,admin,admin
502383,6359,124896,13662,0,N,N,N,CP_Drtn,TT_Task,DT_FixedDUR2,TK_NotStart,DUKHCONI03Z3FFGL5195,Testing of firefighting line,8178,64,0,200,0,220.8,220.8,200,0,0,0,,,,2014-03-05 08:00,2014-04-02 17:00,,2014-02-24 08:00,2014-03-24 17:00,2014-02-24 08:00,2014-03-24 17:00,2014-02-24 08:00,2014-03-24 17:00,2014-03-05 08:00,2014-04-02 17:00,,PT_Normal,,,,,rMwc0DI9TUSwQqWNFgY+gg,,,,N,0,0,,,2013-02-16 15:53,2013-02-16 16:35,admin,admin
502384,6359,124896,13662,0,N,N,N,CP_Drtn,TT_Task,DT_FixedDUR2,TK_NotStart,DUKHCONI03Z3FFGL5200,Backfilling firefighting line,8177,64,0,200,0,353,353,200,275,0,275,,,,2014-03-11 08:00,2014-04-08 17:00,,2014-03-02 08:00,2014-03-30 17:00,2014-03-02 08:00,2014-03-30 17:00,2014-03-02 08:00,2014-03-30 17:00,2014-03-11 08:00,2014-04-08 17:00,,PT_Normal,,,,,QY48wHRTS/eoynxHVPSFvw,,,,N,0,0,,,2013-02-16 15:53,2013-02-16 16:35,admin,admin
502385,6359,124896,13662,0,N,N,N,CP_Drtn,TT_Task,DT_FixedDUR2,TK_NotStart,DUKHCONI03Z3FFGL5205,Construction of valve chambers & Thrust Blocks,8165,160,0,200,0,64,64,200,0,0,0,,,,2014-03-31 08:00,2014-04-28 17:00,,2014-03-08 08:00,2014-04-05 17:00,2014-03-08 08:00,2014-04-05 17:00,2014-03-08 08:00,2014-04-05 17:00,2014-03-31 08:00,2014-04-28 17:00,,PT_Normal,,,,,QnBn66qsQCiVQvFrFeMVyg,,,,N,0,0,,,2013-02-16 15:53,2013-02-16 16:35,admin,admin
502386,6359,124896,13662,0,N,N,N,CP_Drtn,TT_Task,DT_FixedDUR2,TK_NotStart,DUKHCONI03Z3FFGL5210,Connection with existing Firewater System,8165,160,96,200,0,64,64,200,0,0,0,,,,2014-04-06 08:00,2014-05-04 17:00,,2014-03-13 08:00,2014-04-10 17:00,2014-03-13 08:00,2014-04-10 17:00,2014-03-13 08:00,2014-04-10 17:00,2014-04-06 08:00,2014-05-04 17:00,,PT_Normal,,,,,j7WvT2M6QAG9eARxAIIoAw,,,,N,0,0,,,2013-02-16 15:53,2013-02-16 16:35,admin,admin
502387,6359,124897,13662,0,N,N,N,CP_Drtn,TT_Task,DT_FixedDUR2,TK_NotStart,DUKHCONI03Z3ELGL5215,Excavation Cable  Trenches  & Duct Banks,8167,64,0,200,0,3479.2,3479.2,200,1000,0,1000,,,,2014-03-19 08:00,2014-04-16 17:00,,2014-03-10 08:00,2014-04-07 17:00,2014-03-10 08:00,2014-04-07 17:00,2014-03-10 08:00,2014-04-07 17:00,2014-03-19 08:00,2014-04-16 17:00,,PT_Normal,,,,,AEiqdF4SSFWmIhvBU8JcbA,,,,N,0,0,,,2013-02-16 15:53,2013-02-23 09:03,admin,admin
502388,6359,124897,13662,0,N,N,N,CP_Drtn,TT_Task,DT_FixedDUR2,TK_NotStart,DUKHCONI03Z3ELGL5220,Laying of electrical cables,8178,88,0,200,0,5566.4,5566.4,200,0,0,0,,,,2014-03-29 08:00,2014-04-26 17:00,,2014-03-16 08:00,2014-04-13 17:00,2014-03-16 08:00,2014-04-13 17:00,2014-03-16 08:00,2014-04-13 17:00,2014-03-29 08:00,2014-04-26 17:00,,PT_Normal,,,,,p5APN5EDQ32SwHjvOYCAYA,,,,N,0,0,,,2013-02-16 15:53,2013-02-16 16:35,admin,admin
502389,6359,124897,13662,0,N,N,N,CP_Drtn,TT_Task,DT_FixedDUR2,TK_NotStart,DUKHCONI03Z3ELGL5225,Backfilling Electrical trench,8177,88,0,200,0,1898,1898,200,1100,0,1100,,,,2014-04-06 08:00,2014-05-04 17:00,,2014-03-24 08:00,2014-04-21 17:00,2014-03-24 08:00,2014-04-21 17:00,2014-03-24 08:00,2014-04-21 17:00,2014-04-06 08:00,2014-05-04 17:00,,PT_Normal,,,,,qKD5lPieRN6vIHS8Bg4tXQ,,,,N,0,0,,,2013-02-16 15:53,2013-02-16 16:35,admin,admin
502390,6359,124897,13662,0,N,N,N,CP_Drtn,TT_Task,DT_FixedDUR2,TK_NotStart,DUKHCONI03Z3ELGL5230,Construction of Submain Board & Feeder Pillar,8165,288,0,200,0,508,508,200,0,0,0,,,,2014-05-17 08:00,2014-06-14 17:00,,2014-04-05 08:00,2014-05-03 17:00,2014-04-05 08:00,2014-05-03 17:00,2014-04-05 08:00,2014-05-03 17:00,2014-05-17 08:00,2014-06-14 17:00,,PT_Normal,,,,,az9MHOdSTAutt9ZBGEXFMQ,,,,N,0,0,,,2013-02-16 15:53,2013-02-16 16:35,admin,admin
502391,6359,124898,13662,0,N,N,N,CP_Drtn,TT_Task,DT_FixedDUR2,TK_NotStart,DUKHCONI03Z3SLGL7200,Excavation for Landscaping,8177,144,0,200,0,81,81,200,51,0,51,,,,2014-06-21 08:00,2014-07-19 17:00,,2014-05-31 08:00,2014-06-28 17:00,2014-05-31 08:00,2014-06-28 17:00,2014-05-31 08:00,2014-06-28 17:00,2014-06-21 08:00,2014-07-19 17:00,,PT_Normal,,,,,EzyFtg+lQWG7hLKHq528PQ,,,,N,0,0,,,2013-02-16 15:53,2013-02-16 16:35,admin,admin
502392,6359,124898,13662,0,N,N,N,CP_Drtn,TT_Task,DT_FixedDUR2,TK_NotStart,DUKHCONI03Z3SLGL7205,Sweet Soil Laying,8178,144,0,200,0,1274,1274,200,0,0,0,,,,2014-07-02 08:00,2014-07-30 17:00,,2014-06-11 08:00,2014-07-09 17:00,2014-06-11 08:00,2014-07-09 17:00,2014-06-11 08:00,2014-07-09 17:00,2014-07-02 08:00,2014-07-30 17:00,,PT_Normal,,,,,Lvhq0Oj1RE+XHE48ZiOPbA,,,,N,0,0,,,2013-02-16 15:53,2013-02-16 16:35,admin,admin
502393,6359,124898,13662,0,N,N,N,CP_Drtn,TT_Task,DT_FixedDUR2,TK_NotStart,DUKHCONI03Z3SLGL7210,Plantation works,8178,144,144,200,0,1918,1918,200,0,0,0,,,,2014-07-14 08:00,2014-08-14 17:00,,2014-06-23 08:00,2014-07-21 17:00,2014-06-23 08:00,2014-07-21 17:00,2014-06-23 08:00,2014-07-21 17:00,2014-07-14 08:00,2014-08-14 17:00,,PT_Normal,,,,,3A3JE4PmSYCG3ghQkNoTzw,,,,N,0,0,,,2013-02-16 15:53,2013-02-16 16:35,admin,admin
502394,6359,124899,13662,0,N,N,N,CP_Drtn,TT_Task,DT_FixedDUR2,TK_NotStart,DUKHCONI03Z3SAGL5135,Construction of manholes Drainage,8177,488,200,200,0,300,300,200,0,0,0,,,,2014-03-13 08:00,2014-04-10 17:00,,2013-12-31 08:00,2014-01-28 17:00,2013-12-31 08:00,2014-01-28 17:00,2013-12-31 08:00,2014-01-28 17:00,2014-03-13 08:00,2014-04-10 17:00,,PT_Normal,,,,,D+dtzwhcRFe1HOvoONzVEA,,,,N,0,0,,,2013-02-16 15:53,2013-02-16 15:56,admin,admin
502395,6359,124899,13662,0,N,N,N,CP_Drtn,TT_Task,DT_FixedDUR2,TK_NotStart,DUKHCONI03Z3SAGL5140,Construction of soakaways,8177,96,0,200,0,212,212,200,0,0,0,,,,2014-01-14 08:00,2014-02-12 17:00,,2013-12-31 08:00,2014-01-28 17:00,2013-12-31 08:00,2014-01-28 17:00,2013-12-31 08:00,2014-01-28 17:00,2014-01-14 08:00,2014-02-12 17:00,,PT_Normal,,,,,fl9IDva8R9Krz7FlrJcCeg,,,,N,0,0,,,2013-02-16 15:53,2013-02-16 15:56,admin,admin
502396,6359,124899,13662,0,N,N,N,CP_Drtn,TT_Task,DT_FixedDUR2,TK_NotStart,DUKHCONI03Z3SAGL5145,Construction of Road gullies,8177,96,0,200,0,256,256,200,0,0,0,,,,2014-02-13 08:00,2014-03-13 17:00,,2014-01-29 08:00,2014-02-27 17:00,2014-01-29 08:00,2014-02-27 17:00,2014-01-29 08:00,2014-02-27 17:00,2014-02-13 08:00,2014-03-13 17:00,,PT_Normal,,,,,Bbzi+mJ5Q52wS7NbDoTgzw,,,,N,0,0,,,2013-02-16 15:53,2013-02-16 15:56,admin,admin
502397,6359,124899,13662,0,N,N,N,CP_Drtn,TT_Task,DT_FixedDUR2,TK_NotStart,DUKHCONI03Z3SAGL5150,Connection with existing sewer manhole,8177,288,224,160,0,300,300,160,0,0,0,,,,2014-04-12 08:00,2014-05-04 17:00,,2014-03-01 08:00,2014-03-23 17:00,2014-03-01 08:00,2014-03-23 17:00,2014-03-01 08:00,2014-03-23 17:00,2014-04-12 08:00,2014-05-04 17:00,,PT_Normal,,,,,SHT38IFmTL6EMJEq6QpUxQ,,,,N,0,0,,,2013-02-16 15:53,2013-02-16 16:35,admin,admin
502398,6359,124900,13662,0,N,N,N,CP_Drtn,TT_Task,DT_FixedDUR2,TK_NotStart,DUKHCONI03Z3TCGL5295,Excavation Telecommunication trenches,8177,64,0,160,0,362,362,160,200,0,200,,,,2014-04-12 08:00,2014-05-04 17:00,,2014-04-02 08:00,2014-04-24 17:00,2014-04-02 08:00,2014-04-24 17:00,2014-04-02 08:00,2014-04-24 17:00,2014-04-12 08:00,2014-05-04 17:00,,PT_Normal,,,,,vec2fjxRSLS85J6+8WmelQ,,,,N,0,0,,,2013-02-16 15:53,2013-02-16 16:35,admin,admin
502399,6359,124900,13662,0,N,N,N,CP_Drtn,TT_Task,DT_FixedDUR2,TK_NotStart,DUKHCONI03Z3TCGL5300,Laying of cables,8178,64,0,160,0,556.8,556.8,160,0,0,0,,,,2014-04-17 08:00,2014-05-10 17:00,,2014-04-08 08:00,2014-04-30 17:00,2014-04-08 08:00,2014-04-30 17:00,2014-04-08 08:00,2014-04-30 17:00,2014-04-17 08:00,2014-05-10 17:00,,PT_Normal,,,,,RLsxZiJOSXqgvJx1oAQ6uA,,,,N,0,0,,,2013-02-16 15:53,2013-02-23 09:03,admin,admin
502400,6359,124900,13662,0,N,N,N,CP_Drtn,TT_Task,DT_FixedDUR2,TK_NotStart,DUKHCONI03Z3TCGL5305,Backfilling telecommunication trench,8177,64,0,160,0,286,286,160,220,0,220,,,,2014-04-23 08:00,2014-05-15 17:00,,2014-04-14 08:00,2014-05-06 17:00,2014-04-14 08:00,2014-05-06 17:00,2014-04-14 08:00,2014-05-06 17:00,2014-04-23 08:00,2014-05-15 17:00,,PT_Normal,,,,,1Ckv/r68TGmheOsc1Vj1Kg,,,,N,0,0,,,2013-02-16 15:53,2013-02-16 16:35,admin,admin
502401,6359,124900,13662,0,N,N,N,CP_Drtn,TT_Task,DT_FixedDUR2,TK_NotStart,DUKHCONI03Z3TCGL5310,Connection & Installation,8178,176,0,160,0,180.8,180.8,160,0,0,0,,,,2014-06-15 08:00,2014-07-07 17:00,,2014-05-20 08:00,2014-06-11 17:00,2014-05-20 08:00,2014-06-11 17:00,2014-05-20 08:00,2014-06-11 17:00,2014-06-15 08:00,2014-07-07 17:00,,PT_Normal,,,,,hv+h+9ffT6q8pq+U0eIJNQ,,,,N,0,0,,,2013-02-16 15:53,2013-02-16 16:35,admin,admin
502402,6359,124901,13662,0,N,N,N,CP_Drtn,TT_Task,DT_FixedDUR2,TK_NotStart,DUKHCONI03Z3HDGL7020,Precast Concrete Kerbs works,8178,144,0,160,0,1600,1600,160,0,0,0,,,,2014-05-17 08:00,2014-06-08 17:00,,2014-04-26 08:00,2014-05-18 17:00,2014-04-26 08:00,2014-05-18 17:00,2014-04-26 08:00,2014-05-18 17:00,2014-05-17 08:00,2014-06-08 17:00,,PT_Normal,,,,,HTuafNG/RdK3wTWNkqsE5w,,,,N,0,0,,,2013-02-16 15:53,2013-02-16 16:35,admin,admin
502403,6359,124901,13662,0,N,N,N,CP_Drtn,TT_Task,DT_FixedDUR2,TK_NotStart,DUKHCONI03Z3HDGL7025,Interlocking for Walkways,8174,144,0,200,0,1048,1048,200,0,0,0,,,,2014-05-28 08:00,2014-06-25 17:00,,2014-05-07 08:00,2014-06-04 17:00,2014-05-07 08:00,2014-06-04 17:00,2014-05-07 08:00,2014-06-04 17:00,2014-05-28 08:00,2014-06-25 17:00,,PT_Normal,,,,,+eMS0BSVRPOk9LOOuHs+Kw,,,,N,0,0,,,2013-02-16 15:53,2013-02-16 16:35,admin,admin
502404,6359,124901,13662,0,N,N,N,CP_Drtn,TT_Task,DT_FixedDUR2,TK_NotStart,DUKHCONI03Z3HDGL7030,Construction of Retaining wall,8165,144,0,200,0,252,252,200,0,0,0,,,,2014-06-09 08:00,2014-07-07 17:00,,2014-05-19 08:00,2014-06-16 17:00,2014-05-19 08:00,2014-06-16 17:00,2014-05-19 08:00,2014-06-16 17:00,2014-06-09 08:00,2014-07-07 17:00,,PT_Normal,,,,,CK0tdhQFRBu+OYupCM33Kw,,,,N,0,0,,,2013-02-16 15:53,2013-02-16 16:35,admin,admin
502405,6359,124901,13662,0,N,N,N,CP_Drtn,TT_Task,DT_FixedDUR2,TK_NotStart,DUKHCONI03Z3HDGL7035,Construction of Wash Stone Boulders,8170,144,0,200,0,44,44,200,0,0,0,,,,2014-06-09 08:00,2014-07-07 17:00,,2014-05-19 08:00,2014-06-16 17:00,2014-05-19 08:00,2014-06-16 17:00,2014-05-19 08:00,2014-06-16 17:00,2014-06-09 08:00,2014-07-07 17:00,,PT_Normal,,,,,MxvR95lDRfmurm5QOzs7zQ,,,,N,0,0,,,2013-02-16 15:53,2013-02-16 16:35,admin,admin
502406,6359,124901,13662,0,N,N,N,CP_Drtn,TT_Task,DT_FixedDUR2,TK_NotStart,DUKHCONI03Z3HDGL7040,Construction of Speed Humps,8167,184,184,80,0,14,14,80,0,0,0,,,,2014-07-31 08:00,2014-08-14 17:00,,2014-07-05 08:00,2014-07-15 17:00,2014-07-05 08:00,2014-07-15 17:00,2014-07-05 08:00,2014-07-15 17:00,2014-07-31 08:00,2014-08-14 17:00,,PT_Normal,,,,,bqPt+LmVRXCBOtlfrc8+Kg,,,,N,0,0,,,2013-02-16 15:53,2013-02-16 16:35,admin,admin
502407,6359,124904,13662,0,N,N,N,CP_Drtn,TT_Task,DT_FixedDUR2,TK_NotStart,DUKHCONI03SBIWGL7455,Internal epoxy coating & Painting,8178,120,0,40,0,102,102,40,0,0,0,,,,2014-07-26 08:00,2014-07-30 17:00,,2014-07-08 08:00,2014-07-13 17:00,2014-07-08 08:00,2014-07-13 17:00,2014-07-08 08:00,2014-07-13 17:00,2014-07-26 08:00,2014-07-30 17:00,,PT_Normal,,,,,ftOfeoHeQtGK0E15xV/ApQ,,,,N,0,0,,,2013-02-16 15:53,2013-02-16 15:56,admin,admin
502408,6359,124904,13662,0,N,N,N,CP_Drtn,TT_Task,DT_FixedDUR2,TK_NotStart,DUKHCONI03SBIWGL7460,Installation of Steel Ladder,8178,120,0,40,0,14,14,40,0,0,0,,,,2014-07-31 08:00,2014-08-09 17:00,,2014-07-14 08:00,2014-07-19 17:00,2014-07-14 08:00,2014-07-19 17:00,2014-07-14 08:00,2014-07-19 17:00,2014-07-31 08:00,2014-08-09 17:00,,PT_Normal,,,,,Qn0SsdPRT/GVkL1d0VSjuQ,,,,N,0,0,,,2013-02-16 15:53,2013-02-16 15:56,admin,admin
502409,6359,124904,13662,0,N,N,N,CP_Drtn,TT_Task,DT_FixedDUR2,TK_NotStart,DUKHCONI03SBIWGL7465,Installation of G.I Handrails,8178,120,120,40,0,328,328,40,0,0,0,,,,2014-08-10 08:00,2014-08-14 17:00,,2014-07-20 08:00,2014-07-24 17:00,2014-07-20 08:00,2014-07-24 17:00,2014-07-20 08:00,2014-07-24 17:00,2014-08-10 08:00,2014-08-14 17:00,,PT_Normal,,,,,xDA5c7ZOQzWSVwpxtqZKOw,,,,N,0,0,,,2013-02-16 15:53,2013-02-16 16:35,admin,admin
502410,6359,124904,13662,0,N,N,N,CP_Drtn,TT_Task,DT_FixedDUR2,TK_NotStart,DUKHCONI03SBIWGL7440,"Plumbing , Drainage & Firefighting  works",8178,120,0,200,0,50.4,50.4,200,0,0,0,,,,2014-06-26 08:00,2014-07-24 17:00,,2014-06-09 08:00,2014-07-07 17:00,2014-06-09 08:00,2014-07-07 17:00,2014-06-09 08:00,2014-07-07 17:00,2014-06-26 08:00,2014-07-24 17:00,,PT_Normal,,,,,ZA0iS/WNSG+ub2FCzA7gvw,,,,N,0,0,,,2013-02-16 15:53,2013-02-16 15:56,admin,admin
502411,6359,124904,13662,0,N,N,N,CP_Drtn,TT_Task,DT_FixedDUR2,TK_NotStart,DUKHCONI03SBIWGL7445,AC Works,8178,120,0,200,0,17.2,17.2,200,0,0,0,,,,2014-06-26 08:00,2014-07-24 17:00,,2014-06-09 08:00,2014-07-07 17:00,2014-06-09 08:00,2014-07-07 17:00,2014-06-09 08:00,2014-07-07 17:00,2014-06-26 08:00,2014-07-24 17:00,,PT_Normal,,,,,Dg10JSCaSAuUkFg5jllU9g,,,,N,0,0,,,2013-02-16 15:53,2013-02-23 09:03,admin,admin
502412,6359,124904,13662,0,N,N,N,CP_Drtn,TT_Task,DT_FixedDUR2,TK_NotStart,DUKHCONI03SBIWGL7450,Electrical Works,8178,120,0,200,0,325.2,325.2,200,0,0,0,,,,2014-06-26 08:00,2014-07-24 17:00,,2014-06-09 08:00,2014-07-07 17:00,2014-06-09 08:00,2014-07-07 17:00,2014-06-09 08:00,2014-07-07 17:00,2014-06-26 08:00,2014-07-24 17:00,,PT_Normal,,,,,8JewE2cBQa2fMNGA/NkYWA,,,,N,0,0,,,2013-02-16 15:53,2013-02-23 09:03,admin,admin
502413,6359,124904,13662,0,N,N,N,CP_Drtn,TT_Task,DT_FixedDUR2,TK_NotStart,DUKHCONI03SBIWGL7950,Laying of Interlock,8174,288,0,80,0,58,58,80,0,0,0,,,,2014-07-08 08:00,2014-07-19 17:00,,2014-05-27 08:00,2014-06-07 17:00,2014-05-27 08:00,2014-06-07 17:00,2014-05-27 08:00,2014-06-07 17:00,2014-07-08 08:00,2014-07-19 17:00,,PT_Normal,,,,,YDpIVz7DTby9OWnuXfaqoQ,,,,N,0,0,,,2013-02-16 15:53,2013-02-16 15:56,admin,admin
502414,6359,124904,13662,0,N,N,N,CP_Drtn,TT_Task,DT_FixedDUR2,TK_NotStart,DUKHCONI03SBIWGL7435,Installation of Boundary Fences,8165,288,168,120,0,84,84,120,0,0,0,,,,2014-07-20 08:00,2014-08-09 17:00,,2014-06-08 08:00,2014-06-24 17:00,2014-06-08 08:00,2014-06-24 17:00,2014-06-08 08:00,2014-06-24 17:00,2014-07-20 08:00,2014-08-09 17:00,,PT_Normal,,,,,Gh1cZtPvRiSCYnzGXSPDkw,,,,N,0,0,,,2013-02-16 15:53,2013-02-16 15:56,admin,admin
502415,6359,124904,13662,0,N,N,N,CP_Drtn,TT_Task,DT_FixedDUR2,TK_NotStart,DUKHCONI03SBIWGL7400,Excavation,8177,120,0,120,0,582,582,120,300,0,300,,,,2014-02-23 08:00,2014-03-11 17:00,,2014-02-04 08:00,2014-02-22 17:00,2014-02-04 08:00,2014-02-22 17:00,2014-02-04 08:00,2014-02-22 17:00,2014-02-23 08:00,2014-03-11 17:00,,PT_Normal,,,,,ajdDHT9QSp25G5VxSACjIw,,,,N,0,0,,,2013-02-16 15:53,2013-02-16 15:56,admin,admin
502416,6359,124904,13662,0,N,N,N,CP_Drtn,TT_Task,DT_FixedDUR2,TK_NotStart,DUKHCONI03SBIWGL7405,Blinding & base waterproofing,8163,120,0,80,0,400,400,80,0,0,0,,,,2014-03-12 08:00,2014-03-23 17:00,,2014-02-23 08:00,2014-03-05 17:00,2014-02-23 08:00,2014-03-05 17:00,2014-02-23 08:00,2014-03-05 17:00,2014-03-12 08:00,2014-03-23 17:00,,PT_Normal,,,,,C+c6DIU4TL6/3ih/mY1H7A,,,,N,0,0,,,2013-02-16 15:53,2013-02-16 15:56,admin,admin
502417,6359,124904,13662,0,N,N,N,CP_Drtn,TT_Task,DT_FixedDUR2,TK_NotStart,DUKHCONI03SBIWGL7410,Construction of Raft slab,8165,120,0,80,0,1288,1288,80,0,0,0,,,,2014-03-24 08:00,2014-04-03 17:00,,2014-03-06 08:00,2014-03-17 17:00,2014-03-06 08:00,2014-03-17 17:00,2014-03-06 08:00,2014-03-17 17:00,2014-03-24 08:00,2014-04-03 17:00,,PT_Normal,,,,,MIFyg4w3Sp6c/L37hHn2QQ,,,,N,0,0,,,2013-02-16 15:53,2013-02-16 15:56,admin,admin
502418,6359,124904,13662,0,N,N,N,CP_Drtn,TT_Task,DT_FixedDUR2,TK_NotStart,DUKHCONI03SBIWGL7415,Construction of RCC Wall,8165,120,0,200,0,4200,4200,200,0,0,0,,,,2014-04-05 08:00,2014-05-03 17:00,,2014-03-18 08:00,2014-04-15 17:00,2014-03-18 08:00,2014-04-15 17:00,2014-03-18 08:00,2014-04-15 17:00,2014-04-05 08:00,2014-05-03 17:00,,PT_Normal,,,,,iQEcomPcRuyVONHEbKxAkw,,,,N,0,0,,,2013-02-16 15:53,2013-02-16 15:56,admin,admin
502419,6359,124904,13662,0,N,N,N,CP_Drtn,TT_Task,DT_FixedDUR2,TK_NotStart,DUKHCONI03SBIWGL7420,Construction of  Roof Slab,8165,120,0,160,0,756,756,160,0,0,0,,,,2014-05-04 08:00,2014-05-26 17:00,,2014-04-16 08:00,2014-05-08 17:00,2014-04-16 08:00,2014-05-08 17:00,2014-04-16 08:00,2014-05-08 17:00,2014-05-04 08:00,2014-05-26 17:00,,PT_Normal,,,,,BnX7ImbKSleAFGlK/3d80Q,,,,N,0,0,,,2013-02-16 15:53,2013-02-16 15:56,admin,admin
502420,6359,124904,13662,0,N,N,N,CP_Drtn,TT_Task,DT_FixedDUR2,TK_NotStart,DUKHCONI03SBIWGL7425,Waterproofing & Backfilling,8177,168,0,120,0,296,296,120,66,0,66,,,,2014-06-03 08:00,2014-06-19 17:00,,2014-05-10 08:00,2014-05-26 17:00,2014-05-10 08:00,2014-05-26 17:00,2014-05-10 08:00,2014-05-26 17:00,2014-06-03 08:00,2014-06-19 17:00,,PT_Normal,,,,,sW8JNqsuToO0Q4g4kC8fBA,,,,N,0,0,,,2013-02-16 15:53,2013-02-16 15:56,admin,admin
502421,6359,124904,13662,0,N,N,N,CP_Drtn,TT_Task,DT_FixedDUR2,TK_NotStart,DUKHCONI03SBIWGL7430,Floor screed,8164,120,0,40,0,146,146,40,0,0,0,,,,2014-06-21 08:00,2014-06-25 17:00,,2014-06-03 08:00,2014-06-08 17:00,2014-06-03 08:00,2014-06-08 17:00,2014-06-03 08:00,2014-06-08 17:00,2014-06-21 08:00,2014-06-25 17:00,,PT_Normal,,,,,vALLVAQZTlKPITtnMr2S5A,,,,N,0,0,,,2013-02-16 15:53,2013-02-16 15:56,admin,admin
502422,6359,124905,13662,0,N,N,N,CP_Drtn,TT_Task,DT_FixedDUR2,TK_NotStart,DUKHCONI03SBTRGL7600,Excavation,8177,200,0,80,0,32,32,80,20,0,20,,,,2014-03-24 08:00,2014-04-03 17:00,,2014-02-23 08:00,2014-03-05 17:00,2014-02-23 08:00,2014-03-05 17:00,2014-02-23 08:00,2014-03-05 17:00,2014-03-24 08:00,2014-04-03 17:00,,PT_Normal,,,,,qm1V5ZR/RFqm3I4CThZbZA,,,,N,0,0,,,2013-02-16 15:53,2013-02-16 15:56,admin,admin
502423,6359,124905,13662,0,N,N,N,CP_Drtn,TT_Task,DT_FixedDUR2,TK_NotStart,DUKHCONI03SBTRGL7605,Construction of foundation & Grade slab,8165,280,0,160,0,280,280,160,0,0,0,,,,2014-04-16 08:00,2014-05-08 17:00,,2014-03-06 08:00,2014-03-29 17:00,2014-03-06 08:00,2014-03-29 17:00,2014-03-06 08:00,2014-03-29 17:00,2014-04-16 08:00,2014-05-08 17:00,,PT_Normal,,,,,d89w4jUSR8q6S194ew5yew,,,,N,0,0,,,2013-02-16 15:53,2013-02-16 15:56,admin,admin
502424,6359,124905,13662,0,N,N,N,CP_Drtn,TT_Task,DT_FixedDUR2,TK_NotStart,DUKHCONI03SBTRGL7610,"Construction Column,Beams & Roof Slab",8165,280,0,160,0,280,280,160,0,0,0,,,,2014-05-10 08:00,2014-06-01 17:00,,2014-03-30 08:00,2014-04-21 17:00,2014-03-30 08:00,2014-04-21 17:00,2014-03-30 08:00,2014-04-21 17:00,2014-05-10 08:00,2014-06-01 17:00,,PT_Normal,,,,,Sb4xyRz2TeKwa6RlD63JOA,,,,N,0,0,,,2013-02-16 15:53,2013-02-16 15:56,admin,admin
502425,6359,124905,13662,0,N,N,N,CP_Drtn,TT_Task,DT_FixedDUR2,TK_NotStart,DUKHCONI03SBTRGL7615,Finishing Works,8164,280,0,200,0,1000,1000,200,0,0,0,,,,2014-06-26 08:00,2014-07-24 17:00,,2014-05-17 08:00,2014-06-14 17:00,2014-05-17 08:00,2014-06-14 17:00,2014-05-17 08:00,2014-06-14 17:00,2014-06-26 08:00,2014-07-24 17:00,,PT_Normal,,,,,mzCpnU0YTdCeUQa6BmRkWg,,,,N,0,0,,,2013-02-16 15:53,2013-02-16 15:56,admin,admin
502426,6359,124905,13662,0,N,N,N,CP_Drtn,TT_Task,DT_FixedDUR2,TK_NotStart,DUKHCONI03SBTRGL7620,"Plumbing , Drainage & Firefighting  works",8178,280,0,200,0,282.8,282.8,200,0,0,0,,,,2014-07-08 08:00,2014-08-09 17:00,,2014-05-28 08:00,2014-06-25 17:00,2014-05-28 08:00,2014-06-25 17:00,2014-05-28 08:00,2014-06-25 17:00,2014-07-08 08:00,2014-08-09 17:00,,PT_Normal,,,,,yyiUcmhcRySKAHST6LnC+Q,,,,N,0,0,,,2013-02-16 15:53,2013-02-16 15:56,admin,admin
502427,6359,124905,13662,0,N,N,N,CP_Drtn,TT_Task,DT_FixedDUR2,TK_NotStart,DUKHCONI03SBTRGL7625,AC Works,8178,280,104,200,0,710,710,200,0,0,0,,,,2014-07-08 08:00,2014-08-09 17:00,,2014-05-28 08:00,2014-06-25 17:00,2014-05-28 08:00,2014-06-25 17:00,2014-05-28 08:00,2014-06-25 17:00,2014-07-08 08:00,2014-08-09 17:00,,PT_Normal,,,,,K2EZ7xvUTLyeD3kmqtE+4g,,,,N,0,0,,,2013-02-16 15:53,2013-02-16 16:35,admin,admin
502428,6359,124905,13662,0,N,N,N,CP_Drtn,TT_Task,DT_FixedDUR2,TK_NotStart,DUKHCONI03SBTRGL7630,Electrical Works-Telecom Room,8178,176,0,200,0,416,416,200,0,0,0,,,,2014-07-08 08:00,2014-08-09 17:00,,2014-06-12 08:00,2014-07-10 17:00,2014-06-12 08:00,2014-07-10 17:00,2014-06-12 08:00,2014-07-10 17:00,2014-07-08 08:00,2014-08-09 17:00,,PT_Normal,,,,,FamUPFZJRf2uVphkw8P4HQ,,,,N,0,0,,,2013-02-16 15:53,2013-02-16 16:35,admin,admin
502429,6359,124905,13662,0,N,N,N,CP_Drtn,TT_Task,DT_FixedDUR2,TK_NotStart,DUKHCONI03SBTRGL7635,Final Paintings,8178,176,176,40,0,275,275,40,0,0,0,,,,2014-08-10 08:00,2014-08-14 17:00,,2014-07-12 08:00,2014-07-16 17:00,2014-07-12 08:00,2014-07-16 17:00,2014-07-12 08:00,2014-07-16 17:00,2014-08-10 08:00,2014-08-14 17:00,,PT_Normal,,,,,u7LIljwKRmqfnegISdM47A,,,,N,0,0,,,2013-02-16 15:53,2013-02-16 16:35,admin,admin
502430,6359,124906,13662,0,N,N,N,CP_Drtn,TT_Task,DT_FixedDUR2,TK_NotStart,DUKHCONI03SBGHGL7825,AC Works,8178,200,0,200,0,710,710,200,0,0,0,,,,2014-07-08 08:00,2014-08-09 17:00,,2014-06-09 08:00,2014-07-07 17:00,2014-06-09 08:00,2014-07-07 17:00,2014-06-09 08:00,2014-07-07 17:00,2014-07-08 08:00,2014-08-09 17:00,,PT_Normal,,,,,Pfsrsd/PT+OWAnR5ne3n7A,,,,N,0,0,,,2013-02-16 15:53,2013-02-16 15:56,admin,admin
502431,6359,124906,13662,0,N,N,N,CP_Drtn,TT_Task,DT_FixedDUR2,TK_NotStart,DUKHCONI03SBGHGL7830,Electrical Works-Telecom Room,8178,200,0,200,0,416,416,200,0,0,0,,,,2014-07-08 08:00,2014-08-09 17:00,,2014-06-09 08:00,2014-07-07 17:00,2014-06-09 08:00,2014-07-07 17:00,2014-06-09 08:00,2014-07-07 17:00,2014-07-08 08:00,2014-08-09 17:00,,PT_Normal,,,,,ejNlsy1+S4emRWjNry3Mjw,,,,N,0,0,,,2013-02-16 15:53,2013-02-16 15:56,admin,admin
502432,6359,124906,13662,0,N,N,N,CP_Drtn,TT_Task,DT_FixedDUR2,TK_NotStart,DUKHCONI03SBGHGL7835,Final Paintings,8178,200,200,40,0,275,275,40,0,0,0,,,,2014-08-10 08:00,2014-08-14 17:00,,2014-07-08 08:00,2014-07-13 17:00,2014-07-08 08:00,2014-07-13 17:00,2014-07-08 08:00,2014-07-13 17:00,2014-08-10 08:00,2014-08-14 17:00,,PT_Normal,,,,,V0MCzZfgQlqfZ36Sl+K7Ew,,,,N,0,0,,,2013-02-16 15:53,2013-02-16 16:35,admin,admin
502433,6359,124906,13662,0,N,N,N,CP_Drtn,TT_Task,DT_FixedDUR2,TK_NotStart,DUKHCONI03SBGHGL7800,Excavation,8177,200,0,80,0,32,32,80,20,0,20,,,,2014-04-05 08:00,2014-04-15 17:00,,2014-03-06 08:00,2014-03-17 17:00,2014-03-06 08:00,2014-03-17 17:00,2014-03-06 08:00,2014-03-17 17:00,2014-04-05 08:00,2014-04-15 17:00,,PT_Normal,,,,,4Ag0+xQZTZqYSPphRYqETQ,,,,N,0,0,,,2013-02-16 15:53,2013-02-16 15:56,admin,admin
502434,6359,124906,13662,0,N,N,N,CP_Drtn,TT_Task,DT_FixedDUR2,TK_NotStart,DUKHCONI03SBGHGL7805,Construction of foundation & Grade slab,8165,200,0,160,0,280,280,160,0,0,0,,,,2014-04-16 08:00,2014-05-08 17:00,,2014-03-18 08:00,2014-04-09 17:00,2014-03-18 08:00,2014-04-09 17:00,2014-03-18 08:00,2014-04-09 17:00,2014-04-16 08:00,2014-05-08 17:00,,PT_Normal,,,,,SAcqha7dSeyuVxg4V7YNRw,,,,N,0,0,,,2013-02-16 15:53,2013-02-16 15:56,admin,admin
502435,6359,124906,13662,0,N,N,N,CP_Drtn,TT_Task,DT_FixedDUR2,TK_NotStart,DUKHCONI03SBGHGL7810,"Construction Column,Beams & Roof Slab",8165,200,0,160,0,280,280,160,0,0,0,,,,2014-05-10 08:00,2014-06-01 17:00,,2014-04-10 08:00,2014-05-03 17:00,2014-04-10 08:00,2014-05-03 17:00,2014-04-10 08:00,2014-05-03 17:00,2014-05-10 08:00,2014-06-01 17:00,,PT_Normal,,,,,zLyZhFYrRgqxNBsyQqIENQ,,,,N,0,0,,,2013-02-16 15:53,2013-02-16 15:56,admin,admin
502436,6359,124906,13662,0,N,N,N,CP_Drtn,TT_Task,DT_FixedDUR2,TK_NotStart,DUKHCONI03SBGHGL7815,Finishing Works,8164,200,0,200,0,1000,1000,200,0,0,0,,,,2014-06-26 08:00,2014-07-24 17:00,,2014-05-28 08:00,2014-06-25 17:00,2014-05-28 08:00,2014-06-25 17:00,2014-05-28 08:00,2014-06-25 17:00,2014-06-26 08:00,2014-07-24 17:00,,PT_Normal,,,,,k00NaVBUT2yhF/oCWF9Fnw,,,,N,0,0,,,2013-02-16 15:53,2013-02-16 15:56,admin,admin
502437,6359,124906,13662,0,N,N,N,CP_Drtn,TT_Task,DT_FixedDUR2,TK_NotStart,DUKHCONI03SBGHGL7820,"Plumbing , Drainage & Firefighting  works",8178,200,0,200,0,282.8,282.8,200,0,0,0,,,,2014-07-08 08:00,2014-08-09 17:00,,2014-06-09 08:00,2014-07-07 17:00,2014-06-09 08:00,2014-07-07 17:00,2014-06-09 08:00,2014-07-07 17:00,2014-07-08 08:00,2014-08-09 17:00,,PT_Normal,,,,,F4IQJCaQRZ+xtpGMnKZwKQ,,,,N,0,0,,,2013-02-16 15:53,2013-02-16 15:56,admin,admin
502438,6359,124907,13662,0,N,N,N,CP_Drtn,TT_Task,DT_FixedDUR2,TK_NotStart,DUKHCONI03SBPGGL7940,Intial Work Play Ground Works,8178,280,0,240,0,480,480,240,0,0,0,,,,2014-06-03 08:00,2014-07-07 17:00,,2014-04-23 08:00,2014-05-27 17:00,2014-04-23 08:00,2014-05-27 17:00,2014-04-23 08:00,2014-05-27 17:00,2014-06-03 08:00,2014-07-07 17:00,,PT_Normal,,,,,FWHhYmJITBCBnE8JxqREeQ,,,,N,0,0,,,2013-02-16 15:53,2013-02-16 16:35,admin,admin
502439,6359,124907,13662,0,N,N,N,CP_Drtn,TT_Task,DT_FixedDUR2,TK_NotStart,DUKHCONI03SBPGGL7945,Final Work Play Ground Works,8178,280,280,240,0,480,480,240,0,0,0,,,,2014-07-08 08:00,2014-08-14 17:00,,2014-05-28 08:00,2014-07-01 17:00,2014-05-28 08:00,2014-07-01 17:00,2014-05-28 08:00,2014-07-01 17:00,2014-07-08 08:00,2014-08-14 17:00,,PT_Normal,,,,,6Osov7wFTTqdRgvdPfB28w,,,,N,0,0,,,2013-02-16 15:53,2013-02-16 16:35,admin,admin
502440,6359,124908,13662,0,N,N,N,CP_Drtn,TT_Task,DT_FixedDUR2,TK_NotStart,DUKHCONI03SBGZGL7900,Construction of Concrete structure,8165,200,0,160,0,124,124,160,0,0,0,,,,2014-04-29 08:00,2014-05-21 17:00,,2014-03-31 08:00,2014-04-22 17:00,2014-03-31 08:00,2014-04-22 17:00,2014-03-31 08:00,2014-04-22 17:00,2014-04-29 08:00,2014-05-21 17:00,,PT_Normal,,,,,N7DQK0HpT26t0bHSqPAmUA,,,,N,0,0,,,2013-02-16 15:53,2013-02-16 16:35,admin,admin
502441,6359,124908,13662,0,N,N,N,CP_Drtn,TT_Task,DT_FixedDUR2,TK_NotStart,DUKHCONI03SBGZGL7905,Installation of Wooden Works,8178,200,0,200,0,300,300,200,0,0,0,,,,2014-05-11 08:00,2014-06-08 17:00,,2014-04-12 08:00,2014-05-10 17:00,2014-04-12 08:00,2014-05-10 17:00,2014-04-12 08:00,2014-05-10 17:00,2014-05-11 08:00,2014-06-08 17:00,,PT_Normal,,,,,XCEO2s9oTaKS7QrycXJLOg,,,,N,0,0,,,2013-02-16 15:53,2013-02-16 16:35,admin,admin
502442,6359,124908,13662,0,N,N,N,CP_Drtn,TT_Task,DT_FixedDUR2,TK_NotStart,DUKHCONI03SBGZGL7910,Electrical Works-Gazebo,8178,200,56,120,0,125.6,125.6,120,0,0,0,,,,2014-06-09 08:00,2014-06-25 17:00,,2014-05-11 08:00,2014-05-27 17:00,2014-05-11 08:00,2014-05-27 17:00,2014-05-11 08:00,2014-05-27 17:00,2014-06-09 08:00,2014-06-25 17:00,,PT_Normal,,,,,KZSoOYx7SnGUdilvnK9bvw,,,,N,0,0,,,2013-02-16 15:53,2013-02-16 16:35,admin,admin
502443,6359,124908,13662,0,N,N,N,CP_Drtn,TT_Task,DT_FixedDUR2,TK_NotStart,DUKHCONI03SBGZGL7915,Park Benches  Installation,8178,200,0,200,0,200,200,200,0,0,0,,,,2014-05-11 08:00,2014-06-08 17:00,,2014-04-12 08:00,2014-05-10 17:00,2014-04-12 08:00,2014-05-10 17:00,2014-04-12 08:00,2014-05-10 17:00,2014-05-11 08:00,2014-06-08 17:00,,PT_Normal,,,,,/yzCgk+1TBiJiRaShOLTSg,,,,N,0,0,,,2013-02-16 15:53,2013-02-16 16:35,admin,admin
502444,6359,124911,13662,0,N,N,N,CP_Drtn,TT_Task,DT_FixedDUR2,TK_NotStart,DUKHCONI03Z2SAGL5135,Construction of manholes Drainage,8177,512,144,200,0,344,344,200,0,0,0,,,,2014-01-25 08:00,2014-02-23 17:00,,2013-11-10 08:00,2013-12-08 17:00,2013-11-10 08:00,2013-12-08 17:00,2013-11-10 08:00,2013-12-08 17:00,2014-01-25 08:00,2014-02-23 17:00,,PT_Normal,,,,,fCV8B5ZtRgW5w9PIOPhrqg,,,,N,0,0,,,2013-02-16 15:53,2013-02-16 15:56,admin,admin
502445,6359,124911,13662,0,N,N,N,CP_Drtn,TT_Task,DT_FixedDUR2,TK_NotStart,DUKHCONI03Z2SAGL5140,Construction of soakaways,8177,104,0,200,0,242,242,200,0,0,0,,,,2013-11-25 08:00,2013-12-24 17:00,,2013-11-10 08:00,2013-12-08 17:00,2013-11-10 08:00,2013-12-08 17:00,2013-11-10 08:00,2013-12-08 17:00,2013-11-25 08:00,2013-12-24 17:00,,PT_Normal,,,,,b13ohVibR2eIQdzPDqNSPA,,,,N,0,0,,,2013-02-16 15:53,2013-02-16 15:56,admin,admin
502446,6359,124911,13662,0,N,N,N,CP_Drtn,TT_Task,DT_FixedDUR2,TK_NotStart,DUKHCONI03Z2SAGL5145,Construction of Road gullies,8177,104,0,200,0,286,286,200,0,0,0,,,,2013-12-25 08:00,2014-01-22 17:00,,2013-12-09 08:00,2014-01-07 17:00,2013-12-09 08:00,2014-01-07 17:00,2013-12-09 08:00,2014-01-07 17:00,2013-12-25 08:00,2014-01-22 17:00,,PT_Normal,,,,,P0cyDP9XR+26z1z1urMmsA,,,,N,0,0,,,2013-02-16 15:53,2013-02-16 15:56,admin,admin
502447,6359,124911,13662,0,N,N,N,CP_Drtn,TT_Task,DT_FixedDUR2,TK_NotStart,DUKHCONI03Z2SAGL5150,Connection with existing sewer manhole,8177,312,232,160,0,344,344,160,0,0,0,,,,2014-02-24 08:00,2014-03-18 17:00,,2014-01-08 08:00,2014-01-30 17:00,2014-01-08 08:00,2014-01-30 17:00,2014-01-08 08:00,2014-01-30 17:00,2014-02-24 08:00,2014-03-18 17:00,,PT_Normal,,,,,L8GbhBnoTcCLUuQeySnNtQ,,,,N,0,0,,,2013-02-16 15:53,2013-02-16 16:35,admin,admin
502448,6359,124912,13662,0,N,N,N,CP_Drtn,TT_Task,DT_FixedDUR2,TK_NotStart,DUKHCONI03Z2DRGL5115,Excavation for Drainage line,8177,96,0,200,0,736,736,200,400,0,400,,,,2013-10-22 08:00,2013-11-19 17:00,,2013-10-06 08:00,2013-11-05 17:00,2013-10-06 08:00,2013-11-05 17:00,2013-10-06 08:00,2013-11-05 17:00,2013-10-22 08:00,2013-11-19 17:00,,PT_Normal,,,,,thLsau3bTT6zh+i+ufZMng,,,,N,0,0,,,2013-02-16 15:53,2013-02-16 15:56,admin,admin
502449,6359,124912,13662,0,N,N,N,CP_Drtn,TT_Task,DT_FixedDUR2,TK_NotStart,DUKHCONI03Z2DRGL5120,Laying of Drainage line,8178,96,0,200,0,772.8,772.8,200,0,0,0,,,,2013-10-29 08:00,2013-11-26 17:00,,2013-10-13 08:00,2013-11-12 17:00,2013-10-13 08:00,2013-11-12 17:00,2013-10-13 08:00,2013-11-12 17:00,2013-10-29 08:00,2013-11-26 17:00,,PT_Normal,,,,,IUCmVE41Tx2SZxnDMPfU+w,,,,N,0,0,,,2013-02-16 15:53,2013-02-16 15:56,admin,admin
502450,6359,124912,13662,0,N,N,N,CP_Drtn,TT_Task,DT_FixedDUR2,TK_NotStart,DUKHCONI03Z2DRGL5125,Testing of Drainage line,8178,96,0,200,0,772.8,772.8,200,0,0,0,,,,2013-11-06 08:00,2013-12-04 17:00,,2013-10-23 08:00,2013-11-20 17:00,2013-10-23 08:00,2013-11-20 17:00,2013-10-23 08:00,2013-11-20 17:00,2013-11-06 08:00,2013-12-04 17:00,,PT_Normal,,,,,tk5erEq9S/qp3hHeI7QEyA,,,,N,0,0,,,2013-02-16 15:53,2013-02-16 15:56,admin,admin
502451,6359,124912,13662,0,N,N,N,CP_Drtn,TT_Task,DT_FixedDUR2,TK_NotStart,DUKHCONI03Z2DRGL5130,Backfilling Drainage line,8177,96,0,120,0,468,468,120,330,0,330,,,,2013-11-24 08:00,2013-12-10 17:00,,2013-11-10 08:00,2013-11-26 17:00,2013-11-10 08:00,2013-11-26 17:00,2013-11-10 08:00,2013-11-26 17:00,2013-11-24 08:00,2013-12-10 17:00,,PT_Normal,,,,,KbHuorrURh66GImTq5s5Bw,,,,N,0,0,,,2013-02-16 15:53,2013-02-16 15:56,admin,admin
502452,6359,124913,13662,0,N,N,N,CP_Drtn,TT_Task,DT_FixedDUR2,TK_NotStart,DUKHCONI03Z2PSGL7000,Excavation,8177,240,40,120,0,37,37,120,31.000038,0,31.000038,,,,2014-05-22 08:00,2014-06-08 17:00,,2014-04-17 08:00,2014-05-04 17:00,2014-04-17 08:00,2014-05-04 17:00,2014-04-17 08:00,2014-05-04 17:00,2014-05-22 08:00,2014-06-08 17:00,,PT_Normal,,,,,EahB18KRTTicV1XrhxadHg,,,,N,0,0,,,2013-02-16 15:53,2013-02-23 09:03,admin,admin
502453,6359,124913,13662,0,N,N,N,CP_Drtn,TT_Task,DT_FixedDUR2,TK_NotStart,DUKHCONI03Z2PSGL7005,Foundation casting,8165,200,0,120,0,1276,1276,120,0,0,0,,,,2014-05-28 08:00,2014-06-14 17:00,,2014-04-29 08:00,2014-05-15 17:00,2014-04-29 08:00,2014-05-15 17:00,2014-04-29 08:00,2014-05-15 17:00,2014-05-28 08:00,2014-06-14 17:00,,PT_Normal,,,,,12g4bgvbQm6E0RHkgLLaKA,,,,N,0,0,,,2013-02-16 15:53,2013-02-16 16:35,admin,admin
502454,6359,124913,13662,0,N,N,N,CP_Drtn,TT_Task,DT_FixedDUR2,TK_NotStart,DUKHCONI03Z2PSGL7010,"Column, Frame&  Fabrics  Erection",8178,200,0,200,0,428,428,200,0,0,0,,,,2014-06-09 08:00,2014-07-07 17:00,,2014-05-11 08:00,2014-06-08 17:00,2014-05-11 08:00,2014-06-08 17:00,2014-05-11 08:00,2014-06-08 17:00,2014-06-09 08:00,2014-07-07 17:00,,PT_Normal,,,,,lq+/z7aVTHer3MH6ETnmVw,,,,N,0,0,,,2013-02-16 15:53,2013-02-16 16:35,admin,admin
502455,6359,124913,13662,0,N,N,N,CP_Drtn,TT_Task,DT_FixedDUR2,TK_NotStart,DUKHCONI03Z2PSGL7015,Electrical Works-Parking Shed,8178,200,136,200,0,189.2,189.2,200,0,0,0,,,,2014-06-15 08:00,2014-07-13 17:00,,2014-05-17 08:00,2014-06-14 17:00,2014-05-17 08:00,2014-06-14 17:00,2014-05-17 08:00,2014-06-14 17:00,2014-06-15 08:00,2014-07-13 17:00,,PT_Normal,,,,,SxQn8taCSoqh41h/4Of4eA,,,,N,0,0,,,2013-02-16 15:53,2013-02-23 09:03,admin,admin
502456,6359,124914,13662,0,N,N,N,CP_Drtn,TT_Task,DT_FixedDUR2,TK_NotStart,DUKHCONI03Z2WSGL5155,Excavation for water line,8177,104,0,200,0,974,974,200,500,0,500,,,,2013-12-07 08:00,2014-01-05 17:00,,2013-11-21 08:00,2013-12-21 17:00,2013-11-21 08:00,2013-12-21 17:00,2013-11-21 08:00,2013-12-21 17:00,2013-12-07 08:00,2014-01-05 17:00,,PT_Normal,,,,,k/u2WFiHRY+eOM6yPBZ68g,,,,N,0,0,,,2013-02-16 15:53,2013-02-16 15:56,admin,admin
502457,6359,124914,13662,0,N,N,N,CP_Drtn,TT_Task,DT_FixedDUR2,TK_NotStart,DUKHCONI03Z2WSGL5160,Laying of water line,8178,104,0,200,0,1093.2,1093.2,200,0,0,0,,,,2013-12-12 08:00,2014-01-11 17:00,,2013-11-27 08:00,2013-12-26 17:00,2013-11-27 08:00,2013-12-26 17:00,2013-11-27 08:00,2013-12-26 17:00,2013-12-12 08:00,2014-01-11 17:00,,PT_Normal,,,,,M6Am1KMHRqmHvr1OpmFaXA,,,,N,0,0,,,2013-02-16 15:53,2013-02-16 15:56,admin,admin
502458,6359,124914,13662,0,N,N,N,CP_Drtn,TT_Task,DT_FixedDUR2,TK_NotStart,DUKHCONI03Z2WSGL5165,Testing of potable water line,8178,104,0,200,0,552,552,200,0,0,0,,,,2013-12-19 08:00,2014-01-16 17:00,,2013-12-03 08:00,2014-01-01 17:00,2013-12-03 08:00,2014-01-01 17:00,2013-12-03 08:00,2014-01-01 17:00,2013-12-19 08:00,2014-01-16 17:00,,PT_Normal,,,,,A/OkVI36TuiwsZE/DPszZw,,,,N,0,0,,,2013-02-16 15:53,2013-02-16 15:56,admin,admin
502459,6359,124914,13662,0,N,N,N,CP_Drtn,TT_Task,DT_FixedDUR2,TK_NotStart,DUKHCONI03Z2WSGL5170,Backfilling potable water line,8177,104,0,200,0,742,742,200,550,0,550,,,,2013-12-25 08:00,2014-01-22 17:00,,2013-12-09 08:00,2014-01-07 17:00,2013-12-09 08:00,2014-01-07 17:00,2013-12-09 08:00,2014-01-07 17:00,2013-12-25 08:00,2014-01-22 17:00,,PT_Normal,,,,,2m5TAaOqTh+2bxmjBTanMA,,,,N,0,0,,,2013-02-16 15:53,2013-02-16 15:56,admin,admin
502460,6359,124914,13662,0,N,N,N,CP_Drtn,TT_Task,DT_FixedDUR2,TK_NotStart,DUKHCONI03Z2WSGL5175,Construction of valve chambers & Thrust Blocks,8177,272,0,200,0,80,80,200,0,0,0,,,,2014-01-25 08:00,2014-02-23 17:00,,2013-12-15 08:00,2014-01-13 17:00,2013-12-15 08:00,2014-01-13 17:00,2013-12-15 08:00,2014-01-13 17:00,2014-01-25 08:00,2014-02-23 17:00,,PT_Normal,,,,,a9cnWSA8SWqC2YhdvGq35g,,,,N,0,0,,,2013-02-16 15:53,2013-02-16 15:56,admin,admin
502461,6359,124914,13662,0,N,N,N,CP_Drtn,TT_Task,DT_FixedDUR2,TK_NotStart,DUKHCONI03Z2WSGL5180,"Installation of meter ,Accessories & Connection",8178,272,96,160,0,33.6,33.6,160,0,0,0,,,,2014-02-24 08:00,2014-03-18 17:00,,2014-01-14 08:00,2014-02-05 17:00,2014-01-14 08:00,2014-02-05 17:00,2014-01-14 08:00,2014-02-05 17:00,2014-02-24 08:00,2014-03-18 17:00,,PT_Normal,,,,,jW6R37PoQiaG0zIzeQAwrQ,,,,N,0,0,,,2013-02-16 15:53,2013-02-16 16:35,admin,admin
502462,6359,124915,13662,0,N,N,N,CP_Drtn,TT_Task,DT_FixedDUR2,TK_NotStart,DUKHCONI03Z2HDGL7020,Precast Concrete Kerbs works,8178,200,0,160,0,1872,1872,160,0,0,0,,,,2014-04-06 08:00,2014-04-28 17:00,,2014-03-08 08:00,2014-03-30 17:00,2014-03-08 08:00,2014-03-30 17:00,2014-03-08 08:00,2014-03-30 17:00,2014-04-06 08:00,2014-04-28 17:00,,PT_Normal,,,,,z6qB/OJBQWexHj1oCnTsog,,,,N,0,0,,,2013-02-16 15:53,2013-02-16 16:35,admin,admin
502463,6359,124915,13662,0,N,N,N,CP_Drtn,TT_Task,DT_FixedDUR2,TK_NotStart,DUKHCONI03Z2HDGL7025,Interlocking for Walkways,8174,200,0,200,0,1210,1210,200,0,0,0,,,,2014-04-17 08:00,2014-05-15 17:00,,2014-03-19 08:00,2014-04-16 17:00,2014-03-19 08:00,2014-04-16 17:00,2014-03-19 08:00,2014-04-16 17:00,2014-04-17 08:00,2014-05-15 17:00,,PT_Normal,,,,,Boy9hBETRHa300t+A9dGwQ,,,,N,0,0,,,2013-02-16 15:53,2013-02-16 16:35,admin,admin
502464,6359,124915,13662,0,N,N,N,CP_Drtn,TT_Task,DT_FixedDUR2,TK_NotStart,DUKHCONI03Z2HDGL7030,Construction of Retaining wall,8165,200,0,200,0,294,294,200,0,0,0,,,,2014-04-29 08:00,2014-05-27 17:00,,2014-03-31 08:00,2014-04-28 17:00,2014-03-31 08:00,2014-04-28 17:00,2014-03-31 08:00,2014-04-28 17:00,2014-04-29 08:00,2014-05-27 17:00,,PT_Normal,,,,,FPF3yCLsTuWaLGozZwDxxQ,,,,N,0,0,,,2013-02-16 15:53,2013-02-16 16:35,admin,admin
502465,6359,124915,13662,0,N,N,N,CP_Drtn,TT_Task,DT_FixedDUR2,TK_NotStart,DUKHCONI03Z2HDGL7040,Construction of Speed Humps,8167,440,256,80,0,14,14,80,0,0,0,,,,2014-07-20 08:00,2014-07-30 17:00,,2014-05-17 08:00,2014-05-27 17:00,2014-05-17 08:00,2014-05-27 17:00,2014-05-17 08:00,2014-05-27 17:00,2014-07-20 08:00,2014-07-30 17:00,,PT_Normal,,,,,e3tR/mbOQ/+EWV64YlO4IA,,,,N,0,0,,,2013-02-16 15:53,2013-02-16 16:35,admin,admin
502466,6359,124915,13662,0,N,N,N,CP_Drtn,TT_Task,DT_FixedDUR2,TK_NotStart,DUKHCONI03Z2HDGL7035,Construction of Wash Stone Boulders,8170,200,0,200,0,50,50,200,0,0,0,,,,2014-04-29 08:00,2014-05-27 17:00,,2014-03-31 08:00,2014-04-28 17:00,2014-03-31 08:00,2014-04-28 17:00,2014-03-31 08:00,2014-04-28 17:00,2014-04-29 08:00,2014-05-27 17:00,,PT_Normal,,,,,Chz/hh3DSjOppELB6mOsBg,,,,N,0,0,,,2013-02-16 15:53,2013-02-16 16:35,admin,admin
502467,6359,124916,13662,0,N,N,N,CP_Drtn,TT_Task,DT_FixedDUR2,TK_NotStart,DUKHCONI03Z2TCGL5295,Excavation Telecommunication trenches,8177,80,0,160,0,386,386,160,200,0,200,,,,2014-02-24 08:00,2014-03-18 17:00,,2014-02-12 08:00,2014-03-06 17:00,2014-02-12 08:00,2014-03-06 17:00,2014-02-12 08:00,2014-03-06 17:00,2014-02-24 08:00,2014-03-18 17:00,,PT_Normal,,,,,OopEoUgAS7ihIZY087UW6w,,,,N,0,0,,,2013-02-16 15:53,2013-02-16 16:35,admin,admin
502468,6359,124916,13662,0,N,N,N,CP_Drtn,TT_Task,DT_FixedDUR2,TK_NotStart,DUKHCONI03Z2TCGL5300,Laying of cables,8178,80,0,160,0,653.2,653.2,160,0,0,0,,,,2014-03-02 08:00,2014-03-24 17:00,,2014-02-18 08:00,2014-03-12 17:00,2014-02-18 08:00,2014-03-12 17:00,2014-02-18 08:00,2014-03-12 17:00,2014-03-02 08:00,2014-03-24 17:00,,PT_Normal,,,,,+LbcENTJSouU+MuKL7ieiA,,,,N,0,0,,,2013-02-16 15:53,2013-02-16 16:35,admin,admin
502469,6359,124916,13662,0,N,N,N,CP_Drtn,TT_Task,DT_FixedDUR2,TK_NotStart,DUKHCONI03Z2TCGL5305,Backfilling telecommunication trench,8177,80,0,160,0,298,298,160,220,0,220,,,,2014-03-08 08:00,2014-03-30 17:00,,2014-02-24 08:00,2014-03-18 17:00,2014-02-24 08:00,2014-03-18 17:00,2014-02-24 08:00,2014-03-18 17:00,2014-03-08 08:00,2014-03-30 17:00,,PT_Normal,,,,,PbVBhaNNQUegc/p1g6hIsg,,,,N,0,0,,,2013-02-16 15:53,2013-02-16 16:35,admin,admin
502470,6359,124916,13662,0,N,N,N,CP_Drtn,TT_Task,DT_FixedDUR2,TK_NotStart,DUKHCONI03Z2TCGL5310,Connection & Installation,8178,176,0,160,0,203.2,203.2,160,0,0,0,,,,2014-05-22 08:00,2014-06-14 17:00,,2014-04-27 08:00,2014-05-19 17:00,2014-04-27 08:00,2014-05-19 17:00,2014-04-27 08:00,2014-05-19 17:00,2014-05-22 08:00,2014-06-14 17:00,,PT_Normal,,,,,0q8iSm7rQnqbemw8bYJE/g,,,,N,0,0,,,2013-02-16 15:53,2013-02-16 16:35,admin,admin
502471,6359,124917,13662,0,N,N,N,CP_Drtn,TT_Task,DT_FixedDUR2,TK_NotStart,DUKHCONI03Z2RWGL6020,Laying of Road Base Asphalt Concrete,8178,200,0,40,0,186,186,40,150,0,150,,,,2014-06-03 08:00,2014-06-08 17:00,,2014-05-05 08:00,2014-05-10 17:00,2014-05-05 08:00,2014-05-10 17:00,2014-05-05 08:00,2014-05-10 17:00,2014-06-03 08:00,2014-06-08 17:00,,PT_Normal,,,,,+WpK51rRQ/+6RsFdTMLorA,,,,N,0,0,,,2013-02-16 15:53,2013-02-16 16:35,admin,admin
502472,6359,124917,13662,0,N,N,N,CP_Drtn,TT_Task,DT_FixedDUR2,TK_NotStart,DUKHCONI03Z2RWGL6025,Laying of Asphalt Wearing Coarse,8178,320,0,40,0,186,186,40,150,0,150,,,,2014-06-26 08:00,2014-07-01 17:00,,2014-05-11 08:00,2014-05-15 17:00,2014-05-11 08:00,2014-05-15 17:00,2014-05-11 08:00,2014-05-15 17:00,2014-06-26 08:00,2014-07-01 17:00,,PT_Normal,,,,,BjeWuqC0RaWRZXHmD4YAbQ,,,,N,0,0,,,2013-02-16 15:53,2013-02-16 16:35,admin,admin
502473,6359,124917,13662,0,N,N,N,CP_Drtn,TT_Task,DT_FixedDUR2,TK_NotStart,DUKHCONI03Z2RWGL6030,Traffic Signage & Road Marking,8178,320,120,40,0,424,424,40,0,0,0,,,,2014-07-02 08:00,2014-07-07 17:00,,2014-05-17 08:00,2014-05-21 17:00,2014-05-17 08:00,2014-05-21 17:00,2014-05-17 08:00,2014-05-21 17:00,2014-07-02 08:00,2014-07-07 17:00,,PT_Normal,,,,,W2oVfnPZRMajLUGiR4So0g,,,,N,0,0,,,2013-02-16 15:53,2013-02-16 16:35,admin,admin
502474,6359,124917,13662,0,N,N,N,CP_Drtn,TT_Task,DT_FixedDUR2,TK_NotStart,DUKHCONI03Z2RWGL6000,Excavation & Earth Filling,8177,80,0,80,0,1782,1782,80,600,0,600,,,,2014-03-19 08:00,2014-03-30 17:00,,2014-03-08 08:00,2014-03-18 17:00,2014-03-08 08:00,2014-03-18 17:00,2014-03-08 08:00,2014-03-18 17:00,2014-03-19 08:00,2014-03-30 17:00,,PT_Normal,,,,,sg2/BZ50TNGCuEhxAcXDww,,,,N,0,0,,,2013-02-16 15:53,2013-02-16 16:35,admin,admin
502475,6359,124917,13662,0,N,N,N,CP_Drtn,TT_Task,DT_FixedDUR2,TK_NotStart,DUKHCONI03Z2RWGL6005,Laying of Sub Grade,8178,80,0,200,0,36,36,200,0,0,0,,,,2014-03-31 08:00,2014-04-28 17:00,,2014-03-19 08:00,2014-04-16 17:00,2014-03-19 08:00,2014-04-16 17:00,2014-03-19 08:00,2014-04-16 17:00,2014-03-31 08:00,2014-04-28 17:00,,PT_Normal,,,,,dPij54bKSnGfP+mFrNgF6g,,,,N,0,0,,,2013-02-16 15:53,2013-02-16 16:35,admin,admin
502476,6359,124917,13662,0,N,N,N,CP_Drtn,TT_Task,DT_FixedDUR2,TK_NotStart,DUKHCONI03Z2RWGL6010,Laying of Precast Kerbs,8178,80,0,200,0,1178,1178,200,0,0,0,,,,2014-04-12 08:00,2014-05-10 17:00,,2014-03-31 08:00,2014-04-28 17:00,2014-03-31 08:00,2014-04-28 17:00,2014-03-31 08:00,2014-04-28 17:00,2014-04-12 08:00,2014-05-10 17:00,,PT_Normal,,,,,igvqy9XmSlO7sKbAl0TkVQ,,,,N,0,0,,,2013-02-16 15:53,2013-02-16 16:35,admin,admin
502477,6359,124917,13662,0,N,N,N,CP_Drtn,TT_Task,DT_FixedDUR2,TK_NotStart,DUKHCONI03Z2RWGL6015,Laying of Granular Sub Base Coarse,8178,80,0,160,0,636,636,160,600,0,600,,,,2014-04-23 08:00,2014-05-15 17:00,,2014-04-12 08:00,2014-05-04 17:00,2014-04-12 08:00,2014-05-04 17:00,2014-04-12 08:00,2014-05-04 17:00,2014-04-23 08:00,2014-05-15 17:00,,PT_Normal,,,,,NlRoyFpLRyqD/Yen0Js8fQ,,,,N,0,0,,,2013-02-16 15:53,2013-02-16 16:35,admin,admin
502478,6359,124918,13662,0,N,N,N,CP_Drtn,TT_Task,DT_FixedDUR2,TK_NotStart,DUKHCONI03Z2STGL5235,Excavation for Street lighting,8177,80,0,200,0,69,69,200,51,0,51,,,,2014-01-30 08:00,2014-03-01 17:00,,2014-01-19 08:00,2014-02-17 17:00,2014-01-19 08:00,2014-02-17 17:00,2014-01-19 08:00,2014-02-17 17:00,2014-01-30 08:00,2014-03-01 17:00,,PT_Normal,,,,,EHEqCjQeQt+8uRCzurNgEg,,,,N,0,0,,,2013-02-16 15:53,2013-02-16 16:35,admin,admin
502479,6359,124918,13662,0,N,N,N,CP_Drtn,TT_Task,DT_FixedDUR2,TK_NotStart,DUKHCONI03Z2STGL5240,Construction of Duct Banks,8178,80,0,200,0,1380.4,1380.4,200,0,0,0,,,,2014-02-05 08:00,2014-03-06 17:00,,2014-01-25 08:00,2014-02-23 17:00,2014-01-25 08:00,2014-02-23 17:00,2014-01-25 08:00,2014-02-23 17:00,2014-02-05 08:00,2014-03-06 17:00,,PT_Normal,,,,,ggFdg3NSRyKR+e8lNWilEQ,,,,N,0,0,,,2013-02-16 15:53,2013-02-16 16:35,admin,admin
502480,6359,124918,13662,0,N,N,N,CP_Drtn,TT_Task,DT_FixedDUR2,TK_NotStart,DUKHCONI03Z2STGL5245,Construction of Foundation,8177,80,0,200,0,696,696,200,0,0,0,,,,2014-02-05 08:00,2014-03-06 17:00,,2014-01-25 08:00,2014-02-23 17:00,2014-01-25 08:00,2014-02-23 17:00,2014-01-25 08:00,2014-02-23 17:00,2014-02-05 08:00,2014-03-06 17:00,,PT_Normal,,,,,HbcLZT9MQc6WYmnWuc/zmA,,,,N,0,0,,,2013-02-16 15:53,2013-02-16 16:35,admin,admin
502481,6359,124918,13662,0,N,N,N,CP_Drtn,TT_Task,DT_FixedDUR2,TK_NotStart,DUKHCONI03Z2STGL5250,Backfilling Street Lighting,8177,80,0,200,0,67,67,200,55,0,55,,,,2014-02-12 08:00,2014-03-12 17:00,,2014-01-30 08:00,2014-03-01 17:00,2014-01-30 08:00,2014-03-01 17:00,2014-01-30 08:00,2014-03-01 17:00,2014-02-12 08:00,2014-03-12 17:00,,PT_Normal,,,,,IDt+1x76R+Kpg/xT2eNJqw,,,,N,0,0,,,2013-02-16 15:53,2013-02-16 16:35,admin,admin
502482,6359,124918,13662,0,N,N,N,CP_Drtn,TT_Task,DT_FixedDUR2,TK_NotStart,DUKHCONI03Z2STGL5255,Installation of light Post,8178,584,136,200,0,233.2,233.2,200,0,0,0,,,,2014-05-08 08:00,2014-06-05 17:00,,2014-02-12 08:00,2014-03-12 17:00,2014-02-12 08:00,2014-03-12 17:00,2014-02-12 08:00,2014-03-12 17:00,2014-05-08 08:00,2014-06-05 17:00,,PT_Normal,,,,,6CEyaU2wTKiF7KVGCvEEoQ,,,,N,0,0,,,2013-02-16 15:53,2013-02-16 16:35,admin,admin
502483,6359,124918,13662,0,N,N,N,CP_Drtn,TT_Task,DT_FixedDUR2,TK_NotStart,DUKHCONI03Z2STGL5260,Electrical Works,8178,424,136,200,0,556.8,556.8,200,0,0,0,,,,2014-05-17 08:00,2014-06-14 17:00,,2014-03-16 08:00,2014-04-13 17:00,2014-03-16 08:00,2014-04-13 17:00,2014-03-16 08:00,2014-04-13 17:00,2014-05-17 08:00,2014-06-14 17:00,,PT_Normal,,,,,kBxaKh8IReSDWdrx4kb3sg,,,,N,0,0,,,2013-02-16 15:53,2013-02-23 09:03,admin,admin
502484,6359,124919,13662,0,N,N,N,CP_Drtn,TT_Task,DT_FixedDUR2,TK_NotStart,DUKHCONI03Z2ELGL5215,Excavation Cable  Trenches  & Duct Banks,8167,80,0,200,0,3883.2,3883.2,200,1000,0,1000,,,,2014-01-30 08:00,2014-03-01 17:00,,2014-01-19 08:00,2014-02-17 17:00,2014-01-19 08:00,2014-02-17 17:00,2014-01-19 08:00,2014-02-17 17:00,2014-01-30 08:00,2014-03-01 17:00,,PT_Normal,,,,,z9RZ9csiQVCztZr9O3/sZg,,,,N,0,0,,,2013-02-16 15:53,2013-02-23 09:03,admin,admin
502485,6359,124919,13662,0,N,N,N,CP_Drtn,TT_Task,DT_FixedDUR2,TK_NotStart,DUKHCONI03Z2ELGL5220,Laying of electrical cables,8178,104,0,200,0,6492.4,6492.4,200,0,0,0,,,,2014-02-09 08:00,2014-03-10 17:00,,2014-01-25 08:00,2014-02-23 17:00,2014-01-25 08:00,2014-02-23 17:00,2014-01-25 08:00,2014-02-23 17:00,2014-02-09 08:00,2014-03-10 17:00,,PT_Normal,,,,,Csh9zgdFTB2k5pw03f9jrQ,,,,N,0,0,,,2013-02-16 15:53,2013-02-16 16:35,admin,admin
502486,6359,124919,13662,0,N,N,N,CP_Drtn,TT_Task,DT_FixedDUR2,TK_NotStart,DUKHCONI03Z2ELGL5225,Backfilling Electrical trench,8177,104,0,200,0,2030,2030,200,1100,0,1100,,,,2014-02-18 08:00,2014-03-18 17:00,,2014-02-02 08:00,2014-03-03 17:00,2014-02-02 08:00,2014-03-03 17:00,2014-02-02 08:00,2014-03-03 17:00,2014-02-18 08:00,2014-03-18 17:00,,PT_Normal,,,,,iWAJpOUDRm6Ql9zUO9pMHg,,,,N,0,0,,,2013-02-16 15:53,2013-02-16 16:35,admin,admin
502487,6359,124919,13662,0,N,N,N,CP_Drtn,TT_Task,DT_FixedDUR2,TK_NotStart,DUKHCONI03Z2ELGL5230,Construction of Submain Board & Feeder Pillar,8165,424,0,200,0,574,574,200,0,0,0,,,,2014-04-17 08:00,2014-05-15 17:00,,2014-02-15 08:00,2014-03-15 17:00,2014-02-15 08:00,2014-03-15 17:00,2014-02-15 08:00,2014-03-15 17:00,2014-04-17 08:00,2014-05-15 17:00,,PT_Normal,,,,,/8Vh/HOlThGoer2M5LKY3Q,,,,N,0,0,,,2013-02-16 15:53,2013-02-16 16:35,admin,admin
502488,6359,124920,13662,0,N,N,N,CP_Drtn,TT_Task,DT_FixedDUR2,TK_NotStart,DUKHCONI03Z2SLGL7200,Excavation,8177,200,0,200,0,87,87,200,51,0,51,,,,2014-05-11 08:00,2014-06-08 17:00,,2014-04-12 08:00,2014-05-10 17:00,2014-04-12 08:00,2014-05-10 17:00,2014-04-12 08:00,2014-05-10 17:00,2014-05-11 08:00,2014-06-08 17:00,,PT_Normal,,,,,OXh536H/Qz+2db+XZkkdzQ,,,,N,0,0,,,2013-02-16 15:53,2013-02-16 16:35,admin,admin
502489,6359,124920,13662,0,N,N,N,CP_Drtn,TT_Task,DT_FixedDUR2,TK_NotStart,DUKHCONI03Z2SLGL7205,Sweet Soil Laying,8178,200,0,200,0,1498,1498,200,0,0,0,,,,2014-05-22 08:00,2014-06-19 17:00,,2014-04-23 08:00,2014-05-21 17:00,2014-04-23 08:00,2014-05-21 17:00,2014-04-23 08:00,2014-05-21 17:00,2014-05-22 08:00,2014-06-19 17:00,,PT_Normal,,,,,vL6OkRHUQ7eohlpcY89mEQ,,,,N,0,0,,,2013-02-16 15:53,2013-02-16 16:35,admin,admin
502490,6359,124920,13662,0,N,N,N,CP_Drtn,TT_Task,DT_FixedDUR2,TK_NotStart,DUKHCONI03Z2SLGL7210,Plantation works,8178,280,136,200,0,2240,2240,200,0,0,0,,,,2014-06-15 08:00,2014-07-13 17:00,,2014-05-05 08:00,2014-06-02 17:00,2014-05-05 08:00,2014-06-02 17:00,2014-05-05 08:00,2014-06-02 17:00,2014-06-15 08:00,2014-07-13 17:00,,PT_Normal,,,,,Nw9BumXdTcuv48PIT46HDw,,,,N,0,0,,,2013-02-16 15:53,2013-02-16 16:35,admin,admin
502491,6359,124921,13662,0,N,N,N,CP_Drtn,TT_Task,DT_FixedDUR2,TK_NotStart,DUKHCONI03Z2BWGL5315,Construction of Boundary Wall (Ht-3m),8165,288,0,200,0,182,182,200,0,0,0,,,,2014-03-26 08:00,2014-04-23 17:00,,2014-02-12 08:00,2014-03-12 17:00,2014-02-12 08:00,2014-03-12 17:00,2014-02-12 08:00,2014-03-12 17:00,2014-03-26 08:00,2014-04-23 17:00,,PT_Normal,,,,,xIgWuULyTE24IZoJacyrjg,,,,N,0,0,,,2013-02-16 15:53,2013-02-16 16:35,admin,admin
502492,6359,124921,13662,0,N,N,N,CP_Drtn,TT_Task,DT_FixedDUR2,TK_NotStart,DUKHCONI03Z2BWGL5320,"Install.Steel Gate,Entance Barrier (3m Wall)",8306,288,136,200,0,14,14,200,0,0,0,,,,2014-04-12 08:00,2014-05-10 17:00,,2014-03-01 08:00,2014-03-29 17:00,2014-03-01 08:00,2014-03-29 17:00,2014-03-01 08:00,2014-03-29 17:00,2014-04-12 08:00,2014-05-10 17:00,,PT_Normal,,,,,I8atnK5RQWa1mLBYsS7CXA,,,,N,0,0,,,2013-02-16 15:53,2013-02-16 16:35,admin,admin
502493,6359,124922,13662,0,N,N,N,CP_Drtn,TT_Task,DT_FixedDUR2,TK_NotStart,DUKHCONI03Z2IRGL5265,Excavation for irrigation line,8177,168,0,200,0,866,866,200,500,0,500,,,,2014-03-29 08:00,2014-04-26 17:00,,2014-03-04 08:00,2014-04-01 17:00,2014-03-04 08:00,2014-04-01 17:00,2014-03-04 08:00,2014-04-01 17:00,2014-03-29 08:00,2014-04-26 17:00,,PT_Normal,,,,,W6FbYw3ER5OJb8yhOTTdYw,,,,N,0,0,,,2013-02-16 15:53,2013-02-16 16:35,admin,admin
502494,6359,124922,13662,0,N,N,N,CP_Drtn,TT_Task,DT_FixedDUR2,TK_NotStart,DUKHCONI03Z2IRGL5270,Laying of irrigationline,8178,168,0,200,0,1360.8,1360.8,200,0,0,0,,,,2014-04-03 08:00,2014-05-01 17:00,,2014-03-10 08:00,2014-04-07 17:00,2014-03-10 08:00,2014-04-07 17:00,2014-03-10 08:00,2014-04-07 17:00,2014-04-03 08:00,2014-05-01 17:00,,PT_Normal,,,,,HTaX52XCSA+tRoV6knM0YA,,,,N,0,0,,,2013-02-16 15:53,2013-02-23 09:03,admin,admin
502495,6359,124922,13662,0,N,N,N,CP_Drtn,TT_Task,DT_FixedDUR2,TK_NotStart,DUKHCONI03Z2IRGL5275,Testing of irrigation line,8178,168,0,200,0,1203.6,1203.6,200,0,0,0,,,,2014-04-09 08:00,2014-05-07 17:00,,2014-03-16 08:00,2014-04-13 17:00,2014-03-16 08:00,2014-04-13 17:00,2014-03-16 08:00,2014-04-13 17:00,2014-04-09 08:00,2014-05-07 17:00,,PT_Normal,,,,,RzaFxYRrRdCIjUA7dlJPIg,,,,N,0,0,,,2013-02-16 15:53,2013-02-23 09:03,admin,admin
502496,6359,124922,13662,0,N,N,N,CP_Drtn,TT_Task,DT_FixedDUR2,TK_NotStart,DUKHCONI03Z2IRGL5280,Backfilling irrigation line,8177,168,0,200,0,700,700,200,550,0,550,,,,2014-04-15 08:00,2014-05-13 17:00,,2014-03-22 08:00,2014-04-19 17:00,2014-03-22 08:00,2014-04-19 17:00,2014-03-22 08:00,2014-04-19 17:00,2014-04-15 08:00,2014-05-13 17:00,,PT_Normal,,,,,4gQ3tcbQTaeLWibUXieg3w,,,,N,0,0,,,2013-02-16 15:53,2013-02-16 16:35,admin,admin
502497,6359,124922,13662,0,N,N,N,CP_Drtn,TT_Task,DT_FixedDUR2,TK_NotStart,DUKHCONI03Z2IRGL5285,"Construction of Thrust Blocks,Pull boxes",8165,208,0,200,0,628,628,200,0,0,0,,,,2014-05-03 08:00,2014-05-31 17:00,,2014-04-02 08:00,2014-04-30 17:00,2014-04-02 08:00,2014-04-30 17:00,2014-04-02 08:00,2014-04-30 17:00,2014-05-03 08:00,2014-05-31 17:00,,PT_Normal,,,,,BcneHKkUQF+Wt7vnaBag7Q,,,,N,0,0,,,2013-02-16 15:53,2013-02-16 16:35,admin,admin
502498,6359,124922,13662,0,N,N,N,CP_Drtn,TT_Task,DT_FixedDUR2,TK_NotStart,DUKHCONI03Z2IRGL5290,"Irrigation Fittings (Nozzle,Values)",8178,208,8,200,0,355,355,200,0,0,0,,,,2014-05-11 08:00,2014-06-08 17:00,,2014-04-10 08:00,2014-05-08 17:00,2014-04-10 08:00,2014-05-08 17:00,2014-04-10 08:00,2014-05-08 17:00,2014-05-11 08:00,2014-06-08 17:00,,PT_Normal,,,,,BCmeuAlYTN6hcPiRTbdU2A,,,,N,0,0,,,2013-02-16 15:53,2013-02-16 16:35,admin,admin
502499,6359,124923,13662,0,N,N,N,CP_Drtn,TT_Task,DT_FixedDUR2,TK_NotStart,DUKHCONI03Z2FFGL5195,Testing of firefighting line,8178,64,0,200,0,265.2,265.2,200,0,0,0,,,,2014-01-14 08:00,2014-02-12 17:00,,2014-01-05 08:00,2014-02-02 17:00,2014-01-05 08:00,2014-02-02 17:00,2014-01-05 08:00,2014-02-02 17:00,2014-01-14 08:00,2014-02-12 17:00,,PT_Normal,,,,,kSvpwwoGTUOKL6rsOSwh0g,,,,N,0,0,,,2013-02-16 15:53,2013-02-23 09:03,admin,admin
502500,6359,124923,13662,0,N,N,N,CP_Drtn,TT_Task,DT_FixedDUR2,TK_NotStart,DUKHCONI03Z2FFGL5200,Backfilling firefighting line,8177,64,0,200,0,365,365,200,275,0,275,,,,2014-01-20 08:00,2014-02-18 17:00,,2014-01-11 08:00,2014-02-08 17:00,2014-01-11 08:00,2014-02-08 17:00,2014-01-11 08:00,2014-02-08 17:00,2014-01-20 08:00,2014-02-18 17:00,,PT_Normal,,,,,w0ie/AR2STuzfmyYi2EJSQ,,,,N,0,0,,,2013-02-16 15:53,2013-02-16 16:35,admin,admin
502501,6359,124923,13662,0,N,N,N,CP_Drtn,TT_Task,DT_FixedDUR2,TK_NotStart,DUKHCONI03Z2FFGL5205,Construction of valve chambers & Thrust Blocks,8165,176,0,200,0,78,78,200,0,0,0,,,,2014-02-12 08:00,2014-03-12 17:00,,2014-01-16 08:00,2014-02-15 17:00,2014-01-16 08:00,2014-02-15 17:00,2014-01-16 08:00,2014-02-15 17:00,2014-02-12 08:00,2014-03-12 17:00,,PT_Normal,,,,,jFF2m+wSRSytD1dPMzMCLQ,,,,N,0,0,,,2013-02-16 15:53,2013-02-16 16:35,admin,admin
502502,6359,124923,13662,0,N,N,N,CP_Drtn,TT_Task,DT_FixedDUR2,TK_NotStart,DUKHCONI03Z2FFGL5210,Connection with existing Firewater System,8165,176,96,200,0,78,78,200,0,0,0,,,,2014-02-18 08:00,2014-03-18 17:00,,2014-01-22 08:00,2014-02-20 17:00,2014-01-22 08:00,2014-02-20 17:00,2014-01-22 08:00,2014-02-20 17:00,2014-02-18 08:00,2014-03-18 17:00,,PT_Normal,,,,,dXay9XyUTCqJDGsGcvIv0g,,,,N,0,0,,,2013-02-16 15:53,2013-02-16 16:35,admin,admin
502503,6359,124923,13662,0,N,N,N,CP_Drtn,TT_Task,DT_FixedDUR2,TK_NotStart,DUKHCONI03Z2FFGL5185,Excavation for firefighting line,8177,64,0,200,0,473,473,200,251,0,251,,,,2013-12-31 08:00,2014-01-28 17:00,,2013-12-22 08:00,2014-01-19 17:00,2013-12-22 08:00,2014-01-19 17:00,2013-12-22 08:00,2014-01-19 17:00,2013-12-31 08:00,2014-01-28 17:00,,PT_Normal,,,,,UgiGMe2MTEOCFiNj4tTgDQ,,,,N,0,0,,,2013-02-16 15:53,2013-02-16 16:35,admin,admin
502504,6359,124923,13662,0,N,N,N,CP_Drtn,TT_Task,DT_FixedDUR2,TK_NotStart,DUKHCONI03Z2FFGL5190,Laying of firefighting line,8178,64,0,200,0,513.6,513.6,200,0,0,0,,,,2014-01-08 08:00,2014-02-05 17:00,,2013-12-30 08:00,2014-01-27 17:00,2013-12-30 08:00,2014-01-27 17:00,2013-12-30 08:00,2014-01-27 17:00,2014-01-08 08:00,2014-02-05 17:00,,PT_Normal,,,,,WQdjGplDQpS2KO022PjZAw,,,,N,0,0,,,2013-02-16 15:53,2013-02-16 16:35,admin,admin
502505,6359,124926,13662,0,N,N,N,CP_Drtn,TT_Task,DT_FixedDUR2,TK_NotStart,DUKHCONI03Z1DRGL5115,Excavation for Drainage line,8177,40,0,200,0,736,736,200,400,0,400,,,,2013-08-22 08:00,2013-09-19 17:00,,2013-08-17 08:00,2013-09-14 17:00,2013-08-17 08:00,2013-09-14 17:00,2013-08-17 08:00,2013-09-14 17:00,2013-08-22 08:00,2013-09-19 17:00,,PT_Normal,,,,,3QvjLyqwSrGwbdbQCoOJGw,,,,N,0,0,,,2013-02-16 15:53,2013-02-16 15:56,admin,admin
502506,6359,124926,13662,0,N,N,N,CP_Drtn,TT_Task,DT_FixedDUR2,TK_NotStart,DUKHCONI03Z1DRGL5120,Laying of Drainage line,8178,96,0,200,0,772.8,772.8,200,0,0,0,,,,2013-09-07 08:00,2013-10-05 17:00,,2013-08-24 08:00,2013-09-21 17:00,2013-08-24 08:00,2013-09-21 17:00,2013-08-24 08:00,2013-09-21 17:00,2013-09-07 08:00,2013-10-05 17:00,,PT_Normal,,,,,Rwcq3jzmQqKZqmphjtMFzQ,,,,N,0,0,,,2013-02-16 15:53,2013-02-16 15:56,admin,admin
502507,6359,124926,13662,0,N,N,N,CP_Drtn,TT_Task,DT_FixedDUR2,TK_NotStart,DUKHCONI03Z1DRGL5125,Testing of Drainage line,8178,96,0,200,0,772.8,772.8,200,0,0,0,,,,2013-09-15 08:00,2013-10-13 17:00,,2013-09-01 08:00,2013-09-29 17:00,2013-09-01 08:00,2013-09-29 17:00,2013-09-01 08:00,2013-09-29 17:00,2013-09-15 08:00,2013-10-13 17:00,,PT_Normal,,,,,BhGDvf7GTMWxOKJW4wfQVQ,,,,N,0,0,,,2013-02-16 15:53,2013-02-16 15:56,admin,admin
502508,6359,124926,13662,0,N,N,N,CP_Drtn,TT_Task,DT_FixedDUR2,TK_NotStart,DUKHCONI03Z1DRGL5130,Backfilling Drainage line,8177,96,0,120,0,468,468,120,330,0,330,,,,2013-10-02 08:00,2013-10-21 17:00,,2013-09-18 08:00,2013-10-05 17:00,2013-09-18 08:00,2013-10-05 17:00,2013-09-18 08:00,2013-10-05 17:00,2013-10-02 08:00,2013-10-21 17:00,,PT_Normal,,,,,N1YKcZjATSqLU39HvVIEnw,,,,N,0,0,,,2013-02-16 15:53,2013-02-16 15:56,admin,admin
502509,6359,124927,13662,0,N,N,N,CP_Drtn,TT_Task,DT_FixedDUR2,TK_NotStart,DUKHCONI03Z1FFGL5195,Testing of firefighting line,8178,64,0,200,0,265.2,265.2,200,0,0,0,,,,2013-11-25 08:00,2013-12-24 17:00,,2013-11-16 08:00,2013-12-14 17:00,2013-11-16 08:00,2013-12-14 17:00,2013-11-16 08:00,2013-12-14 17:00,2013-11-25 08:00,2013-12-24 17:00,,PT_Normal,,,,,xCaVigKxTUecTLDFgFEA4g,,,,N,0,0,,,2013-02-16 15:53,2013-02-23 09:03,admin,admin
502510,6359,124927,13662,0,N,N,N,CP_Drtn,TT_Task,DT_FixedDUR2,TK_NotStart,DUKHCONI03Z1FFGL5200,Backfilling firefighting line,8177,64,0,200,0,365,365,200,275,0,275,,,,2013-12-01 08:00,2013-12-30 17:00,,2013-11-21 08:00,2013-12-21 17:00,2013-11-21 08:00,2013-12-21 17:00,2013-11-21 08:00,2013-12-21 17:00,2013-12-01 08:00,2013-12-30 17:00,,PT_Normal,,,,,CiAF1O/jSs+OB+/m+ACWfw,,,,N,0,0,,,2013-02-16 15:53,2013-02-16 16:35,admin,admin
502511,6359,124927,13662,0,N,N,N,CP_Drtn,TT_Task,DT_FixedDUR2,TK_NotStart,DUKHCONI03Z1FFGL5205,Construction of valve chambers & Thrust Blocks,8165,120,0,200,0,78,78,200,0,0,0,,,,2013-12-26 08:00,2014-01-23 17:00,,2013-12-08 08:00,2014-01-06 17:00,2013-12-08 08:00,2014-01-06 17:00,2013-12-08 08:00,2014-01-06 17:00,2013-12-26 08:00,2014-01-23 17:00,,PT_Normal,,,,,lysNLRwpTvWFW5QvHZr6ig,,,,N,0,0,,,2013-02-16 15:53,2013-02-16 16:35,admin,admin
502512,6359,124927,13662,0,N,N,N,CP_Drtn,TT_Task,DT_FixedDUR2,TK_NotStart,DUKHCONI03Z1FFGL5210,Connection with existing Firewater System,8165,120,24,200,0,78,78,200,0,0,0,,,,2014-01-01 08:00,2014-01-29 17:00,,2013-12-14 08:00,2014-01-12 17:00,2013-12-14 08:00,2014-01-12 17:00,2013-12-14 08:00,2014-01-12 17:00,2014-01-01 08:00,2014-01-29 17:00,,PT_Normal,,,,,AyYPjOumQoWu1nQrHs0FKw,,,,N,0,0,,,2013-02-16 15:53,2013-02-16 16:35,admin,admin
502513,6359,124927,13662,0,N,N,N,CP_Drtn,TT_Task,DT_FixedDUR2,TK_NotStart,DUKHCONI03Z1FFGL5185,Excavation for firefighting line,8177,112,48,200,0,473,473,200,251,0,251,,,,2013-11-11 08:00,2013-12-09 17:00,,2013-10-26 08:00,2013-11-23 17:00,2013-10-26 08:00,2013-11-23 17:00,2013-10-26 08:00,2013-11-23 17:00,2013-11-11 08:00,2013-12-09 17:00,,PT_Normal,,,,,WO1aDtMeQcmBssrXVnyL7A,,,,N,0,0,,,2013-02-16 15:53,2013-02-16 16:35,admin,admin
502514,6359,124927,13662,0,N,N,N,CP_Drtn,TT_Task,DT_FixedDUR2,TK_NotStart,DUKHCONI03Z1FFGL5190,Laying of firefighting line,8178,64,0,200,0,513.6,513.6,200,0,0,0,,,,2013-11-19 08:00,2013-12-17 17:00,,2013-11-10 08:00,2013-12-08 17:00,2013-11-10 08:00,2013-12-08 17:00,2013-11-10 08:00,2013-12-08 17:00,2013-11-19 08:00,2013-12-17 17:00,,PT_Normal,,,,,K5l2o86xRded0TlcoyDNeg,,,,N,0,0,,,2013-02-16 15:53,2013-02-16 16:35,admin,admin
502515,6359,124928,13662,0,N,N,N,CP_Drtn,TT_Task,DT_FixedDUR2,TK_NotStart,DUKHCONI03Z1SLGL7200,Excavation,8177,248,0,200,0,87,87,200,51,0,51,,,,2014-03-31 08:00,2014-04-28 17:00,,2014-02-23 08:00,2014-03-23 17:00,2014-02-23 08:00,2014-03-23 17:00,2014-02-23 08:00,2014-03-23 17:00,2014-03-31 08:00,2014-04-28 17:00,,PT_Normal,,,,,CMiqaYd/TsqhkYtw8Pb7KQ,,,,N,0,0,,,2013-02-16 15:53,2013-02-16 16:35,admin,admin
502516,6359,124928,13662,0,N,N,N,CP_Drtn,TT_Task,DT_FixedDUR2,TK_NotStart,DUKHCONI03Z1SLGL7205,Sweet Soil Laying,8178,248,0,200,0,1498,1498,200,0,0,0,,,,2014-04-12 08:00,2014-05-10 17:00,,2014-03-06 08:00,2014-04-03 17:00,2014-03-06 08:00,2014-04-03 17:00,2014-03-06 08:00,2014-04-03 17:00,2014-04-12 08:00,2014-05-10 17:00,,PT_Normal,,,,,EyuNI2AeRAyA73Z2W3LM0A,,,,N,0,0,,,2013-02-16 15:53,2013-02-16 16:35,admin,admin
502517,6359,124928,13662,0,N,N,N,CP_Drtn,TT_Task,DT_FixedDUR2,TK_NotStart,DUKHCONI03Z1SLGL7210,Plantation works,8178,408,128,200,0,2240,2240,200,0,0,0,,,,2014-05-17 08:00,2014-06-14 17:00,,2014-03-18 08:00,2014-04-15 17:00,2014-03-18 08:00,2014-04-15 17:00,2014-03-18 08:00,2014-04-15 17:00,2014-05-17 08:00,2014-06-14 17:00,,PT_Normal,,,,,hMvc0ItURWC6W2s59Ez+yQ,,,,N,0,0,,,2013-02-16 15:53,2013-02-16 16:35,admin,admin
502518,6359,124929,13662,0,N,N,N,CP_Drtn,TT_Task,DT_FixedDUR2,TK_NotStart,DUKHCONI03Z1SAGL5135,Construction of manholes Drainage,8177,536,144,200,0,344,344,200,0,0,0,,,,2013-12-08 08:00,2014-01-06 17:00,,2013-09-18 08:00,2013-10-16 17:00,2013-09-18 08:00,2013-10-16 17:00,2013-09-18 08:00,2013-10-16 17:00,2013-12-08 08:00,2014-01-06 17:00,,PT_Normal,,,,,9h7eq0rPRliLUmmTw6EhoA,,,,N,0,0,,,2013-02-16 15:53,2013-02-16 15:56,admin,admin
502519,6359,124929,13662,0,N,N,N,CP_Drtn,TT_Task,DT_FixedDUR2,TK_NotStart,DUKHCONI03Z1SAGL5140,Construction of soakaways,8177,112,0,200,0,242,242,200,0,0,0,,,,2013-10-05 08:00,2013-11-04 17:00,,2013-09-18 08:00,2013-10-16 17:00,2013-09-18 08:00,2013-10-16 17:00,2013-09-18 08:00,2013-10-16 17:00,2013-10-05 08:00,2013-11-04 17:00,,PT_Normal,,,,,rmRM6qdhRuu7ykuwEBPKrA,,,,N,0,0,,,2013-02-16 15:53,2013-02-16 15:56,admin,admin
502520,6359,124929,13662,0,N,N,N,CP_Drtn,TT_Task,DT_FixedDUR2,TK_NotStart,DUKHCONI03Z1SAGL5145,Construction of Road gullies,8177,112,0,200,0,286,286,200,0,0,0,,,,2013-11-05 08:00,2013-12-03 17:00,,2013-10-20 08:00,2013-11-17 17:00,2013-10-20 08:00,2013-11-17 17:00,2013-10-20 08:00,2013-11-17 17:00,2013-11-05 08:00,2013-12-03 17:00,,PT_Normal,,,,,ejLvsyoyR6+NQwCbXB8a0g,,,,N,0,0,,,2013-02-16 15:53,2013-02-16 15:56,admin,admin
502521,6359,124929,13662,0,N,N,N,CP_Drtn,TT_Task,DT_FixedDUR2,TK_NotStart,DUKHCONI03Z1SAGL5150,Connection with existing sewer manhole,8177,336,240,160,0,344,344,160,0,0,0,,,,2014-01-07 08:00,2014-01-29 17:00,,2013-11-18 08:00,2013-12-10 17:00,2013-11-18 08:00,2013-12-10 17:00,2013-11-18 08:00,2013-12-10 17:00,2014-01-07 08:00,2014-01-29 17:00,,PT_Normal,,,,,pLdl9UBHRmyCPCA0CtA3sw,,,,N,0,0,,,2013-02-16 15:53,2013-02-16 16:35,admin,admin
502522,6359,124930,13662,0,N,N,N,CP_Drtn,TT_Task,DT_FixedDUR2,TK_NotStart,DUKHCONI03Z1IRGL5265,Excavation for irrigation line,8177,168,0,200,0,866,866,200,500,0,500,,,,2014-02-09 08:00,2014-03-10 17:00,,2014-01-15 08:00,2014-02-13 17:00,2014-01-15 08:00,2014-02-13 17:00,2014-01-15 08:00,2014-02-13 17:00,2014-02-09 08:00,2014-03-10 17:00,,PT_Normal,,,,,MEn020ToSoKSqVPT/981Bw,,,,N,0,0,,,2013-02-16 15:53,2013-02-16 16:35,admin,admin
502523,6359,124930,13662,0,N,N,N,CP_Drtn,TT_Task,DT_FixedDUR2,TK_NotStart,DUKHCONI03Z1IRGL5270,Laying of irrigationline,8178,168,0,200,0,1360.8,1360.8,200,0,0,0,,,,2014-02-16 08:00,2014-03-16 17:00,,2014-01-21 08:00,2014-02-19 17:00,2014-01-21 08:00,2014-02-19 17:00,2014-01-21 08:00,2014-02-19 17:00,2014-02-16 08:00,2014-03-16 17:00,,PT_Normal,,,,,ldw2vuSgRyObMqrw02ShXg,,,,N,0,0,,,2013-02-16 15:53,2013-02-23 09:03,admin,admin
502524,6359,124930,13662,0,N,N,N,CP_Drtn,TT_Task,DT_FixedDUR2,TK_NotStart,DUKHCONI03Z1IRGL5275,Testing of irrigation line,8178,168,0,200,0,1203.6,1203.6,200,0,0,0,,,,2014-02-22 08:00,2014-03-22 17:00,,2014-01-27 08:00,2014-02-25 17:00,2014-01-27 08:00,2014-02-25 17:00,2014-01-27 08:00,2014-02-25 17:00,2014-02-22 08:00,2014-03-22 17:00,,PT_Normal,,,,,pv45SSIrRuetglpy2W5Kgg,,,,N,0,0,,,2013-02-16 15:53,2013-02-23 09:03,admin,admin
502525,6359,124930,13662,0,N,N,N,CP_Drtn,TT_Task,DT_FixedDUR2,TK_NotStart,DUKHCONI03Z1IRGL5280,Backfilling irrigation line,8177,168,0,200,0,700,700,200,550,0,550,,,,2014-02-27 08:00,2014-03-27 17:00,,2014-02-02 08:00,2014-03-03 17:00,2014-02-02 08:00,2014-03-03 17:00,2014-02-02 08:00,2014-03-03 17:00,2014-02-27 08:00,2014-03-27 17:00,,PT_Normal,,,,,KQbyoPfyRsy4OUbyLO+Lyw,,,,N,0,0,,,2013-02-16 15:53,2013-02-16 16:35,admin,admin
502526,6359,124930,13662,0,N,N,N,CP_Drtn,TT_Task,DT_FixedDUR2,TK_NotStart,DUKHCONI03Z1IRGL5285,"Construction of Thrust Blocks,Pull boxes",8165,248,0,200,0,628,628,200,0,0,0,,,,2014-03-23 08:00,2014-04-20 17:00,,2014-02-15 08:00,2014-03-15 17:00,2014-02-15 08:00,2014-03-15 17:00,2014-02-15 08:00,2014-03-15 17:00,2014-03-23 08:00,2014-04-20 17:00,,PT_Normal,,,,,iy2dSsMNR6SQKcKkqlzvLQ,,,,N,0,0,,,2013-02-16 15:53,2013-02-16 16:35,admin,admin
502527,6359,124930,13662,0,N,N,N,CP_Drtn,TT_Task,DT_FixedDUR2,TK_NotStart,DUKHCONI03Z1IRGL5290,"Irrigation Fittings (Nozzle,Values)",8178,248,0,200,0,355,355,200,0,0,0,,,,2014-03-31 08:00,2014-04-28 17:00,,2014-02-23 08:00,2014-03-23 17:00,2014-02-23 08:00,2014-03-23 17:00,2014-02-23 08:00,2014-03-23 17:00,2014-03-31 08:00,2014-04-28 17:00,,PT_Normal,,,,,vVAH2v2uSQaTe8TGuVfT9g,,,,N,0,0,,,2013-02-16 15:53,2013-02-16 16:35,admin,admin
502528,6359,124931,13662,0,N,N,N,CP_Drtn,TT_Task,DT_FixedDUR2,TK_NotStart,DUKHCONI03Z1BWGL5315,Construction of Boundary Wall (Ht-3m),8165,424,0,200,0,182,182,200,0,0,0,,,,2014-02-25 08:00,2014-03-25 17:00,,2013-12-24 08:00,2014-01-21 17:00,2013-12-24 08:00,2014-01-21 17:00,2013-12-24 08:00,2014-01-21 17:00,2014-02-25 08:00,2014-03-25 17:00,,PT_Normal,,,,,FrJrJ1jfR8Krb/fXEMU2fg,,,,N,0,0,,,2013-02-16 15:53,2013-02-16 16:45,admin,admin
502529,6359,124931,13662,0,N,N,N,CP_Drtn,TT_Task,DT_FixedDUR2,TK_NotStart,DUKHCONI03Z1BWGL5320,"Install.Steel Gate,Entance Barrier (3m Wall)",8306,424,136,200,0,14,14,200,0,0,0,,,,2014-03-13 08:00,2014-04-10 17:00,,2014-01-09 08:00,2014-02-06 17:00,2014-01-09 08:00,2014-02-06 17:00,2014-01-09 08:00,2014-02-06 17:00,2014-03-13 08:00,2014-04-10 17:00,,PT_Normal,,,,,PptPZUA9RjSCCiCk87Np5g,,,,N,0,0,,,2013-02-16 15:53,2013-02-16 16:45,admin,admin
502530,6359,124932,13662,0,N,N,N,CP_Drtn,TT_Task,DT_FixedDUR2,TK_NotStart,DUKHCONI03Z1RWGL6000,Excavation & Earth Filling,8177,96,0,80,0,1782,1782,80,600,0,600,,,,2014-01-30 08:00,2014-02-10 17:00,,2014-01-16 08:00,2014-01-27 17:00,2014-01-16 08:00,2014-01-27 17:00,2014-01-16 08:00,2014-01-27 17:00,2014-01-30 08:00,2014-02-10 17:00,,PT_Normal,,,,,x6h7oYv/S3C8C/ssCoXjNA,,,,N,0,0,,,2013-02-16 15:53,2013-02-16 16:35,admin,admin
502531,6359,124932,13662,0,N,N,N,CP_Drtn,TT_Task,DT_FixedDUR2,TK_NotStart,DUKHCONI03Z1RWGL6005,Laying of Sub Grade,8178,96,0,200,0,36,36,200,0,0,0,,,,2014-02-12 08:00,2014-03-12 17:00,,2014-01-28 08:00,2014-02-26 17:00,2014-01-28 08:00,2014-02-26 17:00,2014-01-28 08:00,2014-02-26 17:00,2014-02-12 08:00,2014-03-12 17:00,,PT_Normal,,,,,2XVso0OTRKmlC6D5/9qN1A,,,,N,0,0,,,2013-02-16 15:53,2013-02-16 16:35,admin,admin
502532,6359,124932,13662,0,N,N,N,CP_Drtn,TT_Task,DT_FixedDUR2,TK_NotStart,DUKHCONI03Z1RWGL6010,Laying of Precast Kerbs,8178,96,0,200,0,1178,1178,200,0,0,0,,,,2014-02-24 08:00,2014-03-24 17:00,,2014-02-09 08:00,2014-03-10 17:00,2014-02-09 08:00,2014-03-10 17:00,2014-02-09 08:00,2014-03-10 17:00,2014-02-24 08:00,2014-03-24 17:00,,PT_Normal,,,,,7f6SIPUKTJao+RYzRPT59A,,,,N,0,0,,,2013-02-16 15:53,2013-02-16 16:35,admin,admin
502533,6359,124932,13662,0,N,N,N,CP_Drtn,TT_Task,DT_FixedDUR2,TK_NotStart,DUKHCONI03Z1RWGL6015,Laying of Granular Sub Base Coarse,8178,96,0,160,0,636,636,160,600,0,600,,,,2014-03-08 08:00,2014-03-30 17:00,,2014-02-22 08:00,2014-03-16 17:00,2014-02-22 08:00,2014-03-16 17:00,2014-02-22 08:00,2014-03-16 17:00,2014-03-08 08:00,2014-03-30 17:00,,PT_Normal,,,,,2NLI4LjJQmeB9wWX5XVryw,,,,N,0,0,,,2013-02-16 15:53,2013-02-16 16:35,admin,admin
502534,6359,124932,13662,0,N,N,N,CP_Drtn,TT_Task,DT_FixedDUR2,TK_NotStart,DUKHCONI03Z1RWGL6020,Laying of Road Base Asphalt Concrete,8178,176,0,40,0,186,186,40,150,0,150,,,,2014-04-12 08:00,2014-04-16 17:00,,2014-03-17 08:00,2014-03-22 17:00,2014-03-17 08:00,2014-03-22 17:00,2014-03-17 08:00,2014-03-22 17:00,2014-04-12 08:00,2014-04-16 17:00,,PT_Normal,,,,,wKPCN9QfQO+w8BGVp9KUXg,,,,N,0,0,,,2013-02-16 15:53,2013-02-16 16:35,admin,admin
502535,6359,124932,13662,0,N,N,N,CP_Drtn,TT_Task,DT_FixedDUR2,TK_NotStart,DUKHCONI03Z1RWGL6025,Laying of Asphalt Wearing Coarse,8178,296,0,40,0,186,186,40,150,0,150,,,,2014-05-05 08:00,2014-05-10 17:00,,2014-03-23 08:00,2014-03-27 17:00,2014-03-23 08:00,2014-03-27 17:00,2014-03-23 08:00,2014-03-27 17:00,2014-05-05 08:00,2014-05-10 17:00,,PT_Normal,,,,,7Ylalp8PTGSzM1bfRH59Bg,,,,N,0,0,,,2013-02-16 15:53,2013-02-16 16:35,admin,admin
502536,6359,124932,13662,0,N,N,N,CP_Drtn,TT_Task,DT_FixedDUR2,TK_NotStart,DUKHCONI03Z1RWGL6030,Traffic Signage & Road Marking,8178,296,120,40,0,424,424,40,0,0,0,,,,2014-05-11 08:00,2014-05-15 17:00,,2014-03-29 08:00,2014-04-02 17:00,2014-03-29 08:00,2014-04-02 17:00,2014-03-29 08:00,2014-04-02 17:00,2014-05-11 08:00,2014-05-15 17:00,,PT_Normal,,,,,/2EVt3RkRPeQTeZuyM65bQ,,,,N,0,0,,,2013-02-16 15:53,2013-02-16 16:35,admin,admin
502537,6359,124933,13662,0,N,N,N,CP_Drtn,TT_Task,DT_FixedDUR2,TK_NotStart,DUKHCONI03Z1WSGL5155,Excavation for water line,8177,112,0,200,0,974,974,200,500,0,500,,,,2013-10-16 08:00,2013-11-16 17:00,,2013-09-30 08:00,2013-10-30 17:00,2013-09-30 08:00,2013-10-30 17:00,2013-09-30 08:00,2013-10-30 17:00,2013-10-16 08:00,2013-11-16 17:00,,PT_Normal,,,,,k3sE3Ir2S1enANs+2RM+7g,,,,N,0,0,,,2013-02-16 15:53,2013-02-16 15:56,admin,admin
502538,6359,124933,13662,0,N,N,N,CP_Drtn,TT_Task,DT_FixedDUR2,TK_NotStart,DUKHCONI03Z1WSGL5160,Laying of water line,8178,112,0,200,0,1093.2,1093.2,200,0,0,0,,,,2013-10-24 08:00,2013-11-21 17:00,,2013-10-06 08:00,2013-11-05 17:00,2013-10-06 08:00,2013-11-05 17:00,2013-10-06 08:00,2013-11-05 17:00,2013-10-24 08:00,2013-11-21 17:00,,PT_Normal,,,,,uEhZHBI0TeyooZ7sOKAv5w,,,,N,0,0,,,2013-02-16 15:53,2013-02-16 15:56,admin,admin
502539,6359,124933,13662,0,N,N,N,CP_Drtn,TT_Task,DT_FixedDUR2,TK_NotStart,DUKHCONI03Z1WSGL5165,Testing of potable water line,8178,112,0,200,0,552,552,200,0,0,0,,,,2013-10-30 08:00,2013-11-27 17:00,,2013-10-12 08:00,2013-11-11 17:00,2013-10-12 08:00,2013-11-11 17:00,2013-10-12 08:00,2013-11-11 17:00,2013-10-30 08:00,2013-11-27 17:00,,PT_Normal,,,,,FUA+yaQIRyyexGhZiP7hhg,,,,N,0,0,,,2013-02-16 15:53,2013-02-16 15:56,admin,admin
502540,6359,124933,13662,0,N,N,N,CP_Drtn,TT_Task,DT_FixedDUR2,TK_NotStart,DUKHCONI03Z1WSGL5170,Backfilling potable water line,8177,112,0,200,0,742,742,200,550,0,550,,,,2013-11-05 08:00,2013-12-03 17:00,,2013-10-20 08:00,2013-11-17 17:00,2013-10-20 08:00,2013-11-17 17:00,2013-10-20 08:00,2013-11-17 17:00,2013-11-05 08:00,2013-12-03 17:00,,PT_Normal,,,,,BXFephrORdq1K6lWqhDILg,,,,N,0,0,,,2013-02-16 15:53,2013-02-16 15:56,admin,admin
502541,6359,124933,13662,0,N,N,N,CP_Drtn,TT_Task,DT_FixedDUR2,TK_NotStart,DUKHCONI03Z1WSGL5175,Construction of valve chambers & Thrust Blocks,8177,296,0,200,0,80,80,200,0,0,0,,,,2013-12-08 08:00,2014-01-06 17:00,,2013-10-26 08:00,2013-11-23 17:00,2013-10-26 08:00,2013-11-23 17:00,2013-10-26 08:00,2013-11-23 17:00,2013-12-08 08:00,2014-01-06 17:00,,PT_Normal,,,,,gfYObYY/QESrRdVQSpy2uA,,,,N,0,0,,,2013-02-16 15:53,2013-02-16 15:56,admin,admin
502542,6359,124933,13662,0,N,N,N,CP_Drtn,TT_Task,DT_FixedDUR2,TK_NotStart,DUKHCONI03Z1WSGL5180,"Installation of meter ,Accessories & Connection",8178,296,176,160,0,33.6,33.6,160,0,0,0,,,,2014-01-07 08:00,2014-01-29 17:00,,2013-11-24 08:00,2013-12-16 17:00,2013-11-24 08:00,2013-12-16 17:00,2013-11-24 08:00,2013-12-16 17:00,2014-01-07 08:00,2014-01-29 17:00,,PT_Normal,,,,,6eYvgblATDG88BrcLZmECg,,,,N,0,0,,,2013-02-16 15:53,2013-02-16 16:35,admin,admin
502543,6359,124934,13662,0,N,N,N,CP_Drtn,TT_Task,DT_FixedDUR2,TK_NotStart,DUKHCONI03Z1TCGL5295,Excavation Telecommunication trenches,8177,96,0,160,0,386,386,160,200,0,200,,,,2014-01-07 08:00,2014-01-29 17:00,,2013-12-24 08:00,2014-01-15 17:00,2013-12-24 08:00,2014-01-15 17:00,2013-12-24 08:00,2014-01-15 17:00,2014-01-07 08:00,2014-01-29 17:00,,PT_Normal,,,,,GaZ7TLUYSYuzqwjGsR8FBg,,,,N,0,0,,,2013-02-16 15:53,2013-02-16 16:35,admin,admin
502544,6359,124934,13662,0,N,N,N,CP_Drtn,TT_Task,DT_FixedDUR2,TK_NotStart,DUKHCONI03Z1TCGL5300,Laying of cables,8178,96,0,160,0,653.2,653.2,160,0,0,0,,,,2014-01-13 08:00,2014-02-04 17:00,,2013-12-30 08:00,2014-01-21 17:00,2013-12-30 08:00,2014-01-21 17:00,2013-12-30 08:00,2014-01-21 17:00,2014-01-13 08:00,2014-02-04 17:00,,PT_Normal,,,,,XGdtfn2MTLe8sieuszcvTQ,,,,N,0,0,,,2013-02-16 15:53,2013-02-16 16:35,admin,admin
502545,6359,124934,13662,0,N,N,N,CP_Drtn,TT_Task,DT_FixedDUR2,TK_NotStart,DUKHCONI03Z1TCGL5305,Backfilling telecommunication trench,8177,96,0,160,0,298,298,160,220,0,220,,,,2014-01-19 08:00,2014-02-10 17:00,,2014-01-05 08:00,2014-01-27 17:00,2014-01-05 08:00,2014-01-27 17:00,2014-01-05 08:00,2014-01-27 17:00,2014-01-19 08:00,2014-02-10 17:00,,PT_Normal,,,,,3t70o+Z3T7mvWI4pnmDQdw,,,,N,0,0,,,2013-02-16 15:53,2013-02-16 16:35,admin,admin
502546,6359,124934,13662,0,N,N,N,CP_Drtn,TT_Task,DT_FixedDUR2,TK_NotStart,DUKHCONI03Z1TCGL5310,Connection & Installation,8178,176,0,160,0,203.2,203.2,160,0,0,0,,,,2014-04-29 08:00,2014-05-21 17:00,,2014-04-03 08:00,2014-04-26 17:00,2014-04-03 08:00,2014-04-26 17:00,2014-04-03 08:00,2014-04-26 17:00,2014-04-29 08:00,2014-05-21 17:00,,PT_Normal,,,,,mEkHP+/USIibEopGVZRVNg,,,,N,0,0,,,2013-02-16 15:53,2013-02-16 16:35,admin,admin
502547,6359,124935,13662,0,N,N,N,CP_Drtn,TT_Task,DT_FixedDUR2,TK_NotStart,DUKHCONI03Z1ELGL5230,Construction of Submain Board & Feeder Pillar,8165,384,0,200,0,574,574,200,0,0,0,,,,2014-02-24 08:00,2014-03-24 17:00,,2013-12-29 08:00,2014-01-26 17:00,2013-12-29 08:00,2014-01-26 17:00,2013-12-29 08:00,2014-01-26 17:00,2014-02-24 08:00,2014-03-24 17:00,,PT_Normal,,,,,9l6UfVg1RVe3xdG45v+pRA,,,,N,0,0,,,2013-02-16 15:53,2013-02-16 16:35,admin,admin
502548,6359,124935,13662,0,N,N,N,CP_Drtn,TT_Task,DT_FixedDUR2,TK_NotStart,DUKHCONI03Z1ELGL5215,Excavation Cable  Trenches  & Duct Banks,8167,96,0,200,0,3883.2,3883.2,200,1000,0,1000,,,,2013-12-14 08:00,2014-01-12 17:00,,2013-11-30 08:00,2013-12-29 17:00,2013-11-30 08:00,2013-12-29 17:00,2013-11-30 08:00,2013-12-29 17:00,2013-12-14 08:00,2014-01-12 17:00,,PT_Normal,,,,,1GPpDsjIQo2wH7k8yVN8GQ,,,,N,0,0,,,2013-02-16 15:53,2013-02-23 09:03,admin,admin
502549,6359,124935,13662,0,N,N,N,CP_Drtn,TT_Task,DT_FixedDUR2,TK_NotStart,DUKHCONI03Z1ELGL5220,Laying of electrical cables,8178,104,0,200,0,6492.4,6492.4,200,0,0,0,,,,2013-12-22 08:00,2014-01-19 17:00,,2013-12-05 08:00,2014-01-04 17:00,2013-12-05 08:00,2014-01-04 17:00,2013-12-05 08:00,2014-01-04 17:00,2013-12-22 08:00,2014-01-19 17:00,,PT_Normal,,,,,aqv4i9QXTzyS72Lpg818HA,,,,N,0,0,,,2013-02-16 15:53,2013-02-16 16:35,admin,admin
502550,6359,124935,13662,0,N,N,N,CP_Drtn,TT_Task,DT_FixedDUR2,TK_NotStart,DUKHCONI03Z1ELGL5225,Backfilling Electrical trench,8177,104,0,200,0,2030,2030,200,1100,0,1100,,,,2014-01-01 08:00,2014-01-29 17:00,,2013-12-16 08:00,2014-01-14 17:00,2013-12-16 08:00,2014-01-14 17:00,2013-12-16 08:00,2014-01-14 17:00,2014-01-01 08:00,2014-01-29 17:00,,PT_Normal,,,,,i1cNVFAMQuWGL2+0kvcDeg,,,,N,0,0,,,2013-02-16 15:53,2013-02-16 16:35,admin,admin
502551,6359,124936,13662,0,N,N,N,CP_Drtn,TT_Task,DT_FixedDUR2,TK_NotStart,DUKHCONI03Z1HDGL7020,Precast Concrete Kerbs works,8178,256,0,160,0,1872,1872,160,0,0,0,,,,2014-02-24 08:00,2014-03-18 17:00,,2014-01-16 08:00,2014-02-08 17:00,2014-01-16 08:00,2014-02-08 17:00,2014-01-16 08:00,2014-02-08 17:00,2014-02-24 08:00,2014-03-18 17:00,,PT_Normal,,,,,44CTOGysQguAxgF1Oi265w,,,,N,0,0,,,2013-02-16 15:53,2013-02-16 16:35,admin,admin
502552,6359,124936,13662,0,N,N,N,CP_Drtn,TT_Task,DT_FixedDUR2,TK_NotStart,DUKHCONI03Z1HDGL7025,Interlocking for Walkways,8174,256,0,200,0,1210,1210,200,0,0,0,,,,2014-03-08 08:00,2014-04-05 17:00,,2014-01-28 08:00,2014-02-26 17:00,2014-01-28 08:00,2014-02-26 17:00,2014-01-28 08:00,2014-02-26 17:00,2014-03-08 08:00,2014-04-05 17:00,,PT_Normal,,,,,saKx2X4gQoefpUCO6zR+6Q,,,,N,0,0,,,2013-02-16 15:53,2013-02-16 16:35,admin,admin
502553,6359,124936,13662,0,N,N,N,CP_Drtn,TT_Task,DT_FixedDUR2,TK_NotStart,DUKHCONI03Z1HDGL7030,Construction of Retaining wall,8165,256,0,200,0,294,294,200,0,0,0,,,,2014-03-19 08:00,2014-04-16 17:00,,2014-02-09 08:00,2014-03-10 17:00,2014-02-09 08:00,2014-03-10 17:00,2014-02-09 08:00,2014-03-10 17:00,2014-03-19 08:00,2014-04-16 17:00,,PT_Normal,,,,,4IDa3P4FSh+60+WtONl0Ig,,,,N,0,0,,,2013-02-16 15:53,2013-02-16 16:35,admin,admin
502554,6359,124936,13662,0,N,N,N,CP_Drtn,TT_Task,DT_FixedDUR2,TK_NotStart,DUKHCONI03Z1HDGL7035,Construction of Wash Stone Boulders,8170,256,8,200,0,50,50,200,0,0,0,,,,2014-03-19 08:00,2014-04-16 17:00,,2014-02-09 08:00,2014-03-10 17:00,2014-02-09 08:00,2014-03-10 17:00,2014-02-09 08:00,2014-03-10 17:00,2014-03-19 08:00,2014-04-16 17:00,,PT_Normal,,,,,mpBu8sy6R4yOOVZZA1vKgg,,,,N,0,0,,,2013-02-16 15:53,2013-02-16 16:35,admin,admin
502555,6359,124936,13662,0,N,N,N,CP_Drtn,TT_Task,DT_FixedDUR2,TK_NotStart,DUKHCONI03Z1HDGL7040,Construction of Speed Humps,8167,456,48,80,0,14,14,80,0,0,0,,,,2014-06-03 08:00,2014-06-14 17:00,,2014-03-29 08:00,2014-04-08 17:00,2014-03-29 08:00,2014-04-08 17:00,2014-03-29 08:00,2014-04-08 17:00,2014-06-03 08:00,2014-06-14 17:00,,PT_Normal,,,,,ySubaCwUQdmfUfcrD7rDEQ,,,,N,0,0,,,2013-02-16 15:53,2013-02-16 16:35,admin,admin
502556,6359,124937,13662,0,N,N,N,CP_Drtn,TT_Task,DT_FixedDUR2,TK_NotStart,DUKHCONI03Z1PSGL7000,Excavation,8177,216,40,120,0,37,37,120,31.000038,0,31.000038,,,,2014-03-31 08:00,2014-04-16 17:00,,2014-02-27 08:00,2014-03-16 17:00,2014-02-27 08:00,2014-03-16 17:00,2014-02-27 08:00,2014-03-16 17:00,2014-03-31 08:00,2014-04-16 17:00,,PT_Normal,,,,,gc+DJlJISkKuSfKi/d37IA,,,,N,0,0,,,2013-02-16 15:53,2013-02-23 09:03,admin,admin
502557,6359,124937,13662,0,N,N,N,CP_Drtn,TT_Task,DT_FixedDUR2,TK_NotStart,DUKHCONI03Z1PSGL7005,Foundation casting,8165,176,0,120,0,1276,1276,120,0,0,0,,,,2014-04-06 08:00,2014-04-22 17:00,,2014-03-11 08:00,2014-03-27 17:00,2014-03-11 08:00,2014-03-27 17:00,2014-03-11 08:00,2014-03-27 17:00,2014-04-06 08:00,2014-04-22 17:00,,PT_Normal,,,,,dGgSTmSbTAusXev/sRjqlA,,,,N,0,0,,,2013-02-16 15:53,2013-02-16 16:35,admin,admin
502558,6359,124937,13662,0,N,N,N,CP_Drtn,TT_Task,DT_FixedDUR2,TK_NotStart,DUKHCONI03Z1PSGL7010,"Column, Frame&  Fabrics  Erection",8178,176,0,200,0,428,428,200,0,0,0,,,,2014-04-17 08:00,2014-05-15 17:00,,2014-03-23 08:00,2014-04-20 17:00,2014-03-23 08:00,2014-04-20 17:00,2014-03-23 08:00,2014-04-20 17:00,2014-04-17 08:00,2014-05-15 17:00,,PT_Normal,,,,,RL/4SrpATEmdcvN8IdI4yA,,,,N,0,0,,,2013-02-16 15:53,2013-02-16 16:35,admin,admin
502559,6359,124937,13662,0,N,N,N,CP_Drtn,TT_Task,DT_FixedDUR2,TK_NotStart,DUKHCONI03Z1PSGL7015,Electrical Works-Parking Shed,8178,176,0,200,0,189.2,189.2,200,0,0,0,,,,2014-04-23 08:00,2014-05-21 17:00,,2014-03-29 08:00,2014-04-26 17:00,2014-03-29 08:00,2014-04-26 17:00,2014-03-29 08:00,2014-04-26 17:00,2014-04-23 08:00,2014-05-21 17:00,,PT_Normal,,,,,GcI1H+TZTlObjR2/2ou+Eg,,,,N,0,0,,,2013-02-16 15:53,2013-02-23 09:03,admin,admin
502560,6359,124938,13662,0,N,N,N,CP_Drtn,TT_Task,DT_FixedDUR2,TK_NotStart,DUKHCONI03Z1STGL5235,Excavation for Street lighting,8177,96,0,200,0,69,69,200,51,0,51,,,,2013-12-14 08:00,2014-01-12 17:00,,2013-11-30 08:00,2013-12-29 17:00,2013-11-30 08:00,2013-12-29 17:00,2013-11-30 08:00,2013-12-29 17:00,2013-12-14 08:00,2014-01-12 17:00,,PT_Normal,,,,,lj6x1LEcT2yaNQesMpD1pA,,,,N,0,0,,,2013-02-16 15:53,2013-02-16 16:35,admin,admin
502561,6359,124938,13662,0,N,N,N,CP_Drtn,TT_Task,DT_FixedDUR2,TK_NotStart,DUKHCONI03Z1STGL5240,Construction of Duct Banks,8178,96,0,200,0,1380.4,1380.4,200,0,0,0,,,,2013-12-21 08:00,2014-01-18 17:00,,2013-12-05 08:00,2014-01-04 17:00,2013-12-05 08:00,2014-01-04 17:00,2013-12-05 08:00,2014-01-04 17:00,2013-12-21 08:00,2014-01-18 17:00,,PT_Normal,,,,,r8L/Iu2xScG8QMUj4e6x1A,,,,N,0,0,,,2013-02-16 15:53,2013-02-16 16:35,admin,admin
502562,6359,124938,13662,0,N,N,N,CP_Drtn,TT_Task,DT_FixedDUR2,TK_NotStart,DUKHCONI03Z1STGL5245,Construction of Foundation,8177,96,0,200,0,696,696,200,0,0,0,,,,2013-12-21 08:00,2014-01-18 17:00,,2013-12-05 08:00,2014-01-04 17:00,2013-12-05 08:00,2014-01-04 17:00,2013-12-05 08:00,2014-01-04 17:00,2013-12-21 08:00,2014-01-18 17:00,,PT_Normal,,,,,o/yCAyX4R5Sw/7TQ5XcsZA,,,,N,0,0,,,2013-02-16 15:53,2013-02-16 16:35,admin,admin
502563,6359,124938,13662,0,N,N,N,CP_Drtn,TT_Task,DT_FixedDUR2,TK_NotStart,DUKHCONI03Z1STGL5250,Backfilling Street Lighting,8177,96,0,200,0,67,67,200,55,0,55,,,,2013-12-26 08:00,2014-01-23 17:00,,2013-12-11 08:00,2014-01-09 17:00,2013-12-11 08:00,2014-01-09 17:00,2013-12-11 08:00,2014-01-09 17:00,2013-12-26 08:00,2014-01-23 17:00,,PT_Normal,,,,,xLuOBOU4QwS5NkX/FYHMew,,,,N,0,0,,,2013-02-16 15:53,2013-02-16 16:35,admin,admin
502564,6359,124938,13662,0,N,N,N,CP_Drtn,TT_Task,DT_FixedDUR2,TK_NotStart,DUKHCONI03Z1STGL5255,Installation of light Post,8178,424,0,200,0,233.2,233.2,200,0,0,0,,,,2014-03-17 08:00,2014-04-14 17:00,,2014-01-13 08:00,2014-02-10 17:00,2014-01-13 08:00,2014-02-10 17:00,2014-01-13 08:00,2014-02-10 17:00,2014-03-17 08:00,2014-04-14 17:00,,PT_Normal,,,,,gVhDeNJjQhaPL2Ar1epsqQ,,,,N,0,0,,,2013-02-16 15:53,2013-02-16 16:35,admin,admin
502565,6359,124938,13662,0,N,N,N,CP_Drtn,TT_Task,DT_FixedDUR2,TK_NotStart,DUKHCONI03Z1STGL5260,Electrical Works,8178,384,120,200,0,556.8,556.8,200,0,0,0,,,,2014-03-25 08:00,2014-04-22 17:00,,2014-01-27 08:00,2014-02-25 17:00,2014-01-27 08:00,2014-02-25 17:00,2014-01-27 08:00,2014-02-25 17:00,2014-03-25 08:00,2014-04-22 17:00,,PT_Normal,,,,,yQjVWLMISs+/BVRRL3EEoA,,,,N,0,0,,,2013-02-16 15:53,2013-02-23 09:03,admin,admin
502566,6359,124941,13662,0,N,N,N,CP_Drtn,TT_Task,DT_FixedDUR2,TK_NotStart,DUKHCONP2BZ3ACTC8000,Pre-Commissioning & Testing of AC Works,8178,304,304,200,0,1500,1500,200,0,0,0,,,,2014-05-17 08:00,2014-06-14 17:00,,2014-04-02 08:00,2014-04-30 17:00,2014-04-02 08:00,2014-04-30 17:00,2014-04-02 08:00,2014-04-30 17:00,2014-05-17 08:00,2014-06-14 17:00,,PT_Normal,,,,,iWQ4Cl54SdmwRf1pTh4UQw,,,,N,0,0,,,2013-02-16 15:53,2013-02-16 15:56,admin,admin
502567,6359,124941,13662,0,N,N,N,CP_Drtn,TT_Task,DT_FixedDUR2,TK_NotStart,DUKHCONP2BZ3ELTC8010,Pre-Commissioning & Testing of Electrical Works,8178,304,304,200,0,3000,3000,200,0,0,0,,,,2014-05-17 08:00,2014-06-14 17:00,,2014-04-02 08:00,2014-04-30 17:00,2014-04-02 08:00,2014-04-30 17:00,2014-04-02 08:00,2014-04-30 17:00,2014-05-17 08:00,2014-06-14 17:00,,PT_Normal,,,,,KoHvLHfmTvKnDPwSYkUa/w,,,,N,0,0,,,2013-02-16 15:53,2013-02-16 15:56,admin,admin
502568,6359,124941,13662,0,N,N,N,CP_Drtn,TT_Task,DT_FixedDUR2,TK_NotStart,DUKHCONP2BZ3PLTC8005,Pre-Commissioning & Testing of Plumbing Works,8178,304,304,200,0,3000,3000,200,0,0,0,,,,2014-05-17 08:00,2014-06-14 17:00,,2014-04-02 08:00,2014-04-30 17:00,2014-04-02 08:00,2014-04-30 17:00,2014-04-02 08:00,2014-04-30 17:00,2014-05-17 08:00,2014-06-14 17:00,,PT_Normal,,,,,iqBk+OEUT3Kd5BCug/y1AQ,,,,N,0,0,,,2013-02-16 15:53,2013-02-16 15:56,admin,admin
502569,6359,124944,13662,0,N,N,N,CP_Drtn,TT_Task,DT_FixedDUR2,TK_NotStart,DUKHCONP2BZ3PLRF4350,Installation of Rain water Pipes,8178,280,40,120,0,265.2,265.2,120,0,0,0,,,,2014-02-22 08:00,2014-03-10 17:00,,2014-01-11 08:00,2014-01-27 17:00,2014-01-11 08:00,2014-01-27 17:00,2014-01-11 08:00,2014-01-27 17:00,2014-02-22 08:00,2014-03-10 17:00,,PT_Normal,,,,,+phHtkNAR42+Vte0x86wcQ,,,,N,0,0,,,2013-02-16 15:53,2013-02-23 09:03,admin,admin
502570,6359,124945,13662,0,N,N,N,CP_Drtn,TT_Task,DT_FixedDUR2,TK_NotStart,DUKHCONP2BZ3PLGF4305,Installation of Plumbing pipes & testing,8178,40,0,160,0,1435.2,1435.2,160,0,0,0,,,,2013-09-21 08:00,2013-10-13 17:00,,2013-09-15 08:00,2013-10-07 17:00,2013-09-15 08:00,2013-10-07 17:00,2013-09-15 08:00,2013-10-07 17:00,2013-09-21 08:00,2013-10-13 17:00,,PT_Normal,,,,,k71p+M+VS6y+sxl4WFlWOw,,,,N,0,0,,,2013-02-16 15:53,2013-02-16 15:56,admin,admin
502571,6359,124945,13662,0,N,N,N,CP_Drtn,TT_Task,DT_FixedDUR2,TK_NotStart,DUKHCONP2BZ3PLGF4310,Installation of Drainage pipes &testing,8178,240,32,144,0,72,72,144,0,0,0,,,,2013-10-24 08:00,2013-11-13 17:00,,2013-09-17 08:00,2013-10-07 17:00,2013-09-17 08:00,2013-10-07 17:00,2013-09-17 08:00,2013-10-07 17:00,2013-10-24 08:00,2013-11-13 17:00,,PT_Normal,,,,,8YGi1P+sRRyiNqgU1utnmw,,,,N,0,0,,,2013-02-16 15:53,2013-02-16 15:56,admin,admin
502572,6359,124945,13662,0,N,N,N,CP_Drtn,TT_Task,DT_FixedDUR2,TK_NotStart,DUKHCONP2BZ3PLGF4320,Installation of Water Heater,8178,376,72,120,0,151.2,151.2,120,0,0,0,,,,2014-04-29 08:00,2014-05-15 17:00,,2014-03-05 08:00,2014-03-22 17:00,2014-03-05 08:00,2014-03-22 17:00,2014-03-05 08:00,2014-03-22 17:00,2014-04-29 08:00,2014-05-15 17:00,,PT_Normal,,,,,UlynoELGQ/S4QsV9UgO3Sg,,,,N,0,0,,,2013-02-16 15:53,2013-02-23 09:03,admin,admin
502573,6359,124945,13662,0,N,N,N,CP_Drtn,TT_Task,DT_FixedDUR2,TK_NotStart,DUKHCONP2BZ3PLUG4300,Drainage / Storm Pipes in Grade Slab,8178,16,0,160,0,182.4,182.4,160,0,0,0,,,,2013-06-06 08:00,2013-06-29 17:00,,2013-06-04 08:00,2013-06-26 17:00,2013-06-04 08:00,2013-06-26 17:00,2013-06-04 08:00,2013-06-26 17:00,2013-06-06 08:00,2013-06-29 17:00,,PT_Normal,,,,,3PElPEWzRZKuYI1AeTDtQw,,,,N,0,0,,,2013-02-16 15:53,2013-02-16 15:56,admin,admin
502574,6359,124945,13662,0,N,N,N,CP_Drtn,TT_Task,DT_FixedDUR2,TK_NotStart,DUKHCONP2BZ3PLGF4315,Sanitary Fittings & Accessories,8178,56,0,160,0,218.4,218.4,160,0,0,0,,,,2014-03-02 08:00,2014-03-24 17:00,,2014-02-22 08:00,2014-03-16 17:00,2014-02-22 08:00,2014-03-16 17:00,2014-02-22 08:00,2014-03-16 17:00,2014-03-02 08:00,2014-03-24 17:00,,PT_Normal,,,,,tEvPdIlwTSK4+MSkpprg7g,,,,N,0,0,,,2013-02-16 15:53,2013-02-16 15:56,admin,admin
502575,6359,124947,13662,0,N,N,N,CP_Drtn,TT_Task,DT_FixedDUR2,TK_NotStart,DUKHCONP2BZ3ELGF4000,Fixing of wall conduits & switch socket boxes,8178,40,0,160,0,594.8,594.8,160,0,0,0,,,,2013-09-21 08:00,2013-10-13 17:00,,2013-09-15 08:00,2013-10-07 17:00,2013-09-15 08:00,2013-10-07 17:00,2013-09-15 08:00,2013-10-07 17:00,2013-09-21 08:00,2013-10-13 17:00,,PT_Normal,,,,,zChqxi7ETL2RmeS9R/+gjA,,,,N,0,0,,,2013-02-16 15:53,2013-02-23 09:03,admin,admin
502576,6359,124947,13662,0,N,N,N,CP_Drtn,TT_Task,DT_FixedDUR2,TK_NotStart,DUKHCONP2BZ3ELGF4005,Cable tray & trunking installation,8178,104,0,160,0,2044.8,2044.8,160,0,0,0,,,,2013-11-23 08:00,2013-12-15 17:00,,2013-11-07 08:00,2013-11-30 17:00,2013-11-07 08:00,2013-11-30 17:00,2013-11-07 08:00,2013-11-30 17:00,2013-11-23 08:00,2013-12-15 17:00,,PT_Normal,,,,,Il+ws9wITZye41YtFUOZxQ,,,,N,0,0,,,2013-02-16 15:53,2013-02-16 15:56,admin,admin
502577,6359,124947,13662,0,N,N,N,CP_Drtn,TT_Task,DT_FixedDUR2,TK_NotStart,DUKHCONP2BZ3ELGF4010,Installation of wiring & Main Cabling,8178,104,56,160,0,414.8,414.8,160,0,0,0,,,,2013-12-01 08:00,2013-12-24 17:00,,2013-11-16 08:00,2013-12-08 17:00,2013-11-16 08:00,2013-12-08 17:00,2013-11-16 08:00,2013-12-08 17:00,2013-12-01 08:00,2013-12-24 17:00,,PT_Normal,,,,,AnnSDabySQa/Nrop121Rmw,,,,N,0,0,,,2013-02-16 15:53,2013-02-16 15:56,admin,admin
502578,6359,124947,13662,0,N,N,N,CP_Drtn,TT_Task,DT_FixedDUR2,TK_NotStart,DUKHCONP2BZ3ELGF4020,"Installation  of DBS,MCCB Accessories.",8178,120,0,160,0,170.4,170.4,160,0,0,0,,,,2014-01-28 08:00,2014-02-20 17:00,,2014-01-11 08:00,2014-02-02 17:00,2014-01-11 08:00,2014-02-02 17:00,2014-01-11 08:00,2014-02-02 17:00,2014-01-28 08:00,2014-02-20 17:00,,PT_Normal,,,,,G2uS28WPQg2fm/bTNHRXbA,,,,N,0,0,,,2013-02-16 15:53,2013-02-16 15:56,admin,admin
502579,6359,124947,13662,0,N,N,N,CP_Drtn,TT_Task,DT_FixedDUR2,TK_NotStart,DUKHCONP2BZ3ELGF4025,Installation of Lighting fixtures & Accessories,8178,120,0,160,0,395.6,395.6,160,0,0,0,,,,2014-02-09 08:00,2014-03-04 17:00,,2014-01-22 08:00,2014-02-15 17:00,2014-01-22 08:00,2014-02-15 17:00,2014-01-22 08:00,2014-02-15 17:00,2014-02-09 08:00,2014-03-04 17:00,,PT_Normal,,,,,edxNk1GWTJisCzuOnu0f2A,,,,N,0,0,,,2013-02-16 15:53,2013-02-16 15:56,admin,admin
502580,6359,124947,13662,0,N,N,N,CP_Drtn,TT_Task,DT_FixedDUR2,TK_NotStart,DUKHCONP2BZ3ELGF4015,Install. of CAMS & Fire Fighting Accessories,8178,104,0,160,0,1108.8,1108.8,160,0,0,0,,,,2014-03-08 08:00,2014-03-30 17:00,,2014-02-20 08:00,2014-03-15 17:00,2014-02-20 08:00,2014-03-15 17:00,2014-02-20 08:00,2014-03-15 17:00,2014-03-08 08:00,2014-03-30 17:00,,PT_Normal,,,,,iQYhWdSHRvip1/R20jwyNQ,,,,N,0,0,,,2013-02-16 15:53,2013-02-23 09:03,admin,admin
502581,6359,124947,13662,0,N,N,N,CP_Drtn,TT_Task,DT_FixedDUR2,TK_NotStart,DUKHCONP2BZ3ELGF4030,Installation of Telephone System,8178,144,8,160,0,152.4,152.4,160,0,0,0,,,,2014-02-13 08:00,2014-03-08 17:00,,2014-01-22 08:00,2014-02-15 17:00,2014-01-22 08:00,2014-02-15 17:00,2014-01-22 08:00,2014-02-15 17:00,2014-02-13 08:00,2014-03-08 17:00,,PT_Normal,,,,,tC67DRhzQtCG+4ompC7PyQ,,,,N,0,0,,,2013-02-16 15:53,2013-02-16 15:56,admin,admin
502582,6359,124948,13662,0,N,N,N,CP_Drtn,TT_Task,DT_FixedDUR2,TK_NotStart,DUKHCONP2BZ3ELRF4070,Installation of Isolator,8178,120,0,144,0,361.2,361.2,144,0,0,0,,,,2014-02-24 08:00,2014-03-16 17:00,,2014-02-05 08:00,2014-02-26 17:00,2014-02-05 08:00,2014-02-26 17:00,2014-02-05 08:00,2014-02-26 17:00,2014-02-24 08:00,2014-03-16 17:00,,PT_Normal,,,,,gumfPHT6RR+X5be0pC5vPg,,,,N,0,0,,,2013-02-16 15:53,2013-02-23 09:03,admin,admin
502583,6359,124948,13662,0,N,N,N,CP_Drtn,TT_Task,DT_FixedDUR2,TK_NotStart,DUKHCONP2BZ3ELRF4075,Installation of TV Dish Antenna,8178,120,8,160,0,188.4,188.4,160,0,0,0,,,,2014-03-08 08:00,2014-03-30 17:00,,2014-02-18 08:00,2014-03-12 17:00,2014-02-18 08:00,2014-03-12 17:00,2014-02-18 08:00,2014-03-12 17:00,2014-03-08 08:00,2014-03-30 17:00,,PT_Normal,,,,,iVjxxKfHTzKICxO0LAHiaQ,,,,N,0,0,,,2013-02-16 15:53,2013-02-16 15:56,admin,admin
502584,6359,124950,13662,0,N,N,N,CP_Drtn,TT_Task,DT_FixedDUR2,TK_NotStart,DUKHCONP2BZ3ACGF4600,Installation AC Pipes,8178,224,0,160,0,556.8,556.8,160,0,0,0,,,,2013-12-24 08:00,2014-01-15 17:00,,2013-11-20 08:00,2013-12-12 17:00,2013-11-20 08:00,2013-12-12 17:00,2013-11-20 08:00,2013-12-12 17:00,2013-12-24 08:00,2014-01-15 17:00,,PT_Normal,,,,,GYyKuPWmQjGNSY2Say61Sg,,,,N,0,0,,,2013-02-16 15:53,2013-02-23 09:03,admin,admin
502585,6359,124950,13662,0,N,N,N,CP_Drtn,TT_Task,DT_FixedDUR2,TK_NotStart,DUKHCONP2BZ3ACGF4605,Fixing of Ventilation Equipments,8178,128,0,200,0,85.2,85.2,200,0,0,0,,,,2014-02-06 08:00,2014-03-08 17:00,,2014-01-19 08:00,2014-02-17 17:00,2014-01-19 08:00,2014-02-17 17:00,2014-01-19 08:00,2014-02-17 17:00,2014-02-06 08:00,2014-03-08 17:00,,PT_Normal,,,,,9pw8gbB4QOueQsgLQpqMjQ,,,,N,0,0,,,2013-02-16 15:53,2013-02-16 15:56,admin,admin
502586,6359,124950,13662,0,N,N,N,CP_Drtn,TT_Task,DT_FixedDUR2,TK_NotStart,DUKHCONP2BZ3ACGF4610,Fixing of Split AC,8178,128,0,160,0,154.8,154.8,160,0,0,0,,,,2014-03-02 08:00,2014-03-24 17:00,,2014-02-10 08:00,2014-03-05 17:00,2014-02-10 08:00,2014-03-05 17:00,2014-02-10 08:00,2014-03-05 17:00,2014-03-02 08:00,2014-03-24 17:00,,PT_Normal,,,,,bEg2w3O2Rpiq8G4vR0tBiQ,,,,N,0,0,,,2013-02-16 15:53,2013-02-16 15:56,admin,admin
502587,6359,124951,13662,0,N,N,N,CP_Drtn,TT_Task,DT_FixedDUR2,TK_NotStart,DUKHCONP2BZ3ACRF4630,Installation of Refrigerant Pipes,8178,440,40,160,0,17.2,17.2,160,0,0,0,,,,2014-02-24 08:00,2014-03-18 17:00,,2013-12-21 08:00,2014-01-12 17:00,2013-12-21 08:00,2014-01-12 17:00,2013-12-21 08:00,2014-01-12 17:00,2014-02-24 08:00,2014-03-18 17:00,,PT_Normal,,,,,+ZP/MOqlRe678YmTFFXYJA,,,,N,0,0,,,2013-02-16 15:53,2013-02-23 09:03,admin,admin
502588,6359,124951,13662,0,N,N,N,CP_Drtn,TT_Task,DT_FixedDUR2,TK_NotStart,DUKHCONP2BZ3ACRF4635,Installation of Condensing Unit,8178,128,8,160,0,130.8,130.8,160,0,0,0,,,,2014-03-08 08:00,2014-03-30 17:00,,2014-02-17 08:00,2014-03-11 17:00,2014-02-17 08:00,2014-03-11 17:00,2014-02-17 08:00,2014-03-11 17:00,2014-03-08 08:00,2014-03-30 17:00,,PT_Normal,,,,,g8avUjWqTqKzMvGck3/qUw,,,,N,0,0,,,2013-02-16 15:53,2013-02-16 15:56,admin,admin
502589,6359,124954,13662,0,N,N,N,CP_Drtn,TT_Task,DT_FixedDUR2,TK_NotStart,DUKHCONP2BZ3STGF2000,Column-Rebar & Formwork,8165,16,0,160,0,1524.25,1524.25,160,0,0,0,,,,2013-07-02 08:00,2013-07-24 17:00,,2013-06-30 08:00,2013-07-22 17:00,2013-06-30 08:00,2013-07-22 17:00,2013-06-30 08:00,2013-07-22 17:00,2013-07-02 08:00,2013-07-24 17:00,,PT_Normal,,,,,E8TIKBSWQhil3W/1DxZohA,,,,N,0,0,,,2013-02-16 15:53,2013-02-16 15:56,admin,admin
502590,6359,124954,13662,0,N,N,N,CP_Drtn,TT_Task,DT_FixedDUR2,TK_NotStart,DUKHCONP2BZ3STGF2005,Column-Concrete,8167,16,0,120,0,105,105,120,0,0,0,,,,2013-07-13 08:00,2013-07-29 17:00,,2013-07-10 08:00,2013-07-27 17:00,2013-07-10 08:00,2013-07-27 17:00,2013-07-10 08:00,2013-07-27 17:00,2013-07-13 08:00,2013-07-29 17:00,,PT_Normal,,,,,5Zjyfmh6QraZCdpYmUA9FQ,,,,N,0,0,,,2013-02-16 15:53,2013-02-16 15:56,admin,admin
502591,6359,124954,13662,0,N,N,N,CP_Drtn,TT_Task,DT_FixedDUR2,TK_NotStart,DUKHCONP2BZ3STGF2010,"Beam, Stairs ,Slab-Rebar & Formwork",8165,16,0,200,0,6076,6076,200,0,0,0,,,,2013-07-21 08:00,2013-08-21 17:00,,2013-07-18 08:00,2013-08-19 17:00,2013-07-18 08:00,2013-08-19 17:00,2013-07-18 08:00,2013-08-19 17:00,2013-07-21 08:00,2013-08-21 17:00,,PT_Normal,,,,,fOr9mt13RWGPGieaU+hYwA,,,,N,0,0,,,2013-02-16 15:53,2013-02-16 15:56,admin,admin
502592,6359,124954,13662,0,N,N,N,CP_Drtn,TT_Task,DT_FixedDUR2,TK_NotStart,DUKHCONP2BZ3STGF2015,"Beam, Stairs ,Slab-Concrete",8167,16,0,120,0,1302,1302,120,0,0,0,,,,2013-08-06 08:00,2013-08-26 17:00,,2013-08-04 08:00,2013-08-24 17:00,2013-08-04 08:00,2013-08-24 17:00,2013-08-04 08:00,2013-08-24 17:00,2013-08-06 08:00,2013-08-26 17:00,,PT_Normal,,,,,EQXXQABqTFayClHFJnnG3A,,,,N,0,0,,,2013-02-16 15:53,2013-02-16 15:56,admin,admin
502593,6359,124955,13662,0,N,N,N,CP_Drtn,TT_Task,DT_FixedDUR2,TK_NotStart,DUKHCONP2BZ3STRF2060,Construction of Parapets,8165,152,0,160,0,521.5,521.5,160,0,0,0,,,,2013-10-13 08:00,2013-11-06 17:00,,2013-09-21 08:00,2013-10-13 17:00,2013-09-21 08:00,2013-10-13 17:00,2013-09-21 08:00,2013-10-13 17:00,2013-10-13 08:00,2013-11-06 17:00,,PT_Normal,,,,,EN+IhWHSQk6p8u5UJ5pz5A,,,,N,0,0,,,2013-02-16 15:53,2013-02-16 15:56,admin,admin
502594,6359,124955,13662,0,N,N,N,CP_Drtn,TT_Task,DT_FixedDUR2,TK_NotStart,DUKHCONP2BZ3STRF2065,Construction of up stands/Plinth,8166,208,0,160,0,84,84,160,0,0,0,,,,2013-10-30 08:00,2013-11-21 17:00,,2013-09-28 08:00,2013-10-22 17:00,2013-09-28 08:00,2013-10-22 17:00,2013-09-28 08:00,2013-10-22 17:00,2013-10-30 08:00,2013-11-21 17:00,,PT_Normal,,,,,dePhFGe8S16GNAodmslZLg,,,,N,0,0,,,2013-02-16 15:53,2013-02-16 15:56,admin,admin
502595,6359,124957,13662,0,N,N,N,CP_Drtn,TT_Task,DT_FixedDUR2,TK_NotStart,DUKHCONP2BZ3STUG1005,Footing Antitermite,8178,0,0,160,0,902,902,160,0,0,0,,,,2013-03-23 08:00,2013-04-14 17:00,,2013-03-23 08:00,2013-04-14 17:00,2013-03-23 08:00,2013-04-14 17:00,2013-03-23 08:00,2013-04-14 17:00,2013-03-23 08:00,2013-04-14 17:00,,PT_Normal,,,,,x8TSqWnQRy6deFjYbCF64g,,,,N,0,0,,,2013-02-16 15:53,2013-02-16 15:56,admin,admin
502596,6359,124957,13662,0,N,N,N,CP_Drtn,TT_Task,DT_FixedDUR2,TK_NotStart,DUKHCONP2BZ3STUG1010,Footing Blinding,8163,0,0,160,0,29.75,29.75,160,0,0,0,,,,2013-03-25 08:00,2013-04-16 17:00,,2013-03-25 08:00,2013-04-16 17:00,2013-03-25 08:00,2013-04-16 17:00,2013-03-25 08:00,2013-04-16 17:00,2013-03-25 08:00,2013-04-16 17:00,,PT_Normal,,,,,q6mcD2zcT6iFthAbYvwGog,,,,N,0,0,,,2013-02-16 15:53,2013-02-16 15:56,admin,admin
502597,6359,124957,13662,0,N,N,N,CP_Drtn,TT_Task,DT_FixedDUR2,TK_NotStart,DUKHCONP2BZ3STUG1015,Footing Waterproofing & Screed,8164,0,0,160,0,483,483,160,0,0,0,,,,2013-03-31 08:00,2013-04-22 17:00,,2013-03-31 08:00,2013-04-22 17:00,2013-03-31 08:00,2013-04-22 17:00,2013-03-31 08:00,2013-04-22 17:00,2013-03-31 08:00,2013-04-22 17:00,,PT_Normal,,,,,2/20u5BkSCyCBEskuVaLgQ,,,,N,0,0,,,2013-02-16 15:53,2013-02-16 15:56,admin,admin
502598,6359,124957,13662,0,N,N,N,CP_Drtn,TT_Task,DT_FixedDUR2,TK_NotStart,DUKHCONP2BZ3STUG1020,Construction of foundations,8165,0,0,160,0,1335.25,1335.25,160,0,0,0,,,,2013-04-09 08:00,2013-05-01 17:00,,2013-04-09 08:00,2013-05-01 17:00,2013-04-09 08:00,2013-05-01 17:00,2013-04-09 08:00,2013-05-01 17:00,2013-04-09 08:00,2013-05-01 17:00,,PT_Normal,,,,,n17McgzZTlWVSQVBptjCzw,,,,N,0,0,,,2013-02-16 15:53,2013-02-16 15:56,admin,admin
502599,6359,124957,13662,0,N,N,N,CP_Drtn,TT_Task,DT_FixedDUR2,TK_NotStart,DUKHCONP2BZ3STUG1025,Construction of neck of columns,8165,0,0,160,0,1389.5,1389.5,160,0,0,0,,,,2013-04-18 08:00,2013-05-11 17:00,,2013-04-18 08:00,2013-05-11 17:00,2013-04-18 08:00,2013-05-11 17:00,2013-04-18 08:00,2013-05-11 17:00,2013-04-18 08:00,2013-05-11 17:00,,PT_Normal,,,,,zttn9yXpR2qovnlYr0xUsg,,,,N,0,0,,,2013-02-16 15:53,2013-02-16 15:56,admin,admin
502600,6359,124957,13662,0,N,N,N,CP_Drtn,TT_Task,DT_FixedDUR2,TK_NotStart,DUKHCONP2BZ3STUG1030,Waterproofing Footing & Neck Column,8178,0,0,160,0,125.5,125.5,160,0,0,0,,,,2013-04-28 08:00,2013-05-20 17:00,,2013-04-28 08:00,2013-05-20 17:00,2013-04-28 08:00,2013-05-20 17:00,2013-04-28 08:00,2013-05-20 17:00,2013-04-28 08:00,2013-05-20 17:00,,PT_Normal,,,,,elF0O4yZSAqv01kBlXwQ5g,,,,N,0,0,,,2013-02-16 15:53,2013-02-16 15:56,admin,admin
502601,6359,124957,13662,0,N,N,N,CP_Drtn,TT_Task,DT_FixedDUR2,TK_NotStart,DUKHCONP2BZ3STUG1035,Backfilling Upto Grade Beam Bottom,8177,0,0,160,0,822,822,160,660,0,660,,,,2013-05-09 08:00,2013-06-01 17:00,,2013-05-09 08:00,2013-06-01 17:00,2013-05-09 08:00,2013-06-01 17:00,2013-05-09 08:00,2013-06-01 17:00,2013-05-09 08:00,2013-06-01 17:00,,PT_Normal,,,,,InCs1/ZCTTWo32DGQ00pMw,,,,N,0,0,,,2013-02-16 15:53,2013-02-16 15:56,admin,admin
502602,6359,124957,13662,0,N,N,N,CP_Drtn,TT_Task,DT_FixedDUR2,TK_NotStart,DUKHCONP2BZ3STUG1040,Construction of Grade Beams,8163,0,0,200,0,2325.75,2325.75,200,0,0,0,,,,2013-05-21 08:00,2013-06-18 17:00,,2013-05-21 08:00,2013-06-18 17:00,2013-05-21 08:00,2013-06-18 17:00,2013-05-21 08:00,2013-06-18 17:00,2013-05-21 08:00,2013-06-18 17:00,,PT_Normal,,,,,eifWcIzGTsqP66dTaWqcSQ,,,,N,0,0,,,2013-02-16 15:53,2013-02-16 15:56,admin,admin
502603,6359,124957,13662,0,N,N,N,CP_Drtn,TT_Task,DT_FixedDUR2,TK_NotStart,DUKHCONP2BZ3STUG1045,Construction of slab on grade,8163,16,0,200,0,1541.75,1541.75,200,0,0,0,,,,2013-06-15 08:00,2013-07-13 17:00,,2013-06-12 08:00,2013-07-10 17:00,2013-06-12 08:00,2013-07-10 17:00,2013-06-12 08:00,2013-07-10 17:00,2013-06-15 08:00,2013-07-13 17:00,,PT_Normal,,,,,ofYDO67nTQiG/p5NBqNHog,,,,N,0,0,,,2013-02-16 15:53,2013-02-16 15:56,admin,admin
502604,6359,124957,13662,0,N,N,N,CP_Drtn,TT_Task,DT_FixedDUR2,TK_NotStart,DUKHCONP2BZ3STUG1000,Footing Excavation,8177,0,0,200,0,476,476,200,224,0,224,,,,2013-03-11 08:00,2013-04-08 17:00,,2013-03-11 08:00,2013-04-08 17:00,2013-03-11 08:00,2013-04-08 17:00,2013-03-11 08:00,2013-04-08 17:00,2013-03-11 08:00,2013-04-08 17:00,,PT_Normal,,,,,9y/zk/U3Q8CTh59im4Hs1Q,,,,N,0,0,,,2013-02-16 15:53,2013-02-16 15:56,admin,admin
502605,6359,124960,13662,0,N,N,N,CP_Drtn,TT_Task,DT_FixedDUR2,TK_NotStart,DUKHCONP2BZ3ARGF3000,Block work,8168,16,0,200,0,5700,5700,200,0,0,0,,,,2013-09-03 08:00,2013-10-01 17:00,,2013-09-01 08:00,2013-09-29 17:00,2013-09-01 08:00,2013-09-29 17:00,2013-09-01 08:00,2013-09-29 17:00,2013-09-03 08:00,2013-10-01 17:00,,PT_Normal,,,,,BZfE+D+rTsW+YH0VJA3gTw,,,,N,0,0,,,2013-02-16 15:53,2013-02-16 15:56,admin,admin
502606,6359,124960,13662,0,N,N,N,CP_Drtn,TT_Task,DT_FixedDUR2,TK_NotStart,DUKHCONP2BZ3ARGF3005,Plastering work,8169,40,0,200,0,2850,2850,200,0,0,0,,,,2013-09-26 08:00,2013-10-27 17:00,,2013-09-21 08:00,2013-10-21 17:00,2013-09-21 08:00,2013-10-21 17:00,2013-09-21 08:00,2013-10-21 17:00,2013-09-26 08:00,2013-10-27 17:00,,PT_Normal,,,,,h/wBWZHrR+OZW5dF+j98vg,,,,N,0,0,,,2013-02-16 15:53,2013-02-16 15:56,admin,admin
502607,6359,124960,13662,0,N,N,N,CP_Drtn,TT_Task,DT_FixedDUR2,TK_NotStart,DUKHCONP2BZ3ARGF3010,Flooring screed,8164,280,80,160,0,634.25,634.25,160,0,0,0,,,,2013-11-14 08:00,2013-12-07 17:00,,2013-10-02 08:00,2013-10-27 17:00,2013-10-02 08:00,2013-10-27 17:00,2013-10-02 08:00,2013-10-27 17:00,2013-11-14 08:00,2013-12-07 17:00,,PT_Normal,,,,,HZxwAT/vRMOa7RUZJYqaMw,,,,N,0,0,,,2013-02-16 15:53,2013-02-16 15:56,admin,admin
502608,6359,124960,13662,0,N,N,N,CP_Drtn,TT_Task,DT_FixedDUR2,TK_NotStart,DUKHCONP2BZ3ARGF3015,Wet area waterproofing & Protection Screed,8178,136,0,160,0,87,87,160,0,0,0,,,,2013-10-27 08:00,2013-11-18 17:00,,2013-10-05 08:00,2013-10-29 17:00,2013-10-05 08:00,2013-10-29 17:00,2013-10-05 08:00,2013-10-29 17:00,2013-10-27 08:00,2013-11-18 17:00,,PT_Normal,,,,,DkfXPFwTSIiniQS3gH4c2w,,,,N,0,0,,,2013-02-16 15:53,2013-02-16 15:56,admin,admin
502609,6359,124960,13662,0,N,N,N,CP_Drtn,TT_Task,DT_FixedDUR2,TK_NotStart,DUKHCONP2BZ3ARGF3030,Paint First coat,8178,48,0,160,0,1815,1815,160,0,0,0,,,,2013-12-01 08:00,2013-12-24 17:00,,2013-11-24 08:00,2013-12-16 17:00,2013-11-24 08:00,2013-12-16 17:00,2013-11-24 08:00,2013-12-16 17:00,2013-12-01 08:00,2013-12-24 17:00,,PT_Normal,,,,,7zsvn6MfQr+gNM1/fOD8UQ,,,,N,0,0,,,2013-02-16 15:53,2013-02-16 15:56,admin,admin
502610,6359,124960,13662,0,N,N,N,CP_Drtn,TT_Task,DT_FixedDUR2,TK_NotStart,DUKHCONP2BZ3ARGF3020,Ceramic Wall Tiling,8170,136,0,120,0,1012.5,1012.5,120,0,0,0,,,,2013-11-14 08:00,2013-12-01 17:00,,2013-10-26 08:00,2013-11-11 17:00,2013-10-26 08:00,2013-11-11 17:00,2013-10-26 08:00,2013-11-11 17:00,2013-11-14 08:00,2013-12-01 17:00,,PT_Normal,,,,,RwkD9PoCT0OhEgf63/+avw,,,,N,0,0,,,2013-02-16 15:53,2013-02-16 15:56,admin,admin
502611,6359,124960,13662,0,N,N,N,CP_Drtn,TT_Task,DT_FixedDUR2,TK_NotStart,DUKHCONP2BZ3ARGF3025,Porcelain Tile flooring,8170,136,88,160,0,1030.25,1030.25,160,0,0,0,,,,2013-12-01 08:00,2013-12-24 17:00,,2013-11-11 08:00,2013-12-03 17:00,2013-11-11 08:00,2013-12-03 17:00,2013-11-11 08:00,2013-12-03 17:00,2013-12-01 08:00,2013-12-24 17:00,,PT_Normal,,,,,W3bi2qGXRK+8QHe7y5PqsA,,,,N,0,0,,,2013-02-16 15:53,2013-02-16 15:56,admin,admin
502612,6359,124960,13662,0,N,N,N,CP_Drtn,TT_Task,DT_FixedDUR2,TK_NotStart,DUKHCONP2BZ3ARGF3040,Cobble Tile flooring,8170,184,24,120,0,300,300,120,0,0,0,,,,2014-02-26 08:00,2014-03-15 17:00,,2014-01-29 08:00,2014-02-16 17:00,2014-01-29 08:00,2014-02-16 17:00,2014-01-29 08:00,2014-02-16 17:00,2014-02-26 08:00,2014-03-15 17:00,,PT_Normal,,,,,BxViF3JPSouVm3d7WpgX8Q,,,,N,0,0,,,2013-02-16 15:53,2013-02-16 15:56,admin,admin
502613,6359,124960,13662,0,N,N,N,CP_Drtn,TT_Task,DT_FixedDUR2,TK_NotStart,DUKHCONP2BZ3ARGF3045,Fixing of Suspension systems,8178,48,0,120,0,653.5,653.5,120,0,0,0,,,,2013-12-24 08:00,2014-01-09 17:00,,2013-12-16 08:00,2014-01-02 17:00,2013-12-16 08:00,2014-01-02 17:00,2013-12-16 08:00,2014-01-02 17:00,2013-12-24 08:00,2014-01-09 17:00,,PT_Normal,,,,,V3O1UZoHTluAd7qQIIohhw,,,,N,0,0,,,2013-02-16 15:53,2013-02-16 15:56,admin,admin
502614,6359,124960,13662,0,N,N,N,CP_Drtn,TT_Task,DT_FixedDUR2,TK_NotStart,DUKHCONP2BZ3ARGF3060,Gypsum board false ceiling,8178,48,0,160,0,653.5,653.5,160,0,0,0,,,,2014-01-09 08:00,2014-02-01 17:00,,2014-01-02 08:00,2014-01-25 17:00,2014-01-02 08:00,2014-01-25 17:00,2014-01-02 08:00,2014-01-25 17:00,2014-01-09 08:00,2014-02-01 17:00,,PT_Normal,,,,,5pqy/m9RT0CwUoAI6WKP1Q,,,,N,0,0,,,2013-02-16 15:53,2013-02-16 15:56,admin,admin
502615,6359,124960,13662,0,N,N,N,CP_Drtn,TT_Task,DT_FixedDUR2,TK_NotStart,DUKHCONP2BZ3ARGF3065,Wooden door,8178,136,0,120,0,198,198,120,0,0,0,,,,2014-02-12 08:00,2014-03-01 17:00,,2014-01-22 08:00,2014-02-08 17:00,2014-01-22 08:00,2014-02-08 17:00,2014-01-22 08:00,2014-02-08 17:00,2014-02-12 08:00,2014-03-01 17:00,,PT_Normal,,,,,o0lELTOAScSQZwCWmxbevQ,,,,N,0,0,,,2013-02-16 15:53,2013-02-16 15:56,admin,admin
502616,6359,124960,13662,0,N,N,N,CP_Drtn,TT_Task,DT_FixedDUR2,TK_NotStart,DUKHCONP2BZ3ARGF3080,Aluminum windows,8178,392,88,144,0,132,132,144,0,0,0,,,,2014-04-08 08:00,2014-04-28 17:00,,2014-02-09 08:00,2014-03-02 17:00,2014-02-09 08:00,2014-03-02 17:00,2014-02-09 08:00,2014-03-02 17:00,2014-04-08 08:00,2014-04-28 17:00,,PT_Normal,,,,,lmY+GWN3SvSZI/REjjlQnw,,,,N,0,0,,,2013-02-16 15:53,2013-02-16 15:56,admin,admin
502617,6359,124960,13662,0,N,N,N,CP_Drtn,TT_Task,DT_FixedDUR2,TK_NotStart,DUKHCONP2BZ3ARGF3075,Carpentry & Joinery Works,8178,136,0,144,0,528,528,144,0,0,0,,,,2014-02-18 08:00,2014-03-10 17:00,,2014-01-28 08:00,2014-02-18 17:00,2014-01-28 08:00,2014-02-18 17:00,2014-01-28 08:00,2014-02-18 17:00,2014-02-18 08:00,2014-03-10 17:00,,PT_Normal,,,,,mMbSdzruTbKAXeog7CujyQ,,,,N,0,0,,,2013-02-16 15:53,2013-02-16 15:56,admin,admin
502618,6359,124960,13662,0,N,N,N,CP_Drtn,TT_Task,DT_FixedDUR2,TK_NotStart,DUKHCONP2BZ3ARGF3090,Installation of Granite Counter Top,8171,64,0,120,0,99,99,120,0,0,0,,,,2014-03-08 08:00,2014-03-24 17:00,,2014-02-26 08:00,2014-03-15 17:00,2014-02-26 08:00,2014-03-15 17:00,2014-02-26 08:00,2014-03-15 17:00,2014-03-08 08:00,2014-03-24 17:00,,PT_Normal,,,,,9EyGHY/KTHKqItY5XieKYw,,,,N,0,0,,,2013-02-16 15:53,2013-02-16 15:56,admin,admin
502619,6359,124960,13662,0,N,N,N,CP_Drtn,TT_Task,DT_FixedDUR2,TK_NotStart,DUKHCONP2BZ3ARGF3095,Final Painting,8178,304,0,200,0,1815,1815,200,0,0,0,,,,2014-04-17 08:00,2014-05-15 17:00,,2014-03-04 08:00,2014-04-01 17:00,2014-03-04 08:00,2014-04-01 17:00,2014-03-04 08:00,2014-04-01 17:00,2014-04-17 08:00,2014-05-15 17:00,,PT_Normal,,,,,b0HCqQVmSHOfNSCv8hM+aA,,,,N,0,0,,,2013-02-16 15:53,2013-02-16 15:56,admin,admin
502620,6359,124960,13662,0,N,N,N,CP_Drtn,TT_Task,DT_FixedDUR2,TK_NotStart,DUKHCONP2BZ3ARGF3035,Slate Tile Flooring & Skirting,8170,104,0,144,0,1575,1575,144,0,0,0,,,,2014-01-26 08:00,2014-02-16 17:00,,2014-01-11 08:00,2014-01-30 17:00,2014-01-11 08:00,2014-01-30 17:00,2014-01-11 08:00,2014-01-30 17:00,2014-01-26 08:00,2014-02-16 17:00,,PT_Normal,,,,,QiaFEnfnQbCCcTz8xE4kxA,,,,N,0,0,,,2013-02-16 15:53,2013-02-16 15:56,admin,admin
502621,6359,124962,13662,0,N,N,N,CP_Drtn,TT_Task,DT_FixedDUR2,TK_NotStart,DUKHCONP2BZ3AREL3665,External Plastering,8169,240,0,200,0,4012.5,4012.5,200,0,0,0,,,,2014-01-20 08:00,2014-02-18 17:00,,2013-12-15 08:00,2014-01-13 17:00,2013-12-15 08:00,2014-01-13 17:00,2013-12-15 08:00,2014-01-13 17:00,2014-01-20 08:00,2014-02-18 17:00,,PT_Normal,,,,,6y2rX0EpQ1uld2aSmAJOHQ,,,,N,0,0,,,2013-02-16 15:53,2013-02-16 15:56,admin,admin
502622,6359,124962,13662,0,N,N,N,CP_Drtn,TT_Task,DT_FixedDUR2,TK_NotStart,DUKHCONP2BZ3AREL3680,External Painting,8178,400,40,160,0,1408,1408,160,0,0,0,,,,2014-03-08 08:00,2014-03-30 17:00,,2014-01-07 08:00,2014-01-29 17:00,2014-01-07 08:00,2014-01-29 17:00,2014-01-07 08:00,2014-01-29 17:00,2014-03-08 08:00,2014-03-30 17:00,,PT_Normal,,,,,RZxtldESQ2GcLWWbDlQc1w,,,,N,0,0,,,2013-02-16 15:53,2013-02-16 15:56,admin,admin
502623,6359,124963,13662,0,N,N,N,CP_Drtn,TT_Task,DT_FixedDUR2,TK_NotStart,DUKHCONP2BZ3ARRF3625,Laying of Pitched Roof,8174,240,0,200,0,256,256,200,0,0,0,,,,2013-12-05 08:00,2014-01-04 17:00,,2013-10-31 08:00,2013-11-28 17:00,2013-10-31 08:00,2013-11-28 17:00,2013-10-31 08:00,2013-11-28 17:00,2013-12-05 08:00,2014-01-04 17:00,,PT_Normal,,,,,oDnBsw4cR0u3RbiTMF5Gvg,,,,N,0,0,,,2013-02-16 15:53,2013-02-16 15:56,admin,admin
502624,6359,124963,13662,0,N,N,N,CP_Drtn,TT_Task,DT_FixedDUR2,TK_NotStart,DUKHCONP2BZ3ARRF3630,Leveling Screed for Waterproofing,8164,240,0,144,0,195.5,195.5,144,0,0,0,,,,2013-12-21 08:00,2014-01-09 17:00,,2013-11-14 08:00,2013-12-04 17:00,2013-11-14 08:00,2013-12-04 17:00,2013-11-14 08:00,2013-12-04 17:00,2013-12-21 08:00,2014-01-09 17:00,,PT_Normal,,,,,Tg4cCa3SQ8O74He9yWeloQ,,,,N,0,0,,,2013-02-16 15:53,2013-02-16 15:56,admin,admin
502625,6359,124963,13662,0,N,N,N,CP_Drtn,TT_Task,DT_FixedDUR2,TK_NotStart,DUKHCONP2BZ3ARRF3635,Laying of Waterproofing Membrane,8178,240,0,144,0,722.25,722.25,144,0,0,0,,,,2013-12-26 08:00,2014-01-15 17:00,,2013-11-20 08:00,2013-12-10 17:00,2013-11-20 08:00,2013-12-10 17:00,2013-11-20 08:00,2013-12-10 17:00,2013-12-26 08:00,2014-01-15 17:00,,PT_Normal,,,,,F9JlNJ2vTi6G5O6Ruv6HxQ,,,,N,0,0,,,2013-02-16 15:53,2013-02-16 15:56,admin,admin
502626,6359,124963,13662,0,N,N,N,CP_Drtn,TT_Task,DT_FixedDUR2,TK_NotStart,DUKHCONP2BZ3ARRF3640,Installation of Insulation & Protection,8178,240,0,144,0,343.75,343.75,144,0,0,0,,,,2013-12-31 08:00,2014-01-20 17:00,,2013-11-25 08:00,2013-12-15 17:00,2013-11-25 08:00,2013-12-15 17:00,2013-11-25 08:00,2013-12-15 17:00,2013-12-31 08:00,2014-01-20 17:00,,PT_Normal,,,,,Po1E1lW/Q2679y7+nu5VaQ,,,,N,0,0,,,2013-02-16 15:53,2013-02-16 15:56,admin,admin
502627,6359,124963,13662,0,N,N,N,CP_Drtn,TT_Task,DT_FixedDUR2,TK_NotStart,DUKHCONP2BZ3ARRF3645,Lime Stone Chips & Paving slab Installation,8170,240,0,144,0,344.5,344.5,144,0,0,0,,,,2014-01-08 08:00,2014-01-28 17:00,,2013-12-03 08:00,2013-12-24 17:00,2013-12-03 08:00,2013-12-24 17:00,2013-12-03 08:00,2013-12-24 17:00,2014-01-08 08:00,2014-01-28 17:00,,PT_Normal,,,,,SmKBrUkXQnqa6lp+qfxGjA,,,,N,0,0,,,2013-02-16 15:53,2013-02-16 15:56,admin,admin
502628,6359,124963,13662,0,N,N,N,CP_Drtn,TT_Task,DT_FixedDUR2,TK_NotStart,DUKHCONP2BZ3ARRF3660,Installation of Access Ladder,8178,512,40,160,0,132,132,160,0,0,0,,,,2014-02-24 08:00,2014-03-18 17:00,,2013-12-09 08:00,2014-01-01 17:00,2013-12-09 08:00,2014-01-01 17:00,2013-12-09 08:00,2014-01-01 17:00,2014-02-24 08:00,2014-03-18 17:00,,PT_Normal,,,,,YH3MRPweQyy23tRvNRrQrg,,,,N,0,0,,,2013-02-16 15:53,2013-02-16 15:56,admin,admin
502629,6359,124965,13662,0,N,N,N,CP_Drtn,TT_Task,DT_FixedDUR2,TK_NotStart,DUKHCONP2BZ3MSEX5020,Construction Entrance Ramp,8164,240,0,160,0,436,436,160,0,0,0,,,,2013-12-14 08:00,2014-01-06 17:00,,2013-11-09 08:00,2013-12-01 17:00,2013-11-09 08:00,2013-12-01 17:00,2013-11-09 08:00,2013-12-01 17:00,2013-12-14 08:00,2014-01-06 17:00,,PT_Normal,,,,,5Lq+Xli0RK27PZ7msyqzLQ,,,,N,0,0,,,2013-02-16 15:53,2013-02-16 15:56,admin,admin
502630,6359,124965,13662,0,N,N,N,CP_Drtn,TT_Task,DT_FixedDUR2,TK_NotStart,DUKHCONP2BZ3MSEX5025,SS.Handrails and Balustrades,8178,240,0,160,0,136,136,160,0,0,0,,,,2014-01-07 08:00,2014-01-29 17:00,,2013-12-02 08:00,2013-12-25 17:00,2013-12-02 08:00,2013-12-25 17:00,2013-12-02 08:00,2013-12-25 17:00,2014-01-07 08:00,2014-01-29 17:00,,PT_Normal,,,,,9+Q0YnDKTNyaNkEVc8RXQg,,,,N,0,0,,,2013-02-16 15:53,2013-02-16 15:56,admin,admin
502631,6359,124965,13662,0,N,N,N,CP_Drtn,TT_Task,DT_FixedDUR2,TK_NotStart,DUKHCONP2BZ3MSEX5015,Construction of grease Trap,8178,288,0,160,0,168,168,160,0,0,0,,,,2013-12-22 08:00,2014-01-13 17:00,,2013-11-09 08:00,2013-12-01 17:00,2013-11-09 08:00,2013-12-01 17:00,2013-11-09 08:00,2013-12-01 17:00,2013-12-22 08:00,2014-01-13 17:00,,PT_Normal,,,,,+ki8jBFXQoCS6sXqDa9WUg,,,,N,0,0,,,2013-02-16 15:53,2013-02-16 15:56,admin,admin
502632,6359,124965,13662,0,N,N,N,CP_Drtn,TT_Task,DT_FixedDUR2,TK_NotStart,DUKHCONP2BZ3MSEX5000,Construction of Manholes,8172,208,0,200,0,132,132,200,0,0,0,,,,2013-11-05 08:00,2013-12-03 17:00,,2013-10-03 08:00,2013-11-03 17:00,2013-10-03 08:00,2013-11-03 17:00,2013-10-03 08:00,2013-11-03 17:00,2013-11-05 08:00,2013-12-03 17:00,,PT_Normal,,,,,SxFkA3TsTLKZgbjekl4gow,,,,N,0,0,,,2013-02-16 15:53,2013-02-16 15:56,admin,admin
502633,6359,124965,13662,0,N,N,N,CP_Drtn,TT_Task,DT_FixedDUR2,TK_NotStart,DUKHCONP2BZ3MSEX5005,"Construction  of Soak pit, Chambers",8172,288,0,200,0,66,66,200,0,0,0,,,,2013-12-01 08:00,2013-12-30 17:00,,2013-10-20 08:00,2013-11-17 17:00,2013-10-20 08:00,2013-11-17 17:00,2013-10-20 08:00,2013-11-17 17:00,2013-12-01 08:00,2013-12-30 17:00,,PT_Normal,,,,,vqmH9iwnRZybcLwED9R9ow,,,,N,0,0,,,2013-02-16 15:53,2013-02-16 15:56,admin,admin
502634,6359,124965,13662,0,N,N,N,CP_Drtn,TT_Task,DT_FixedDUR2,TK_NotStart,DUKHCONP2BZ3MSEX5055,Installation Steel Door,8178,240,0,160,0,180,180,160,0,0,0,,,,2013-12-26 08:00,2014-01-18 17:00,,2013-11-20 08:00,2013-12-12 17:00,2013-11-20 08:00,2013-12-12 17:00,2013-11-20 08:00,2013-12-12 17:00,2013-12-26 08:00,2014-01-18 17:00,,PT_Normal,,,,,h3mfJ5WwTMKRtD3QClMhaA,,,,N,0,0,,,2013-02-16 15:53,2013-02-16 15:56,admin,admin
502635,6359,124965,13662,0,N,N,N,CP_Drtn,TT_Task,DT_FixedDUR2,TK_NotStart,DUKHCONP2BZ3MSEX5010,Telephone cable laying,8177,288,144,200,0,500,500,200,0,0,0,,,,2014-01-14 08:00,2014-02-12 17:00,,2013-12-02 08:00,2013-12-31 17:00,2013-12-02 08:00,2013-12-31 17:00,2013-12-02 08:00,2013-12-31 17:00,2014-01-14 08:00,2014-02-12 17:00,,PT_Normal,,,,,XCn7Gcf7TGqdsxaHVA7SGQ,,,,N,0,0,,,2013-02-16 15:53,2013-02-16 15:56,admin,admin
502636,6359,124966,13662,0,N,N,N,CP_Drtn,TT_Task,DT_FixedDUR2,TK_NotStart,DUKHCONP2BZ3WEEX5035,Construction of Raft,8167,120,0,200,0,210,210,200,0,0,0,,,,2013-12-08 08:00,2014-01-06 17:00,,2013-11-20 08:00,2013-12-19 17:00,2013-11-20 08:00,2013-12-19 17:00,2013-11-20 08:00,2013-12-19 17:00,2013-12-08 08:00,2014-01-06 17:00,,PT_Normal,,,,,R28pt64wQOW5gNcb6aF2AQ,,,,N,0,0,,,2013-02-16 15:53,2013-02-16 15:56,admin,admin
502637,6359,124966,13662,0,N,N,N,CP_Drtn,TT_Task,DT_FixedDUR2,TK_NotStart,DUKHCONP2BZ3WEEX5040,Block works & Plastering,8168,280,0,200,0,692,692,200,0,0,0,,,,2014-01-11 08:00,2014-02-08 17:00,,2013-11-30 08:00,2013-12-29 17:00,2013-11-30 08:00,2013-12-29 17:00,2013-11-30 08:00,2013-12-29 17:00,2014-01-11 08:00,2014-02-08 17:00,,PT_Normal,,,,,uF9QUNVIQ921OpaavQV9wQ,,,,N,0,0,,,2013-02-16 15:53,2013-02-16 15:56,admin,admin
502638,6359,124966,13662,0,N,N,N,CP_Drtn,TT_Task,DT_FixedDUR2,TK_NotStart,DUKHCONP2BZ3WEEX5045,Flooring & Painting,8164,280,0,200,0,336,336,200,0,0,0,,,,2014-01-22 08:00,2014-02-20 17:00,,2013-12-11 08:00,2014-01-09 17:00,2013-12-11 08:00,2014-01-09 17:00,2013-12-11 08:00,2014-01-09 17:00,2014-01-22 08:00,2014-02-20 17:00,,PT_Normal,,,,,k8T8rh7qTD27LAglGVjIKw,,,,N,0,0,,,2013-02-16 15:53,2013-02-16 15:56,admin,admin
502639,6359,124966,13662,0,N,N,N,CP_Drtn,TT_Task,DT_FixedDUR2,TK_NotStart,DUKHCONP2BZ3WEEX5050,Installation of Steel Gate,8178,280,0,160,0,150,150,160,0,0,0,,,,2014-02-09 08:00,2014-03-04 17:00,,2013-12-30 08:00,2014-01-21 17:00,2013-12-30 08:00,2014-01-21 17:00,2013-12-30 08:00,2014-01-21 17:00,2014-02-09 08:00,2014-03-04 17:00,,PT_Normal,,,,,JtKhULNxReCVwOJ2xbJ58Q,,,,N,0,0,,,2013-02-16 15:53,2013-02-16 15:56,admin,admin
502640,6359,124966,13662,0,N,N,N,CP_Drtn,TT_Task,DT_FixedDUR2,TK_NotStart,DUKHCONP2BZ3WEEX5060,Structural steel &  SS Shed cover installation,8178,280,200,200,0,534,534,200,0,0,0,,,,2014-02-16 08:00,2014-03-16 17:00,,2014-01-05 08:00,2014-02-02 17:00,2014-01-05 08:00,2014-02-02 17:00,2014-01-05 08:00,2014-02-02 17:00,2014-02-16 08:00,2014-03-16 17:00,,PT_Normal,,,,,12vjX3ApRyyrBORbVjeGcg,,,,N,0,0,,,2013-02-16 15:53,2013-02-16 15:56,admin,admin
502641,6359,124966,13662,0,N,N,N,CP_Drtn,TT_Task,DT_FixedDUR2,TK_NotStart,DUKHCONP2BZ3WEEX5065,"Install. of Water Tank,Chiller,Pump & Meter",8178,80,0,200,0,286.8,286.8,200,0,0,0,,,,2014-02-27 08:00,2014-03-27 17:00,,2014-02-16 08:00,2014-03-16 17:00,2014-02-16 08:00,2014-03-16 17:00,2014-02-16 08:00,2014-03-16 17:00,2014-02-27 08:00,2014-03-27 17:00,,PT_Normal,,,,,0cMq6ZATT1meiML+HWrZEw,,,,N,0,0,,,2013-02-16 15:53,2013-02-23 09:03,admin,admin
502642,6359,124966,13662,0,N,N,N,CP_Drtn,TT_Task,DT_FixedDUR2,TK_NotStart,DUKHCONP2BZ3WEEX5070,Installation ladder for water Tank,8178,80,0,160,0,200,200,160,0,0,0,,,,2014-03-08 08:00,2014-03-30 17:00,,2014-02-24 08:00,2014-03-18 17:00,2014-02-24 08:00,2014-03-18 17:00,2014-02-24 08:00,2014-03-18 17:00,2014-03-08 08:00,2014-03-30 17:00,,PT_Normal,,,,,inoFO/b+TeeAAu7nbEjlzQ,,,,N,0,0,,,2013-02-16 15:53,2013-02-16 15:56,admin,admin
502643,6359,124966,13662,0,N,N,N,CP_Drtn,TT_Task,DT_FixedDUR2,TK_NotStart,DUKHCONP2BZ3MSEX5335,Aluminum Roll-up Shutter with 2m Wall,8178,344,136,200,0,400,400,200,0,0,0,,,,2014-03-19 08:00,2014-04-16 17:00,,2014-01-27 08:00,2014-02-25 17:00,2014-01-27 08:00,2014-02-25 17:00,2014-01-27 08:00,2014-02-25 17:00,2014-03-19 08:00,2014-04-16 17:00,,PT_Normal,,,,,THJBkW/MStOP0YhYik64Sw,,,,N,0,0,,,2013-02-16 15:53,2013-02-16 15:56,admin,admin
502644,6359,124966,13662,0,N,N,N,CP_Drtn,TT_Task,DT_FixedDUR2,TK_NotStart,DUKHCONP2BZ3WEEX5030,Excavation,8177,120,0,160,0,116,116,160,80,0,80,,,,2013-11-30 08:00,2013-12-23 17:00,,2013-11-12 08:00,2013-12-04 17:00,2013-11-12 08:00,2013-12-04 17:00,2013-11-12 08:00,2013-12-04 17:00,2013-11-30 08:00,2013-12-23 17:00,,PT_Normal,,,,,gWl9litJQ5WlRrZBAfDuEQ,,,,N,0,0,,,2013-02-16 15:53,2013-02-16 15:56,admin,admin
502645,6359,124967,13662,0,N,N,N,CP_Drtn,TT_Task,DT_FixedDUR2,TK_NotStart,DUKHCONP2BZ3HDEX5090,kerb works,8173,240,0,160,0,236,236,160,0,0,0,,,,2014-01-15 08:00,2014-02-06 17:00,,2013-12-10 08:00,2014-01-02 17:00,2013-12-10 08:00,2014-01-02 17:00,2013-12-10 08:00,2014-01-02 17:00,2014-01-15 08:00,2014-02-06 17:00,,PT_Normal,,,,,/K3+flVZSwWDjC+l0hHeFA,,,,N,0,0,,,2013-02-16 15:53,2013-02-16 15:56,admin,admin
502646,6359,124967,13662,0,N,N,N,CP_Drtn,TT_Task,DT_FixedDUR2,TK_NotStart,DUKHCONP2BZ3HDEX5095,Cobble Stone Works,8170,240,0,160,0,86,86,160,0,0,0,,,,2014-01-27 08:00,2014-02-19 17:00,,2013-12-23 08:00,2014-01-14 17:00,2013-12-23 08:00,2014-01-14 17:00,2013-12-23 08:00,2014-01-14 17:00,2014-01-27 08:00,2014-02-19 17:00,,PT_Normal,,,,,XSrHfccHQnGmCNyhtAhlEg,,,,N,0,0,,,2013-02-16 15:53,2013-02-16 15:56,admin,admin
502647,6359,124967,13662,0,N,N,N,CP_Drtn,TT_Task,DT_FixedDUR2,TK_NotStart,DUKHCONP2BZ3HDEX5100,Interlock works,8174,240,72,160,0,300,300,160,0,0,0,,,,2014-02-12 08:00,2014-03-06 17:00,,2014-01-07 08:00,2014-01-29 17:00,2014-01-07 08:00,2014-01-29 17:00,2014-01-07 08:00,2014-01-29 17:00,2014-02-12 08:00,2014-03-06 17:00,,PT_Normal,,,,,VYXsJVaVSIy9AQrMJe3jtg,,,,N,0,0,,,2013-02-16 15:53,2013-02-16 15:56,admin,admin
502648,6359,124968,13662,0,N,N,N,CP_Drtn,TT_Task,DT_FixedDUR2,TK_NotStart,DUKHCONP2BZ3SLEX5105,Laying of Grass/ green area,8178,168,0,160,0,2142,2142,160,0,0,0,,,,2014-02-24 08:00,2014-03-18 17:00,,2014-01-29 08:00,2014-02-22 17:00,2014-01-29 08:00,2014-02-22 17:00,2014-01-29 08:00,2014-02-22 17:00,2014-02-24 08:00,2014-03-18 17:00,,PT_Normal,,,,,t3GXTObeTWKm/IyWZh5oYg,,,,N,0,0,,,2013-02-16 15:53,2013-02-16 15:56,admin,admin
502649,6359,124968,13662,0,N,N,N,CP_Drtn,TT_Task,DT_FixedDUR2,TK_NotStart,DUKHCONP2BZ3SLEX5110,Laying of Palm tree,8178,488,184,160,0,546,546,160,0,0,0,,,,2014-04-23 08:00,2014-05-15 17:00,,2014-02-10 08:00,2014-03-05 17:00,2014-02-10 08:00,2014-03-05 17:00,2014-02-10 08:00,2014-03-05 17:00,2014-04-23 08:00,2014-05-15 17:00,,PT_Normal,,,,,Q8XgQu4UQPGNw7uGZv/7uQ,,,,N,0,0,,,2013-02-16 15:53,2013-02-16 15:56,admin,admin
502650,6359,124972,13662,0,N,N,N,CP_Drtn,TT_Task,DT_FixedDUR2,TK_NotStart,DUKHCONP2BZ5PLGF4305,Installation of Plumbing pipes & testing,8178,0,0,160,0,1435.2,1435.2,160,0,0,0,,,,2013-11-17 08:00,2013-12-09 17:00,,2013-11-17 08:00,2013-12-09 17:00,2013-11-17 08:00,2013-12-09 17:00,2013-11-17 08:00,2013-12-09 17:00,2013-11-17 08:00,2013-12-09 17:00,,PT_Normal,,,,,30xHAtOURDebmJ/leSpu4Q,,,,N,0,0,,,2013-02-16 15:53,2013-02-16 15:56,admin,admin
502651,6359,124972,13662,0,N,N,N,CP_Drtn,TT_Task,DT_FixedDUR2,TK_NotStart,DUKHCONP2BZ5PLGF4310,Installation of Drainage pipes &testing,8178,224,16,144,0,72,72,144,0,0,0,,,,2013-12-23 08:00,2014-01-12 17:00,,2013-11-19 08:00,2013-12-09 17:00,2013-11-19 08:00,2013-12-09 17:00,2013-11-19 08:00,2013-12-09 17:00,2013-12-23 08:00,2014-01-12 17:00,,PT_Normal,,,,,UDFklH54Tlie8a50CRJ9pw,,,,N,0,0,,,2013-02-16 15:53,2013-02-16 15:56,admin,admin
502652,6359,124972,13662,0,N,N,N,CP_Drtn,TT_Task,DT_FixedDUR2,TK_NotStart,DUKHCONP2BZ5PLGF4315,Sanitary Fittings & Accessories,8178,56,0,160,0,218.4,218.4,160,0,0,0,,,,2014-04-17 08:00,2014-05-10 17:00,,2014-04-09 08:00,2014-05-01 17:00,2014-04-09 08:00,2014-05-01 17:00,2014-04-09 08:00,2014-05-01 17:00,2014-04-17 08:00,2014-05-10 17:00,,PT_Normal,,,,,v43PmSHZTgmF2fxGu28JbA,,,,N,0,0,,,2013-02-16 15:53,2013-02-16 15:56,admin,admin
502653,6359,124972,13662,0,N,N,N,CP_Drtn,TT_Task,DT_FixedDUR2,TK_NotStart,DUKHCONP2BZ5PLGF4320,Installation of Water Heater,8178,56,56,120,0,151.2,151.2,120,0,0,0,,,,2014-04-29 08:00,2014-05-15 17:00,,2014-04-21 08:00,2014-05-07 17:00,2014-04-21 08:00,2014-05-07 17:00,2014-04-21 08:00,2014-05-07 17:00,2014-04-29 08:00,2014-05-15 17:00,,PT_Normal,,,,,xynIEVWtSASBz2nDPt2B9w,,,,N,0,0,,,2013-02-16 15:53,2013-02-23 09:03,admin,admin
502654,6359,124972,13662,0,N,N,N,CP_Drtn,TT_Task,DT_FixedDUR2,TK_NotStart,DUKHCONP2BZ5PLUG4300,Drainage / Storm Pipes in Grade Slab,8178,16,0,160,0,182.4,182.4,160,0,0,0,,,,2013-08-04 08:00,2013-08-29 17:00,,2013-08-01 08:00,2013-08-27 17:00,2013-08-01 08:00,2013-08-27 17:00,2013-08-01 08:00,2013-08-27 17:00,2013-08-04 08:00,2013-08-29 17:00,,PT_Normal,,,,,EwkT3t+tQdaDxS0CBM+EFw,,,,N,0,0,,,2013-02-16 15:53,2013-02-16 15:56,admin,admin
502655,6359,124973,13662,0,N,N,N,CP_Drtn,TT_Task,DT_FixedDUR2,TK_NotStart,DUKHCONP2BZ5PLRF4350,Installation of Rain water Pipes,8178,240,120,120,0,265.2,265.2,120,0,0,0,,,,2014-04-09 08:00,2014-04-26 17:00,,2014-03-05 08:00,2014-03-22 17:00,2014-03-05 08:00,2014-03-22 17:00,2014-03-05 08:00,2014-03-22 17:00,2014-04-09 08:00,2014-04-26 17:00,,PT_Normal,,,,,SdReBSD3QF2Gmxev35fMqQ,,,,N,0,0,,,2013-02-16 15:53,2013-02-23 09:03,admin,admin
502656,6359,124975,13662,0,N,N,N,CP_Drtn,TT_Task,DT_FixedDUR2,TK_NotStart,DUKHCONP2BZ5ELRF4070,Installation of Isolator,8178,72,0,144,0,361.2,361.2,144,0,0,0,,,,2014-04-12 08:00,2014-05-01 17:00,,2014-04-01 08:00,2014-04-21 17:00,2014-04-01 08:00,2014-04-21 17:00,2014-04-01 08:00,2014-04-21 17:00,2014-04-12 08:00,2014-05-01 17:00,,PT_Normal,,,,,l0B3g/20QVyHV0DDUQpegg,,,,N,0,0,,,2013-02-16 15:53,2013-02-23 09:03,admin,admin
502657,6359,124975,13662,0,N,N,N,CP_Drtn,TT_Task,DT_FixedDUR2,TK_NotStart,DUKHCONP2BZ5ELRF4075,Installation of TV Dish Antenna,8178,72,72,160,0,188.4,188.4,160,0,0,0,,,,2014-04-23 08:00,2014-05-15 17:00,,2014-04-13 08:00,2014-05-05 17:00,2014-04-13 08:00,2014-05-05 17:00,2014-04-13 08:00,2014-05-05 17:00,2014-04-23 08:00,2014-05-15 17:00,,PT_Normal,,,,,djAGXEHJTnu+zEQsN3d6Lg,,,,N,0,0,,,2013-02-16 15:53,2013-02-16 15:56,admin,admin
502658,6359,124976,13662,0,N,N,N,CP_Drtn,TT_Task,DT_FixedDUR2,TK_NotStart,DUKHCONP2BZ5ELGF4000,Fixing of wall conduits & switch socket boxes,8178,24,24,160,0,594.8,594.8,160,0,0,0,,,,2013-11-20 08:00,2013-12-12 17:00,,2013-11-17 08:00,2013-12-09 17:00,2013-11-17 08:00,2013-12-09 17:00,2013-11-17 08:00,2013-12-09 17:00,2013-11-20 08:00,2013-12-12 17:00,,PT_Normal,,,,,X99q+of/Rt+dDIfXjqxGTQ,,,,N,0,0,,,2013-02-16 15:53,2013-02-23 09:03,admin,admin
502659,6359,124976,13662,0,N,N,N,CP_Drtn,TT_Task,DT_FixedDUR2,TK_NotStart,DUKHCONP2BZ5ELGF4005,Cable tray & trunking installation,8178,104,0,160,0,2044.8,2044.8,160,0,0,0,,,,2014-01-09 08:00,2014-02-01 17:00,,2013-12-25 08:00,2014-01-16 17:00,2013-12-25 08:00,2014-01-16 17:00,2013-12-25 08:00,2014-01-16 17:00,2014-01-09 08:00,2014-02-01 17:00,,PT_Normal,,,,,wmFTheqHStaGVAhcj5jPuQ,,,,N,0,0,,,2013-02-16 15:53,2013-02-16 15:56,admin,admin
502660,6359,124976,13662,0,N,N,N,CP_Drtn,TT_Task,DT_FixedDUR2,TK_NotStart,DUKHCONP2BZ5ELGF4010,Installation of wiring & Main Cabling,8178,104,104,160,0,414.8,414.8,160,0,0,0,,,,2014-01-18 08:00,2014-02-09 17:00,,2014-01-02 08:00,2014-01-25 17:00,2014-01-02 08:00,2014-01-25 17:00,2014-01-02 08:00,2014-01-25 17:00,2014-01-18 08:00,2014-02-09 17:00,,PT_Normal,,,,,pwC4KAMUQFWFgrZ0PZjUKQ,,,,N,0,0,,,2013-02-16 15:53,2013-02-16 15:56,admin,admin
502661,6359,124976,13662,0,N,N,N,CP_Drtn,TT_Task,DT_FixedDUR2,TK_NotStart,DUKHCONP2BZ5ELGF4020,"Installation  of DBS,MCCB Accessories.",8178,72,0,160,0,170.4,170.4,160,0,0,0,,,,2014-03-17 08:00,2014-04-08 17:00,,2014-03-06 08:00,2014-03-29 17:00,2014-03-06 08:00,2014-03-29 17:00,2014-03-06 08:00,2014-03-29 17:00,2014-03-17 08:00,2014-04-08 17:00,,PT_Normal,,,,,ESN84CBUSjWmZbfaoQ+00A,,,,N,0,0,,,2013-02-16 15:53,2013-02-16 15:56,admin,admin
502662,6359,124976,13662,0,N,N,N,CP_Drtn,TT_Task,DT_FixedDUR2,TK_NotStart,DUKHCONP2BZ5ELGF4025,Installation of Lighting fixtures & Accessories,8178,72,0,160,0,395.6,395.6,160,0,0,0,,,,2014-03-29 08:00,2014-04-20 17:00,,2014-03-18 08:00,2014-04-09 17:00,2014-03-18 08:00,2014-04-09 17:00,2014-03-18 08:00,2014-04-09 17:00,2014-03-29 08:00,2014-04-20 17:00,,PT_Normal,,,,,TO5Oc06VScmzA0qHGWxzaw,,,,N,0,0,,,2013-02-16 15:53,2013-02-16 15:56,admin,admin
502663,6359,124976,13662,0,N,N,N,CP_Drtn,TT_Task,DT_FixedDUR2,TK_NotStart,DUKHCONP2BZ5ELGF4015,Install. of CAMS & Fire Fighting Accessories,8178,104,104,160,0,1108.8,1108.8,160,0,0,0,,,,2014-04-23 08:00,2014-05-15 17:00,,2014-04-08 08:00,2014-04-30 17:00,2014-04-08 08:00,2014-04-30 17:00,2014-04-08 08:00,2014-04-30 17:00,2014-04-23 08:00,2014-05-15 17:00,,PT_Normal,,,,,EKZTBQBITLuI3IvGMWviug,,,,N,0,0,,,2013-02-16 15:53,2013-02-23 09:03,admin,admin
502664,6359,124976,13662,0,N,N,N,CP_Drtn,TT_Task,DT_FixedDUR2,TK_NotStart,DUKHCONP2BZ5ELGF4030,Installation of Telephone System,8178,96,24,160,0,152.4,152.4,160,0,0,0,,,,2014-04-01 08:00,2014-04-23 17:00,,2014-03-18 08:00,2014-04-09 17:00,2014-03-18 08:00,2014-04-09 17:00,2014-03-18 08:00,2014-04-09 17:00,2014-04-01 08:00,2014-04-23 17:00,,PT_Normal,,,,,2wPY7jEpQ1+wCxzRZdoAUg,,,,N,0,0,,,2013-02-16 15:53,2013-02-16 15:56,admin,admin
502665,6359,124978,13662,0,N,N,N,CP_Drtn,TT_Task,DT_FixedDUR2,TK_NotStart,DUKHCONP2BZ5ACRF4635,Installation of Condensing Unit,8178,80,80,160,0,130.8,130.8,160,0,0,0,,,,2014-04-23 08:00,2014-05-15 17:00,,2014-04-12 08:00,2014-05-04 17:00,2014-04-12 08:00,2014-05-04 17:00,2014-04-12 08:00,2014-05-04 17:00,2014-04-23 08:00,2014-05-15 17:00,,PT_Normal,,,,,dwcKmaFXRJatIY78vUHmpA,,,,N,0,0,,,2013-02-16 15:53,2013-02-16 15:56,admin,admin
502666,6359,124978,13662,0,N,N,N,CP_Drtn,TT_Task,DT_FixedDUR2,TK_NotStart,DUKHCONP2BZ5ACRF4630,Installation of Refrigerant Pipes,8178,360,280,160,0,17.2,17.2,160,0,0,0,,,,2014-04-12 08:00,2014-05-04 17:00,,2014-02-18 08:00,2014-03-12 17:00,2014-02-18 08:00,2014-03-12 17:00,2014-02-18 08:00,2014-03-12 17:00,2014-04-12 08:00,2014-05-04 17:00,,PT_Normal,,,,,c+xvFVJiRrO4BckMEideDw,,,,N,0,0,,,2013-02-16 15:53,2013-02-23 09:03,admin,admin
502667,6359,124979,13662,0,N,N,N,CP_Drtn,TT_Task,DT_FixedDUR2,TK_NotStart,DUKHCONP2BZ5ACGF4600,Installation AC Pipes,8178,224,168,160,0,556.8,556.8,160,0,0,0,,,,2014-02-09 08:00,2014-03-04 17:00,,2014-01-07 08:00,2014-01-29 17:00,2014-01-07 08:00,2014-01-29 17:00,2014-01-07 08:00,2014-01-29 17:00,2014-02-09 08:00,2014-03-04 17:00,,PT_Normal,,,,,3f76fg9jQbOqrn27gNyKxg,,,,N,0,0,,,2013-02-16 15:53,2013-02-23 09:03,admin,admin
502668,6359,124979,13662,0,N,N,N,CP_Drtn,TT_Task,DT_FixedDUR2,TK_NotStart,DUKHCONP2BZ5ACGF4605,Fixing of Ventilation Equipments,8178,0,0,200,0,85.2,85.2,200,0,0,0,,,,2014-03-15 08:00,2014-04-12 17:00,,2014-03-15 08:00,2014-04-12 17:00,2014-03-15 08:00,2014-04-12 17:00,2014-03-15 08:00,2014-04-12 17:00,2014-03-15 08:00,2014-04-12 17:00,,PT_Normal,,,,,lQKPgaFeSNewOolB9b90Zw,,,,N,0,0,,,2013-02-16 15:53,2013-02-16 15:56,admin,admin
502669,6359,124979,13662,0,N,N,N,CP_Drtn,TT_Task,DT_FixedDUR2,TK_NotStart,DUKHCONP2BZ5ACGF4610,Fixing of Split AC,8178,0,0,160,0,154.8,154.8,160,0,0,0,,,,2014-04-06 08:00,2014-04-28 17:00,,2014-04-06 08:00,2014-04-28 17:00,2014-04-06 08:00,2014-04-28 17:00,2014-04-06 08:00,2014-04-28 17:00,2014-04-06 08:00,2014-04-28 17:00,,PT_Normal,,,,,dx8oIL77QumoQGw90CL4ow,,,,N,0,0,,,2013-02-16 15:53,2013-02-16 15:56,admin,admin
502670,6359,124980,13662,0,N,N,N,CP_Drtn,TT_Task,DT_FixedDUR2,TK_NotStart,DUKHCONP2BZ5ACTC8000,Pre-Commissioning & Testing of AC Works,8178,0,0,200,0,1500,1500,200,0,0,0,,,,2014-05-17 08:00,2014-06-14 17:00,,2014-05-17 08:00,2014-06-14 17:00,2014-05-17 08:00,2014-06-14 17:00,2014-05-17 08:00,2014-06-14 17:00,2014-05-17 08:00,2014-06-14 17:00,,PT_Normal,,,,,Q8bkwQgBTtCYJSAVvM+I7g,,,,N,0,0,,,2013-02-16 15:53,2013-02-16 15:56,admin,admin
502671,6359,124980,13662,0,N,N,N,CP_Drtn,TT_Task,DT_FixedDUR2,TK_NotStart,DUKHCONP2BZ5ELTC8010,Pre-Commissioning & Testing of Electrical Works,8178,0,0,200,0,3000,3000,200,0,0,0,,,,2014-05-17 08:00,2014-06-14 17:00,,2014-05-17 08:00,2014-06-14 17:00,2014-05-17 08:00,2014-06-14 17:00,2014-05-17 08:00,2014-06-14 17:00,2014-05-17 08:00,2014-06-14 17:00,,PT_Normal,,,,,DEa4nCVcTxSkN4g1yq6W5w,,,,N,0,0,,,2013-02-16 15:53,2013-02-16 15:56,admin,admin
502672,6359,124980,13662,0,N,N,N,CP_Drtn,TT_Task,DT_FixedDUR2,TK_NotStart,DUKHCONP2BZ5PLTC8005,Pre-Commissioning & Testing of Plumbing Works,8178,0,0,200,0,3000,3000,200,0,0,0,,,,2014-05-17 08:00,2014-06-14 17:00,,2014-05-17 08:00,2014-06-14 17:00,2014-05-17 08:00,2014-06-14 17:00,2014-05-17 08:00,2014-06-14 17:00,2014-05-17 08:00,2014-06-14 17:00,,PT_Normal,,,,,ptzhQ11YQfWgnRyl6NABBg,,,,N,0,0,,,2013-02-16 15:53,2013-02-16 15:56,admin,admin
502673,6359,124983,13662,0,N,N,N,CP_Drtn,TT_Task,DT_FixedDUR2,TK_NotStart,DUKHCONP2BZ5AREL3665,External Plastering,8169,240,0,200,0,4012.5,4012.5,200,0,0,0,,,,2014-03-20 08:00,2014-04-17 17:00,,2014-02-13 08:00,2014-03-13 17:00,2014-02-13 08:00,2014-03-13 17:00,2014-02-13 08:00,2014-03-13 17:00,2014-03-20 08:00,2014-04-17 17:00,,PT_Normal,,,,,53G/Apo6QoyhawgwOcrRow,,,,N,0,0,,,2013-02-16 15:53,2013-02-16 15:56,admin,admin
502674,6359,124983,13662,0,N,N,N,CP_Drtn,TT_Task,DT_FixedDUR2,TK_NotStart,DUKHCONP2BZ5AREL3680,External Painting,8178,320,320,160,0,1408,1408,160,0,0,0,,,,2014-04-23 08:00,2014-05-15 17:00,,2014-03-08 08:00,2014-03-30 17:00,2014-03-08 08:00,2014-03-30 17:00,2014-03-08 08:00,2014-03-30 17:00,2014-04-23 08:00,2014-05-15 17:00,,PT_Normal,,,,,TPsAUAgQSJqSG4BvScIXqw,,,,N,0,0,,,2013-02-16 15:53,2013-02-16 15:56,admin,admin
502675,6359,124984,13662,0,N,N,N,CP_Drtn,TT_Task,DT_FixedDUR2,TK_NotStart,DUKHCONP2BZ5ARRF3660,Installation of Access Ladder,8178,432,112,160,0,132,132,160,0,0,0,,,,2014-04-12 08:00,2014-05-04 17:00,,2014-02-06 08:00,2014-03-02 17:00,2014-02-06 08:00,2014-03-02 17:00,2014-02-06 08:00,2014-03-02 17:00,2014-04-12 08:00,2014-05-04 17:00,,PT_Normal,,,,,8HiAyZJ7TWaQOakP1d0oHg,,,,N,0,0,,,2013-02-16 15:53,2013-02-16 15:56,admin,admin
502676,6359,124984,13662,0,N,N,N,CP_Drtn,TT_Task,DT_FixedDUR2,TK_NotStart,DUKHCONP2BZ5ARRF3625,Laying of Pitched Roof,8174,240,0,200,0,256,256,200,0,0,0,,,,2014-02-03 08:00,2014-03-04 17:00,,2013-12-30 08:00,2014-01-27 17:00,2013-12-30 08:00,2014-01-27 17:00,2013-12-30 08:00,2014-01-27 17:00,2014-02-03 08:00,2014-03-04 17:00,,PT_Normal,,,,,+QyvPTApQOeXiFlKhlbQxQ,,,,N,0,0,,,2013-02-16 15:53,2013-02-16 15:56,admin,admin
502677,6359,124984,13662,0,N,N,N,CP_Drtn,TT_Task,DT_FixedDUR2,TK_NotStart,DUKHCONP2BZ5ARRF3630,Leveling Screed for Waterproofing,8164,240,0,144,0,195.5,195.5,144,0,0,0,,,,2014-02-18 08:00,2014-03-10 17:00,,2014-01-13 08:00,2014-02-02 17:00,2014-01-13 08:00,2014-02-02 17:00,2014-01-13 08:00,2014-02-02 17:00,2014-02-18 08:00,2014-03-10 17:00,,PT_Normal,,,,,49LNCnpCSiq5FkjJ6CMHeA,,,,N,0,0,,,2013-02-16 15:53,2013-02-16 15:56,admin,admin
502678,6359,124984,13662,0,N,N,N,CP_Drtn,TT_Task,DT_FixedDUR2,TK_NotStart,DUKHCONP2BZ5ARRF3635,Laying of Waterproofing Membrane,8178,240,0,144,0,722.25,722.25,144,0,0,0,,,,2014-02-24 08:00,2014-03-16 17:00,,2014-01-19 08:00,2014-02-08 17:00,2014-01-19 08:00,2014-02-08 17:00,2014-01-19 08:00,2014-02-08 17:00,2014-02-24 08:00,2014-03-16 17:00,,PT_Normal,,,,,9wAWauA4S8aBW7o1I8OL0Q,,,,N,0,0,,,2013-02-16 15:53,2013-02-16 15:56,admin,admin
502679,6359,124984,13662,0,N,N,N,CP_Drtn,TT_Task,DT_FixedDUR2,TK_NotStart,DUKHCONP2BZ5ARRF3640,Installation of Insulation & Protection,8178,240,0,144,0,343.75,343.75,144,0,0,0,,,,2014-03-01 08:00,2014-03-20 17:00,,2014-01-23 08:00,2014-02-13 17:00,2014-01-23 08:00,2014-02-13 17:00,2014-01-23 08:00,2014-02-13 17:00,2014-03-01 08:00,2014-03-20 17:00,,PT_Normal,,,,,ycVb2qXKSy2ygL+/ecroHQ,,,,N,0,0,,,2013-02-16 15:53,2013-02-16 15:56,admin,admin
502680,6359,124984,13662,0,N,N,N,CP_Drtn,TT_Task,DT_FixedDUR2,TK_NotStart,DUKHCONP2BZ5ARRF3645,Lime Stone Chips & Paving slab Installation,8170,240,0,144,0,344.5,344.5,144,0,0,0,,,,2014-03-09 08:00,2014-03-29 17:00,,2014-02-01 08:00,2014-02-22 17:00,2014-02-01 08:00,2014-02-22 17:00,2014-02-01 08:00,2014-02-22 17:00,2014-03-09 08:00,2014-03-29 17:00,,PT_Normal,,,,,FEwY2z64SfqTP6j9fW7l0A,,,,N,0,0,,,2013-02-16 15:53,2013-02-16 15:56,admin,admin
502681,6359,124986,13662,0,N,N,N,CP_Drtn,TT_Task,DT_FixedDUR2,TK_NotStart,DUKHCONP2BZ5ARGF3030,Paint First coat,8178,48,48,160,0,1815,1815,160,0,0,0,,,,2014-01-18 08:00,2014-02-09 17:00,,2014-01-11 08:00,2014-02-02 17:00,2014-01-11 08:00,2014-02-02 17:00,2014-01-11 08:00,2014-02-02 17:00,2014-01-18 08:00,2014-02-09 17:00,,PT_Normal,,,,,9ikDtyb6RDu7ahT4S4fc6Q,,,,N,0,0,,,2013-02-16 15:53,2013-02-16 15:56,admin,admin
502682,6359,124986,13662,0,N,N,N,CP_Drtn,TT_Task,DT_FixedDUR2,TK_NotStart,DUKHCONP2BZ5ARGF3020,Ceramic Wall Tiling,8170,0,0,120,0,1012.5,1012.5,120,0,0,0,,,,2014-01-01 08:00,2014-01-18 17:00,,2014-01-01 08:00,2014-01-18 17:00,2014-01-01 08:00,2014-01-18 17:00,2014-01-01 08:00,2014-01-18 17:00,2014-01-01 08:00,2014-01-18 17:00,,PT_Normal,,,,,/sWgPF2/Rn+ftZXTrdBmRQ,,,,N,0,0,,,2013-02-16 15:53,2013-02-16 15:56,admin,admin
502683,6359,124986,13662,0,N,N,N,CP_Drtn,TT_Task,DT_FixedDUR2,TK_NotStart,DUKHCONP2BZ5ARGF3025,Porcelain Tile flooring,8170,0,0,160,0,1030.25,1030.25,160,0,0,0,,,,2014-01-18 08:00,2014-02-09 17:00,,2014-01-18 08:00,2014-02-09 17:00,2014-01-18 08:00,2014-02-09 17:00,2014-01-18 08:00,2014-02-09 17:00,2014-01-18 08:00,2014-02-09 17:00,,PT_Normal,,,,,9Acm0aPxTNCJ70f+FMm/ZA,,,,N,0,0,,,2013-02-16 15:53,2013-02-16 15:56,admin,admin
502684,6359,124986,13662,0,N,N,N,CP_Drtn,TT_Task,DT_FixedDUR2,TK_NotStart,DUKHCONP2BZ5ARGF3040,Cobble Tile flooring,8170,136,136,120,0,300,300,120,0,0,0,,,,2014-04-02 08:00,2014-04-19 17:00,,2014-03-13 08:00,2014-03-30 17:00,2014-03-13 08:00,2014-03-30 17:00,2014-03-13 08:00,2014-03-30 17:00,2014-04-02 08:00,2014-04-19 17:00,,PT_Normal,,,,,gAhyXk9JQR2N8vn6qmLePw,,,,N,0,0,,,2013-02-16 15:53,2013-02-16 15:56,admin,admin
502685,6359,124986,13662,0,N,N,N,CP_Drtn,TT_Task,DT_FixedDUR2,TK_NotStart,DUKHCONP2BZ5ARGF3035,Slate Tile Flooring & Skirting,8170,104,0,144,0,1575,1575,144,0,0,0,,,,2014-03-10 08:00,2014-03-30 17:00,,2014-02-23 08:00,2014-03-15 17:00,2014-02-23 08:00,2014-03-15 17:00,2014-02-23 08:00,2014-03-15 17:00,2014-03-10 08:00,2014-03-30 17:00,,PT_Normal,,,,,l1DF+9wlQwinipX1D649nQ,,,,N,0,0,,,2013-02-16 15:53,2013-02-16 15:56,admin,admin
502686,6359,124986,13662,0,N,N,N,CP_Drtn,TT_Task,DT_FixedDUR2,TK_NotStart,DUKHCONP2BZ5ARGF3045,Fixing of Suspension systems,8178,0,0,120,0,653.5,653.5,120,0,0,0,,,,2014-02-09 08:00,2014-02-26 17:00,,2014-02-09 08:00,2014-02-26 17:00,2014-02-09 08:00,2014-02-26 17:00,2014-02-09 08:00,2014-02-26 17:00,2014-02-09 08:00,2014-02-26 17:00,,PT_Normal,,,,,2A1mAvTfQRac5r72+nyVOw,,,,N,0,0,,,2013-02-16 15:53,2013-02-16 15:56,admin,admin
502687,6359,124986,13662,0,N,N,N,CP_Drtn,TT_Task,DT_FixedDUR2,TK_NotStart,DUKHCONP2BZ5ARGF3060,Gypsum board false ceiling,8178,0,0,160,0,653.5,653.5,160,0,0,0,,,,2014-02-26 08:00,2014-03-20 17:00,,2014-02-26 08:00,2014-03-20 17:00,2014-02-26 08:00,2014-03-20 17:00,2014-02-26 08:00,2014-03-20 17:00,2014-02-26 08:00,2014-03-20 17:00,,PT_Normal,,,,,ZCo2YDC9Q+2y1su0E2UE6Q,,,,N,0,0,,,2013-02-16 15:53,2013-02-16 15:56,admin,admin
502688,6359,124986,13662,0,N,N,N,CP_Drtn,TT_Task,DT_FixedDUR2,TK_NotStart,DUKHCONP2BZ5ARGF3065,Wooden door,8178,80,0,120,0,198,198,120,0,0,0,,,,2014-03-22 08:00,2014-04-07 17:00,,2014-03-10 08:00,2014-03-26 17:00,2014-03-10 08:00,2014-03-26 17:00,2014-03-10 08:00,2014-03-26 17:00,2014-03-22 08:00,2014-04-07 17:00,,PT_Normal,,,,,GDRKjXbeRnq+6w4vhXIhvQ,,,,N,0,0,,,2013-02-16 15:53,2013-02-16 15:56,admin,admin
502689,6359,124986,13662,0,N,N,N,CP_Drtn,TT_Task,DT_FixedDUR2,TK_NotStart,DUKHCONP2BZ5ARGF3080,Aluminum windows,8178,80,80,144,0,132,132,144,0,0,0,,,,2014-04-08 08:00,2014-04-28 17:00,,2014-03-27 08:00,2014-04-16 17:00,2014-03-27 08:00,2014-04-16 17:00,2014-03-27 08:00,2014-04-16 17:00,2014-04-08 08:00,2014-04-28 17:00,,PT_Normal,,,,,+qPPx6D8SHqI7L/T7zW+Nw,,,,N,0,0,,,2013-02-16 15:53,2013-02-16 15:56,admin,admin
502690,6359,124986,13662,0,N,N,N,CP_Drtn,TT_Task,DT_FixedDUR2,TK_NotStart,DUKHCONP2BZ5ARGF3075,Carpentry & Joinery Works,8178,112,48,144,0,528,528,144,0,0,0,,,,2014-04-01 08:00,2014-04-21 17:00,,2014-03-16 08:00,2014-04-05 17:00,2014-03-16 08:00,2014-04-05 17:00,2014-03-16 08:00,2014-04-05 17:00,2014-04-01 08:00,2014-04-21 17:00,,PT_Normal,,,,,O1YTZfXdQUW9IChlr3nFGA,,,,N,0,0,,,2013-02-16 15:53,2013-02-16 15:56,admin,admin
502691,6359,124986,13662,0,N,N,N,CP_Drtn,TT_Task,DT_FixedDUR2,TK_NotStart,DUKHCONP2BZ5ARGF3090,Installation of Granite Counter Top,8171,64,64,120,0,99,99,120,0,0,0,,,,2014-04-12 08:00,2014-04-28 17:00,,2014-04-02 08:00,2014-04-19 17:00,2014-04-02 08:00,2014-04-19 17:00,2014-04-02 08:00,2014-04-19 17:00,2014-04-12 08:00,2014-04-28 17:00,,PT_Normal,,,,,bufFZHJ1Srmp4oVgfnaspg,,,,N,0,0,,,2013-02-16 15:53,2013-02-16 15:56,admin,admin
502692,6359,124986,13662,0,N,N,N,CP_Drtn,TT_Task,DT_FixedDUR2,TK_NotStart,DUKHCONP2BZ5ARGF3095,Final Painting,8178,0,0,200,0,1815,1815,200,0,0,0,,,,2014-04-17 08:00,2014-05-15 17:00,,2014-04-17 08:00,2014-05-15 17:00,2014-04-17 08:00,2014-05-15 17:00,2014-04-17 08:00,2014-05-15 17:00,2014-04-17 08:00,2014-05-15 17:00,,PT_Normal,,,,,XIHsQlkuSMmuetuQw6lbcw,,,,N,0,0,,,2013-02-16 15:53,2013-02-16 15:56,admin,admin
502693,6359,124986,13662,0,N,N,N,CP_Drtn,TT_Task,DT_FixedDUR2,TK_NotStart,DUKHCONP2BZ5ARGF3000,Block work,8168,0,0,200,0,5700,5700,200,0,0,0,,,,2013-11-03 08:00,2013-12-01 17:00,,2013-11-03 08:00,2013-12-01 17:00,2013-11-03 08:00,2013-12-01 17:00,2013-11-03 08:00,2013-12-01 17:00,2013-11-03 08:00,2013-12-01 17:00,,PT_Normal,,,,,Yy18cUQeSjOygtIowuWsJw,,,,N,0,0,,,2013-02-16 15:53,2013-02-16 15:56,admin,admin
502694,6359,124986,13662,0,N,N,N,CP_Drtn,TT_Task,DT_FixedDUR2,TK_NotStart,DUKHCONP2BZ5ARGF3005,Plastering work,8169,0,0,200,0,2850,2850,200,0,0,0,,,,2013-11-26 08:00,2013-12-25 17:00,,2013-11-26 08:00,2013-12-25 17:00,2013-11-26 08:00,2013-12-25 17:00,2013-11-26 08:00,2013-12-25 17:00,2013-11-26 08:00,2013-12-25 17:00,,PT_Normal,,,,,6puN92NDS7a79VzkWEWRTA,,,,N,0,0,,,2013-02-16 15:53,2013-02-16 15:56,admin,admin
502695,6359,124986,13662,0,N,N,N,CP_Drtn,TT_Task,DT_FixedDUR2,TK_NotStart,DUKHCONP2BZ5ARGF3010,Flooring screed,8164,160,160,160,0,634.25,634.25,160,0,0,0,,,,2014-01-01 08:00,2014-01-23 17:00,,2013-12-08 08:00,2013-12-31 17:00,2013-12-08 08:00,2013-12-31 17:00,2013-12-08 08:00,2013-12-31 17:00,2014-01-01 08:00,2014-01-23 17:00,,PT_Normal,,,,,nqpCKPSWQ1SjDhBwLOGwfA,,,,N,0,0,,,2013-02-16 15:53,2013-02-16 15:56,admin,admin
502696,6359,124986,13662,0,N,N,N,CP_Drtn,TT_Task,DT_FixedDUR2,TK_NotStart,DUKHCONP2BZ5ARGF3015,Wet area waterproofing & Protection Screed,8178,0,0,160,0,87,87,160,0,0,0,,,,2013-12-12 08:00,2014-01-05 17:00,,2013-12-12 08:00,2014-01-05 17:00,2013-12-12 08:00,2014-01-05 17:00,2013-12-12 08:00,2014-01-05 17:00,2013-12-12 08:00,2014-01-05 17:00,,PT_Normal,,,,,KeT17u8iSe6FIVGUGIrf/w,,,,N,0,0,,,2013-02-16 15:53,2013-02-16 15:56,admin,admin
502697,6359,124989,13662,0,N,N,N,CP_Drtn,TT_Task,DT_FixedDUR2,TK_NotStart,DUKHCONP2BZ5STUG1000,Footing Excavation,8177,16,0,200,0,476,476,200,224,0,224,,,,2013-05-11 08:00,2013-06-08 17:00,,2013-05-08 08:00,2013-06-05 17:00,2013-05-08 08:00,2013-06-05 17:00,2013-05-08 08:00,2013-06-05 17:00,2013-05-11 08:00,2013-06-08 17:00,,PT_Normal,,,,,ER8+82h3SuKQWjAULoPOtw,,,,N,0,0,,,2013-02-16 15:53,2013-02-16 15:56,admin,admin
502698,6359,124989,13662,0,N,N,N,CP_Drtn,TT_Task,DT_FixedDUR2,TK_NotStart,DUKHCONP2BZ5STUG1005,Footing Antitermite,8178,16,0,160,0,902,902,160,0,0,0,,,,2013-05-22 08:00,2013-06-13 17:00,,2013-05-20 08:00,2013-06-11 17:00,2013-05-20 08:00,2013-06-11 17:00,2013-05-20 08:00,2013-06-11 17:00,2013-05-22 08:00,2013-06-13 17:00,,PT_Normal,,,,,diibYg7OTVCr5Gg+5vMNoA,,,,N,0,0,,,2013-02-16 15:53,2013-02-16 15:56,admin,admin
502699,6359,124989,13662,0,N,N,N,CP_Drtn,TT_Task,DT_FixedDUR2,TK_NotStart,DUKHCONP2BZ5STUG1010,Footing Blinding,8163,16,0,160,0,29.75,29.75,160,0,0,0,,,,2013-05-25 08:00,2013-06-16 17:00,,2013-05-22 08:00,2013-06-13 17:00,2013-05-22 08:00,2013-06-13 17:00,2013-05-22 08:00,2013-06-13 17:00,2013-05-25 08:00,2013-06-16 17:00,,PT_Normal,,,,,D2wpngBSQzKJRVYsSrwTRA,,,,N,0,0,,,2013-02-16 15:53,2013-02-16 15:56,admin,admin
502700,6359,124989,13662,0,N,N,N,CP_Drtn,TT_Task,DT_FixedDUR2,TK_NotStart,DUKHCONP2BZ5STUG1015,Footing Waterproofing & Screed,8164,16,0,160,0,483,483,160,0,0,0,,,,2013-05-30 08:00,2013-06-22 17:00,,2013-05-28 08:00,2013-06-19 17:00,2013-05-28 08:00,2013-06-19 17:00,2013-05-28 08:00,2013-06-19 17:00,2013-05-30 08:00,2013-06-22 17:00,,PT_Normal,,,,,aoUfJWbSQjGv0kTM7HPOJA,,,,N,0,0,,,2013-02-16 15:53,2013-02-16 15:56,admin,admin
502701,6359,124989,13662,0,N,N,N,CP_Drtn,TT_Task,DT_FixedDUR2,TK_NotStart,DUKHCONP2BZ5STUG1020,Construction of foundations,8165,16,0,160,0,1335.25,1335.25,160,0,0,0,,,,2013-06-09 08:00,2013-07-01 17:00,,2013-06-06 08:00,2013-06-29 17:00,2013-06-06 08:00,2013-06-29 17:00,2013-06-06 08:00,2013-06-29 17:00,2013-06-09 08:00,2013-07-01 17:00,,PT_Normal,,,,,IW95pxGaQiiiCgyMpLCaBg,,,,N,0,0,,,2013-02-16 15:53,2013-02-16 15:56,admin,admin
502702,6359,124989,13662,0,N,N,N,CP_Drtn,TT_Task,DT_FixedDUR2,TK_NotStart,DUKHCONP2BZ5STUG1025,Construction of neck of columns,8165,16,0,160,0,1389.5,1389.5,160,0,0,0,,,,2013-06-18 08:00,2013-07-10 17:00,,2013-06-16 08:00,2013-07-08 17:00,2013-06-16 08:00,2013-07-08 17:00,2013-06-16 08:00,2013-07-08 17:00,2013-06-18 08:00,2013-07-10 17:00,,PT_Normal,,,,,b+b+W73PRSWOGD+INfFNIg,,,,N,0,0,,,2013-02-16 15:53,2013-02-16 15:56,admin,admin
502703,6359,124989,13662,0,N,N,N,CP_Drtn,TT_Task,DT_FixedDUR2,TK_NotStart,DUKHCONP2BZ5STUG1030,Waterproofing Footing & Neck Column,8178,16,0,160,0,125.5,125.5,160,0,0,0,,,,2013-06-27 08:00,2013-07-20 17:00,,2013-06-25 08:00,2013-07-17 17:00,2013-06-25 08:00,2013-07-17 17:00,2013-06-25 08:00,2013-07-17 17:00,2013-06-27 08:00,2013-07-20 17:00,,PT_Normal,,,,,rgVJYNaKQBC/NFvRVluzFQ,,,,N,0,0,,,2013-02-16 15:53,2013-02-16 15:56,admin,admin
502704,6359,124989,13662,0,N,N,N,CP_Drtn,TT_Task,DT_FixedDUR2,TK_NotStart,DUKHCONP2BZ5STUG1035,Backfilling Upto Grade Beam Bottom,8177,16,0,160,0,822,822,160,660,0,660,,,,2013-07-09 08:00,2013-07-31 17:00,,2013-07-07 08:00,2013-07-29 17:00,2013-07-07 08:00,2013-07-29 17:00,2013-07-07 08:00,2013-07-29 17:00,2013-07-09 08:00,2013-07-31 17:00,,PT_Normal,,,,,pbRt3bCKSfGk6HTeVPa5Kw,,,,N,0,0,,,2013-02-16 15:53,2013-02-16 15:56,admin,admin
502705,6359,124989,13662,0,N,N,N,CP_Drtn,TT_Task,DT_FixedDUR2,TK_NotStart,DUKHCONP2BZ5STUG1040,Construction of Grade Beams,8163,16,0,200,0,2325.75,2325.75,200,0,0,0,,,,2013-07-21 08:00,2013-08-21 17:00,,2013-07-18 08:00,2013-08-19 17:00,2013-07-18 08:00,2013-08-19 17:00,2013-07-18 08:00,2013-08-19 17:00,2013-07-21 08:00,2013-08-21 17:00,,PT_Normal,,,,,FRTDSwYyS8qrYSSsEROBlQ,,,,N,0,0,,,2013-02-16 15:53,2013-02-16 15:56,admin,admin
502706,6359,124989,13662,0,N,N,N,CP_Drtn,TT_Task,DT_FixedDUR2,TK_NotStart,DUKHCONP2BZ5STUG1045,Construction of slab on grade,8163,16,0,200,0,1541.75,1541.75,200,0,0,0,,,,2013-08-15 08:00,2013-09-12 17:00,,2013-08-13 08:00,2013-09-10 17:00,2013-08-13 08:00,2013-09-10 17:00,2013-08-13 08:00,2013-09-10 17:00,2013-08-15 08:00,2013-09-12 17:00,,PT_Normal,,,,,Asvr+8JOTHGBU5uFe6HnFg,,,,N,0,0,,,2013-02-16 15:53,2013-02-16 15:56,admin,admin
502707,6359,124991,13662,0,N,N,N,CP_Drtn,TT_Task,DT_FixedDUR2,TK_NotStart,DUKHCONP2BZ5STGF2000,Column-Rebar & Formwork,8165,16,0,160,0,1524.25,1524.25,160,0,0,0,,,,2013-09-02 08:00,2013-09-24 17:00,,2013-08-31 08:00,2013-09-22 17:00,2013-08-31 08:00,2013-09-22 17:00,2013-08-31 08:00,2013-09-22 17:00,2013-09-02 08:00,2013-09-24 17:00,,PT_Normal,,,,,ryR+SKiCS32167f1pAZpdQ,,,,N,0,0,,,2013-02-16 15:53,2013-02-16 15:56,admin,admin
502708,6359,124991,13662,0,N,N,N,CP_Drtn,TT_Task,DT_FixedDUR2,TK_NotStart,DUKHCONP2BZ5STGF2005,Column-Concrete,8167,16,0,120,0,105,105,120,0,0,0,,,,2013-09-12 08:00,2013-09-29 17:00,,2013-09-10 08:00,2013-09-26 17:00,2013-09-10 08:00,2013-09-26 17:00,2013-09-10 08:00,2013-09-26 17:00,2013-09-12 08:00,2013-09-29 17:00,,PT_Normal,,,,,udUf8W09Qo6qhy7Krd6WZw,,,,N,0,0,,,2013-02-16 15:53,2013-02-16 15:56,admin,admin
502709,6359,124991,13662,0,N,N,N,CP_Drtn,TT_Task,DT_FixedDUR2,TK_NotStart,DUKHCONP2BZ5STGF2010,"Beam, Stairs ,Slab-Rebar & Formwork",8165,16,0,200,0,6076,6076,200,0,0,0,,,,2013-09-21 08:00,2013-10-21 17:00,,2013-09-18 08:00,2013-10-16 17:00,2013-09-18 08:00,2013-10-16 17:00,2013-09-18 08:00,2013-10-16 17:00,2013-09-21 08:00,2013-10-21 17:00,,PT_Normal,,,,,ewfZeJfbTteNqNto8Pth8Q,,,,N,0,0,,,2013-02-16 15:53,2013-02-16 15:56,admin,admin
502710,6359,124991,13662,0,N,N,N,CP_Drtn,TT_Task,DT_FixedDUR2,TK_NotStart,DUKHCONP2BZ5STGF2015,"Beam, Stairs ,Slab-Concrete",8167,16,16,120,0,1302,1302,120,0,0,0,,,,2013-10-07 08:00,2013-10-26 17:00,,2013-10-05 08:00,2013-10-23 17:00,2013-10-05 08:00,2013-10-23 17:00,2013-10-05 08:00,2013-10-23 17:00,2013-10-07 08:00,2013-10-26 17:00,,PT_Normal,,,,,E27BVydvQm+aubiyr++1Pw,,,,N,0,0,,,2013-02-16 15:53,2013-02-16 15:56,admin,admin
502711,6359,124992,13662,0,N,N,N,CP_Drtn,TT_Task,DT_FixedDUR2,TK_NotStart,DUKHCONP2BZ5STRF2060,Construction of Parapets,8165,152,0,160,0,521.5,521.5,160,0,0,0,,,,2013-12-01 08:00,2013-12-24 17:00,,2013-11-09 08:00,2013-12-01 17:00,2013-11-09 08:00,2013-12-01 17:00,2013-11-09 08:00,2013-12-01 17:00,2013-12-01 08:00,2013-12-24 17:00,,PT_Normal,,,,,yKZ1/s1PRriCkVaQe47iYQ,,,,N,0,0,,,2013-02-16 15:53,2013-02-16 15:56,admin,admin
502712,6359,124992,13662,0,N,N,N,CP_Drtn,TT_Task,DT_FixedDUR2,TK_NotStart,DUKHCONP2BZ5STRF2065,Construction of up stands/Plinth,8166,288,80,160,0,84,84,160,0,0,0,,,,2013-12-29 08:00,2014-01-20 17:00,,2013-11-16 08:00,2013-12-08 17:00,2013-11-16 08:00,2013-12-08 17:00,2013-11-16 08:00,2013-12-08 17:00,2013-12-29 08:00,2014-01-20 17:00,,PT_Normal,,,,,XyvTY8WkSqeFfbVOvnJLQQ,,,,N,0,0,,,2013-02-16 15:53,2013-02-16 15:56,admin,admin
502713,6359,124994,13662,0,N,N,N,CP_Drtn,TT_Task,DT_FixedDUR2,TK_NotStart,DUKHCONP2BZ5MSEX5020,Construction Entrance Ramp,8164,240,0,160,0,436,436,160,0,0,0,,,,2014-01-30 08:00,2014-02-23 17:00,,2013-12-26 08:00,2014-01-18 17:00,2013-12-26 08:00,2014-01-18 17:00,2013-12-26 08:00,2014-01-18 17:00,2014-01-30 08:00,2014-02-23 17:00,,PT_Normal,,,,,H0fQkmt/QQKAfw3MLTKLFA,,,,N,0,0,,,2013-02-16 15:53,2013-02-16 15:56,admin,admin
502714,6359,124994,13662,0,N,N,N,CP_Drtn,TT_Task,DT_FixedDUR2,TK_NotStart,DUKHCONP2BZ5MSEX5025,SS.Handrails and Balustrades,8178,240,0,160,0,136,136,160,0,0,0,,,,2014-02-24 08:00,2014-03-18 17:00,,2014-01-19 08:00,2014-02-10 17:00,2014-01-19 08:00,2014-02-10 17:00,2014-01-19 08:00,2014-02-10 17:00,2014-02-24 08:00,2014-03-18 17:00,,PT_Normal,,,,,WXAV0rEcS7KWJ2J0Z5Gq5g,,,,N,0,0,,,2013-02-16 15:53,2013-02-16 15:56,admin,admin
502715,6359,124994,13662,0,N,N,N,CP_Drtn,TT_Task,DT_FixedDUR2,TK_NotStart,DUKHCONP2BZ5MSEX5015,Construction of grease Trap,8178,208,0,160,0,168,168,160,0,0,0,,,,2014-02-06 08:00,2014-03-02 17:00,,2014-01-07 08:00,2014-01-29 17:00,2014-01-07 08:00,2014-01-29 17:00,2014-01-07 08:00,2014-01-29 17:00,2014-02-06 08:00,2014-03-02 17:00,,PT_Normal,,,,,OuKhl4ScQFW6n0NWRDSUew,,,,N,0,0,,,2013-02-16 15:53,2013-02-16 15:56,admin,admin
502716,6359,124994,13662,0,N,N,N,CP_Drtn,TT_Task,DT_FixedDUR2,TK_NotStart,DUKHCONP2BZ5MSEX5000,Construction of Manholes,8172,208,0,200,0,132,132,200,0,0,0,,,,2014-01-04 08:00,2014-02-01 17:00,,2013-12-03 08:00,2014-01-01 17:00,2013-12-03 08:00,2014-01-01 17:00,2013-12-03 08:00,2014-01-01 17:00,2014-01-04 08:00,2014-02-01 17:00,,PT_Normal,,,,,cPgx8RQGRXqbEIdqWfB9Gw,,,,N,0,0,,,2013-02-16 15:53,2013-02-16 15:56,admin,admin
502717,6359,124994,13662,0,N,N,N,CP_Drtn,TT_Task,DT_FixedDUR2,TK_NotStart,DUKHCONP2BZ5MSEX5005,"Construction  of Soak pit, Chambers",8172,208,0,200,0,66,66,200,0,0,0,,,,2014-01-18 08:00,2014-02-16 17:00,,2013-12-17 08:00,2014-01-15 17:00,2013-12-17 08:00,2014-01-15 17:00,2013-12-17 08:00,2014-01-15 17:00,2014-01-18 08:00,2014-02-16 17:00,,PT_Normal,,,,,EQmpWa0MTk+w6FgVg9TFvQ,,,,N,0,0,,,2013-02-16 15:53,2013-02-16 15:56,admin,admin
502718,6359,124994,13662,0,N,N,N,CP_Drtn,TT_Task,DT_FixedDUR2,TK_NotStart,DUKHCONP2BZ5MSEX5055,Installation Steel Door,8178,240,0,160,0,180,180,160,0,0,0,,,,2014-02-12 08:00,2014-03-06 17:00,,2014-01-07 08:00,2014-01-29 17:00,2014-01-07 08:00,2014-01-29 17:00,2014-01-07 08:00,2014-01-29 17:00,2014-02-12 08:00,2014-03-06 17:00,,PT_Normal,,,,,V+3WajOnRAW4AmU4obM3uQ,,,,N,0,0,,,2013-02-16 15:53,2013-02-16 15:56,admin,admin
502719,6359,124994,13662,0,N,N,N,CP_Drtn,TT_Task,DT_FixedDUR2,TK_NotStart,DUKHCONP2BZ5MSEX5010,Telephone cable laying,8177,208,112,200,0,500,500,200,0,0,0,,,,2014-03-03 08:00,2014-03-31 17:00,,2014-01-30 08:00,2014-03-01 17:00,2014-01-30 08:00,2014-03-01 17:00,2014-01-30 08:00,2014-03-01 17:00,2014-03-03 08:00,2014-03-31 17:00,,PT_Normal,,,,,ynpAsb38QH6geYSytNGFgA,,,,N,0,0,,,2013-02-16 15:53,2013-02-16 15:56,admin,admin
502720,6359,124995,13662,0,N,N,N,CP_Drtn,TT_Task,DT_FixedDUR2,TK_NotStart,DUKHCONP2BZ5WEEX5030,Excavation,8177,120,0,160,0,116,116,160,80,0,80,,,,2014-02-12 08:00,2014-03-06 17:00,,2014-01-25 08:00,2014-02-17 17:00,2014-01-25 08:00,2014-02-17 17:00,2014-01-25 08:00,2014-02-17 17:00,2014-02-12 08:00,2014-03-06 17:00,,PT_Normal,,,,,bPmluXkQSguXNYrNOELDNQ,,,,N,0,0,,,2013-02-16 15:53,2013-02-16 15:56,admin,admin
502721,6359,124995,13662,0,N,N,N,CP_Drtn,TT_Task,DT_FixedDUR2,TK_NotStart,DUKHCONP2BZ5WEEX5035,Construction of Raft,8167,120,0,200,0,210,210,200,0,0,0,,,,2014-02-18 08:00,2014-03-18 17:00,,2014-01-30 08:00,2014-03-01 17:00,2014-01-30 08:00,2014-03-01 17:00,2014-01-30 08:00,2014-03-01 17:00,2014-02-18 08:00,2014-03-18 17:00,,PT_Normal,,,,,eOcPdWLMTVaLEioTmPwWsg,,,,N,0,0,,,2013-02-16 15:53,2013-02-16 15:56,admin,admin
502722,6359,124995,13662,0,N,N,N,CP_Drtn,TT_Task,DT_FixedDUR2,TK_NotStart,DUKHCONP2BZ5WEEX5040,Block works & Plastering,8168,120,0,200,0,692,692,200,0,0,0,,,,2014-02-27 08:00,2014-03-27 17:00,,2014-02-09 08:00,2014-03-10 17:00,2014-02-09 08:00,2014-03-10 17:00,2014-02-09 08:00,2014-03-10 17:00,2014-02-27 08:00,2014-03-27 17:00,,PT_Normal,,,,,z/9efpX9Q26ijyCSuPtjEg,,,,N,0,0,,,2013-02-16 15:53,2013-02-16 15:56,admin,admin
502723,6359,124995,13662,0,N,N,N,CP_Drtn,TT_Task,DT_FixedDUR2,TK_NotStart,DUKHCONP2BZ5WEEX5045,Flooring & Painting,8164,120,0,200,0,336,336,200,0,0,0,,,,2014-03-11 08:00,2014-04-08 17:00,,2014-02-22 08:00,2014-03-22 17:00,2014-02-22 08:00,2014-03-22 17:00,2014-02-22 08:00,2014-03-22 17:00,2014-03-11 08:00,2014-04-08 17:00,,PT_Normal,,,,,NZrBetMhRXSLovl0mSjprw,,,,N,0,0,,,2013-02-16 15:53,2013-02-16 15:56,admin,admin
502724,6359,124995,13662,0,N,N,N,CP_Drtn,TT_Task,DT_FixedDUR2,TK_NotStart,DUKHCONP2BZ5WEEX5050,Installation of Steel,8178,120,0,160,0,150,150,160,0,0,0,,,,2014-03-29 08:00,2014-04-20 17:00,,2014-03-11 08:00,2014-04-02 17:00,2014-03-11 08:00,2014-04-02 17:00,2014-03-11 08:00,2014-04-02 17:00,2014-03-29 08:00,2014-04-20 17:00,,PT_Normal,,,,,ERCRqfLAScOdG3QzdoQ1QQ,,,,N,0,0,,,2013-02-16 15:53,2013-02-16 15:56,admin,admin
502725,6359,124995,13662,0,N,N,N,CP_Drtn,TT_Task,DT_FixedDUR2,TK_NotStart,DUKHCONP2BZ5WEEX5060,Structural steel &  SS Shed cover installation,8178,120,0,200,0,534,534,200,0,0,0,,,,2014-04-03 08:00,2014-05-01 17:00,,2014-03-17 08:00,2014-04-14 17:00,2014-03-17 08:00,2014-04-14 17:00,2014-03-17 08:00,2014-04-14 17:00,2014-04-03 08:00,2014-05-01 17:00,,PT_Normal,,,,,eJRlpLuoS16qX2gYmiXotA,,,,N,0,0,,,2013-02-16 15:53,2013-02-16 15:56,admin,admin
502726,6359,124995,13662,0,N,N,N,CP_Drtn,TT_Task,DT_FixedDUR2,TK_NotStart,DUKHCONP2BZ5WEEX5065,"Install. of Water Tank,Chiller,Pump & Meter",8178,120,40,200,0,286.8,286.8,200,0,0,0,,,,2014-04-15 08:00,2014-05-13 17:00,,2014-03-29 08:00,2014-04-26 17:00,2014-03-29 08:00,2014-04-26 17:00,2014-03-29 08:00,2014-04-26 17:00,2014-04-15 08:00,2014-05-13 17:00,,PT_Normal,,,,,M7WnqxpiTwywWpNtiVX1Sg,,,,N,0,0,,,2013-02-16 15:53,2013-02-23 09:03,admin,admin
502727,6359,124995,13662,0,N,N,N,CP_Drtn,TT_Task,DT_FixedDUR2,TK_NotStart,DUKHCONP2BZ5WEEX5070,Installation ladder for water Tank,8178,80,80,160,0,200,200,160,0,0,0,,,,2014-04-23 08:00,2014-05-15 17:00,,2014-04-12 08:00,2014-05-04 17:00,2014-04-12 08:00,2014-05-04 17:00,2014-04-12 08:00,2014-05-04 17:00,2014-04-23 08:00,2014-05-15 17:00,,PT_Normal,,,,,JM6WAr5PTTyfvAF7jVZgCQ,,,,N,0,0,,,2013-02-16 15:53,2013-02-16 15:56,admin,admin
502728,6359,124995,13662,0,N,N,N,CP_Drtn,TT_Task,DT_FixedDUR2,TK_NotStart,DUKHCONP2BZ5MSEX5335,Aluminum Roll-up Shutter with 2m Wall,8178,208,208,200,0,400,400,200,0,0,0,,,,2014-05-17 08:00,2014-06-14 17:00,,2014-04-16 08:00,2014-05-14 17:00,2014-04-16 08:00,2014-05-14 17:00,2014-04-16 08:00,2014-05-14 17:00,2014-05-17 08:00,2014-06-14 17:00,,PT_Normal,,,,,We2oIzwAR8u5KNY4SCdFwQ,,,,N,0,0,,,2013-02-16 15:53,2013-02-16 15:56,admin,admin
502729,6359,124996,13662,0,N,N,N,CP_Drtn,TT_Task,DT_FixedDUR2,TK_NotStart,DUKHCONP2BZ5HDEX5090,kerb works,8173,240,0,160,0,236,236,160,0,0,0,,,,2014-03-04 08:00,2014-03-26 17:00,,2014-01-27 08:00,2014-02-19 17:00,2014-01-27 08:00,2014-02-19 17:00,2014-01-27 08:00,2014-02-19 17:00,2014-03-04 08:00,2014-03-26 17:00,,PT_Normal,,,,,y0eXUY/HSbCWCBKA0iprYQ,,,,N,0,0,,,2013-02-16 15:53,2013-02-16 15:56,admin,admin
502730,6359,124996,13662,0,N,N,N,CP_Drtn,TT_Task,DT_FixedDUR2,TK_NotStart,DUKHCONP2BZ5HDEX5095,Cobble Stone Works,8170,240,0,160,0,86,86,160,0,0,0,,,,2014-03-16 08:00,2014-04-07 17:00,,2014-02-08 08:00,2014-03-03 17:00,2014-02-08 08:00,2014-03-03 17:00,2014-02-08 08:00,2014-03-03 17:00,2014-03-16 08:00,2014-04-07 17:00,,PT_Normal,,,,,KDnFiMz6QDSQ1OX7f7mi5g,,,,N,0,0,,,2013-02-16 15:53,2013-02-16 15:56,admin,admin
502731,6359,124996,13662,0,N,N,N,CP_Drtn,TT_Task,DT_FixedDUR2,TK_NotStart,DUKHCONP2BZ5HDEX5100,Interlock works,8174,240,72,160,0,300,300,160,0,0,0,,,,2014-03-31 08:00,2014-04-22 17:00,,2014-02-24 08:00,2014-03-18 17:00,2014-02-24 08:00,2014-03-18 17:00,2014-02-24 08:00,2014-03-18 17:00,2014-03-31 08:00,2014-04-22 17:00,,PT_Normal,,,,,s7LMcSLxTLqrr30g9aM2xA,,,,N,0,0,,,2013-02-16 15:53,2013-02-16 15:56,admin,admin
502732,6359,124997,13662,0,N,N,N,CP_Drtn,TT_Task,DT_FixedDUR2,TK_NotStart,DUKHCONP2BZ5SLEX5105,Laying of Grass/ green area,8178,168,0,160,0,2142,2142,160,0,0,0,,,,2014-04-12 08:00,2014-05-04 17:00,,2014-03-18 08:00,2014-04-09 17:00,2014-03-18 08:00,2014-04-09 17:00,2014-03-18 08:00,2014-04-09 17:00,2014-04-12 08:00,2014-05-04 17:00,,PT_Normal,,,,,bcIeG0VNScSJIscyxwSKSQ,,,,N,0,0,,,2013-02-16 15:53,2013-02-16 15:56,admin,admin
502733,6359,124997,13662,0,N,N,N,CP_Drtn,TT_Task,DT_FixedDUR2,TK_NotStart,DUKHCONP2BZ5SLEX5110,Laying of Palm tree,8178,168,168,160,0,546,546,160,0,0,0,,,,2014-04-23 08:00,2014-05-15 17:00,,2014-03-30 08:00,2014-04-21 17:00,2014-03-30 08:00,2014-04-21 17:00,2014-03-30 08:00,2014-04-21 17:00,2014-04-23 08:00,2014-05-15 17:00,,PT_Normal,,,,,L01gYBmjSoeliiz2ZJ97Iw,,,,N,0,0,,,2013-02-16 15:53,2013-02-16 15:56,admin,admin
502734,6359,124998,13662,0,N,N,N,CP_Drtn,TT_Task,DT_FixedDUR2,TK_NotStart,DUKHCONP2BGNSP001000,"Survey works,",8175,0,0,160,0,87.5,87.5,160,0,0,0,,,,2012-12-01 08:00,2012-12-24 17:00,,2012-12-01 08:00,2012-12-24 17:00,2012-12-01 08:00,2012-12-24 17:00,2012-12-01 08:00,2012-12-24 17:00,2012-12-01 08:00,2012-12-24 17:00,,PT_Normal,,,,,sf+hygHwTta03pNqmIdXDA,,,,N,0,0,,,2013-02-16 15:53,2013-02-16 15:56,admin,admin
502735,6359,124998,13662,0,N,N,N,CP_Drtn,TT_Task,DT_FixedDUR2,TK_NotStart,DUKHCONP2BGNSP002000,Scanning for Existing Services for rerouting,8180,0,0,96,0,325,325,96,0,0,0,,,,2012-12-06 08:00,2012-12-20 17:00,,2012-12-06 08:00,2012-12-20 17:00,2012-12-06 08:00,2012-12-20 17:00,2012-12-06 08:00,2012-12-20 17:00,2012-12-06 08:00,2012-12-20 17:00,,PT_Normal,,,,,WYB0cjpCTfuTnTssOhiawQ,,,,N,0,0,,,2013-02-16 15:53,2013-02-16 15:56,admin,admin
502736,6359,124998,13662,0,N,N,N,CP_Drtn,TT_Task,DT_FixedDUR2,TK_NotStart,DUKHCONP2BGNSP003000,Site stripping,8177,344,0,160,0,675,675,160,300,0,300,,,,2013-02-03 08:00,2013-02-26 17:00,,2012-12-13 08:00,2013-01-06 17:00,2012-12-13 08:00,2013-01-06 17:00,2012-12-13 08:00,2013-01-06 17:00,2013-02-03 08:00,2013-02-26 17:00,,PT_Normal,,,,,okRBS1pfR7K4j8rzzyGizg,,,,N,0,0,,,2013-02-16 15:53,2013-02-16 15:56,admin,admin
502737,6359,124998,13662,0,N,N,N,CP_Drtn,TT_Task,DT_FixedDUR2,TK_NotStart,DUKHCONP2BGNSP004000,Demolition of Existing building & landscaping,8177,344,0,160,0,2687.5,2687.5,160,1750,0,1750,,,,2013-02-09 08:00,2013-03-04 17:00,,2012-12-20 08:00,2013-01-12 17:00,2012-12-20 08:00,2013-01-12 17:00,2012-12-20 08:00,2013-01-12 17:00,2013-02-09 08:00,2013-03-04 17:00,,PT_Normal,,,,,NiChegq5Q0WEc/bzVm7qjw,,,,N,0,0,,,2013-02-16 15:53,2013-02-16 15:56,admin,admin
502738,6359,124998,13662,0,N,N,N,CP_Drtn,TT_Task,DT_FixedDUR2,TK_NotStart,DUKHCONP2BGNSP005000,Demolition of existing services works,8177,344,344,160,0,775,775,160,400,0,400,,,,2013-02-16 08:00,2013-03-10 17:00,,2012-12-26 08:00,2013-01-17 17:00,2012-12-26 08:00,2013-01-17 17:00,2012-12-26 08:00,2013-01-17 17:00,2013-02-16 08:00,2013-03-10 17:00,,PT_Normal,,,,,Z7giiagSQm2EQytwieE4WQ,,,,N,0,0,,,2013-02-16 15:53,2013-02-16 15:56,admin,admin
502739,6359,124998,13662,0,N,N,N,CP_Drtn,TT_Task,DT_FixedDUR2,TK_NotStart,DUKHCONP2BGNSP002100,Submission of Scanning Reports,,0,0,56,0,40,40,56,0,0,0,,,,2012-12-22 08:00,2012-12-29 17:00,,2012-12-22 08:00,2012-12-29 17:00,2012-12-22 08:00,2012-12-29 17:00,2012-12-22 08:00,2012-12-29 17:00,2012-12-22 08:00,2012-12-29 17:00,,PT_Normal,,,,,soRUpRNaQ1qNelFupN1iJQ,4KFvqL/XTj6N1/VzcFih0A,,,N,0,0,,,2013-02-16 15:53,2013-02-16 15:56,admin,admin
502740,6359,124998,13662,0,N,N,N,CP_Drtn,TT_Task,DT_FixedDUR2,TK_NotStart,DUKHCONP2BGNSP002200,Information Required for  Rerouting,,0,0,112,0,0,0,112,0,0,0,,,,2012-12-30 08:00,2013-01-14 17:00,,2012-12-30 08:00,2013-01-14 17:00,2012-12-30 08:00,2013-01-14 17:00,2012-12-30 08:00,2013-01-14 17:00,2012-12-30 08:00,2013-01-14 17:00,,PT_Normal,,,,,0wkCWkomSuGemx3jYVuQpg,0umPvUk9bkKXzcQTENb+qA,,,N,0,0,,,2013-02-16 15:53,2013-02-16 15:56,admin,admin
502741,6359,124998,13662,0,N,N,N,CP_Drtn,TT_Task,DT_FixedDUR2,TK_NotStart,DUKHCONP2BGNSP002300,Preparation & Submission for New Layout,,0,0,56,0,40,40,56,0,0,0,,,,2013-01-15 08:00,2013-01-22 17:00,,2013-01-15 08:00,2013-01-22 17:00,2013-01-15 08:00,2013-01-22 17:00,2013-01-15 08:00,2013-01-22 17:00,2013-01-15 08:00,2013-01-22 17:00,,PT_Normal,,,,,kqErGDs9TFyEDqp/dCCdqQ,4KFvqL/XTj6N1/VzcFih0A,,,N,0,0,,,2013-02-16 15:53,2013-02-16 15:56,admin,admin
502742,6359,124998,13662,0,N,N,N,CP_Drtn,TT_Task,DT_FixedDUR2,TK_NotStart,DUKHCONP2BGNSP002400,Approval for new Layout for rerouting,,0,0,112,0,0,0,112,0,0,0,,,,2013-01-23 08:00,2013-02-07 17:00,,2013-01-23 08:00,2013-02-07 17:00,2013-01-23 08:00,2013-02-07 17:00,2013-01-23 08:00,2013-02-07 17:00,2013-01-23 08:00,2013-02-07 17:00,,PT_Normal,,,,,3kUDdorrSCqouhwVoBTWlw,0umPvUk9bkKXzcQTENb+qA,,,N,0,0,,,2013-02-16 15:53,2013-02-16 15:56,admin,admin
502743,6359,124998,13662,0,N,N,N,CP_Drtn,TT_Task,DT_FixedDUR2,TK_NotStart,DUKHCONP2BGNSP002500,Rerouting Works,8180,0,0,200,0,325,325,200,0,0,0,,,,2013-02-09 08:00,2013-03-10 17:00,,2013-02-09 08:00,2013-03-10 17:00,2013-02-09 08:00,2013-03-10 17:00,2013-02-09 08:00,2013-03-10 17:00,2013-02-09 08:00,2013-03-10 17:00,,PT_Normal,,,,,PXs9q0lfSf26oli2y5bcaQ,qfjYHXbObUibzuRpxKOuvw,,,N,0,0,,,2013-02-16 15:53,2013-02-16 15:56,admin,admin
502744,6359,125002,13662,0,N,N,N,CP_Drtn,TT_Task,DT_FixedDUR2,TK_NotStart,DUKHCONP2BZ4ELGF4000,Fixing of wall conduits & switch socket boxes,8178,24,24,160,0,594.8,594.8,160,0,0,0,,,,2013-10-22 08:00,2013-11-13 17:00,,2013-10-16 08:00,2013-11-10 17:00,2013-10-16 08:00,2013-11-10 17:00,2013-10-16 08:00,2013-11-10 17:00,2013-10-22 08:00,2013-11-13 17:00,,PT_Normal,,,,,kSI0+OO7QqKoFClreuounQ,,,,N,0,0,,,2013-02-16 15:53,2013-02-23 09:03,admin,admin
502745,6359,125002,13662,0,N,N,N,CP_Drtn,TT_Task,DT_FixedDUR2,TK_NotStart,DUKHCONP2BZ4ELGF4005,Cable tray & trunking installation,8178,104,0,160,0,2044.8,2044.8,160,0,0,0,,,,2013-12-16 08:00,2014-01-08 17:00,,2013-12-01 08:00,2013-12-24 17:00,2013-12-01 08:00,2013-12-24 17:00,2013-12-01 08:00,2013-12-24 17:00,2013-12-16 08:00,2014-01-08 17:00,,PT_Normal,,,,,Q3lfXptOQ5GBwapYEpVn6w,,,,N,0,0,,,2013-02-16 15:53,2013-02-16 15:56,admin,admin
502746,6359,125002,13662,0,N,N,N,CP_Drtn,TT_Task,DT_FixedDUR2,TK_NotStart,DUKHCONP2BZ4ELGF4010,Installation of wiring & Main Cabling,8178,104,64,160,0,414.8,414.8,160,0,0,0,,,,2013-12-25 08:00,2014-01-16 17:00,,2013-12-09 08:00,2014-01-01 17:00,2013-12-09 08:00,2014-01-01 17:00,2013-12-09 08:00,2014-01-01 17:00,2013-12-25 08:00,2014-01-16 17:00,,PT_Normal,,,,,nTOqbSk8SlCr2KGj58TUAQ,,,,N,0,0,,,2013-02-16 15:53,2013-02-16 15:56,admin,admin
502747,6359,125002,13662,0,N,N,N,CP_Drtn,TT_Task,DT_FixedDUR2,TK_NotStart,DUKHCONP2BZ4ELGF4020,"Installation  of DBS,MCCB Accessories.",8178,112,0,160,0,170.4,170.4,160,0,0,0,,,,2014-02-22 08:00,2014-03-16 17:00,,2014-02-04 08:00,2014-02-27 17:00,2014-02-04 08:00,2014-02-27 17:00,2014-02-04 08:00,2014-02-27 17:00,2014-02-22 08:00,2014-03-16 17:00,,PT_Normal,,,,,pSLw642cQJq0XcvNdbF2Wg,,,,N,0,0,,,2013-02-16 15:53,2013-02-16 15:56,admin,admin
502748,6359,125002,13662,0,N,N,N,CP_Drtn,TT_Task,DT_FixedDUR2,TK_NotStart,DUKHCONP2BZ4ELGF4025,Installation of Lighting fixtures & Accessories,8178,112,0,160,0,395.6,395.6,160,0,0,0,,,,2014-03-05 08:00,2014-03-27 17:00,,2014-02-17 08:00,2014-03-11 17:00,2014-02-17 08:00,2014-03-11 17:00,2014-02-17 08:00,2014-03-11 17:00,2014-03-05 08:00,2014-03-27 17:00,,PT_Normal,,,,,rQdM+1T6Sjai5oaBD6e8Gg,,,,N,0,0,,,2013-02-16 15:53,2013-02-16 15:56,admin,admin
502749,6359,125002,13662,0,N,N,N,CP_Drtn,TT_Task,DT_FixedDUR2,TK_NotStart,DUKHCONP2BZ4ELGF4015,Install. of CAMS & Fire Fighting Accessories,8178,104,0,160,0,1108.8,1108.8,160,0,0,0,,,,2014-03-31 08:00,2014-04-22 17:00,,2014-03-16 08:00,2014-04-07 17:00,2014-03-16 08:00,2014-04-07 17:00,2014-03-16 08:00,2014-04-07 17:00,2014-03-31 08:00,2014-04-22 17:00,,PT_Normal,,,,,8g0iY7FSR0ymPodi3i5Aww,,,,N,0,0,,,2013-02-16 15:53,2013-02-23 09:03,admin,admin
502750,6359,125002,13662,0,N,N,N,CP_Drtn,TT_Task,DT_FixedDUR2,TK_NotStart,DUKHCONP2BZ4ELGF4030,Installation of Telephone System,8178,136,24,160,0,152.4,152.4,160,0,0,0,,,,2014-03-09 08:00,2014-03-31 17:00,,2014-02-17 08:00,2014-03-11 17:00,2014-02-17 08:00,2014-03-11 17:00,2014-02-17 08:00,2014-03-11 17:00,2014-03-09 08:00,2014-03-31 17:00,,PT_Normal,,,,,QAJJmTyESUasqpjOqXustg,,,,N,0,0,,,2013-02-16 15:53,2013-02-16 15:56,admin,admin
502751,6359,125003,13662,0,N,N,N,CP_Drtn,TT_Task,DT_FixedDUR2,TK_NotStart,DUKHCONP2BZ4ELRF4070,Installation of Isolator,8178,112,0,144,0,361.2,361.2,144,0,0,0,,,,2014-03-19 08:00,2014-04-08 17:00,,2014-03-03 08:00,2014-03-23 17:00,2014-03-03 08:00,2014-03-23 17:00,2014-03-03 08:00,2014-03-23 17:00,2014-03-19 08:00,2014-04-08 17:00,,PT_Normal,,,,,2Vb5lnUzQQOKqtnldmV+Qg,,,,N,0,0,,,2013-02-16 15:53,2013-02-23 09:03,admin,admin
502752,6359,125003,13662,0,N,N,N,CP_Drtn,TT_Task,DT_FixedDUR2,TK_NotStart,DUKHCONP2BZ4ELRF4075,Installation of TV Dish Antenna,8178,112,40,160,0,188.4,188.4,160,0,0,0,,,,2014-03-31 08:00,2014-04-22 17:00,,2014-03-15 08:00,2014-04-06 17:00,2014-03-15 08:00,2014-04-06 17:00,2014-03-15 08:00,2014-04-06 17:00,2014-03-31 08:00,2014-04-22 17:00,,PT_Normal,,,,,G6OSmVXMQ9eFLXdBA9i+Vg,,,,N,0,0,,,2013-02-16 15:53,2013-02-16 15:56,admin,admin
502753,6359,125005,13662,0,N,N,N,CP_Drtn,TT_Task,DT_FixedDUR2,TK_NotStart,DUKHCONP2BZ4ACGF4600,Installation AC Pipes,8178,224,0,160,0,556.8,556.8,160,0,0,0,,,,2014-01-16 08:00,2014-02-08 17:00,,2013-12-14 08:00,2014-01-06 17:00,2013-12-14 08:00,2014-01-06 17:00,2013-12-14 08:00,2014-01-06 17:00,2014-01-16 08:00,2014-02-08 17:00,,PT_Normal,,,,,FvLRIVwhQsaQXpone+lrRg,,,,N,0,0,,,2013-02-16 15:53,2013-02-23 09:03,admin,admin
502754,6359,125005,13662,0,N,N,N,CP_Drtn,TT_Task,DT_FixedDUR2,TK_NotStart,DUKHCONP2BZ4ACGF4605,Fixing of Ventilation Equipments,8178,120,0,200,0,85.2,85.2,200,0,0,0,,,,2014-03-03 08:00,2014-03-31 17:00,,2014-02-13 08:00,2014-03-13 17:00,2014-02-13 08:00,2014-03-13 17:00,2014-02-13 08:00,2014-03-13 17:00,2014-03-03 08:00,2014-03-31 17:00,,PT_Normal,,,,,mBcjr6IwTDyDRDycEB2yIg,,,,N,0,0,,,2013-02-16 15:53,2013-02-16 15:56,admin,admin
502755,6359,125005,13662,0,N,N,N,CP_Drtn,TT_Task,DT_FixedDUR2,TK_NotStart,DUKHCONP2BZ4ACGF4610,Fixing of Split AC,8178,120,0,160,0,154.8,154.8,160,0,0,0,,,,2014-03-25 08:00,2014-04-16 17:00,,2014-03-08 08:00,2014-03-30 17:00,2014-03-08 08:00,2014-03-30 17:00,2014-03-08 08:00,2014-03-30 17:00,2014-03-25 08:00,2014-04-16 17:00,,PT_Normal,,,,,mO0EPCAvQdq15KRL8Hfwug,,,,N,0,0,,,2013-02-16 15:53,2013-02-16 15:56,admin,admin
502756,6359,125006,13662,0,N,N,N,CP_Drtn,TT_Task,DT_FixedDUR2,TK_NotStart,DUKHCONP2BZ4ACRF4635,Installation of Condensing Unit,8178,120,40,160,0,130.8,130.8,160,0,0,0,,,,2014-03-31 08:00,2014-04-22 17:00,,2014-03-13 08:00,2014-04-05 17:00,2014-03-13 08:00,2014-04-05 17:00,2014-03-13 08:00,2014-04-05 17:00,2014-03-31 08:00,2014-04-22 17:00,,PT_Normal,,,,,ijhbPD6jS/2AYyXPwF6ndA,,,,N,0,0,,,2013-02-16 15:53,2013-02-16 15:56,admin,admin
502757,6359,125006,13662,0,N,N,N,CP_Drtn,TT_Task,DT_FixedDUR2,TK_NotStart,DUKHCONP2BZ4ACRF4630,Installation of Refrigerant Pipes,8178,400,40,160,0,17.2,17.2,160,0,0,0,,,,2014-03-19 08:00,2014-04-10 17:00,,2014-01-19 08:00,2014-02-10 17:00,2014-01-19 08:00,2014-02-10 17:00,2014-01-19 08:00,2014-02-10 17:00,2014-03-19 08:00,2014-04-10 17:00,,PT_Normal,,,,,ykHOoQbBRtSSgBtAGQKiSw,,,,N,0,0,,,2013-02-16 15:53,2013-02-23 09:03,admin,admin
502758,6359,125008,13662,0,N,N,N,CP_Drtn,TT_Task,DT_FixedDUR2,TK_NotStart,DUKHCONP2BZ4PLGF4305,Installation of Plumbing pipes & testing,8178,0,0,160,0,1435.2,1435.2,160,0,0,0,,,,2013-10-16 08:00,2013-11-10 17:00,,2013-10-16 08:00,2013-11-10 17:00,2013-10-16 08:00,2013-11-10 17:00,2013-10-16 08:00,2013-11-10 17:00,2013-10-16 08:00,2013-11-10 17:00,,PT_Normal,,,,,ZqqGy4cKQMysMHjfhL70KQ,,,,N,0,0,,,2013-02-16 15:53,2013-02-16 15:56,admin,admin
502759,6359,125008,13662,0,N,N,N,CP_Drtn,TT_Task,DT_FixedDUR2,TK_NotStart,DUKHCONP2BZ4PLGF4310,Installation of Drainage pipes &testing,8178,224,16,144,0,72,72,144,0,0,0,,,,2013-11-23 08:00,2013-12-12 17:00,,2013-10-21 08:00,2013-11-10 17:00,2013-10-21 08:00,2013-11-10 17:00,2013-10-21 08:00,2013-11-10 17:00,2013-11-23 08:00,2013-12-12 17:00,,PT_Normal,,,,,dnq9oQCzQmmXDCsjb2iv5Q,,,,N,0,0,,,2013-02-16 15:53,2013-02-16 15:56,admin,admin
502760,6359,125008,13662,0,N,N,N,CP_Drtn,TT_Task,DT_FixedDUR2,TK_NotStart,DUKHCONP2BZ4PLGF4315,Sanitary Fittings & Accessories,8178,56,0,160,0,218.4,218.4,160,0,0,0,,,,2014-03-25 08:00,2014-04-16 17:00,,2014-03-17 08:00,2014-04-08 17:00,2014-03-17 08:00,2014-04-08 17:00,2014-03-17 08:00,2014-04-08 17:00,2014-03-25 08:00,2014-04-16 17:00,,PT_Normal,,,,,0mSav7SqRraIUureFyj8HQ,,,,N,0,0,,,2013-02-16 15:53,2013-02-16 15:56,admin,admin
502761,6359,125008,13662,0,N,N,N,CP_Drtn,TT_Task,DT_FixedDUR2,TK_NotStart,DUKHCONP2BZ4PLGF4320,Installation of Water Heater,8178,216,32,120,0,151.2,151.2,120,0,0,0,,,,2014-04-29 08:00,2014-05-15 17:00,,2014-03-29 08:00,2014-04-14 17:00,2014-03-29 08:00,2014-04-14 17:00,2014-03-29 08:00,2014-04-14 17:00,2014-04-29 08:00,2014-05-15 17:00,,PT_Normal,,,,,H7WGgy1iQV6aazVoYLwxow,,,,N,0,0,,,2013-02-16 15:53,2013-02-23 09:03,admin,admin
502762,6359,125008,13662,0,N,N,N,CP_Drtn,TT_Task,DT_FixedDUR2,TK_NotStart,DUKHCONP2BZ4PLUG4300,Drainage / Storm Pipes in Grade Slab,8178,0,0,160,0,182.4,182.4,160,0,0,0,,,,2013-07-04 08:00,2013-07-27 17:00,,2013-07-04 08:00,2013-07-27 17:00,2013-07-04 08:00,2013-07-27 17:00,2013-07-04 08:00,2013-07-27 17:00,2013-07-04 08:00,2013-07-27 17:00,,PT_Normal,,,,,wHj1NrrdTO2jrjz4sti0eQ,,,,N,0,0,,,2013-02-16 15:53,2013-02-16 15:56,admin,admin
502763,6359,125009,13662,0,N,N,N,CP_Drtn,TT_Task,DT_FixedDUR2,TK_NotStart,DUKHCONP2BZ4PLRF4350,Installation of Rain water Pipes,8178,240,80,120,0,265.2,265.2,120,0,0,0,,,,2014-03-11 08:00,2014-03-27 17:00,,2014-02-03 08:00,2014-02-20 17:00,2014-02-03 08:00,2014-02-20 17:00,2014-02-03 08:00,2014-02-20 17:00,2014-03-11 08:00,2014-03-27 17:00,,PT_Normal,,,,,IN6IPVx5QVyPE2wEHX+/TQ,,,,N,0,0,,,2013-02-16 15:53,2013-02-23 09:03,admin,admin
502764,6359,125011,13662,0,N,N,N,CP_Drtn,TT_Task,DT_FixedDUR2,TK_NotStart,DUKHCONP2BZ4HDEX5090,kerb works,8173,240,0,160,0,236,236,160,0,0,0,,,,2014-02-08 08:00,2014-03-03 17:00,,2014-01-04 08:00,2014-01-26 17:00,2014-01-04 08:00,2014-01-26 17:00,2014-01-04 08:00,2014-01-26 17:00,2014-02-08 08:00,2014-03-03 17:00,,PT_Normal,,,,,uB1uBqPmSzyU90yL7NGVLA,,,,N,0,0,,,2013-02-16 15:53,2013-02-16 15:56,admin,admin
502765,6359,125011,13662,0,N,N,N,CP_Drtn,TT_Task,DT_FixedDUR2,TK_NotStart,DUKHCONP2BZ4HDEX5095,Cobble Stone Works,8170,240,0,160,0,86,86,160,0,0,0,,,,2014-02-20 08:00,2014-03-15 17:00,,2014-01-15 08:00,2014-02-06 17:00,2014-01-15 08:00,2014-02-06 17:00,2014-01-15 08:00,2014-02-06 17:00,2014-02-20 08:00,2014-03-15 17:00,,PT_Normal,,,,,6cFyCQDjQhmgDCRQRblgOw,,,,N,0,0,,,2013-02-16 15:53,2013-02-16 15:56,admin,admin
502766,6359,125011,13662,0,N,N,N,CP_Drtn,TT_Task,DT_FixedDUR2,TK_NotStart,DUKHCONP2BZ4HDEX5100,Interlock works,8174,240,72,160,0,300,300,160,0,0,0,,,,2014-03-08 08:00,2014-03-30 17:00,,2014-01-30 08:00,2014-02-23 17:00,2014-01-30 08:00,2014-02-23 17:00,2014-01-30 08:00,2014-02-23 17:00,2014-03-08 08:00,2014-03-30 17:00,,PT_Normal,,,,,aAxtA9YLSGG+rb/xS4WgHw,,,,N,0,0,,,2013-02-16 15:53,2013-02-16 15:56,admin,admin
502767,6359,125012,13662,0,N,N,N,CP_Drtn,TT_Task,DT_FixedDUR2,TK_NotStart,DUKHCONP2BZ4SLEX5105,Laying of Grass/ green area,8178,168,0,160,0,2142,2142,160,0,0,0,,,,2014-03-19 08:00,2014-04-10 17:00,,2014-02-23 08:00,2014-03-17 17:00,2014-02-23 08:00,2014-03-17 17:00,2014-02-23 08:00,2014-03-17 17:00,2014-03-19 08:00,2014-04-10 17:00,,PT_Normal,,,,,0N+0Msy9RfuALe+o80KrgA,,,,N,0,0,,,2013-02-16 15:53,2013-02-16 15:56,admin,admin
502768,6359,125012,13662,0,N,N,N,CP_Drtn,TT_Task,DT_FixedDUR2,TK_NotStart,DUKHCONP2BZ4SLEX5110,Laying of Palm tree,8178,168,0,160,0,546,546,160,0,0,0,,,,2014-03-31 08:00,2014-04-22 17:00,,2014-03-06 08:00,2014-03-29 17:00,2014-03-06 08:00,2014-03-29 17:00,2014-03-06 08:00,2014-03-29 17:00,2014-03-31 08:00,2014-04-22 17:00,,PT_Normal,,,,,NPSh0zrqT06Z5fCFSvdGJg,,,,N,0,0,,,2013-02-16 15:53,2013-02-16 15:56,admin,admin
502769,6359,125013,13662,0,N,N,N,CP_Drtn,TT_Task,DT_FixedDUR2,TK_NotStart,DUKHCONP2BZ4WEEX5030,Excavation,8177,120,0,160,0,116,116,160,80,0,80,,,,2014-01-07 08:00,2014-01-29 17:00,,2013-12-21 08:00,2014-01-12 17:00,2013-12-21 08:00,2014-01-12 17:00,2013-12-21 08:00,2014-01-12 17:00,2014-01-07 08:00,2014-01-29 17:00,,PT_Normal,,,,,ZPjRslU3Q+SmgS3pFABA8w,,,,N,0,0,,,2013-02-16 15:53,2013-02-16 15:56,admin,admin
502770,6359,125013,13662,0,N,N,N,CP_Drtn,TT_Task,DT_FixedDUR2,TK_NotStart,DUKHCONP2BZ4WEEX5035,Construction of Raft,8167,120,0,200,0,210,210,200,0,0,0,,,,2014-01-13 08:00,2014-02-10 17:00,,2013-12-26 08:00,2014-01-23 17:00,2013-12-26 08:00,2014-01-23 17:00,2013-12-26 08:00,2014-01-23 17:00,2014-01-13 08:00,2014-02-10 17:00,,PT_Normal,,,,,VAx+H6AEQ8uBI3wZtasCPw,,,,N,0,0,,,2013-02-16 15:53,2013-02-16 15:56,admin,admin
502771,6359,125013,13662,0,N,N,N,CP_Drtn,TT_Task,DT_FixedDUR2,TK_NotStart,DUKHCONP2BZ4WEEX5040,Block works & Plastering,8168,160,0,200,0,692,692,200,0,0,0,,,,2014-01-28 08:00,2014-02-26 17:00,,2014-01-05 08:00,2014-02-02 17:00,2014-01-05 08:00,2014-02-02 17:00,2014-01-05 08:00,2014-02-02 17:00,2014-01-28 08:00,2014-02-26 17:00,,PT_Normal,,,,,TFDEPCoxTq24IpqXJf/KyQ,,,,N,0,0,,,2013-02-16 15:53,2013-02-16 15:56,admin,admin
502772,6359,125013,13662,0,N,N,N,CP_Drtn,TT_Task,DT_FixedDUR2,TK_NotStart,DUKHCONP2BZ4WEEX5045,Flooring & Painting,8164,160,0,200,0,336,336,200,0,0,0,,,,2014-02-09 08:00,2014-03-10 17:00,,2014-01-16 08:00,2014-02-15 17:00,2014-01-16 08:00,2014-02-15 17:00,2014-01-16 08:00,2014-02-15 17:00,2014-02-09 08:00,2014-03-10 17:00,,PT_Normal,,,,,VQZ4HtlCSaajU+J15OxVfg,,,,N,0,0,,,2013-02-16 15:53,2013-02-16 15:56,admin,admin
502773,6359,125013,13662,0,N,N,N,CP_Drtn,TT_Task,DT_FixedDUR2,TK_NotStart,DUKHCONP2BZ4WEEX5050,Installation of Steel Gate,8178,160,0,160,0,150,150,160,0,0,0,,,,2014-02-27 08:00,2014-03-22 17:00,,2014-02-03 08:00,2014-02-26 17:00,2014-02-03 08:00,2014-02-26 17:00,2014-02-03 08:00,2014-02-26 17:00,2014-02-27 08:00,2014-03-22 17:00,,PT_Normal,,,,,p+mYqAppTJa/xcyKnY5fSQ,,,,N,0,0,,,2013-02-16 15:53,2013-02-16 15:56,admin,admin
502774,6359,125013,13662,0,N,N,N,CP_Drtn,TT_Task,DT_FixedDUR2,TK_NotStart,DUKHCONP2BZ4WEEX5060,Structural steel &  SS Shed cover installation,8178,160,0,200,0,534,534,200,0,0,0,,,,2014-03-05 08:00,2014-04-02 17:00,,2014-02-09 08:00,2014-03-10 17:00,2014-02-09 08:00,2014-03-10 17:00,2014-02-09 08:00,2014-03-10 17:00,2014-03-05 08:00,2014-04-02 17:00,,PT_Normal,,,,,ToX5Z5AEQx6QQM83Nzh/7A,,,,N,0,0,,,2013-02-16 15:53,2013-02-16 15:56,admin,admin
502775,6359,125013,13662,0,N,N,N,CP_Drtn,TT_Task,DT_FixedDUR2,TK_NotStart,DUKHCONP2BZ4WEEX5065,"Install. of Water Tank,Chiller,Pump & Meter",8178,160,40,200,0,286.8,286.8,200,0,0,0,,,,2014-03-17 08:00,2014-04-14 17:00,,2014-02-22 08:00,2014-03-22 17:00,2014-02-22 08:00,2014-03-22 17:00,2014-02-22 08:00,2014-03-22 17:00,2014-03-17 08:00,2014-04-14 17:00,,PT_Normal,,,,,7NFKMm6NRby4a1Vx4m48ZQ,,,,N,0,0,,,2013-02-16 15:53,2013-02-23 09:03,admin,admin
502776,6359,125013,13662,0,N,N,N,CP_Drtn,TT_Task,DT_FixedDUR2,TK_NotStart,DUKHCONP2BZ4WEEX5070,Installation ladder for water Tank,8178,80,0,160,0,200,200,160,0,0,0,,,,2014-03-31 08:00,2014-04-22 17:00,,2014-03-19 08:00,2014-04-10 17:00,2014-03-19 08:00,2014-04-10 17:00,2014-03-19 08:00,2014-04-10 17:00,2014-03-31 08:00,2014-04-22 17:00,,PT_Normal,,,,,hBhC2wkFQQWaRHVhCLf+Vw,,,,N,0,0,,,2013-02-16 15:53,2013-02-16 15:56,admin,admin
502777,6359,125013,13662,0,N,N,N,CP_Drtn,TT_Task,DT_FixedDUR2,TK_NotStart,DUKHCONP2BZ4MSEX5335,Aluminum Roll-up Shutter with 2m Wall,8178,208,0,200,0,400,400,200,0,0,0,,,,2014-04-17 08:00,2014-05-15 17:00,,2014-03-18 08:00,2014-04-15 17:00,2014-03-18 08:00,2014-04-15 17:00,2014-03-18 08:00,2014-04-15 17:00,2014-04-17 08:00,2014-05-15 17:00,,PT_Normal,,,,,MFFyGesOROSuVp0tI1iSVg,,,,N,0,0,,,2013-02-16 15:53,2013-02-16 15:56,admin,admin
502778,6359,125014,13662,0,N,N,N,CP_Drtn,TT_Task,DT_FixedDUR2,TK_NotStart,DUKHCONP2BZ4MSEX5020,Construction Entrance Ramp,8164,240,0,160,0,436,436,160,0,0,0,,,,2014-01-07 08:00,2014-01-29 17:00,,2013-12-02 08:00,2013-12-25 17:00,2013-12-02 08:00,2013-12-25 17:00,2013-12-02 08:00,2013-12-25 17:00,2014-01-07 08:00,2014-01-29 17:00,,PT_Normal,,,,,mVF6xBsxSu6AIsqrbi7riw,,,,N,0,0,,,2013-02-16 15:53,2013-02-16 15:56,admin,admin
502779,6359,125014,13662,0,N,N,N,CP_Drtn,TT_Task,DT_FixedDUR2,TK_NotStart,DUKHCONP2BZ4MSEX5025,SS.Handrails and Balustrades,8178,240,0,160,0,136,136,160,0,0,0,,,,2014-01-30 08:00,2014-02-23 17:00,,2013-12-26 08:00,2014-01-18 17:00,2013-12-26 08:00,2014-01-18 17:00,2013-12-26 08:00,2014-01-18 17:00,2014-01-30 08:00,2014-02-23 17:00,,PT_Normal,,,,,CJHy2721SBqGbiqzPidkqA,,,,N,0,0,,,2013-02-16 15:53,2013-02-16 15:56,admin,admin
502780,6359,125014,13662,0,N,N,N,CP_Drtn,TT_Task,DT_FixedDUR2,TK_NotStart,DUKHCONP2BZ4MSEX5015,Construction of grease Trap,8178,248,0,160,0,168,168,160,0,0,0,,,,2014-01-14 08:00,2014-02-05 17:00,,2013-12-08 08:00,2013-12-31 17:00,2013-12-08 08:00,2013-12-31 17:00,2013-12-08 08:00,2013-12-31 17:00,2014-01-14 08:00,2014-02-05 17:00,,PT_Normal,,,,,btBkECn8RmuUCGfbclNcLw,,,,N,0,0,,,2013-02-16 15:53,2013-02-16 15:56,admin,admin
502781,6359,125014,13662,0,N,N,N,CP_Drtn,TT_Task,DT_FixedDUR2,TK_NotStart,DUKHCONP2BZ4MSEX5000,Construction of Manholes,8172,208,0,200,0,132,132,200,0,0,0,,,,2013-12-04 08:00,2014-01-02 17:00,,2013-11-04 08:00,2013-12-02 17:00,2013-11-04 08:00,2013-12-02 17:00,2013-11-04 08:00,2013-12-02 17:00,2013-12-04 08:00,2014-01-02 17:00,,PT_Normal,,,,,Pr9G8jYhS+OVkrm4ImhL2A,,,,N,0,0,,,2013-02-16 15:53,2013-02-16 15:56,admin,admin
502782,6359,125014,13662,0,N,N,N,CP_Drtn,TT_Task,DT_FixedDUR2,TK_NotStart,DUKHCONP2BZ4MSEX5005,"Construction  of Soak pit, Chambers",8172,248,0,200,0,66,66,200,0,0,0,,,,2013-12-25 08:00,2014-01-22 17:00,,2013-11-18 08:00,2013-12-16 17:00,2013-11-18 08:00,2013-12-16 17:00,2013-11-18 08:00,2013-12-16 17:00,2013-12-25 08:00,2014-01-22 17:00,,PT_Normal,,,,,fyu/ATGQSV+I/oSRfMmAiA,,,,N,0,0,,,2013-02-16 15:53,2013-02-16 15:56,admin,admin
502783,6359,125014,13662,0,N,N,N,CP_Drtn,TT_Task,DT_FixedDUR2,TK_NotStart,DUKHCONP2BZ4MSEX5055,Installation Steel Door,8178,240,0,160,0,180,180,160,0,0,0,,,,2014-01-19 08:00,2014-02-10 17:00,,2013-12-14 08:00,2014-01-06 17:00,2013-12-14 08:00,2014-01-06 17:00,2013-12-14 08:00,2014-01-06 17:00,2014-01-19 08:00,2014-02-10 17:00,,PT_Normal,,,,,HQcmXng3Tw2s3b8pd72uGg,,,,N,0,0,,,2013-02-16 15:53,2013-02-16 15:56,admin,admin
502784,6359,125014,13662,0,N,N,N,CP_Drtn,TT_Task,DT_FixedDUR2,TK_NotStart,DUKHCONP2BZ4MSEX5010,Telephone cable laying,8177,248,112,200,0,500,500,200,0,0,0,,,,2014-02-06 08:00,2014-03-08 17:00,,2014-01-01 08:00,2014-01-29 17:00,2014-01-01 08:00,2014-01-29 17:00,2014-01-01 08:00,2014-01-29 17:00,2014-02-06 08:00,2014-03-08 17:00,,PT_Normal,,,,,CY/wQTRISFOj8PFgyrjnoQ,,,,N,0,0,,,2013-02-16 15:53,2013-02-16 15:56,admin,admin
502785,6359,125015,13662,0,N,N,N,CP_Drtn,TT_Task,DT_FixedDUR2,TK_NotStart,DUKHCONP2BZ4ACTC8000,Pre-Commissioning & Testing of AC Works,8178,184,184,200,0,1500,1500,200,0,0,0,,,,2014-05-17 08:00,2014-06-14 17:00,,2014-04-20 08:00,2014-05-18 17:00,2014-04-20 08:00,2014-05-18 17:00,2014-04-20 08:00,2014-05-18 17:00,2014-05-17 08:00,2014-06-14 17:00,,PT_Normal,,,,,mMQb6PoFQUyyEZBK7myq1Q,,,,N,0,0,,,2013-02-16 15:53,2013-02-16 15:56,admin,admin
502786,6359,125015,13662,0,N,N,N,CP_Drtn,TT_Task,DT_FixedDUR2,TK_NotStart,DUKHCONP2BZ4ELTC8010,Pre-Commissioning & Testing of Electrical Works,8178,184,184,200,0,3000,3000,200,0,0,0,,,,2014-05-17 08:00,2014-06-14 17:00,,2014-04-20 08:00,2014-05-18 17:00,2014-04-20 08:00,2014-05-18 17:00,2014-04-20 08:00,2014-05-18 17:00,2014-05-17 08:00,2014-06-14 17:00,,PT_Normal,,,,,jmWlPpElT3C7VEaeeKYfsg,,,,N,0,0,,,2013-02-16 15:53,2013-02-16 15:56,admin,admin
502787,6359,125015,13662,0,N,N,N,CP_Drtn,TT_Task,DT_FixedDUR2,TK_NotStart,DUKHCONP2BZ4PLTC8005,Pre-Commissioning & Testing of Plumbing Works,8178,184,184,200,0,3000,3000,200,0,0,0,,,,2014-05-17 08:00,2014-06-14 17:00,,2014-04-20 08:00,2014-05-18 17:00,2014-04-20 08:00,2014-05-18 17:00,2014-04-20 08:00,2014-05-18 17:00,2014-05-17 08:00,2014-06-14 17:00,,PT_Normal,,,,,1Ii1zJuTT2ugKf5gUGkLcg,,,,N,0,0,,,2013-02-16 15:53,2013-02-16 15:56,admin,admin
502788,6359,125018,13662,0,N,N,N,CP_Drtn,TT_Task,DT_FixedDUR2,TK_NotStart,DUKHCONP2BZ4STRF2060,Construction of Parapets,8165,152,0,160,0,521.5,521.5,160,0,0,0,,,,2013-11-07 08:00,2013-11-30 17:00,,2013-10-14 08:00,2013-11-07 17:00,2013-10-14 08:00,2013-11-07 17:00,2013-10-14 08:00,2013-11-07 17:00,2013-11-07 08:00,2013-11-30 17:00,,PT_Normal,,,,,AWrI8+7MR+2y5vGzBlWDaw,,,,N,0,0,,,2013-02-16 15:53,2013-02-16 15:56,admin,admin
502789,6359,125018,13662,0,N,N,N,CP_Drtn,TT_Task,DT_FixedDUR2,TK_NotStart,DUKHCONP2BZ4STRF2065,Construction of up stands/Plinth,8166,248,40,160,0,84,84,160,0,0,0,,,,2013-11-28 08:00,2013-12-22 17:00,,2013-10-23 08:00,2013-11-14 17:00,2013-10-23 08:00,2013-11-14 17:00,2013-10-23 08:00,2013-11-14 17:00,2013-11-28 08:00,2013-12-22 17:00,,PT_Normal,,,,,7EY2FraVSvGWC+Pv+cUoow,,,,N,0,0,,,2013-02-16 15:53,2013-02-16 15:56,admin,admin
502790,6359,125019,13662,0,N,N,N,CP_Drtn,TT_Task,DT_FixedDUR2,TK_NotStart,DUKHCONP2BZ4STGF2000,Column-Rebar & Formwork,8165,0,0,160,0,1524.25,1524.25,160,0,0,0,,,,2013-07-31 08:00,2013-08-26 17:00,,2013-07-31 08:00,2013-08-26 17:00,2013-07-31 08:00,2013-08-26 17:00,2013-07-31 08:00,2013-08-26 17:00,2013-07-31 08:00,2013-08-26 17:00,,PT_Normal,,,,,YSTLPAdJQQuSHEPKrMpfug,,,,N,0,0,,,2013-02-16 15:53,2013-02-16 15:56,admin,admin
502791,6359,125019,13662,0,N,N,N,CP_Drtn,TT_Task,DT_FixedDUR2,TK_NotStart,DUKHCONP2BZ4STGF2005,Column-Concrete,8167,0,0,120,0,105,105,120,0,0,0,,,,2013-08-14 08:00,2013-08-31 17:00,,2013-08-14 08:00,2013-08-31 17:00,2013-08-14 08:00,2013-08-31 17:00,2013-08-14 08:00,2013-08-31 17:00,2013-08-14 08:00,2013-08-31 17:00,,PT_Normal,,,,,SC6xhsZeSayOYbWXj667qA,,,,N,0,0,,,2013-02-16 15:53,2013-02-16 15:56,admin,admin
502792,6359,125019,13662,0,N,N,N,CP_Drtn,TT_Task,DT_FixedDUR2,TK_NotStart,DUKHCONP2BZ4STGF2010,"Beam, Stairs ,Slab-Rebar & Formwork",8165,0,0,200,0,6076,6076,200,0,0,0,,,,2013-08-22 08:00,2013-09-19 17:00,,2013-08-22 08:00,2013-09-19 17:00,2013-08-22 08:00,2013-09-19 17:00,2013-08-22 08:00,2013-09-19 17:00,2013-08-22 08:00,2013-09-19 17:00,,PT_Normal,,,,,8Rg736s9TIix80mAUHIAPQ,,,,N,0,0,,,2013-02-16 15:53,2013-02-16 15:56,admin,admin
502793,6359,125019,13662,0,N,N,N,CP_Drtn,TT_Task,DT_FixedDUR2,TK_NotStart,DUKHCONP2BZ4STGF2015,"Beam, Stairs ,Slab-Concrete",8167,0,0,120,0,1302,1302,120,0,0,0,,,,2013-09-08 08:00,2013-09-24 17:00,,2013-09-08 08:00,2013-09-24 17:00,2013-09-08 08:00,2013-09-24 17:00,2013-09-08 08:00,2013-09-24 17:00,2013-09-08 08:00,2013-09-24 17:00,,PT_Normal,,,,,jVtn/w+7TYif+0uDUjwKWQ,,,,N,0,0,,,2013-02-16 15:53,2013-02-16 15:56,admin,admin
502794,6359,125021,13662,0,N,N,N,CP_Drtn,TT_Task,DT_FixedDUR2,TK_NotStart,DUKHCONP2BZ4STUG1000,Footing Excavation,8177,0,0,200,0,476,476,200,224,0,224,,,,2013-04-09 08:00,2013-05-07 17:00,,2013-04-09 08:00,2013-05-07 17:00,2013-04-09 08:00,2013-05-07 17:00,2013-04-09 08:00,2013-05-07 17:00,2013-04-09 08:00,2013-05-07 17:00,,PT_Normal,,,,,YOZW6QY9Q++lxJ6i/A7V3g,,,,N,0,0,,,2013-02-16 15:53,2013-02-16 15:56,admin,admin
502795,6359,125021,13662,0,N,N,N,CP_Drtn,TT_Task,DT_FixedDUR2,TK_NotStart,DUKHCONP2BZ4STUG1005,Footing Antitermite,8178,0,0,160,0,902,902,160,0,0,0,,,,2013-04-21 08:00,2013-05-13 17:00,,2013-04-21 08:00,2013-05-13 17:00,2013-04-21 08:00,2013-05-13 17:00,2013-04-21 08:00,2013-05-13 17:00,2013-04-21 08:00,2013-05-13 17:00,,PT_Normal,,,,,yXIpK50LS3GvQcP68pcNzQ,,,,N,0,0,,,2013-02-16 15:53,2013-02-16 15:56,admin,admin
502796,6359,125021,13662,0,N,N,N,CP_Drtn,TT_Task,DT_FixedDUR2,TK_NotStart,DUKHCONP2BZ4STUG1010,Footing Blinding,8163,0,0,160,0,29.75,29.75,160,0,0,0,,,,2013-04-23 08:00,2013-05-15 17:00,,2013-04-23 08:00,2013-05-15 17:00,2013-04-23 08:00,2013-05-15 17:00,2013-04-23 08:00,2013-05-15 17:00,2013-04-23 08:00,2013-05-15 17:00,,PT_Normal,,,,,vVkhjH4LSWK5sQKs8Iw0dw,,,,N,0,0,,,2013-02-16 15:53,2013-02-16 15:56,admin,admin
502797,6359,125021,13662,0,N,N,N,CP_Drtn,TT_Task,DT_FixedDUR2,TK_NotStart,DUKHCONP2BZ4STUG1020,Construction of foundations,8165,0,0,160,0,1335.25,1335.25,160,0,0,0,,,,2013-05-08 08:00,2013-05-30 17:00,,2013-05-08 08:00,2013-05-30 17:00,2013-05-08 08:00,2013-05-30 17:00,2013-05-08 08:00,2013-05-30 17:00,2013-05-08 08:00,2013-05-30 17:00,,PT_Normal,,,,,wkLvYKIbQayQhK/zifAU6A,,,,N,0,0,,,2013-02-16 15:53,2013-02-16 15:56,admin,admin
502798,6359,125021,13662,0,N,N,N,CP_Drtn,TT_Task,DT_FixedDUR2,TK_NotStart,DUKHCONP2BZ4STUG1025,Construction of neck of columns,8165,0,0,160,0,1389.5,1389.5,160,0,0,0,,,,2013-05-18 08:00,2013-06-09 17:00,,2013-05-18 08:00,2013-06-09 17:00,2013-05-18 08:00,2013-06-09 17:00,2013-05-18 08:00,2013-06-09 17:00,2013-05-18 08:00,2013-06-09 17:00,,PT_Normal,,,,,Cj107n8+SJadLGx+zmL3Kg,,,,N,0,0,,,2013-02-16 15:53,2013-02-16 15:56,admin,admin
502799,6359,125021,13662,0,N,N,N,CP_Drtn,TT_Task,DT_FixedDUR2,TK_NotStart,DUKHCONP2BZ4STUG1030,Waterproofing Footing & Neck Column,8178,0,0,160,0,125.5,125.5,160,0,0,0,,,,2013-05-27 08:00,2013-06-18 17:00,,2013-05-27 08:00,2013-06-18 17:00,2013-05-27 08:00,2013-06-18 17:00,2013-05-27 08:00,2013-06-18 17:00,2013-05-27 08:00,2013-06-18 17:00,,PT_Normal,,,,,79zxBjJjSpKD5ZcocUF4Zw,,,,N,0,0,,,2013-02-16 15:53,2013-02-16 15:56,admin,admin
502800,6359,125021,13662,0,N,N,N,CP_Drtn,TT_Task,DT_FixedDUR2,TK_NotStart,DUKHCONP2BZ4STUG1035,Backfilling Upto Grade Beam Bottom,8177,0,0,160,0,822,822,160,660,0,660,,,,2013-06-08 08:00,2013-06-30 17:00,,2013-06-08 08:00,2013-06-30 17:00,2013-06-08 08:00,2013-06-30 17:00,2013-06-08 08:00,2013-06-30 17:00,2013-06-08 08:00,2013-06-30 17:00,,PT_Normal,,,,,Ys2nHwrrSiaJOg9canO+bg,,,,N,0,0,,,2013-02-16 15:53,2013-02-16 15:56,admin,admin
502801,6359,125021,13662,0,N,N,N,CP_Drtn,TT_Task,DT_FixedDUR2,TK_NotStart,DUKHCONP2BZ4STUG1040,Construction of Grade Beams,8163,0,0,200,0,2325.75,2325.75,200,0,0,0,,,,2013-06-19 08:00,2013-07-17 17:00,,2013-06-19 08:00,2013-07-17 17:00,2013-06-19 08:00,2013-07-17 17:00,2013-06-19 08:00,2013-07-17 17:00,2013-06-19 08:00,2013-07-17 17:00,,PT_Normal,,,,,MSKaw9EbQNWRx8Xngibm9w,,,,N,0,0,,,2013-02-16 15:53,2013-02-16 15:56,admin,admin
502802,6359,125021,13662,0,N,N,N,CP_Drtn,TT_Task,DT_FixedDUR2,TK_NotStart,DUKHCONP2BZ4STUG1045,Construction of slab on grade,8163,0,0,200,0,1541.75,1541.75,200,0,0,0,,,,2013-07-14 08:00,2013-08-14 17:00,,2013-07-14 08:00,2013-08-14 17:00,2013-07-14 08:00,2013-08-14 17:00,2013-07-14 08:00,2013-08-14 17:00,2013-07-14 08:00,2013-08-14 17:00,,PT_Normal,,,,,kY+NK+fRRdaSXq7+TVo5Pg,,,,N,0,0,,,2013-02-16 15:53,2013-02-16 15:56,admin,admin
502803,6359,125021,13662,0,N,N,N,CP_Drtn,TT_Task,DT_FixedDUR2,TK_NotStart,DUKHCONP2BZ4STUG1015,Footing Waterproofing & Screed,8164,0,0,160,0,483,483,160,0,0,0,,,,2013-04-29 08:00,2013-05-21 17:00,,2013-04-29 08:00,2013-05-21 17:00,2013-04-29 08:00,2013-05-21 17:00,2013-04-29 08:00,2013-05-21 17:00,2013-04-29 08:00,2013-05-21 17:00,,PT_Normal,,,,,dqVmQLTtReWHQHLH7OEEYw,,,,N,0,0,,,2013-02-16 15:53,2013-02-16 15:56,admin,admin
502804,6359,125024,13662,0,N,N,N,CP_Drtn,TT_Task,DT_FixedDUR2,TK_NotStart,DUKHCONP2BZ4AREL3665,External Plastering,8169,240,0,200,0,4012.5,4012.5,200,0,0,0,,,,2014-02-19 08:00,2014-03-19 17:00,,2014-01-14 08:00,2014-02-12 17:00,2014-01-14 08:00,2014-02-12 17:00,2014-01-14 08:00,2014-02-12 17:00,2014-02-19 08:00,2014-03-19 17:00,,PT_Normal,,,,,dBmSOnq7Trat858PtpKq8A,,,,N,0,0,,,2013-02-16 15:53,2013-02-16 15:56,admin,admin
502805,6359,125024,13662,0,N,N,N,CP_Drtn,TT_Task,DT_FixedDUR2,TK_NotStart,DUKHCONP2BZ4AREL3680,External Painting,8178,360,40,160,0,1408,1408,160,0,0,0,,,,2014-03-31 08:00,2014-04-22 17:00,,2014-02-05 08:00,2014-03-01 17:00,2014-02-05 08:00,2014-03-01 17:00,2014-02-05 08:00,2014-03-01 17:00,2014-03-31 08:00,2014-04-22 17:00,,PT_Normal,,,,,0TUr1QCHRUOcTdrGDQ/3Iw,,,,N,0,0,,,2013-02-16 15:53,2013-02-16 15:56,admin,admin
502806,6359,125025,13662,0,N,N,N,CP_Drtn,TT_Task,DT_FixedDUR2,TK_NotStart,DUKHCONP2BZ4ARRF3625,Laying of Pitched Roof,8174,240,0,200,0,256,256,200,0,0,0,,,,2014-01-05 08:00,2014-02-02 17:00,,2013-11-30 08:00,2013-12-29 17:00,2013-11-30 08:00,2013-12-29 17:00,2013-11-30 08:00,2013-12-29 17:00,2014-01-05 08:00,2014-02-02 17:00,,PT_Normal,,,,,zcWHn6GxSVORFym677lnvw,,,,N,0,0,,,2013-02-16 15:53,2013-02-16 15:56,admin,admin
502807,6359,125025,13662,0,N,N,N,CP_Drtn,TT_Task,DT_FixedDUR2,TK_NotStart,DUKHCONP2BZ4ARRF3635,Laying of Waterproofing Membrane,8178,240,0,144,0,722.25,722.25,144,0,0,0,,,,2014-01-25 08:00,2014-02-15 17:00,,2013-12-21 08:00,2014-01-09 17:00,2013-12-21 08:00,2014-01-09 17:00,2013-12-21 08:00,2014-01-09 17:00,2014-01-25 08:00,2014-02-15 17:00,,PT_Normal,,,,,7GINOmxjSQ67liLQM+n8Lg,,,,N,0,0,,,2013-02-16 15:53,2013-02-16 15:56,admin,admin
502808,6359,125025,13662,0,N,N,N,CP_Drtn,TT_Task,DT_FixedDUR2,TK_NotStart,DUKHCONP2BZ4ARRF3640,Installation of Insulation & Protection,8178,240,0,144,0,343.75,343.75,144,0,0,0,,,,2014-01-29 08:00,2014-02-19 17:00,,2013-12-25 08:00,2014-01-14 17:00,2013-12-25 08:00,2014-01-14 17:00,2013-12-25 08:00,2014-01-14 17:00,2014-01-29 08:00,2014-02-19 17:00,,PT_Normal,,,,,DL5uJUNERvmJ/zJ9UbXPFQ,,,,N,0,0,,,2013-02-16 15:53,2013-02-16 15:56,admin,admin
502809,6359,125025,13662,0,N,N,N,CP_Drtn,TT_Task,DT_FixedDUR2,TK_NotStart,DUKHCONP2BZ4ARRF3645,Lime Stone Chips & Paving slab Installation,8170,240,0,144,0,344.5,344.5,144,0,0,0,,,,2014-02-06 08:00,2014-02-27 17:00,,2014-01-02 08:00,2014-01-22 17:00,2014-01-02 08:00,2014-01-22 17:00,2014-01-02 08:00,2014-01-22 17:00,2014-02-06 08:00,2014-02-27 17:00,,PT_Normal,,,,,FdYPpDv7T22ZuGIyVFRoZw,,,,N,0,0,,,2013-02-16 15:53,2013-02-16 15:56,admin,admin
502810,6359,125025,13662,0,N,N,N,CP_Drtn,TT_Task,DT_FixedDUR2,TK_NotStart,DUKHCONP2BZ4ARRF3660,Installation of Access Ladder,8178,472,40,160,0,132,132,160,0,0,0,,,,2014-03-19 08:00,2014-04-10 17:00,,2014-01-08 08:00,2014-01-30 17:00,2014-01-08 08:00,2014-01-30 17:00,2014-01-08 08:00,2014-01-30 17:00,2014-03-19 08:00,2014-04-10 17:00,,PT_Normal,,,,,io7lzRc6QMKVwwoc/lxvpw,,,,N,0,0,,,2013-02-16 15:53,2013-02-16 15:56,admin,admin
502811,6359,125025,13662,0,N,N,N,CP_Drtn,TT_Task,DT_FixedDUR2,TK_NotStart,DUKHCONP2BZ4ARRF3630,Leveling Screed for Waterproofing,8164,240,0,144,0,195.5,195.5,144,0,0,0,,,,2014-01-19 08:00,2014-02-08 17:00,,2013-12-14 08:00,2014-01-04 17:00,2013-12-14 08:00,2014-01-04 17:00,2013-12-14 08:00,2014-01-04 17:00,2014-01-19 08:00,2014-02-08 17:00,,PT_Normal,,,,,vMYN8T7UQ92tKaPrp2qJOA,,,,N,0,0,,,2013-02-16 15:53,2013-02-16 15:56,admin,admin
502812,6359,125027,13662,0,N,N,N,CP_Drtn,TT_Task,DT_FixedDUR2,TK_NotStart,DUKHCONP2BZ4ARGF3000,Block work,8168,0,0,200,0,5700,5700,200,0,0,0,,,,2013-10-02 08:00,2013-11-02 17:00,,2013-10-02 08:00,2013-11-02 17:00,2013-10-02 08:00,2013-11-02 17:00,2013-10-02 08:00,2013-11-02 17:00,2013-10-02 08:00,2013-11-02 17:00,,PT_Normal,,,,,/yRNis4GR/iLUJiFKiKK3Q,,,,N,0,0,,,2013-02-16 15:53,2013-02-16 15:56,admin,admin
502813,6359,125027,13662,0,N,N,N,CP_Drtn,TT_Task,DT_FixedDUR2,TK_NotStart,DUKHCONP2BZ4ARGF3005,Plastering work,8169,0,0,200,0,2850,2850,200,0,0,0,,,,2013-10-28 08:00,2013-11-25 17:00,,2013-10-28 08:00,2013-11-25 17:00,2013-10-28 08:00,2013-11-25 17:00,2013-10-28 08:00,2013-11-25 17:00,2013-10-28 08:00,2013-11-25 17:00,,PT_Normal,,,,,/l4mVQBIS1uUk2jyUgS+qA,,,,N,0,0,,,2013-02-16 15:53,2013-02-16 15:56,admin,admin
502814,6359,125027,13662,0,N,N,N,CP_Drtn,TT_Task,DT_FixedDUR2,TK_NotStart,DUKHCONP2BZ4ARGF3010,Flooring screed,8164,200,40,160,0,634.25,634.25,160,0,0,0,,,,2013-12-08 08:00,2013-12-31 17:00,,2013-11-09 08:00,2013-12-01 17:00,2013-11-09 08:00,2013-12-01 17:00,2013-11-09 08:00,2013-12-01 17:00,2013-12-08 08:00,2013-12-31 17:00,,PT_Normal,,,,,PXjUynkFRmua6K+BPsegbA,,,,N,0,0,,,2013-02-16 15:53,2013-02-16 15:56,admin,admin
502815,6359,125027,13662,0,N,N,N,CP_Drtn,TT_Task,DT_FixedDUR2,TK_NotStart,DUKHCONP2BZ4ARGF3015,Wet area waterproofing & Protection Screed,8178,40,0,160,0,87,87,160,0,0,0,,,,2013-11-19 08:00,2013-12-11 17:00,,2013-11-13 08:00,2013-12-05 17:00,2013-11-13 08:00,2013-12-05 17:00,2013-11-13 08:00,2013-12-05 17:00,2013-11-19 08:00,2013-12-11 17:00,,PT_Normal,,,,,6gPiC6bbReG4TUC8q7cxhQ,,,,N,0,0,,,2013-02-16 15:53,2013-02-16 15:56,admin,admin
502816,6359,125027,13662,0,N,N,N,CP_Drtn,TT_Task,DT_FixedDUR2,TK_NotStart,DUKHCONP2BZ4ARGF3030,Paint First coat,8178,48,0,160,0,1815,1815,160,0,0,0,,,,2013-12-25 08:00,2014-01-16 17:00,,2013-12-17 08:00,2014-01-09 17:00,2013-12-17 08:00,2014-01-09 17:00,2013-12-17 08:00,2014-01-09 17:00,2013-12-25 08:00,2014-01-16 17:00,,PT_Normal,,,,,cUR9ewZqR/WQhX8v+8KDqg,,,,N,0,0,,,2013-02-16 15:53,2013-02-16 15:56,admin,admin
502817,6359,125027,13662,0,N,N,N,CP_Drtn,TT_Task,DT_FixedDUR2,TK_NotStart,DUKHCONP2BZ4ARGF3020,Ceramic Wall Tiling,8170,40,0,120,0,1012.5,1012.5,120,0,0,0,,,,2013-12-08 08:00,2013-12-25 17:00,,2013-12-02 08:00,2013-12-19 17:00,2013-12-02 08:00,2013-12-19 17:00,2013-12-02 08:00,2013-12-19 17:00,2013-12-08 08:00,2013-12-25 17:00,,PT_Normal,,,,,iZPeLx4RQba09Df5fTe52w,,,,N,0,0,,,2013-02-16 15:53,2013-02-16 15:56,admin,admin
502818,6359,125027,13662,0,N,N,N,CP_Drtn,TT_Task,DT_FixedDUR2,TK_NotStart,DUKHCONP2BZ4ARGF3025,Porcelain Tile flooring,8170,40,0,160,0,1030.25,1030.25,160,0,0,0,,,,2013-12-25 08:00,2014-01-16 17:00,,2013-12-19 08:00,2014-01-11 17:00,2013-12-19 08:00,2014-01-11 17:00,2013-12-19 08:00,2014-01-11 17:00,2013-12-25 08:00,2014-01-16 17:00,,PT_Normal,,,,,QLAhgmVHRJ6p7C0CAXThLA,,,,N,0,0,,,2013-02-16 15:53,2013-02-16 15:56,admin,admin
502819,6359,125027,13662,0,N,N,N,CP_Drtn,TT_Task,DT_FixedDUR2,TK_NotStart,DUKHCONP2BZ4ARGF3040,Cobble Tile flooring,8170,160,24,120,0,300,300,120,0,0,0,,,,2014-03-16 08:00,2014-04-01 17:00,,2014-02-20 08:00,2014-03-09 17:00,2014-02-20 08:00,2014-03-09 17:00,2014-02-20 08:00,2014-03-09 17:00,2014-03-16 08:00,2014-04-01 17:00,,PT_Normal,,,,,wRV6vWboSxWB+wBQvkw8yA,,,,N,0,0,,,2013-02-16 15:53,2013-02-16 15:56,admin,admin
502820,6359,125027,13662,0,N,N,N,CP_Drtn,TT_Task,DT_FixedDUR2,TK_NotStart,DUKHCONP2BZ4ARGF3035,Slate Tile Flooring & Skirting,8170,104,0,144,0,1575,1575,144,0,0,0,,,,2014-02-17 08:00,2014-03-09 17:00,,2014-02-01 08:00,2014-02-22 17:00,2014-02-01 08:00,2014-02-22 17:00,2014-02-01 08:00,2014-02-22 17:00,2014-02-17 08:00,2014-03-09 17:00,,PT_Normal,,,,,h4QDkkLYRICkLmRrezQ6EQ,,,,N,0,0,,,2013-02-16 15:53,2013-02-16 15:56,admin,admin
502821,6359,125027,13662,0,N,N,N,CP_Drtn,TT_Task,DT_FixedDUR2,TK_NotStart,DUKHCONP2BZ4ARGF3045,Fixing of Suspension systems,8178,40,0,120,0,653.5,653.5,120,0,0,0,,,,2014-01-16 08:00,2014-02-02 17:00,,2014-01-11 08:00,2014-01-27 17:00,2014-01-11 08:00,2014-01-27 17:00,2014-01-11 08:00,2014-01-27 17:00,2014-01-16 08:00,2014-02-02 17:00,,PT_Normal,,,,,ixU8L72BRVyOLtM0fbyjDQ,,,,N,0,0,,,2013-02-16 15:53,2013-02-16 15:56,admin,admin
502822,6359,125027,13662,0,N,N,N,CP_Drtn,TT_Task,DT_FixedDUR2,TK_NotStart,DUKHCONP2BZ4ARGF3060,Gypsum board false ceiling,8178,40,0,160,0,653.5,653.5,160,0,0,0,,,,2014-02-02 08:00,2014-02-25 17:00,,2014-01-27 08:00,2014-02-19 17:00,2014-01-27 08:00,2014-02-19 17:00,2014-01-27 08:00,2014-02-19 17:00,2014-02-02 08:00,2014-02-25 17:00,,PT_Normal,,,,,/basi6FHTLCqS7vkVYJXIw,,,,N,0,0,,,2013-02-16 15:53,2013-02-16 15:56,admin,admin
502823,6359,125027,13662,0,N,N,N,CP_Drtn,TT_Task,DT_FixedDUR2,TK_NotStart,DUKHCONP2BZ4ARGF3065,Wooden door,8178,136,0,120,0,198,198,120,0,0,0,,,,2014-03-05 08:00,2014-03-22 17:00,,2014-02-13 08:00,2014-03-02 17:00,2014-02-13 08:00,2014-03-02 17:00,2014-02-13 08:00,2014-03-02 17:00,2014-03-05 08:00,2014-03-22 17:00,,PT_Normal,,,,,6HXbgSmlRGCgqDvaDkRF1A,,,,N,0,0,,,2013-02-16 15:53,2013-02-16 15:56,admin,admin
502824,6359,125027,13662,0,N,N,N,CP_Drtn,TT_Task,DT_FixedDUR2,TK_NotStart,DUKHCONP2BZ4ARGF3075,Carpentry & Joinery Works,8178,136,24,144,0,528,528,144,0,0,0,,,,2014-03-11 08:00,2014-03-31 17:00,,2014-02-19 08:00,2014-03-11 17:00,2014-02-19 08:00,2014-03-11 17:00,2014-02-19 08:00,2014-03-11 17:00,2014-03-11 08:00,2014-03-31 17:00,,PT_Normal,,,,,oejQzvtTRtuTtuzpIJ9x2Q,,,,N,0,0,,,2013-02-16 15:53,2013-02-16 15:56,admin,admin
502825,6359,125027,13662,0,N,N,N,CP_Drtn,TT_Task,DT_FixedDUR2,TK_NotStart,DUKHCONP2BZ4ARGF3090,Installation of Granite Counter Top,8171,64,0,120,0,99,99,120,0,0,0,,,,2014-03-25 08:00,2014-04-10 17:00,,2014-03-16 08:00,2014-04-01 17:00,2014-03-16 08:00,2014-04-01 17:00,2014-03-16 08:00,2014-04-01 17:00,2014-03-25 08:00,2014-04-10 17:00,,PT_Normal,,,,,Dd6BZxPbTvOdBmtmJ34mfw,,,,N,0,0,,,2013-02-16 15:53,2013-02-16 15:56,admin,admin
502826,6359,125027,13662,0,N,N,N,CP_Drtn,TT_Task,DT_FixedDUR2,TK_NotStart,DUKHCONP2BZ4ARGF3095,Final Painting,8178,184,0,200,0,1815,1815,200,0,0,0,,,,2014-04-17 08:00,2014-05-15 17:00,,2014-03-22 08:00,2014-04-19 17:00,2014-03-22 08:00,2014-04-19 17:00,2014-03-22 08:00,2014-04-19 17:00,2014-04-17 08:00,2014-05-15 17:00,,PT_Normal,,,,,jP9+TZYdRkSxM0pdbGKcsA,,,,N,0,0,,,2013-02-16 15:53,2013-02-16 15:56,admin,admin
502827,6359,125027,13662,0,N,N,N,CP_Drtn,TT_Task,DT_FixedDUR2,TK_NotStart,DUKHCONP2BZ4ARGF3080,Aluminum windows,8178,248,64,144,0,132,132,144,0,0,0,,,,2014-04-08 08:00,2014-04-28 17:00,,2014-03-03 08:00,2014-03-23 17:00,2014-03-03 08:00,2014-03-23 17:00,2014-03-03 08:00,2014-03-23 17:00,2014-04-08 08:00,2014-04-28 17:00,,PT_Normal,,,,,Fz7f5GJTT4WWQZqZrhcntQ,,,,N,0,0,,,2013-02-16 15:53,2013-02-16 15:56,admin,admin
502828,6359,125031,13662,0,N,N,N,CP_Drtn,TT_Task,DT_FixedDUR2,TK_NotStart,DUKHCONI1AZ1SLGL7200,Excavation,8177,496,0,200,0,497,497,200,251,0,251,,,,2014-05-31 08:00,2014-06-28 17:00,,2014-03-19 08:00,2014-04-16 17:00,2014-03-19 08:00,2014-04-16 17:00,2014-03-19 08:00,2014-04-16 17:00,2014-05-31 08:00,2014-06-28 17:00,,PT_Normal,,,,,vyXHMYcmSH+kzYqEYBg/KA,,,,N,0,0,,,2013-02-16 15:53,2013-02-16 16:35,admin,admin
502829,6359,125031,13662,0,N,N,N,CP_Drtn,TT_Task,DT_FixedDUR2,TK_NotStart,DUKHCONI1AZ1SLGL7205,Sweet Soil Laying,8178,496,40,200,0,2380,2380,200,0,0,0,,,,2014-06-11 08:00,2014-07-09 17:00,,2014-03-31 08:00,2014-04-28 17:00,2014-03-31 08:00,2014-04-28 17:00,2014-03-31 08:00,2014-04-28 17:00,2014-06-11 08:00,2014-07-09 17:00,,PT_Normal,,,,,bjoN6L9VQj26WCSYzfMhUA,,,,N,0,0,,,2013-02-16 15:53,2013-02-16 16:35,admin,admin
502830,6359,125031,13662,0,N,N,N,CP_Drtn,TT_Task,DT_FixedDUR2,TK_NotStart,DUKHCONI1AZ1SLGL7210,Plantation works,8178,776,160,200,0,588,588,200,0,0,0,,,,2014-08-12 08:00,2014-09-09 17:00,,2014-04-17 08:00,2014-05-15 17:00,2014-04-17 08:00,2014-05-15 17:00,2014-04-17 08:00,2014-05-15 17:00,2014-08-12 08:00,2014-09-09 17:00,,PT_Normal,,,,,uvYi5VmKRVmlWLlm4n2y6g,,,,N,0,0,,,2013-02-16 15:53,2013-02-16 16:35,admin,admin
502831,6359,125032,13662,0,N,N,N,CP_Drtn,TT_Task,DT_FixedDUR2,TK_NotStart,DUKHCONI1AZ1IRGL5265,Excavation for irrigation line,8177,424,0,200,0,812,812,200,500,0,500,,,,2014-03-31 08:00,2014-04-28 17:00,,2014-01-27 08:00,2014-02-25 17:00,2014-01-27 08:00,2014-02-25 17:00,2014-01-27 08:00,2014-02-25 17:00,2014-03-31 08:00,2014-04-28 17:00,,PT_Normal,,,,,XVyYajYtSFeg/CUe+NYbww,,,,N,0,0,,,2013-02-16 15:53,2013-02-16 16:35,admin,admin
502832,6359,125032,13662,0,N,N,N,CP_Drtn,TT_Task,DT_FixedDUR2,TK_NotStart,DUKHCONI1AZ1IRGL5270,Laying of irrigationline,8178,424,0,200,0,386.4,386.4,200,0,0,0,,,,2014-04-06 08:00,2014-05-04 17:00,,2014-02-02 08:00,2014-03-03 17:00,2014-02-02 08:00,2014-03-03 17:00,2014-02-02 08:00,2014-03-03 17:00,2014-04-06 08:00,2014-05-04 17:00,,PT_Normal,,,,,CL1VYx4tTOCgx7agVzqFlQ,,,,N,0,0,,,2013-02-16 15:53,2013-02-23 09:03,admin,admin
502833,6359,125032,13662,0,N,N,N,CP_Drtn,TT_Task,DT_FixedDUR2,TK_NotStart,DUKHCONI1AZ1IRGL5275,Testing of irrigation line,8178,424,0,200,0,319.2,319.2,200,0,0,0,,,,2014-04-12 08:00,2014-05-10 17:00,,2014-02-08 08:00,2014-03-09 17:00,2014-02-08 08:00,2014-03-09 17:00,2014-02-08 08:00,2014-03-09 17:00,2014-04-12 08:00,2014-05-10 17:00,,PT_Normal,,,,,oh6y6uRtThWxN2iO/EMt0A,,,,N,0,0,,,2013-02-16 15:53,2013-02-23 09:03,admin,admin
502834,6359,125032,13662,0,N,N,N,CP_Drtn,TT_Task,DT_FixedDUR2,TK_NotStart,DUKHCONI1AZ1IRGL5280,Backfilling irrigation line,8177,424,0,200,0,676,676,200,550,0,550,,,,2014-04-17 08:00,2014-05-15 17:00,,2014-02-15 08:00,2014-03-15 17:00,2014-02-15 08:00,2014-03-15 17:00,2014-02-15 08:00,2014-03-15 17:00,2014-04-17 08:00,2014-05-15 17:00,,PT_Normal,,,,,Oexnp2BLS1ybDIpTnYaeLA,,,,N,0,0,,,2013-02-16 15:53,2013-02-16 16:35,admin,admin
502835,6359,125032,13662,0,N,N,N,CP_Drtn,TT_Task,DT_FixedDUR2,TK_NotStart,DUKHCONI1AZ1IRGL5285,"Construction of Thrust Blocks,Pull boxes",8178,584,0,200,0,116.4,116.4,200,0,0,0,,,,2014-05-22 08:00,2014-06-19 17:00,,2014-02-26 08:00,2014-03-26 17:00,2014-02-26 08:00,2014-03-26 17:00,2014-02-26 08:00,2014-03-26 17:00,2014-05-22 08:00,2014-06-19 17:00,,PT_Normal,,,,,AeeACneTRr+egKuwW7+JsQ,,,,N,0,0,,,2013-02-16 15:53,2013-02-16 16:35,admin,admin
502836,6359,125032,13662,0,N,N,N,CP_Drtn,TT_Task,DT_FixedDUR2,TK_NotStart,DUKHCONI1AZ1IRGL5290,"Irrigation Fittings (Nozzle,Values)",8178,584,88,200,0,285.6,285.6,200,0,0,0,,,,2014-05-31 08:00,2014-06-28 17:00,,2014-03-06 08:00,2014-04-03 17:00,2014-03-06 08:00,2014-04-03 17:00,2014-03-06 08:00,2014-04-03 17:00,2014-05-31 08:00,2014-06-28 17:00,,PT_Normal,,,,,ZmuacpxWTi6TvllsSH04JQ,,,,N,0,0,,,2013-02-16 15:53,2013-02-16 16:35,admin,admin
502837,6359,125033,13662,0,N,N,N,CP_Drtn,TT_Task,DT_FixedDUR2,TK_NotStart,DUKHCONI1AZ1ELGL5215,Excavation Cable  Trenches  & Duct Banks,8177,224,0,200,0,1374,1374,200,600,0,600,,,,2014-01-16 08:00,2014-02-15 17:00,,2013-12-14 08:00,2014-01-12 17:00,2013-12-14 08:00,2014-01-12 17:00,2013-12-14 08:00,2014-01-12 17:00,2014-01-16 08:00,2014-02-15 17:00,,PT_Normal,,,,,wMw5LhQBQZapPcZcFEe4BA,,,,N,0,0,,,2013-02-16 15:53,2013-02-16 16:35,admin,admin
502838,6359,125033,13662,0,N,N,N,CP_Drtn,TT_Task,DT_FixedDUR2,TK_NotStart,DUKHCONI1AZ1ELGL5220,Laying of electrical cables,8178,248,0,200,0,1834.8,1834.8,200,0,0,0,,,,2014-01-26 08:00,2014-02-24 17:00,,2013-12-21 08:00,2014-01-18 17:00,2013-12-21 08:00,2014-01-18 17:00,2013-12-21 08:00,2014-01-18 17:00,2014-01-26 08:00,2014-02-24 17:00,,PT_Normal,,,,,ehGgm8VET/yFLkkIZInofg,,,,N,0,0,,,2013-02-16 15:53,2013-02-16 16:35,admin,admin
502839,6359,125033,13662,0,N,N,N,CP_Drtn,TT_Task,DT_FixedDUR2,TK_NotStart,DUKHCONI1AZ1ELGL5225,Backfilling Electrical trench,8177,248,0,200,0,862,862,200,550,0,550,,,,2014-02-03 08:00,2014-03-04 17:00,,2013-12-29 08:00,2014-01-26 17:00,2013-12-29 08:00,2014-01-26 17:00,2013-12-29 08:00,2014-01-26 17:00,2014-02-03 08:00,2014-03-04 17:00,,PT_Normal,,,,,o2ZfdFmJSzC8wjFuky2ZzQ,,,,N,0,0,,,2013-02-16 15:53,2013-02-16 16:35,admin,admin
502840,6359,125033,13662,0,N,N,N,CP_Drtn,TT_Task,DT_FixedDUR2,TK_NotStart,DUKHCONI1AZ1ELGL5230,Construction of Submain Board & Feeder Pillar,8165,760,0,200,0,224,224,200,0,0,0,,,,2014-05-06 08:00,2014-06-03 17:00,,2014-01-14 08:00,2014-02-12 17:00,2014-01-14 08:00,2014-02-12 17:00,2014-01-14 08:00,2014-02-12 17:00,2014-05-06 08:00,2014-06-03 17:00,,PT_Normal,,,,,OKZw3uGQQ+WGftvBmQJD8Q,,,,N,0,0,,,2013-02-16 15:53,2013-02-16 16:35,admin,admin
502841,6359,125034,13662,0,N,N,N,CP_Drtn,TT_Task,DT_FixedDUR2,TK_NotStart,DUKHCONI1AZ1PSGL7000,Excavation,8177,744,40,120,0,148,148,120,75.999956,0,75.999956,,,,2014-07-12 08:00,2014-07-28 17:00,,2014-03-25 08:00,2014-04-10 17:00,2014-03-25 08:00,2014-04-10 17:00,2014-03-25 08:00,2014-04-10 17:00,2014-07-12 08:00,2014-07-28 17:00,,PT_Normal,,,,,e1J1OGXwTge8zxY4WQdtTA,,,,N,0,0,,,2013-02-16 15:53,2013-02-16 16:35,admin,admin
502842,6359,125034,13662,0,N,N,N,CP_Drtn,TT_Task,DT_FixedDUR2,TK_NotStart,DUKHCONI1AZ1PSGL7005,Foundation casting,8165,704,0,120,0,252,252,120,0,0,0,,,,2014-07-17 08:00,2014-08-06 17:00,,2014-04-06 08:00,2014-04-22 17:00,2014-04-06 08:00,2014-04-22 17:00,2014-04-06 08:00,2014-04-22 17:00,2014-07-17 08:00,2014-08-06 17:00,,PT_Normal,,,,,CkRqowtFTCKaBJRSL0KKuQ,,,,N,0,0,,,2013-02-16 15:53,2013-02-16 16:35,admin,admin
502843,6359,125034,13662,0,N,N,N,CP_Drtn,TT_Task,DT_FixedDUR2,TK_NotStart,DUKHCONI1AZ1PSGL7010,"Column, Frame&  Fabrics  Erection",8178,704,0,200,0,286,286,200,0,0,0,,,,2014-07-29 08:00,2014-08-30 17:00,,2014-04-17 08:00,2014-05-15 17:00,2014-04-17 08:00,2014-05-15 17:00,2014-04-17 08:00,2014-05-15 17:00,2014-07-29 08:00,2014-08-30 17:00,,PT_Normal,,,,,slT3MjSZTiG8XrDcVj5Twg,,,,N,0,0,,,2013-02-16 15:53,2013-02-16 16:35,admin,admin
502844,6359,125034,13662,0,N,N,N,CP_Drtn,TT_Task,DT_FixedDUR2,TK_NotStart,DUKHCONI1AZ1PSGL7015,Electrical Works-Parking Shed,8178,704,200,200,0,51.6,51.6,200,0,0,0,,,,2014-08-07 08:00,2014-09-04 17:00,,2014-04-23 08:00,2014-05-21 17:00,2014-04-23 08:00,2014-05-21 17:00,2014-04-23 08:00,2014-05-21 17:00,2014-08-07 08:00,2014-09-04 17:00,,PT_Normal,,,,,IumUONs3SISLI7O30DSJlg,,,,N,0,0,,,2013-02-16 15:53,2013-02-16 16:35,admin,admin
502845,6359,125035,13662,0,N,N,N,CP_Drtn,TT_Task,DT_FixedDUR2,TK_NotStart,DUKHCONI1AZ1SAGL5135,Construction of manholes Drainage,8177,736,200,200,0,6,6,200,0,0,0,,,,2014-01-22 08:00,2014-02-20 17:00,,2013-10-03 08:00,2013-11-03 17:00,2013-10-03 08:00,2013-11-03 17:00,2013-10-03 08:00,2013-11-03 17:00,2014-01-22 08:00,2014-02-20 17:00,,PT_Normal,,,,,HlqKI/EuQxK1lzeMsqFB5Q,,,,N,0,0,,,2013-02-16 15:53,2013-02-16 15:56,admin,admin
502846,6359,125035,13662,0,N,N,N,CP_Drtn,TT_Task,DT_FixedDUR2,TK_NotStart,DUKHCONI1AZ1SAGL5140,Construction of soakaways,8172,160,0,200,0,154,154,200,0,0,0,,,,2013-10-29 08:00,2013-11-26 17:00,,2013-10-03 08:00,2013-11-03 17:00,2013-10-03 08:00,2013-11-03 17:00,2013-10-03 08:00,2013-11-03 17:00,2013-10-29 08:00,2013-11-26 17:00,,PT_Normal,,,,,GKyGNp6ZT7+x2ZHuI3ZLKA,,,,N,0,0,,,2013-02-16 15:53,2013-02-16 15:56,admin,admin
502847,6359,125035,13662,0,N,N,N,CP_Drtn,TT_Task,DT_FixedDUR2,TK_NotStart,DUKHCONI1AZ1SAGL5145,Construction of Road gullies,8172,160,0,200,0,176,176,200,0,0,0,,,,2013-11-27 08:00,2013-12-26 17:00,,2013-11-04 08:00,2013-12-02 17:00,2013-11-04 08:00,2013-12-02 17:00,2013-11-04 08:00,2013-12-02 17:00,2013-11-27 08:00,2013-12-26 17:00,,PT_Normal,,,,,EAJq6FymR5Skf6qXR3QVVw,,,,N,0,0,,,2013-02-16 15:53,2013-02-16 15:56,admin,admin
502848,6359,125035,13662,0,N,N,N,CP_Drtn,TT_Task,DT_FixedDUR2,TK_NotStart,DUKHCONI1AZ1SAGL5150,Connection with existing sewer manhole,8177,536,312,160,0,6,6,160,0,0,0,,,,2014-02-22 08:00,2014-03-16 17:00,,2013-12-03 08:00,2013-12-26 17:00,2013-12-03 08:00,2013-12-26 17:00,2013-12-03 08:00,2013-12-26 17:00,2014-02-22 08:00,2014-03-16 17:00,,PT_Normal,,,,,RcyAotOgTpS/dmsv08sTVQ,,,,N,0,0,,,2013-02-16 15:53,2013-02-16 16:35,admin,admin
502849,6359,125036,13662,0,N,N,N,CP_Drtn,TT_Task,DT_FixedDUR2,TK_NotStart,DUKHCONI1AZ1HDGL7020,Precast Concrete Kerbs works,8173,496,0,160,0,1178,1178,160,0,0,0,,,,2014-04-26 08:00,2014-05-18 17:00,,2014-02-12 08:00,2014-03-06 17:00,2014-02-12 08:00,2014-03-06 17:00,2014-02-12 08:00,2014-03-06 17:00,2014-04-26 08:00,2014-05-18 17:00,,PT_Normal,,,,,qE82p+61TouUVz6KLXyHdA,,,,N,0,0,,,2013-02-16 15:53,2013-02-16 16:35,admin,admin
502850,6359,125036,13662,0,N,N,N,CP_Drtn,TT_Task,DT_FixedDUR2,TK_NotStart,DUKHCONI1AZ1HDGL7025,Interlocking for Walkways,8174,496,0,200,0,806,806,200,0,0,0,,,,2014-05-07 08:00,2014-06-04 17:00,,2014-02-24 08:00,2014-03-24 17:00,2014-02-24 08:00,2014-03-24 17:00,2014-02-24 08:00,2014-03-24 17:00,2014-05-07 08:00,2014-06-04 17:00,,PT_Normal,,,,,euiaItjsQjqUA+WfraYY7Q,,,,N,0,0,,,2013-02-16 15:53,2013-02-16 16:35,admin,admin
502851,6359,125036,13662,0,N,N,N,CP_Drtn,TT_Task,DT_FixedDUR2,TK_NotStart,DUKHCONI1AZ1HDGL7030,Construction of Retaining wall,8165,496,0,200,0,756,756,200,0,0,0,,,,2014-05-19 08:00,2014-06-16 17:00,,2014-03-08 08:00,2014-04-05 17:00,2014-03-08 08:00,2014-04-05 17:00,2014-03-08 08:00,2014-04-05 17:00,2014-05-19 08:00,2014-06-16 17:00,,PT_Normal,,,,,8YC4B/I5Rr2cAwxq7XQuVQ,,,,N,0,0,,,2013-02-16 15:53,2013-02-16 16:35,admin,admin
502852,6359,125036,13662,0,N,N,N,CP_Drtn,TT_Task,DT_FixedDUR2,TK_NotStart,DUKHCONI1AZ1HDGL7035,Construction of Wash Stone Boulders,8170,496,0,200,0,88,88,200,0,0,0,,,,2014-05-19 08:00,2014-06-16 17:00,,2014-03-08 08:00,2014-04-05 17:00,2014-03-08 08:00,2014-04-05 17:00,2014-03-08 08:00,2014-04-05 17:00,2014-05-19 08:00,2014-06-16 17:00,,PT_Normal,,,,,JT/TsNMAQfiKfeoFEAa3Ng,,,,N,0,0,,,2013-02-16 15:53,2013-02-16 16:35,admin,admin
502853,6359,125036,13662,0,N,N,N,CP_Drtn,TT_Task,DT_FixedDUR2,TK_NotStart,DUKHCONI1AZ1HDGL7040,Construction of Speed Humps,8167,776,0,160,0,14,14,160,0,0,0,,,,2014-08-18 08:00,2014-09-09 17:00,,2014-04-23 08:00,2014-05-15 17:00,2014-04-23 08:00,2014-05-15 17:00,2014-04-23 08:00,2014-05-15 17:00,2014-08-18 08:00,2014-09-09 17:00,,PT_Normal,,,,,7NTj5nkHRZGSG+wUDyQcHQ,,,,N,0,0,,,2013-02-16 15:53,2013-02-16 16:35,admin,admin
502854,6359,125037,13662,0,N,N,N,CP_Drtn,TT_Task,DT_FixedDUR2,TK_NotStart,DUKHCONI1AZ1WSGL5155,Excavation for water line,8177,160,0,200,0,401,401,200,251,0,251,,,,2013-11-10 08:00,2013-12-08 17:00,,2013-10-15 08:00,2013-11-14 17:00,2013-10-15 08:00,2013-11-14 17:00,2013-10-15 08:00,2013-11-14 17:00,2013-11-10 08:00,2013-12-08 17:00,,PT_Normal,,,,,hFbENg8YSDWd6JYi21LSWQ,,,,N,0,0,,,2013-02-16 15:53,2013-02-16 15:56,admin,admin
502855,6359,125037,13662,0,N,N,N,CP_Drtn,TT_Task,DT_FixedDUR2,TK_NotStart,DUKHCONI1AZ1WSGL5160,Laying of water line,8178,160,0,200,0,285.6,285.6,200,0,0,0,,,,2013-11-16 08:00,2013-12-14 17:00,,2013-10-23 08:00,2013-11-20 17:00,2013-10-23 08:00,2013-11-20 17:00,2013-10-23 08:00,2013-11-20 17:00,2013-11-16 08:00,2013-12-14 17:00,,PT_Normal,,,,,Kafl73/GR3GvJPT9uVCpiQ,,,,N,0,0,,,2013-02-16 15:53,2013-02-16 15:56,admin,admin
502856,6359,125037,13662,0,N,N,N,CP_Drtn,TT_Task,DT_FixedDUR2,TK_NotStart,DUKHCONI1AZ1WSGL5165,Testing of potable water line,8178,160,0,200,0,84,84,200,0,0,0,,,,2013-11-21 08:00,2013-12-21 17:00,,2013-10-29 08:00,2013-11-26 17:00,2013-10-29 08:00,2013-11-26 17:00,2013-10-29 08:00,2013-11-26 17:00,2013-11-21 08:00,2013-12-21 17:00,,PT_Normal,,,,,Ky66HL0VRxm78y89vHy3/w,,,,N,0,0,,,2013-02-16 15:53,2013-02-16 15:56,admin,admin
502857,6359,125037,13662,0,N,N,N,CP_Drtn,TT_Task,DT_FixedDUR2,TK_NotStart,DUKHCONI1AZ1WSGL5170,Backfilling potable water line,8177,160,0,200,0,335,335,200,275,0,275,,,,2013-11-27 08:00,2013-12-26 17:00,,2013-11-04 08:00,2013-12-02 17:00,2013-11-04 08:00,2013-12-02 17:00,2013-11-04 08:00,2013-12-02 17:00,2013-11-27 08:00,2013-12-26 17:00,,PT_Normal,,,,,sWMwgvKgTJyFP7UjRJLdpg,,,,N,0,0,,,2013-02-16 15:53,2013-02-16 15:56,admin,admin
502858,6359,125037,13662,0,N,N,N,CP_Drtn,TT_Task,DT_FixedDUR2,TK_NotStart,DUKHCONI1AZ1WSGL5175,Construction of valve chambers & Thrust Blocks,8172,496,0,200,0,132,132,200,0,0,0,,,,2014-01-22 08:00,2014-02-20 17:00,,2013-11-10 08:00,2013-12-08 17:00,2013-11-10 08:00,2013-12-08 17:00,2013-11-10 08:00,2013-12-08 17:00,2014-01-22 08:00,2014-02-20 17:00,,PT_Normal,,,,,y6EYNMLsSZmOTMkofB+Bjw,,,,N,0,0,,,2013-02-16 15:53,2013-02-16 15:56,admin,admin
502859,6359,125037,13662,0,N,N,N,CP_Drtn,TT_Task,DT_FixedDUR2,TK_NotStart,DUKHCONI1AZ1WSGL5180,"Installation of meter ,Accessories & Connection",8178,496,96,160,0,50.4,50.4,160,0,0,0,,,,2014-02-22 08:00,2014-03-16 17:00,,2013-12-09 08:00,2014-01-01 17:00,2013-12-09 08:00,2014-01-01 17:00,2013-12-09 08:00,2014-01-01 17:00,2014-02-22 08:00,2014-03-16 17:00,,PT_Normal,,,,,KrlOBfjDS9itiJjWf51nZA,,,,N,0,0,,,2013-02-16 15:53,2013-02-16 16:35,admin,admin
502860,6359,125038,13662,0,N,N,N,CP_Drtn,TT_Task,DT_FixedDUR2,TK_NotStart,DUKHCONI1AZ1RWGL6000,Excavation & Earth Filling,8177,224,0,80,0,1232,1232,80,500,0,500,,,,2014-03-17 08:00,2014-03-27 17:00,,2014-02-12 08:00,2014-02-23 17:00,2014-02-12 08:00,2014-02-23 17:00,2014-02-12 08:00,2014-02-23 17:00,2014-03-17 08:00,2014-03-27 17:00,,PT_Normal,,,,,4TiSfNtXS/qmJ4e2ZKyeDg,,,,N,0,0,,,2013-02-16 15:53,2013-02-16 16:35,admin,admin
502861,6359,125038,13662,0,N,N,N,CP_Drtn,TT_Task,DT_FixedDUR2,TK_NotStart,DUKHCONI1AZ1RWGL6005,Laying of Sub Grade,8178,224,0,200,0,24,24,200,0,0,0,,,,2014-03-29 08:00,2014-04-26 17:00,,2014-02-24 08:00,2014-03-24 17:00,2014-02-24 08:00,2014-03-24 17:00,2014-02-24 08:00,2014-03-24 17:00,2014-03-29 08:00,2014-04-26 17:00,,PT_Normal,,,,,z2TEs9KsSCCOXPMP0+6DLw,,,,N,0,0,,,2013-02-16 15:53,2013-02-16 16:35,admin,admin
502862,6359,125038,13662,0,N,N,N,CP_Drtn,TT_Task,DT_FixedDUR2,TK_NotStart,DUKHCONI1AZ1RWGL6010,Laying of Precast Kerbs,8178,224,0,200,0,24,24,200,0,0,0,,,,2014-04-09 08:00,2014-05-07 17:00,,2014-03-08 08:00,2014-04-05 17:00,2014-03-08 08:00,2014-04-05 17:00,2014-03-08 08:00,2014-04-05 17:00,2014-04-09 08:00,2014-05-07 17:00,,PT_Normal,,,,,Au1lLKgXQyKU9Lnwkn6iqA,,,,N,0,0,,,2013-02-16 15:53,2013-02-16 16:35,admin,admin
502863,6359,125038,13662,0,N,N,N,CP_Drtn,TT_Task,DT_FixedDUR2,TK_NotStart,DUKHCONI1AZ1RWGL6015,Laying of Granular Sub Base Coarse,8173,224,0,160,0,1814,1814,160,600,0,600,,,,2014-04-21 08:00,2014-05-13 17:00,,2014-03-19 08:00,2014-04-10 17:00,2014-03-19 08:00,2014-04-10 17:00,2014-03-19 08:00,2014-04-10 17:00,2014-04-21 08:00,2014-05-13 17:00,,PT_Normal,,,,,CyPi85akSLeRcqEaQ/QlUg,,,,N,0,0,,,2013-02-16 15:53,2013-02-16 16:35,admin,admin
502864,6359,125038,13662,0,N,N,N,CP_Drtn,TT_Task,DT_FixedDUR2,TK_NotStart,DUKHCONI1AZ1RWGL6020,Laying of Road Base Asphalt Concrete,8178,704,0,40,0,174,174,40,150,0,150,,,,2014-07-23 08:00,2014-07-28 17:00,,2014-04-12 08:00,2014-04-16 17:00,2014-04-12 08:00,2014-04-16 17:00,2014-04-12 08:00,2014-04-16 17:00,2014-07-23 08:00,2014-07-28 17:00,,PT_Normal,,,,,JsAVvzWvTXeQNnx/UucDbQ,,,,N,0,0,,,2013-02-16 15:53,2013-02-16 16:35,admin,admin
502865,6359,125038,13662,0,N,N,N,CP_Drtn,TT_Task,DT_FixedDUR2,TK_NotStart,DUKHCONI1AZ1RWGL6025,Laying of Asphalt Wearing Coarse,8178,776,0,40,0,174,174,40,150,0,150,,,,2014-08-12 08:00,2014-08-17 17:00,,2014-04-17 08:00,2014-04-22 17:00,2014-04-17 08:00,2014-04-22 17:00,2014-04-17 08:00,2014-04-22 17:00,2014-08-12 08:00,2014-08-17 17:00,,PT_Normal,,,,,gbaZ5s25QnOojJI88rdq9w,,,,N,0,0,,,2013-02-16 15:53,2013-02-16 16:35,admin,admin
502866,6359,125038,13662,0,N,N,N,CP_Drtn,TT_Task,DT_FixedDUR2,TK_NotStart,DUKHCONI1AZ1RWGL6030,Traffic Signage & Road Marking,8178,824,120,40,0,974,974,40,0,0,0,,,,2014-08-25 08:00,2014-08-30 17:00,,2014-04-23 08:00,2014-04-28 17:00,2014-04-23 08:00,2014-04-28 17:00,2014-04-23 08:00,2014-04-28 17:00,2014-08-25 08:00,2014-08-30 17:00,,PT_Normal,,,,,spPCbFurTeqb5Pfq3HX5Fg,,,,N,0,0,,,2013-02-16 15:53,2013-02-16 16:35,admin,admin
502867,6359,125039,13662,0,N,N,N,CP_Drtn,TT_Task,DT_FixedDUR2,TK_NotStart,DUKHCONI1AZ1STGL5235,Excavation for Street lighting,8177,224,0,200,0,69,69,200,51,0,51,,,,2014-01-16 08:00,2014-02-15 17:00,,2013-12-14 08:00,2014-01-12 17:00,2013-12-14 08:00,2014-01-12 17:00,2013-12-14 08:00,2014-01-12 17:00,2014-01-16 08:00,2014-02-15 17:00,,PT_Normal,,,,,8iZxc07ZTKmNI8ZzULou+w,,,,N,0,0,,,2013-02-16 15:53,2013-02-16 16:35,admin,admin
502868,6359,125039,13662,0,N,N,N,CP_Drtn,TT_Task,DT_FixedDUR2,TK_NotStart,DUKHCONI1AZ1STGL5240,Construction of Duct Banks,8178,224,0,200,0,1192.8,1192.8,200,0,0,0,,,,2014-01-22 08:00,2014-02-20 17:00,,2013-12-21 08:00,2014-01-18 17:00,2013-12-21 08:00,2014-01-18 17:00,2013-12-21 08:00,2014-01-18 17:00,2014-01-22 08:00,2014-02-20 17:00,,PT_Normal,,,,,7c3VdRBoRFyIe1wAfWceyw,,,,N,0,0,,,2013-02-16 15:53,2013-02-23 09:03,admin,admin
502869,6359,125039,13662,0,N,N,N,CP_Drtn,TT_Task,DT_FixedDUR2,TK_NotStart,DUKHCONI1AZ1STGL5245,Construction of Foundation,8172,224,0,200,0,638,638,200,0,0,0,,,,2014-01-22 08:00,2014-02-20 17:00,,2013-12-21 08:00,2014-01-18 17:00,2013-12-21 08:00,2014-01-18 17:00,2013-12-21 08:00,2014-01-18 17:00,2014-01-22 08:00,2014-02-20 17:00,,PT_Normal,,,,,IGaJVtv/RIGdMEHB88oHCQ,,,,N,0,0,,,2013-02-16 15:53,2013-02-16 16:35,admin,admin
502870,6359,125039,13662,0,N,N,N,CP_Drtn,TT_Task,DT_FixedDUR2,TK_NotStart,DUKHCONI1AZ1STGL5250,Backfilling Street Lighting,8177,224,0,200,0,287,287,200,275,0,275,,,,2014-01-28 08:00,2014-02-26 17:00,,2013-12-26 08:00,2014-01-23 17:00,2013-12-26 08:00,2014-01-23 17:00,2013-12-26 08:00,2014-01-23 17:00,2014-01-28 08:00,2014-02-26 17:00,,PT_Normal,,,,,rRFhjWHmQzuZkRakAGtzZg,,,,N,0,0,,,2013-02-16 15:53,2013-02-16 16:35,admin,admin
502871,6359,125039,13662,0,N,N,N,CP_Drtn,TT_Task,DT_FixedDUR2,TK_NotStart,DUKHCONI1AZ1STGL5255,Installation of light Post,8178,760,0,200,0,216,216,200,0,0,0,,,,2014-05-22 08:00,2014-06-19 17:00,,2014-01-30 08:00,2014-03-01 17:00,2014-01-30 08:00,2014-03-01 17:00,2014-01-30 08:00,2014-03-01 17:00,2014-05-22 08:00,2014-06-19 17:00,,PT_Normal,,,,,EodAdHGbQWeUQzdXHQZgtw,,,,N,0,0,,,2013-02-16 15:53,2013-02-16 16:35,admin,admin
502872,6359,125039,13662,0,N,N,N,CP_Drtn,TT_Task,DT_FixedDUR2,TK_NotStart,DUKHCONI1AZ1STGL5260,Electrical Works,8178,760,0,200,0,823.6,823.6,200,0,0,0,,,,2014-06-29 08:00,2014-07-27 17:00,,2014-03-10 08:00,2014-04-07 17:00,2014-03-10 08:00,2014-04-07 17:00,2014-03-10 08:00,2014-04-07 17:00,2014-06-29 08:00,2014-07-27 17:00,,PT_Normal,,,,,sJ/Vjiu1SmCH8EavRTaqvQ,,,,N,0,0,,,2013-02-16 15:53,2013-02-16 16:35,admin,admin
502873,6359,125040,13662,0,N,N,N,CP_Drtn,TT_Task,DT_FixedDUR2,TK_NotStart,DUKHCONI1AZ1FFGL5200,Backfilling firefighting line,8177,160,0,200,0,329,329,200,275,0,275,,,,2013-12-30 08:00,2014-01-27 17:00,,2013-12-05 08:00,2014-01-04 17:00,2013-12-05 08:00,2014-01-04 17:00,2013-12-05 08:00,2014-01-04 17:00,2013-12-30 08:00,2014-01-27 17:00,,PT_Normal,,,,,amrql4teRpK9Dszwo3K8DQ,,,,N,0,0,,,2013-02-16 15:53,2013-02-16 16:35,admin,admin
502874,6359,125040,13662,0,N,N,N,CP_Drtn,TT_Task,DT_FixedDUR2,TK_NotStart,DUKHCONI1AZ1FFGL5205,Construction of valve chambers & Thrust Blocks,8165,400,0,200,0,202,202,200,0,0,0,,,,2014-02-09 08:00,2014-03-10 17:00,,2013-12-11 08:00,2014-01-09 17:00,2013-12-11 08:00,2014-01-09 17:00,2013-12-11 08:00,2014-01-09 17:00,2014-02-09 08:00,2014-03-10 17:00,,PT_Normal,,,,,58NpvMhTQja2u0gypH1cwQ,,,,N,0,0,,,2013-02-16 15:53,2013-02-16 16:35,admin,admin
502875,6359,125040,13662,0,N,N,N,CP_Drtn,TT_Task,DT_FixedDUR2,TK_NotStart,DUKHCONI1AZ1FFGL5210,Connection with existing Firewater System,8178,400,176,200,0,134.4,134.4,200,0,0,0,,,,2014-02-16 08:00,2014-03-16 17:00,,2013-12-17 08:00,2014-01-15 17:00,2013-12-17 08:00,2014-01-15 17:00,2013-12-17 08:00,2014-01-15 17:00,2014-02-16 08:00,2014-03-16 17:00,,PT_Normal,,,,,xtG8RpkwS5W2POQuWYoxkA,,,,N,0,0,,,2013-02-16 15:53,2013-02-16 16:35,admin,admin
502876,6359,125040,13662,0,N,N,N,CP_Drtn,TT_Task,DT_FixedDUR2,TK_NotStart,DUKHCONI1AZ1FFGL5185,Excavation for firefighting line,8177,160,0,200,0,283,283,200,151,0,151,,,,2013-12-09 08:00,2014-01-07 17:00,,2013-11-16 08:00,2013-12-14 17:00,2013-11-16 08:00,2013-12-14 17:00,2013-11-16 08:00,2013-12-14 17:00,2013-12-09 08:00,2014-01-07 17:00,,PT_Normal,,,,,1/5K8oyXSLmvjVWN+yaQOQ,,,,N,0,0,,,2013-02-16 15:53,2013-02-16 16:35,admin,admin
502877,6359,125040,13662,0,N,N,N,CP_Drtn,TT_Task,DT_FixedDUR2,TK_NotStart,DUKHCONI1AZ1FFGL5190,Laying of firefighting line,8178,160,0,200,0,303.6,303.6,200,0,0,0,,,,2013-12-17 08:00,2014-01-15 17:00,,2013-11-24 08:00,2013-12-23 17:00,2013-11-24 08:00,2013-12-23 17:00,2013-11-24 08:00,2013-12-23 17:00,2013-12-17 08:00,2014-01-15 17:00,,PT_Normal,,,,,r0hLdj9vT868JlJMM8QYlA,,,,N,0,0,,,2013-02-16 15:53,2013-02-16 16:35,admin,admin
502878,6359,125040,13662,0,N,N,N,CP_Drtn,TT_Task,DT_FixedDUR2,TK_NotStart,DUKHCONI1AZ1FFGL5195,Testing of firefighting line,8178,160,0,200,0,84,84,200,0,0,0,,,,2013-12-24 08:00,2014-01-21 17:00,,2013-11-30 08:00,2013-12-29 17:00,2013-11-30 08:00,2013-12-29 17:00,2013-11-30 08:00,2013-12-29 17:00,2013-12-24 08:00,2014-01-21 17:00,,PT_Normal,,,,,im6J/3+wRGWpFkeepWhTzA,,,,N,0,0,,,2013-02-16 15:53,2013-02-16 16:35,admin,admin
502879,6359,125041,13662,0,N,N,N,CP_Drtn,TT_Task,DT_FixedDUR2,TK_NotStart,DUKHCONI1AZ1BWGL5315,Construction of Boundary Wall (Ht-3m),8165,792,0,200,0,224,224,200,0,0,0,,,,2014-05-04 08:00,2014-06-01 17:00,,2014-01-07 08:00,2014-02-04 17:00,2014-01-07 08:00,2014-02-04 17:00,2014-01-07 08:00,2014-02-04 17:00,2014-05-04 08:00,2014-06-01 17:00,,PT_Normal,,,,,WHPG+jZqQOKRrxo4qlnpvg,,,,N,0,0,,,2013-02-16 15:53,2013-02-16 16:44,admin,admin
502880,6359,125041,13662,0,N,N,N,CP_Drtn,TT_Task,DT_FixedDUR2,TK_NotStart,DUKHCONI1AZ1BWGL5320,"Install.Steel Gate,Entance Barrier (3m Wall)",8178,792,0,200,0,28,28,200,0,0,0,,,,2014-05-20 08:00,2014-06-17 17:00,,2014-01-23 08:00,2014-02-22 17:00,2014-01-23 08:00,2014-02-22 17:00,2014-01-23 08:00,2014-02-22 17:00,2014-05-20 08:00,2014-06-17 17:00,,PT_Normal,,,,,Lm8l0cO3S5WyZ20IiyZiNw,,,,N,0,0,,,2013-02-16 15:53,2013-02-16 16:44,admin,admin
502881,6359,125041,13662,0,N,N,N,CP_Drtn,TT_Task,DT_FixedDUR2,TK_NotStart,DUKHCONI1AZ1BWGL5325,Const. of Villa Front Boundary Wall (Ht-2m),8165,792,0,200,0,168,168,200,0,0,0,,,,2014-06-18 08:00,2014-07-16 17:00,,2014-02-23 08:00,2014-03-23 17:00,2014-02-23 08:00,2014-03-23 17:00,2014-02-23 08:00,2014-03-23 17:00,2014-06-18 08:00,2014-07-16 17:00,,PT_Normal,,,,,ezXOpQeaRKCrf4hqttUErw,,,,N,0,0,,,2013-02-16 15:53,2013-02-16 16:44,admin,admin
502882,6359,125041,13662,0,N,N,N,CP_Drtn,TT_Task,DT_FixedDUR2,TK_NotStart,DUKHCONI1AZ1BWGL5330,Const. of Blockwork fence Wall (Ht-1.85m),8165,792,200,200,0,154,154,200,0,0,0,,,,2014-06-30 08:00,2014-07-28 17:00,,2014-03-06 08:00,2014-04-03 17:00,2014-03-06 08:00,2014-04-03 17:00,2014-03-06 08:00,2014-04-03 17:00,2014-06-30 08:00,2014-07-28 17:00,,PT_Normal,,,,,DLjgzeAWRe2646LNI6Iz9Q,,,,N,0,0,,,2013-02-16 15:53,2013-02-16 16:44,admin,admin
502883,6359,125042,13662,0,N,N,N,CP_Drtn,TT_Task,DT_FixedDUR2,TK_NotStart,DUKHCONI1AZ1DRGL5115,Excavation for Drainage line,8177,160,0,200,0,431,431,200,251,0,251,,,,2013-09-16 08:00,2013-10-14 17:00,,2013-08-24 08:00,2013-09-21 17:00,2013-08-24 08:00,2013-09-21 17:00,2013-08-24 08:00,2013-09-21 17:00,2013-09-16 08:00,2013-10-14 17:00,,PT_Normal,,,,,gaKTtqAgRCSji/zqtpmYqA,,,,N,0,0,,,2013-02-16 15:53,2013-02-16 15:56,admin,admin
502884,6359,125042,13662,0,N,N,N,CP_Drtn,TT_Task,DT_FixedDUR2,TK_NotStart,DUKHCONI1AZ1DRGL5120,Laying of Drainage line,8178,160,0,200,0,276,276,200,0,0,0,,,,2013-09-28 08:00,2013-10-28 17:00,,2013-09-04 08:00,2013-10-02 17:00,2013-09-04 08:00,2013-10-02 17:00,2013-09-04 08:00,2013-10-02 17:00,2013-09-28 08:00,2013-10-28 17:00,,PT_Normal,,,,,tec3QJ1QTYWlrfp+huTDrw,,,,N,0,0,,,2013-02-16 15:53,2013-02-16 15:56,admin,admin
502885,6359,125042,13662,0,N,N,N,CP_Drtn,TT_Task,DT_FixedDUR2,TK_NotStart,DUKHCONI1AZ1DRGL5125,Testing of Drainage line,8178,160,0,200,0,134.4,134.4,200,0,0,0,,,,2013-10-09 08:00,2013-11-09 17:00,,2013-09-16 08:00,2013-10-14 17:00,2013-09-16 08:00,2013-10-14 17:00,2013-09-16 08:00,2013-10-14 17:00,2013-10-09 08:00,2013-11-09 17:00,,PT_Normal,,,,,h0ZjTcwCTYWynearqV6b4Q,,,,N,0,0,,,2013-02-16 15:53,2013-02-16 15:56,admin,admin
502886,6359,125042,13662,0,N,N,N,CP_Drtn,TT_Task,DT_FixedDUR2,TK_NotStart,DUKHCONI1AZ1DRGL5130,Backfilling Drainage line,8177,160,0,120,0,402,402,120,330,0,330,,,,2013-10-29 08:00,2013-11-14 17:00,,2013-10-03 08:00,2013-10-22 17:00,2013-10-03 08:00,2013-10-22 17:00,2013-10-03 08:00,2013-10-22 17:00,2013-10-29 08:00,2013-11-14 17:00,,PT_Normal,,,,,ZWnCvppkS5mIKwDSY2HrFw,,,,N,0,0,,,2013-02-16 15:53,2013-02-16 15:56,admin,admin
502887,6359,125043,13662,0,N,N,N,CP_Drtn,TT_Task,DT_FixedDUR2,TK_NotStart,DUKHCONI1AZ1TCGL5295,Excavation Telecommunication trenches,8177,224,0,160,0,528,528,160,300,0,300,,,,2014-02-09 08:00,2014-03-04 17:00,,2014-01-07 08:00,2014-01-29 17:00,2014-01-07 08:00,2014-01-29 17:00,2014-01-07 08:00,2014-01-29 17:00,2014-02-09 08:00,2014-03-04 17:00,,PT_Normal,,,,,qJIEHQpdQoah5rvNnQPZdA,,,,N,0,0,,,2013-02-16 15:53,2013-02-16 16:35,admin,admin
502888,6359,125043,13662,0,N,N,N,CP_Drtn,TT_Task,DT_FixedDUR2,TK_NotStart,DUKHCONI1AZ1TCGL5300,Laying of cables,8178,224,0,160,0,795.2,795.2,160,0,0,0,,,,2014-02-16 08:00,2014-03-10 17:00,,2014-01-13 08:00,2014-02-04 17:00,2014-01-13 08:00,2014-02-04 17:00,2014-01-13 08:00,2014-02-04 17:00,2014-02-16 08:00,2014-03-10 17:00,,PT_Normal,,,,,iDm+pIEjTUWBQNx53B7mHg,,,,N,0,0,,,2013-02-16 15:53,2013-02-16 16:35,admin,admin
502889,6359,125043,13662,0,N,N,N,CP_Drtn,TT_Task,DT_FixedDUR2,TK_NotStart,DUKHCONI1AZ1TCGL5305,Backfilling telecommunication trench,8177,224,0,160,0,530,530,160,440,0,440,,,,2014-02-22 08:00,2014-03-16 17:00,,2014-01-19 08:00,2014-02-10 17:00,2014-01-19 08:00,2014-02-10 17:00,2014-01-19 08:00,2014-02-10 17:00,2014-02-22 08:00,2014-03-16 17:00,,PT_Normal,,,,,pgPQ57hLRu2uqRjPWz/BjQ,,,,N,0,0,,,2013-02-16 15:53,2013-02-16 16:35,admin,admin
502890,6359,125043,13662,0,N,N,N,CP_Drtn,TT_Task,DT_FixedDUR2,TK_NotStart,DUKHCONI1AZ1TCGL5310,Connection & Installation,8178,264,40,160,0,344.4,344.4,160,0,0,0,,,,2014-03-11 08:00,2014-04-02 17:00,,2014-01-30 08:00,2014-02-23 17:00,2014-01-30 08:00,2014-02-23 17:00,2014-01-30 08:00,2014-02-23 17:00,2014-03-11 08:00,2014-04-02 17:00,,PT_Normal,,,,,r9YkzuUOS/+yO1Nlw4oLhg,,,,N,0,0,,,2013-02-16 15:53,2013-02-16 16:35,admin,admin
502891,6359,125046,13662,0,N,N,N,CP_Drtn,TT_Task,DT_FixedDUR2,TK_NotStart,DUKHCONI1AZ4TCGL5295,Excavation Telecommunication trenches,8177,96,0,160,0,528,528,160,300,0,300,,,,2014-06-30 08:00,2014-07-22 17:00,,2014-06-16 08:00,2014-07-08 17:00,2014-06-16 08:00,2014-07-08 17:00,2014-06-16 08:00,2014-07-08 17:00,2014-06-30 08:00,2014-07-22 17:00,,PT_Normal,,,,,E3hqcsGEQy2cw0lM2E8mNA,,,,N,0,0,,,2013-02-16 15:53,2013-02-16 16:35,admin,admin
502892,6359,125046,13662,0,N,N,N,CP_Drtn,TT_Task,DT_FixedDUR2,TK_NotStart,DUKHCONI1AZ4TCGL5300,Laying of cables,8178,96,0,160,0,795.2,795.2,160,0,0,0,,,,2014-07-06 08:00,2014-07-28 17:00,,2014-06-22 08:00,2014-07-14 17:00,2014-06-22 08:00,2014-07-14 17:00,2014-06-22 08:00,2014-07-14 17:00,2014-07-06 08:00,2014-07-28 17:00,,PT_Normal,,,,,fgDW9PJSTyGpEepZPYzwoQ,,,,N,0,0,,,2013-02-16 15:53,2013-02-16 16:35,admin,admin
502893,6359,125046,13662,0,N,N,N,CP_Drtn,TT_Task,DT_FixedDUR2,TK_NotStart,DUKHCONI1AZ4TCGL5305,Backfilling telecommunication trench,8177,96,0,160,0,530,530,160,440,0,440,,,,2014-07-12 08:00,2014-08-06 17:00,,2014-06-28 08:00,2014-07-20 17:00,2014-06-28 08:00,2014-07-20 17:00,2014-06-28 08:00,2014-07-20 17:00,2014-07-12 08:00,2014-08-06 17:00,,PT_Normal,,,,,lgSxoUzASu2pdWiuG87x+g,,,,N,0,0,,,2013-02-16 15:53,2013-02-16 16:35,admin,admin
502894,6359,125046,13662,0,N,N,N,CP_Drtn,TT_Task,DT_FixedDUR2,TK_NotStart,DUKHCONI1AZ4TCGL5310,Connection & Installation,8178,408,184,160,0,344.4,344.4,160,0,0,0,,,,2014-09-10 08:00,2014-10-02 17:00,,2014-07-09 08:00,2014-07-31 17:00,2014-07-09 08:00,2014-07-31 17:00,2014-07-09 08:00,2014-07-31 17:00,2014-09-10 08:00,2014-10-02 17:00,,PT_Normal,,,,,sFQDio0rRmOVnWmghIQyiQ,,,,N,0,0,,,2013-02-16 15:53,2013-02-16 16:35,admin,admin
502895,6359,125047,13662,0,N,N,N,CP_Drtn,TT_Task,DT_FixedDUR2,TK_NotStart,DUKHCONI1AZ4RWGL6000,Excavation & Earth Filling,8177,96,0,80,0,1232,1232,80,500,0,500,,,,2014-08-07 08:00,2014-08-18 17:00,,2014-07-21 08:00,2014-07-31 17:00,2014-07-21 08:00,2014-07-31 17:00,2014-07-21 08:00,2014-07-31 17:00,2014-08-07 08:00,2014-08-18 17:00,,PT_Normal,,,,,uNXaxxarRLerah30mfGsAQ,,,,N,0,0,,,2013-02-16 15:53,2013-02-16 16:35,admin,admin
502896,6359,125047,13662,0,N,N,N,CP_Drtn,TT_Task,DT_FixedDUR2,TK_NotStart,DUKHCONI1AZ4RWGL6005,Laying of Sub Grade,8178,96,0,200,0,24,24,200,0,0,0,,,,2014-08-19 08:00,2014-09-16 17:00,,2014-08-05 08:00,2014-09-02 17:00,2014-08-05 08:00,2014-09-02 17:00,2014-08-05 08:00,2014-09-02 17:00,2014-08-19 08:00,2014-09-16 17:00,,PT_Normal,,,,,MfwEItFlSieR+UfhC4bZhA,,,,N,0,0,,,2013-02-16 15:53,2013-02-16 16:35,admin,admin
502897,6359,125047,13662,0,N,N,N,CP_Drtn,TT_Task,DT_FixedDUR2,TK_NotStart,DUKHCONI1AZ4RWGL6010,Laying of Precast Kerbs,8178,96,0,200,0,24,24,200,0,0,0,,,,2014-08-31 08:00,2014-09-28 17:00,,2014-08-17 08:00,2014-09-14 17:00,2014-08-17 08:00,2014-09-14 17:00,2014-08-17 08:00,2014-09-14 17:00,2014-08-31 08:00,2014-09-28 17:00,,PT_Normal,,,,,BTzpFXUJQhCWCM5AUsCt5A,,,,N,0,0,,,2013-02-16 15:53,2013-02-16 16:35,admin,admin
502898,6359,125047,13662,0,N,N,N,CP_Drtn,TT_Task,DT_FixedDUR2,TK_NotStart,DUKHCONI1AZ4RWGL6015,Laying of Granular Sub Base Coarse,8173,96,0,160,0,1814,1814,160,600,0,600,,,,2014-09-11 08:00,2014-10-04 17:00,,2014-08-28 08:00,2014-09-20 17:00,2014-08-28 08:00,2014-09-20 17:00,2014-08-28 08:00,2014-09-20 17:00,2014-09-11 08:00,2014-10-04 17:00,,PT_Normal,,,,,DgpRaNQwQFGq8vi7aoC+xA,,,,N,0,0,,,2013-02-16 15:53,2013-02-16 16:35,admin,admin
502899,6359,125047,13662,0,N,N,N,CP_Drtn,TT_Task,DT_FixedDUR2,TK_NotStart,DUKHCONI1AZ4RWGL6020,Laying of Road Base Asphalt Concrete,8178,216,0,40,0,174,174,40,150,0,150,,,,2014-10-25 08:00,2014-10-29 17:00,,2014-09-21 08:00,2014-09-25 17:00,2014-09-21 08:00,2014-09-25 17:00,2014-09-21 08:00,2014-09-25 17:00,2014-10-25 08:00,2014-10-29 17:00,,PT_Normal,,,,,wGZ7YJLKRuyaeOE9DqZbeA,,,,N,0,0,,,2013-02-16 15:53,2013-02-16 16:35,admin,admin
502900,6359,125047,13662,0,N,N,N,CP_Drtn,TT_Task,DT_FixedDUR2,TK_NotStart,DUKHCONI1AZ4RWGL6025,Laying of Asphalt Wearing Coarse,8178,328,0,40,0,174,174,40,150,0,150,,,,2014-11-16 08:00,2014-11-20 17:00,,2014-09-27 08:00,2014-10-01 17:00,2014-09-27 08:00,2014-10-01 17:00,2014-09-27 08:00,2014-10-01 17:00,2014-11-16 08:00,2014-11-20 17:00,,PT_Normal,,,,,N4JAM0wVTZi3dsgcxt773w,,,,N,0,0,,,2013-02-16 15:53,2013-02-16 16:35,admin,admin
502901,6359,125047,13662,0,N,N,N,CP_Drtn,TT_Task,DT_FixedDUR2,TK_NotStart,DUKHCONI1AZ4RWGL6030,Traffic Signage & Road Marking,8178,336,120,40,0,974,974,40,0,0,0,,,,2014-11-23 08:00,2014-11-27 17:00,,2014-10-02 08:00,2014-10-07 17:00,2014-10-02 08:00,2014-10-07 17:00,2014-10-02 08:00,2014-10-07 17:00,2014-11-23 08:00,2014-11-27 17:00,,PT_Normal,,,,,ilpOp0neTMezPUCuhQOhPA,,,,N,0,0,,,2013-02-16 15:53,2013-02-16 16:35,admin,admin
502902,6359,125048,13662,0,N,N,N,CP_Drtn,TT_Task,DT_FixedDUR2,TK_NotStart,DUKHCONI1AZ4IRGL5265,Excavation for irrigation line,8177,296,0,200,0,812,812,200,500,0,500,,,,2014-08-21 08:00,2014-09-18 17:00,,2014-07-06 08:00,2014-08-06 17:00,2014-07-06 08:00,2014-08-06 17:00,2014-07-06 08:00,2014-08-06 17:00,2014-08-21 08:00,2014-09-18 17:00,,PT_Normal,,,,,qxDt4ViER86sSsZNTTsW5g,,,,N,0,0,,,2013-02-16 15:53,2013-02-16 16:35,admin,admin
502903,6359,125048,13662,0,N,N,N,CP_Drtn,TT_Task,DT_FixedDUR2,TK_NotStart,DUKHCONI1AZ4IRGL5270,Laying of irrigationline,8178,296,0,200,0,386.4,386.4,200,0,0,0,,,,2014-08-27 08:00,2014-09-24 17:00,,2014-07-12 08:00,2014-08-12 17:00,2014-07-12 08:00,2014-08-12 17:00,2014-07-12 08:00,2014-08-12 17:00,2014-08-27 08:00,2014-09-24 17:00,,PT_Normal,,,,,mIdyWZg7SiKer2xK9APsiw,,,,N,0,0,,,2013-02-16 15:54,2013-02-23 09:03,admin,admin
502904,6359,125048,13662,0,N,N,N,CP_Drtn,TT_Task,DT_FixedDUR2,TK_NotStart,DUKHCONI1AZ4IRGL5275,Testing of irrigation line,8178,296,0,200,0,319.2,319.2,200,0,0,0,,,,2014-09-02 08:00,2014-09-30 17:00,,2014-07-17 08:00,2014-08-18 17:00,2014-07-17 08:00,2014-08-18 17:00,2014-07-17 08:00,2014-08-18 17:00,2014-09-02 08:00,2014-09-30 17:00,,PT_Normal,,,,,4r+0BUS3R1CYUznonlOaYQ,,,,N,0,0,,,2013-02-16 15:54,2013-02-23 09:03,admin,admin
502905,6359,125048,13662,0,N,N,N,CP_Drtn,TT_Task,DT_FixedDUR2,TK_NotStart,DUKHCONI1AZ4IRGL5280,Backfilling irrigation line,8177,296,0,200,0,676,676,200,550,0,550,,,,2014-09-08 08:00,2014-10-06 17:00,,2014-07-23 08:00,2014-08-24 17:00,2014-07-23 08:00,2014-08-24 17:00,2014-07-23 08:00,2014-08-24 17:00,2014-09-08 08:00,2014-10-06 17:00,,PT_Normal,,,,,0dvwdiuGT1KVwWCVXu9VIg,,,,N,0,0,,,2013-02-16 15:54,2013-02-16 16:35,admin,admin
502906,6359,125048,13662,0,N,N,N,CP_Drtn,TT_Task,DT_FixedDUR2,TK_NotStart,DUKHCONI1AZ4IRGL5285,"Construction of Thrust Blocks,Pull boxes",8178,336,0,200,0,116.4,116.4,200,0,0,0,,,,2014-09-25 08:00,2014-10-26 17:00,,2014-08-07 08:00,2014-09-04 17:00,2014-08-07 08:00,2014-09-04 17:00,2014-08-07 08:00,2014-09-04 17:00,2014-09-25 08:00,2014-10-26 17:00,,PT_Normal,,,,,YIUx8j8iTzaFll5kTxnO3A,,,,N,0,0,,,2013-02-16 15:54,2013-02-16 16:35,admin,admin
502907,6359,125048,13662,0,N,N,N,CP_Drtn,TT_Task,DT_FixedDUR2,TK_NotStart,DUKHCONI1AZ4IRGL5290,"Irrigation Fittings (Nozzle,Values)",8178,336,88,200,0,285.6,285.6,200,0,0,0,,,,2014-10-04 08:00,2014-11-03 17:00,,2014-08-16 08:00,2014-09-13 17:00,2014-08-16 08:00,2014-09-13 17:00,2014-08-16 08:00,2014-09-13 17:00,2014-10-04 08:00,2014-11-03 17:00,,PT_Normal,,,,,axF9Kn3+QGCtwmwB6CecfA,,,,N,0,0,,,2013-02-16 15:54,2013-02-16 16:35,admin,admin
502908,6359,125049,13662,0,N,N,N,CP_Drtn,TT_Task,DT_FixedDUR2,TK_NotStart,DUKHCONI1AZ4WSGL5155,Excavation for water line,8177,80,0,200,0,401,401,200,251,0,251,,,,2014-04-14 08:00,2014-05-12 17:00,,2014-04-02 08:00,2014-04-30 17:00,2014-04-02 08:00,2014-04-30 17:00,2014-04-02 08:00,2014-04-30 17:00,2014-04-14 08:00,2014-05-12 17:00,,PT_Normal,,,,,+hU8xLJLSJulw4q67gFlFg,,,,N,0,0,,,2013-02-16 15:54,2013-02-16 15:56,admin,admin
502909,6359,125049,13662,0,N,N,N,CP_Drtn,TT_Task,DT_FixedDUR2,TK_NotStart,DUKHCONI1AZ4WSGL5160,Laying of water line,8178,80,0,200,0,285.6,285.6,200,0,0,0,,,,2014-04-20 08:00,2014-05-18 17:00,,2014-04-08 08:00,2014-05-06 17:00,2014-04-08 08:00,2014-05-06 17:00,2014-04-08 08:00,2014-05-06 17:00,2014-04-20 08:00,2014-05-18 17:00,,PT_Normal,,,,,7yOMClcRTK+SbV6SoJpFgw,,,,N,0,0,,,2013-02-16 15:54,2013-02-16 15:56,admin,admin
502910,6359,125049,13662,0,N,N,N,CP_Drtn,TT_Task,DT_FixedDUR2,TK_NotStart,DUKHCONI1AZ4WSGL5165,Testing of potable water line,8178,80,0,200,0,84,84,200,0,0,0,,,,2014-04-26 08:00,2014-05-24 17:00,,2014-04-14 08:00,2014-05-12 17:00,2014-04-14 08:00,2014-05-12 17:00,2014-04-14 08:00,2014-05-12 17:00,2014-04-26 08:00,2014-05-24 17:00,,PT_Normal,,,,,M/MrXzbsR0abLQS0Ue/cIQ,,,,N,0,0,,,2013-02-16 15:54,2013-02-16 15:56,admin,admin
502911,6359,125049,13662,0,N,N,N,CP_Drtn,TT_Task,DT_FixedDUR2,TK_NotStart,DUKHCONI1AZ4WSGL5170,Backfilling potable water line,8177,80,0,200,0,335,335,200,275,0,275,,,,2014-05-01 08:00,2014-05-29 17:00,,2014-04-20 08:00,2014-05-18 17:00,2014-04-20 08:00,2014-05-18 17:00,2014-04-20 08:00,2014-05-18 17:00,2014-05-01 08:00,2014-05-29 17:00,,PT_Normal,,,,,jI6yOZsQSx+mbYBRJ4nLEg,,,,N,0,0,,,2013-02-16 15:54,2013-02-16 15:56,admin,admin
502912,6359,125049,13662,0,N,N,N,CP_Drtn,TT_Task,DT_FixedDUR2,TK_NotStart,DUKHCONI1AZ4WSGL5175,Construction of valve chambers & Thrust Blocks,8172,328,0,200,0,132,132,200,0,0,0,,,,2014-06-12 08:00,2014-07-10 17:00,,2014-04-26 08:00,2014-05-24 17:00,2014-04-26 08:00,2014-05-24 17:00,2014-04-26 08:00,2014-05-24 17:00,2014-06-12 08:00,2014-07-10 17:00,,PT_Normal,,,,,FNznftGuROmgmwDVOEBxKQ,,,,N,0,0,,,2013-02-16 15:54,2013-02-16 15:56,admin,admin
502913,6359,125049,13662,0,N,N,N,CP_Drtn,TT_Task,DT_FixedDUR2,TK_NotStart,DUKHCONI1AZ4WSGL5180,"Installation of meter ,Accessories & Connection",8178,328,56,160,0,50.4,50.4,160,0,0,0,,,,2014-07-12 08:00,2014-08-06 17:00,,2014-05-25 08:00,2014-06-16 17:00,2014-05-25 08:00,2014-06-16 17:00,2014-05-25 08:00,2014-06-16 17:00,2014-07-12 08:00,2014-08-06 17:00,,PT_Normal,,,,,+DuvchSBTwGToAeR6auCRQ,,,,N,0,0,,,2013-02-16 15:54,2013-02-16 16:35,admin,admin
502914,6359,125050,13662,0,N,N,N,CP_Drtn,TT_Task,DT_FixedDUR2,TK_NotStart,DUKHCONI1AZ4FFGL5185,Excavation for firefighting line,8177,80,0,200,0,283,283,200,151,0,151,,,,2014-05-07 08:00,2014-06-04 17:00,,2014-04-26 08:00,2014-05-24 17:00,2014-04-26 08:00,2014-05-24 17:00,2014-04-26 08:00,2014-05-24 17:00,2014-05-07 08:00,2014-06-04 17:00,,PT_Normal,,,,,oPYgus/OQaugczFS0EvxLw,,,,N,0,0,,,2013-02-16 15:54,2013-02-16 16:35,admin,admin
502915,6359,125050,13662,0,N,N,N,CP_Drtn,TT_Task,DT_FixedDUR2,TK_NotStart,DUKHCONI1AZ4FFGL5190,Laying of firefighting line,8178,80,0,200,0,303.6,303.6,200,0,0,0,,,,2014-05-15 08:00,2014-06-12 17:00,,2014-05-04 08:00,2014-06-01 17:00,2014-05-04 08:00,2014-06-01 17:00,2014-05-04 08:00,2014-06-01 17:00,2014-05-15 08:00,2014-06-12 17:00,,PT_Normal,,,,,GOb0Hi8bRrmGPZYawNJ2KQ,,,,N,0,0,,,2013-02-16 15:54,2013-02-16 16:35,admin,admin
502916,6359,125050,13662,0,N,N,N,CP_Drtn,TT_Task,DT_FixedDUR2,TK_NotStart,DUKHCONI1AZ4FFGL5195,Testing of firefighting line,8178,80,0,200,0,84,84,200,0,0,0,,,,2014-05-21 08:00,2014-06-18 17:00,,2014-05-10 08:00,2014-06-07 17:00,2014-05-10 08:00,2014-06-07 17:00,2014-05-10 08:00,2014-06-07 17:00,2014-05-21 08:00,2014-06-18 17:00,,PT_Normal,,,,,U0zzJ0TORomnSoYJoJI20A,,,,N,0,0,,,2013-02-16 15:54,2013-02-16 16:35,admin,admin
502917,6359,125050,13662,0,N,N,N,CP_Drtn,TT_Task,DT_FixedDUR2,TK_NotStart,DUKHCONI1AZ4FFGL5200,Backfilling firefighting line,8177,80,0,200,0,329,329,200,275,0,275,,,,2014-05-27 08:00,2014-06-24 17:00,,2014-05-15 08:00,2014-06-12 17:00,2014-05-15 08:00,2014-06-12 17:00,2014-05-15 08:00,2014-06-12 17:00,2014-05-27 08:00,2014-06-24 17:00,,PT_Normal,,,,,Hl79HTZgT8SX0qnplTlEMA,,,,N,0,0,,,2013-02-16 15:54,2013-02-16 16:35,admin,admin
502918,6359,125050,13662,0,N,N,N,CP_Drtn,TT_Task,DT_FixedDUR2,TK_NotStart,DUKHCONI1AZ4FFGL5205,Construction of valve chambers & Thrust Blocks,8165,272,0,200,0,202,202,200,0,0,0,,,,2014-06-30 08:00,2014-07-28 17:00,,2014-05-21 08:00,2014-06-18 17:00,2014-05-21 08:00,2014-06-18 17:00,2014-05-21 08:00,2014-06-18 17:00,2014-06-30 08:00,2014-07-28 17:00,,PT_Normal,,,,,8UQasvklSrKEYpaknfC7dg,,,,N,0,0,,,2013-02-16 15:54,2013-02-16 16:35,admin,admin
502919,6359,125050,13662,0,N,N,N,CP_Drtn,TT_Task,DT_FixedDUR2,TK_NotStart,DUKHCONI1AZ4FFGL5210,Connection with existing Firewater System,8178,272,144,200,0,134.4,134.4,200,0,0,0,,,,2014-07-06 08:00,2014-08-06 17:00,,2014-05-27 08:00,2014-06-24 17:00,2014-05-27 08:00,2014-06-24 17:00,2014-05-27 08:00,2014-06-24 17:00,2014-07-06 08:00,2014-08-06 17:00,,PT_Normal,,,,,h0TB8H0nS3CmXOwi7bcGLw,,,,N,0,0,,,2013-02-16 15:54,2013-02-16 16:35,admin,admin
502920,6359,125051,13662,0,N,N,N,CP_Drtn,TT_Task,DT_FixedDUR2,TK_NotStart,DUKHCONI1AZ4HDGL7020,Precast Concrete Kerbs works,8173,248,0,160,0,1178,1178,160,0,0,0,,,,2014-08-30 08:00,2014-09-21 17:00,,2014-07-21 08:00,2014-08-16 17:00,2014-07-21 08:00,2014-08-16 17:00,2014-07-21 08:00,2014-08-16 17:00,2014-08-30 08:00,2014-09-21 17:00,,PT_Normal,,,,,tO/HZ1o9TAK8w9XmJrnA3g,,,,N,0,0,,,2013-02-16 15:54,2013-02-16 16:35,admin,admin
502921,6359,125051,13662,0,N,N,N,CP_Drtn,TT_Task,DT_FixedDUR2,TK_NotStart,DUKHCONI1AZ4HDGL7025,Interlocking for Walkways,8174,248,0,200,0,806,806,200,0,0,0,,,,2014-09-10 08:00,2014-10-08 17:00,,2014-08-05 08:00,2014-09-02 17:00,2014-08-05 08:00,2014-09-02 17:00,2014-08-05 08:00,2014-09-02 17:00,2014-09-10 08:00,2014-10-08 17:00,,PT_Normal,,,,,Vy0OUZtpQmi7f5laiM2XoQ,,,,N,0,0,,,2013-02-16 15:54,2013-02-16 16:35,admin,admin
502922,6359,125051,13662,0,N,N,N,CP_Drtn,TT_Task,DT_FixedDUR2,TK_NotStart,DUKHCONI1AZ4HDGL7030,Construction of Retaining wall,8165,248,0,200,0,756,756,200,0,0,0,,,,2014-09-22 08:00,2014-10-22 17:00,,2014-08-17 08:00,2014-09-14 17:00,2014-08-17 08:00,2014-09-14 17:00,2014-08-17 08:00,2014-09-14 17:00,2014-09-22 08:00,2014-10-22 17:00,,PT_Normal,,,,,hSkAWblfTEu8wcWDWBYAlw,,,,N,0,0,,,2013-02-16 15:54,2013-02-16 16:35,admin,admin
502923,6359,125051,13662,0,N,N,N,CP_Drtn,TT_Task,DT_FixedDUR2,TK_NotStart,DUKHCONI1AZ4HDGL7035,Construction of Wash Stone Boulders,8170,248,0,200,0,88,88,200,0,0,0,,,,2014-09-22 08:00,2014-10-22 17:00,,2014-08-17 08:00,2014-09-14 17:00,2014-08-17 08:00,2014-09-14 17:00,2014-08-17 08:00,2014-09-14 17:00,2014-09-22 08:00,2014-10-22 17:00,,PT_Normal,,,,,yt5H+hAMTaOwdh2idMZuQQ,,,,N,0,0,,,2013-02-16 15:54,2013-02-16 16:35,admin,admin
502924,6359,125051,13662,0,N,N,N,CP_Drtn,TT_Task,DT_FixedDUR2,TK_NotStart,DUKHCONI1AZ4HDGL7040,Construction of Speed Humps,8167,328,256,80,0,14,14,80,0,0,0,,,,2014-11-22 08:00,2014-12-02 17:00,,2014-10-02 08:00,2014-10-15 17:00,2014-10-02 08:00,2014-10-15 17:00,2014-10-02 08:00,2014-10-15 17:00,2014-11-22 08:00,2014-12-02 17:00,,PT_Normal,,,,,Xrk60iR4RyGznW6Vi4sM2g,,,,N,0,0,,,2013-02-16 15:54,2013-02-16 16:35,admin,admin
502925,6359,125052,13662,0,N,N,N,CP_Drtn,TT_Task,DT_FixedDUR2,TK_NotStart,DUKHCONI1AZ4PSGL7000,Excavation,8177,256,40,120,0,148,148,120,75.999956,0,75.999956,,,,2014-10-13 08:00,2014-10-29 17:00,,2014-09-03 08:00,2014-09-20 17:00,2014-09-03 08:00,2014-09-20 17:00,2014-09-03 08:00,2014-09-20 17:00,2014-10-13 08:00,2014-10-29 17:00,,PT_Normal,,,,,fYZfNly9RtKflYCjrHeEdA,,,,N,0,0,,,2013-02-16 15:54,2013-02-16 16:35,admin,admin
502926,6359,125052,13662,0,N,N,N,CP_Drtn,TT_Task,DT_FixedDUR2,TK_NotStart,DUKHCONI1AZ4PSGL7005,Foundation casting,8165,216,0,120,0,252,252,120,0,0,0,,,,2014-10-19 08:00,2014-11-04 17:00,,2014-09-15 08:00,2014-10-01 17:00,2014-09-15 08:00,2014-10-01 17:00,2014-09-15 08:00,2014-10-01 17:00,2014-10-19 08:00,2014-11-04 17:00,,PT_Normal,,,,,nD4PJcEdSKCae3RX15+SoQ,,,,N,0,0,,,2013-02-16 15:54,2013-02-16 16:35,admin,admin
502927,6359,125052,13662,0,N,N,N,CP_Drtn,TT_Task,DT_FixedDUR2,TK_NotStart,DUKHCONI1AZ4PSGL7010,"Column, Frame&  Fabrics  Erection",8178,216,0,200,0,286,286,200,0,0,0,,,,2014-10-30 08:00,2014-11-27 17:00,,2014-09-27 08:00,2014-10-27 17:00,2014-09-27 08:00,2014-10-27 17:00,2014-09-27 08:00,2014-10-27 17:00,2014-10-30 08:00,2014-11-27 17:00,,PT_Normal,,,,,SoD8bzq3QPmIsaqEOA5ymA,,,,N,0,0,,,2013-02-16 15:54,2013-02-16 16:35,admin,admin
502928,6359,125052,13662,0,N,N,N,CP_Drtn,TT_Task,DT_FixedDUR2,TK_NotStart,DUKHCONI1AZ4PSGL7015,Electrical Works-Parking Shed,8178,216,136,200,0,51.6,51.6,200,0,0,0,,,,2014-11-05 08:00,2014-12-03 17:00,,2014-10-02 08:00,2014-11-02 17:00,2014-10-02 08:00,2014-11-02 17:00,2014-10-02 08:00,2014-11-02 17:00,2014-11-05 08:00,2014-12-03 17:00,,PT_Normal,,,,,y71hnLDxSRy6jytz97KIow,,,,N,0,0,,,2013-02-16 15:54,2013-02-16 16:35,admin,admin
502929,6359,125053,13662,0,N,N,N,CP_Drtn,TT_Task,DT_FixedDUR2,TK_NotStart,DUKHCONI1AZ4SLGL7200,Excavation,8177,248,0,200,0,497,497,200,251,0,251,,,,2014-10-04 08:00,2014-11-03 17:00,,2014-08-28 08:00,2014-09-25 17:00,2014-08-28 08:00,2014-09-25 17:00,2014-08-28 08:00,2014-09-25 17:00,2014-10-04 08:00,2014-11-03 17:00,,PT_Normal,,,,,hjoCQp5YSOONZgW0E/zwrQ,,,,N,0,0,,,2013-02-16 15:54,2013-02-16 16:35,admin,admin
502930,6359,125053,13662,0,N,N,N,CP_Drtn,TT_Task,DT_FixedDUR2,TK_NotStart,DUKHCONI1AZ4SLGL7205,Sweet Soil Laying,8178,248,0,200,0,2380,2380,200,0,0,0,,,,2014-10-18 08:00,2014-11-15 17:00,,2014-09-09 08:00,2014-10-07 17:00,2014-09-09 08:00,2014-10-07 17:00,2014-09-09 08:00,2014-10-07 17:00,2014-10-18 08:00,2014-11-15 17:00,,PT_Normal,,,,,Kl3IsEpBSGSOMYtgMfSW5A,,,,N,0,0,,,2013-02-16 15:54,2013-02-16 16:35,admin,admin
502931,6359,125053,13662,0,N,N,N,CP_Drtn,TT_Task,DT_FixedDUR2,TK_NotStart,DUKHCONI1AZ4SLGL7210,Plantation works,8178,328,144,200,0,588,588,200,0,0,0,,,,2014-11-10 08:00,2014-12-08 17:00,,2014-09-21 08:00,2014-10-21 17:00,2014-09-21 08:00,2014-10-21 17:00,2014-09-21 08:00,2014-10-21 17:00,2014-11-10 08:00,2014-12-08 17:00,,PT_Normal,,,,,hvPk2k6xTQaxFA/xBEl0sQ,,,,N,0,0,,,2013-02-16 15:54,2013-02-16 16:35,admin,admin
502932,6359,125054,13662,0,N,N,N,CP_Drtn,TT_Task,DT_FixedDUR2,TK_NotStart,DUKHCONI1AZ4STGL5235,Excavation for Street lighting,8177,96,0,200,0,69,69,200,51,0,51,,,,2014-06-07 08:00,2014-07-05 17:00,,2014-05-24 08:00,2014-06-21 17:00,2014-05-24 08:00,2014-06-21 17:00,2014-05-24 08:00,2014-06-21 17:00,2014-06-07 08:00,2014-07-05 17:00,,PT_Normal,,,,,3F64JCUDQvGmtse8tPp+aQ,,,,N,0,0,,,2013-02-16 15:54,2013-02-16 16:35,admin,admin
502933,6359,125054,13662,0,N,N,N,CP_Drtn,TT_Task,DT_FixedDUR2,TK_NotStart,DUKHCONI1AZ4STGL5240,Construction of Duct Banks,8178,96,0,200,0,1192.8,1192.8,200,0,0,0,,,,2014-06-12 08:00,2014-07-10 17:00,,2014-05-29 08:00,2014-06-26 17:00,2014-05-29 08:00,2014-06-26 17:00,2014-05-29 08:00,2014-06-26 17:00,2014-06-12 08:00,2014-07-10 17:00,,PT_Normal,,,,,nXbT2AoITcOqhjngjKvkMA,,,,N,0,0,,,2013-02-16 15:54,2013-02-23 09:03,admin,admin
502934,6359,125054,13662,0,N,N,N,CP_Drtn,TT_Task,DT_FixedDUR2,TK_NotStart,DUKHCONI1AZ4STGL5245,Construction of Foundation,8172,96,0,200,0,638,638,200,0,0,0,,,,2014-06-12 08:00,2014-07-10 17:00,,2014-05-29 08:00,2014-06-26 17:00,2014-05-29 08:00,2014-06-26 17:00,2014-05-29 08:00,2014-06-26 17:00,2014-06-12 08:00,2014-07-10 17:00,,PT_Normal,,,,,nyDDJzC+TjmSJNZecNpuLQ,,,,N,0,0,,,2013-02-16 15:54,2013-02-16 16:35,admin,admin
502935,6359,125054,13662,0,N,N,N,CP_Drtn,TT_Task,DT_FixedDUR2,TK_NotStart,DUKHCONI1AZ4STGL5250,Backfilling Street Lighting,8177,96,0,200,0,287,287,200,275,0,275,,,,2014-06-18 08:00,2014-07-16 17:00,,2014-06-04 08:00,2014-07-02 17:00,2014-06-04 08:00,2014-07-02 17:00,2014-06-04 08:00,2014-07-02 17:00,2014-06-18 08:00,2014-07-16 17:00,,PT_Normal,,,,,7WKht0NYSb+W4WFVQteV6A,,,,N,0,0,,,2013-02-16 15:54,2013-02-16 16:35,admin,admin
502936,6359,125054,13662,0,N,N,N,CP_Drtn,TT_Task,DT_FixedDUR2,TK_NotStart,DUKHCONI1AZ4STGL5255,Installation of light Post,8178,608,144,200,0,216,216,200,0,0,0,,,,2014-09-16 08:00,2014-10-16 17:00,,2014-06-16 08:00,2014-07-14 17:00,2014-06-16 08:00,2014-07-14 17:00,2014-06-16 08:00,2014-07-14 17:00,2014-09-16 08:00,2014-10-16 17:00,,PT_Normal,,,,,TvCEwGJrTwG7OAC4n+VyDA,,,,N,0,0,,,2013-02-16 15:54,2013-02-16 16:35,admin,admin
502937,6359,125054,13662,0,N,N,N,CP_Drtn,TT_Task,DT_FixedDUR2,TK_NotStart,DUKHCONI1AZ4STGL5260,Electrical Works,8178,472,144,200,0,823.6,823.6,200,0,0,0,,,,2014-09-28 08:00,2014-10-28 17:00,,2014-07-17 08:00,2014-08-18 17:00,2014-07-17 08:00,2014-08-18 17:00,2014-07-17 08:00,2014-08-18 17:00,2014-09-28 08:00,2014-10-28 17:00,,PT_Normal,,,,,DKUfMYCYRLu5ickHS55/kQ,,,,N,0,0,,,2013-02-16 15:54,2013-02-16 16:35,admin,admin
502938,6359,125055,13662,0,N,N,N,CP_Drtn,TT_Task,DT_FixedDUR2,TK_NotStart,DUKHCONI1AZ4DRGL5115,Excavation for Drainage line,8177,72,0,200,0,431,431,200,251,0,251,,,,2014-02-27 08:00,2014-03-27 17:00,,2014-02-17 08:00,2014-03-17 17:00,2014-02-17 08:00,2014-03-17 17:00,2014-02-17 08:00,2014-03-17 17:00,2014-02-27 08:00,2014-03-27 17:00,,PT_Normal,,,,,aZ7XnMA9TJie6NnW7v6Tkg,,,,N,0,0,,,2013-02-16 15:54,2013-02-16 15:56,admin,admin
502939,6359,125055,13662,0,N,N,N,CP_Drtn,TT_Task,DT_FixedDUR2,TK_NotStart,DUKHCONI1AZ4DRGL5120,Laying of Drainage line,8178,72,0,200,0,276,276,200,0,0,0,,,,2014-03-06 08:00,2014-04-03 17:00,,2014-02-24 08:00,2014-03-24 17:00,2014-02-24 08:00,2014-03-24 17:00,2014-02-24 08:00,2014-03-24 17:00,2014-03-06 08:00,2014-04-03 17:00,,PT_Normal,,,,,ChYp8aiiQb2ZWohiraiK1w,,,,N,0,0,,,2013-02-16 15:54,2013-02-16 15:56,admin,admin
502940,6359,125055,13662,0,N,N,N,CP_Drtn,TT_Task,DT_FixedDUR2,TK_NotStart,DUKHCONI1AZ4DRGL5125,Testing of Drainage line,8178,72,0,200,0,134.4,134.4,200,0,0,0,,,,2014-03-15 08:00,2014-04-12 17:00,,2014-03-04 08:00,2014-04-01 17:00,2014-03-04 08:00,2014-04-01 17:00,2014-03-04 08:00,2014-04-01 17:00,2014-03-15 08:00,2014-04-12 17:00,,PT_Normal,,,,,XrxofTvIT5GW/bBFJZgr4w,,,,N,0,0,,,2013-02-16 15:54,2013-02-16 15:56,admin,admin
502941,6359,125055,13662,0,N,N,N,CP_Drtn,TT_Task,DT_FixedDUR2,TK_NotStart,DUKHCONI1AZ4DRGL5130,Backfilling Drainage line,8177,72,0,120,0,402,402,120,330,0,330,,,,2014-04-01 08:00,2014-04-17 17:00,,2014-03-22 08:00,2014-04-07 17:00,2014-03-22 08:00,2014-04-07 17:00,2014-03-22 08:00,2014-04-07 17:00,2014-04-01 08:00,2014-04-17 17:00,,PT_Normal,,,,,UiQObifaRaq0xVVsuaiBXQ,,,,N,0,0,,,2013-02-16 15:54,2013-02-16 15:56,admin,admin
502942,6359,125056,13662,0,N,N,N,CP_Drtn,TT_Task,DT_FixedDUR2,TK_NotStart,DUKHCONI1AZ4SAGL5135,Construction of manholes Drainage,8177,568,144,200,0,6,6,200,0,0,0,,,,2014-06-12 08:00,2014-07-10 17:00,,2014-03-22 08:00,2014-04-19 17:00,2014-03-22 08:00,2014-04-19 17:00,2014-03-22 08:00,2014-04-19 17:00,2014-06-12 08:00,2014-07-10 17:00,,PT_Normal,,,,,feBvK+q3RJSMx0bSXAskhw,,,,N,0,0,,,2013-02-16 15:54,2013-02-16 15:56,admin,admin
502943,6359,125056,13662,0,N,N,N,CP_Drtn,TT_Task,DT_FixedDUR2,TK_NotStart,DUKHCONI1AZ4SAGL5140,Construction of soakaways,8172,96,0,200,0,154,154,200,0,0,0,,,,2014-04-02 08:00,2014-04-30 17:00,,2014-03-19 08:00,2014-04-16 17:00,2014-03-19 08:00,2014-04-16 17:00,2014-03-19 08:00,2014-04-16 17:00,2014-04-02 08:00,2014-04-30 17:00,,PT_Normal,,,,,B6WdBenyTBmCcaOKAg94XQ,,,,N,0,0,,,2013-02-16 15:54,2013-02-16 15:56,admin,admin
502944,6359,125056,13662,0,N,N,N,CP_Drtn,TT_Task,DT_FixedDUR2,TK_NotStart,DUKHCONI1AZ4SAGL5145,Construction of Road gullies,8172,96,0,200,0,176,176,200,0,0,0,,,,2014-05-01 08:00,2014-05-29 17:00,,2014-04-17 08:00,2014-05-15 17:00,2014-04-17 08:00,2014-05-15 17:00,2014-04-17 08:00,2014-05-15 17:00,2014-05-01 08:00,2014-05-29 17:00,,PT_Normal,,,,,pIuO7vOUT0ybthurFwr7iw,,,,N,0,0,,,2013-02-16 15:54,2013-02-16 15:56,admin,admin
502945,6359,125056,13662,0,N,N,N,CP_Drtn,TT_Task,DT_FixedDUR2,TK_NotStart,DUKHCONI1AZ4SAGL5150,Connection with existing sewer manhole,8177,384,288,160,0,6,6,160,0,0,0,,,,2014-07-12 08:00,2014-08-06 17:00,,2014-05-17 08:00,2014-06-08 17:00,2014-05-17 08:00,2014-06-08 17:00,2014-05-17 08:00,2014-06-08 17:00,2014-07-12 08:00,2014-08-06 17:00,,PT_Normal,,,,,3BQ2PdyGQiGgifhs6RJsaw,,,,N,0,0,,,2013-02-16 15:54,2013-02-16 16:35,admin,admin
502946,6359,125057,13662,0,N,N,N,CP_Drtn,TT_Task,DT_FixedDUR2,TK_NotStart,DUKHCONI1AZ4ELGL5215,Excavation Cable  Trenches  & Duct Banks,8177,96,0,200,0,1374,1374,200,600,0,600,,,,2014-06-07 08:00,2014-07-05 17:00,,2014-05-24 08:00,2014-06-21 17:00,2014-05-24 08:00,2014-06-21 17:00,2014-05-24 08:00,2014-06-21 17:00,2014-06-07 08:00,2014-07-05 17:00,,PT_Normal,,,,,h+kMawrHQh64e7yWWDNmmg,,,,N,0,0,,,2013-02-16 15:54,2013-02-16 16:35,admin,admin
502947,6359,125057,13662,0,N,N,N,CP_Drtn,TT_Task,DT_FixedDUR2,TK_NotStart,DUKHCONI1AZ4ELGL5220,Laying of electrical cables,8178,120,0,200,0,1834.8,1834.8,200,0,0,0,,,,2014-06-16 08:00,2014-07-14 17:00,,2014-05-29 08:00,2014-06-26 17:00,2014-05-29 08:00,2014-06-26 17:00,2014-05-29 08:00,2014-06-26 17:00,2014-06-16 08:00,2014-07-14 17:00,,PT_Normal,,,,,kW0iTY/ST8ijR/6xoxrMxw,,,,N,0,0,,,2013-02-16 15:54,2013-02-16 16:35,admin,admin
502948,6359,125057,13662,0,N,N,N,CP_Drtn,TT_Task,DT_FixedDUR2,TK_NotStart,DUKHCONI1AZ4ELGL5225,Backfilling Electrical trench,8177,120,0,200,0,862,862,200,550,0,550,,,,2014-06-24 08:00,2014-07-22 17:00,,2014-06-07 08:00,2014-07-05 17:00,2014-06-07 08:00,2014-07-05 17:00,2014-06-07 08:00,2014-07-05 17:00,2014-06-24 08:00,2014-07-22 17:00,,PT_Normal,,,,,7FBrtvk2TUSVVGJ5FVQt2g,,,,N,0,0,,,2013-02-16 15:54,2013-02-16 16:35,admin,admin
502949,6359,125057,13662,0,N,N,N,CP_Drtn,TT_Task,DT_FixedDUR2,TK_NotStart,DUKHCONI1AZ4ELGL5230,Construction of Submain Board & Feeder Pillar,8165,472,0,200,0,224,224,200,0,0,0,,,,2014-08-30 08:00,2014-09-27 17:00,,2014-06-18 08:00,2014-07-16 17:00,2014-06-18 08:00,2014-07-16 17:00,2014-06-18 08:00,2014-07-16 17:00,2014-08-30 08:00,2014-09-27 17:00,,PT_Normal,,,,,agdDYjG9TSmEQy8Dr2Yr9w,,,,N,0,0,,,2013-02-16 15:54,2013-02-16 16:35,admin,admin
502950,6359,125058,13662,0,N,N,N,CP_Drtn,TT_Task,DT_FixedDUR2,TK_NotStart,DUKHCONI1AZ4BWGL5315,Construction of Boundary Wall (Ht-3m),8165,416,0,200,0,224,224,200,0,0,0,,,,2014-08-19 08:00,2014-09-16 17:00,,2014-06-16 08:00,2014-07-14 17:00,2014-06-16 08:00,2014-07-14 17:00,2014-06-16 08:00,2014-07-14 17:00,2014-08-19 08:00,2014-09-16 17:00,,PT_Normal,,,,,EKw85zQGRByfeKScV8T1Kg,,,,N,0,0,,,2013-02-16 15:54,2013-02-16 16:35,admin,admin
502951,6359,125058,13662,0,N,N,N,CP_Drtn,TT_Task,DT_FixedDUR2,TK_NotStart,DUKHCONI1AZ4BWGL5320,"Install.Steel Gate,Entance Barrier (3m Wall)",8178,416,0,200,0,28,28,200,0,0,0,,,,2014-09-04 08:00,2014-10-02 17:00,,2014-07-02 08:00,2014-07-30 17:00,2014-07-02 08:00,2014-07-30 17:00,2014-07-02 08:00,2014-07-30 17:00,2014-09-04 08:00,2014-10-02 17:00,,PT_Normal,,,,,/xMrOcL+TVCwShd9G4McTw,,,,N,0,0,,,2013-02-16 15:54,2013-02-16 16:35,admin,admin
502952,6359,125058,13662,0,N,N,N,CP_Drtn,TT_Task,DT_FixedDUR2,TK_NotStart,DUKHCONI1AZ4BWGL5325,Const. of Villa Front Boundary Wall (Ht-2m),8165,416,0,200,0,168,168,200,0,0,0,,,,2014-10-04 08:00,2014-11-03 17:00,,2014-07-31 08:00,2014-09-01 17:00,2014-07-31 08:00,2014-09-01 17:00,2014-07-31 08:00,2014-09-01 17:00,2014-10-04 08:00,2014-11-03 17:00,,PT_Normal,,,,,qG1/ziw1SvusS6PoUUk0hw,,,,N,0,0,,,2013-02-16 15:54,2013-02-16 16:35,admin,admin
502953,6359,125058,13662,0,N,N,N,CP_Drtn,TT_Task,DT_FixedDUR2,TK_NotStart,DUKHCONI1AZ4BWGL5330,Const. of Blockwork fence Wall (Ht-1.85m),8165,504,144,200,0,154,154,200,0,0,0,,,,2014-10-30 08:00,2014-11-27 17:00,,2014-08-16 08:00,2014-09-13 17:00,2014-08-16 08:00,2014-09-13 17:00,2014-08-16 08:00,2014-09-13 17:00,2014-10-30 08:00,2014-11-27 17:00,,PT_Normal,,,,,H0kif1euRReGZ3RBCCp2ww,,,,N,0,0,,,2013-02-16 15:54,2013-02-16 16:35,admin,admin
502954,6359,125061,13662,0,N,N,N,CP_Drtn,TT_Task,DT_FixedDUR2,TK_NotStart,DUKHCONI1AZ2ELGL5215,Excavation Cable  Trenches  & Duct Banks,8177,144,0,200,0,1374,1374,200,600,0,600,,,,2014-03-05 08:00,2014-04-02 17:00,,2014-02-12 08:00,2014-03-12 17:00,2014-02-12 08:00,2014-03-12 17:00,2014-02-12 08:00,2014-03-12 17:00,2014-03-05 08:00,2014-04-02 17:00,,PT_Normal,,,,,iw3wIiP/RXyM7PnI+CxFpA,,,,N,0,0,,,2013-02-16 15:54,2013-02-16 16:35,admin,admin
502955,6359,125061,13662,0,N,N,N,CP_Drtn,TT_Task,DT_FixedDUR2,TK_NotStart,DUKHCONI1AZ2ELGL5220,Laying of electrical cables,8178,168,0,200,0,1834.8,1834.8,200,0,0,0,,,,2014-03-15 08:00,2014-04-12 17:00,,2014-02-18 08:00,2014-03-18 17:00,2014-02-18 08:00,2014-03-18 17:00,2014-02-18 08:00,2014-03-18 17:00,2014-03-15 08:00,2014-04-12 17:00,,PT_Normal,,,,,mPrFHRw8SCyqX306+eXpwg,,,,N,0,0,,,2013-02-16 15:54,2013-02-16 16:35,admin,admin
502956,6359,125061,13662,0,N,N,N,CP_Drtn,TT_Task,DT_FixedDUR2,TK_NotStart,DUKHCONI1AZ2ELGL5225,Backfilling Electrical trench,8177,168,0,200,0,862,862,200,550,0,550,,,,2014-03-23 08:00,2014-04-20 17:00,,2014-02-26 08:00,2014-03-26 17:00,2014-02-26 08:00,2014-03-26 17:00,2014-02-26 08:00,2014-03-26 17:00,2014-03-23 08:00,2014-04-20 17:00,,PT_Normal,,,,,St30XFU4R0yTOmv04bgfrA,,,,N,0,0,,,2013-02-16 15:54,2013-02-16 16:35,admin,admin
502957,6359,125061,13662,0,N,N,N,CP_Drtn,TT_Task,DT_FixedDUR2,TK_NotStart,DUKHCONI1AZ2ELGL5230,Construction of Submain Board & Feeder Pillar,8165,760,0,200,0,224,224,200,0,0,0,,,,2014-06-29 08:00,2014-07-27 17:00,,2014-03-10 08:00,2014-04-07 17:00,2014-03-10 08:00,2014-04-07 17:00,2014-03-10 08:00,2014-04-07 17:00,2014-06-29 08:00,2014-07-27 17:00,,PT_Normal,,,,,Au1SctcyQhiIzJWc0TxJbA,,,,N,0,0,,,2013-02-16 15:54,2013-02-16 16:35,admin,admin
502958,6359,125062,13662,0,N,N,N,CP_Drtn,TT_Task,DT_FixedDUR2,TK_NotStart,DUKHCONI1AZ2SLGL7200,Excavation,8177,376,0,200,0,497,497,200,251,0,251,,,,2014-07-10 08:00,2014-08-11 17:00,,2014-05-17 08:00,2014-06-14 17:00,2014-05-17 08:00,2014-06-14 17:00,2014-05-17 08:00,2014-06-14 17:00,2014-07-10 08:00,2014-08-11 17:00,,PT_Normal,,,,,cE7UmIpaSCCGeFAAB97/LA,,,,N,0,0,,,2013-02-16 15:54,2013-02-16 16:35,admin,admin
502959,6359,125062,13662,0,N,N,N,CP_Drtn,TT_Task,DT_FixedDUR2,TK_NotStart,DUKHCONI1AZ2SLGL7205,Sweet Soil Laying,8178,376,0,200,0,2380,2380,200,0,0,0,,,,2014-07-22 08:00,2014-08-23 17:00,,2014-05-28 08:00,2014-06-25 17:00,2014-05-28 08:00,2014-06-25 17:00,2014-05-28 08:00,2014-06-25 17:00,2014-07-22 08:00,2014-08-23 17:00,,PT_Normal,,,,,pwiAa3B9QjajPcWW4lTiuw,,,,N,0,0,,,2013-02-16 15:54,2013-02-16 16:35,admin,admin
502960,6359,125062,13662,0,N,N,N,CP_Drtn,TT_Task,DT_FixedDUR2,TK_NotStart,DUKHCONI1AZ2SLGL7210,Plantation works,8178,616,144,200,0,588,588,200,0,0,0,,,,2014-09-10 08:00,2014-10-08 17:00,,2014-06-09 08:00,2014-07-07 17:00,2014-06-09 08:00,2014-07-07 17:00,2014-06-09 08:00,2014-07-07 17:00,2014-09-10 08:00,2014-10-08 17:00,,PT_Normal,,,,,8R3WuCWNRzKkFcq02XOYYQ,,,,N,0,0,,,2013-02-16 15:54,2013-02-16 16:35,admin,admin
502961,6359,125063,13662,0,N,N,N,CP_Drtn,TT_Task,DT_FixedDUR2,TK_NotStart,DUKHCONI1AZ2TCGL5295,Excavation Telecommunication trenches,8177,144,0,160,0,528,528,160,300,0,300,,,,2014-03-29 08:00,2014-04-20 17:00,,2014-03-08 08:00,2014-03-30 17:00,2014-03-08 08:00,2014-03-30 17:00,2014-03-08 08:00,2014-03-30 17:00,2014-03-29 08:00,2014-04-20 17:00,,PT_Normal,,,,,I3Pdsn5RSDmuSca/wPzMug,,,,N,0,0,,,2013-02-16 15:54,2013-02-16 16:35,admin,admin
502962,6359,125063,13662,0,N,N,N,CP_Drtn,TT_Task,DT_FixedDUR2,TK_NotStart,DUKHCONI1AZ2TCGL5300,Laying of cables,8178,144,0,160,0,795.2,795.2,160,0,0,0,,,,2014-04-03 08:00,2014-04-26 17:00,,2014-03-13 08:00,2014-04-05 17:00,2014-03-13 08:00,2014-04-05 17:00,2014-03-13 08:00,2014-04-05 17:00,2014-04-03 08:00,2014-04-26 17:00,,PT_Normal,,,,,QDIv35hSQF+qVlf+K+tcuA,,,,N,0,0,,,2013-02-16 15:54,2013-02-16 16:35,admin,admin
502963,6359,125063,13662,0,N,N,N,CP_Drtn,TT_Task,DT_FixedDUR2,TK_NotStart,DUKHCONI1AZ2TCGL5305,Backfilling telecommunication trench,8177,144,0,160,0,530,530,160,440,0,440,,,,2014-04-09 08:00,2014-05-01 17:00,,2014-03-19 08:00,2014-04-10 17:00,2014-03-19 08:00,2014-04-10 17:00,2014-03-19 08:00,2014-04-10 17:00,2014-04-09 08:00,2014-05-01 17:00,,PT_Normal,,,,,7SqPqYSrQa65h4DGG+AJmA,,,,N,0,0,,,2013-02-16 15:54,2013-02-16 16:35,admin,admin
502964,6359,125063,13662,0,N,N,N,CP_Drtn,TT_Task,DT_FixedDUR2,TK_NotStart,DUKHCONI1AZ2TCGL5310,Connection & Installation,8178,776,184,160,0,344.4,344.4,160,0,0,0,,,,2014-07-22 08:00,2014-08-17 17:00,,2014-03-31 08:00,2014-04-22 17:00,2014-03-31 08:00,2014-04-22 17:00,2014-03-31 08:00,2014-04-22 17:00,2014-07-22 08:00,2014-08-17 17:00,,PT_Normal,,,,,mlAxpPu9QVKPob2tNpcVqg,,,,N,0,0,,,2013-02-16 15:54,2013-02-16 16:35,admin,admin
502965,6359,125064,13662,0,N,N,N,CP_Drtn,TT_Task,DT_FixedDUR2,TK_NotStart,DUKHCONI1AZ2IRGL5265,Excavation for irrigation line,8177,344,0,200,0,812,812,200,500,0,500,,,,2014-05-17 08:00,2014-06-14 17:00,,2014-03-27 08:00,2014-04-24 17:00,2014-03-27 08:00,2014-04-24 17:00,2014-03-27 08:00,2014-04-24 17:00,2014-05-17 08:00,2014-06-14 17:00,,PT_Normal,,,,,Y20f/QVvTe+QjfNhNtwsHA,,,,N,0,0,,,2013-02-16 15:54,2013-02-16 16:35,admin,admin
502966,6359,125064,13662,0,N,N,N,CP_Drtn,TT_Task,DT_FixedDUR2,TK_NotStart,DUKHCONI1AZ2IRGL5270,Laying of irrigationline,8178,344,0,200,0,386.4,386.4,200,0,0,0,,,,2014-05-22 08:00,2014-06-19 17:00,,2014-04-02 08:00,2014-04-30 17:00,2014-04-02 08:00,2014-04-30 17:00,2014-04-02 08:00,2014-04-30 17:00,2014-05-22 08:00,2014-06-19 17:00,,PT_Normal,,,,,/fyUKBonQDmyOCOWBHRgCw,,,,N,0,0,,,2013-02-16 15:54,2013-02-23 09:03,admin,admin
502967,6359,125064,13662,0,N,N,N,CP_Drtn,TT_Task,DT_FixedDUR2,TK_NotStart,DUKHCONI1AZ2IRGL5275,Testing of irrigation line,8178,344,0,200,0,319.2,319.2,200,0,0,0,,,,2014-05-28 08:00,2014-06-25 17:00,,2014-04-08 08:00,2014-05-06 17:00,2014-04-08 08:00,2014-05-06 17:00,2014-04-08 08:00,2014-05-06 17:00,2014-05-28 08:00,2014-06-25 17:00,,PT_Normal,,,,,y6wativDSgGg2hVl9Pokmw,,,,N,0,0,,,2013-02-16 15:54,2013-02-23 09:03,admin,admin
502968,6359,125064,13662,0,N,N,N,CP_Drtn,TT_Task,DT_FixedDUR2,TK_NotStart,DUKHCONI1AZ2IRGL5280,Backfilling irrigation line,8177,344,0,200,0,676,676,200,550,0,550,,,,2014-06-03 08:00,2014-07-01 17:00,,2014-04-14 08:00,2014-05-12 17:00,2014-04-14 08:00,2014-05-12 17:00,2014-04-14 08:00,2014-05-12 17:00,2014-06-03 08:00,2014-07-01 17:00,,PT_Normal,,,,,ofLYti+JQbOauNtP1QDM3Q,,,,N,0,0,,,2013-02-16 15:54,2013-02-16 16:35,admin,admin
502969,6359,125064,13662,0,N,N,N,CP_Drtn,TT_Task,DT_FixedDUR2,TK_NotStart,DUKHCONI1AZ2IRGL5285,"Construction of Thrust Blocks,Pull boxes",8178,464,0,200,0,116.4,116.4,200,0,0,0,,,,2014-07-02 08:00,2014-07-30 17:00,,2014-04-26 08:00,2014-05-24 17:00,2014-04-26 08:00,2014-05-24 17:00,2014-04-26 08:00,2014-05-24 17:00,2014-07-02 08:00,2014-07-30 17:00,,PT_Normal,,,,,qduOCPYPRBaVt3MF3JvhEQ,,,,N,0,0,,,2013-02-16 15:54,2013-02-16 16:35,admin,admin
502970,6359,125064,13662,0,N,N,N,CP_Drtn,TT_Task,DT_FixedDUR2,TK_NotStart,DUKHCONI1AZ2IRGL5290,"Irrigation Fittings (Nozzle,Values)",8178,464,88,200,0,285.6,285.6,200,0,0,0,,,,2014-07-10 08:00,2014-08-11 17:00,,2014-05-04 08:00,2014-06-01 17:00,2014-05-04 08:00,2014-06-01 17:00,2014-05-04 08:00,2014-06-01 17:00,2014-07-10 08:00,2014-08-11 17:00,,PT_Normal,,,,,cVthYI0YQv++pwNXEeLMIw,,,,N,0,0,,,2013-02-16 15:54,2013-02-16 16:35,admin,admin
502971,6359,125065,13662,0,N,N,N,CP_Drtn,TT_Task,DT_FixedDUR2,TK_NotStart,DUKHCONI1AZ2HDGL7020,Precast Concrete Kerbs works,8173,376,0,160,0,1178,1178,160,0,0,0,,,,2014-06-05 08:00,2014-06-28 17:00,,2014-04-12 08:00,2014-05-04 17:00,2014-04-12 08:00,2014-05-04 17:00,2014-04-12 08:00,2014-05-04 17:00,2014-06-05 08:00,2014-06-28 17:00,,PT_Normal,,,,,S1UNjrJ6T/66BJRc46mn4g,,,,N,0,0,,,2013-02-16 15:54,2013-02-16 16:35,admin,admin
502972,6359,125065,13662,0,N,N,N,CP_Drtn,TT_Task,DT_FixedDUR2,TK_NotStart,DUKHCONI1AZ2HDGL7025,Interlocking for Walkways,8174,376,0,200,0,806,806,200,0,0,0,,,,2014-06-17 08:00,2014-07-15 17:00,,2014-04-23 08:00,2014-05-21 17:00,2014-04-23 08:00,2014-05-21 17:00,2014-04-23 08:00,2014-05-21 17:00,2014-06-17 08:00,2014-07-15 17:00,,PT_Normal,,,,,d3/iRwReQk6EygLl+2/Ufw,,,,N,0,0,,,2013-02-16 15:54,2013-02-16 16:35,admin,admin
502973,6359,125065,13662,0,N,N,N,CP_Drtn,TT_Task,DT_FixedDUR2,TK_NotStart,DUKHCONI1AZ2HDGL7030,Construction of Retaining wall,8165,376,0,200,0,756,756,200,0,0,0,,,,2014-06-29 08:00,2014-07-27 17:00,,2014-05-05 08:00,2014-06-02 17:00,2014-05-05 08:00,2014-06-02 17:00,2014-05-05 08:00,2014-06-02 17:00,2014-06-29 08:00,2014-07-27 17:00,,PT_Normal,,,,,dE/2SWviQqy8uYVZUN+OEQ,,,,N,0,0,,,2013-02-16 15:54,2013-02-16 16:35,admin,admin
502974,6359,125065,13662,0,N,N,N,CP_Drtn,TT_Task,DT_FixedDUR2,TK_NotStart,DUKHCONI1AZ2HDGL7035,Construction of Wash Stone Boulders,8170,376,0,200,0,88,88,200,0,0,0,,,,2014-06-29 08:00,2014-07-27 17:00,,2014-05-05 08:00,2014-06-02 17:00,2014-05-05 08:00,2014-06-02 17:00,2014-05-05 08:00,2014-06-02 17:00,2014-06-29 08:00,2014-07-27 17:00,,PT_Normal,,,,,SwQ6K3cbTZGOmHZ7kFlQlg,,,,N,0,0,,,2013-02-16 15:54,2013-02-16 16:35,admin,admin
502975,6359,125065,13662,0,N,N,N,CP_Drtn,TT_Task,DT_FixedDUR2,TK_NotStart,DUKHCONI1AZ2HDGL7040,Construction of Speed Humps,8167,776,184,160,0,14,14,160,0,0,0,,,,2014-10-18 08:00,2014-11-09 17:00,,2014-06-21 08:00,2014-07-13 17:00,2014-06-21 08:00,2014-07-13 17:00,2014-06-21 08:00,2014-07-13 17:00,2014-10-18 08:00,2014-11-09 17:00,,PT_Normal,,,,,ZKu2KTdvTjmxQRg1A49qrQ,,,,N,0,0,,,2013-02-16 15:54,2013-02-16 16:35,admin,admin
502976,6359,125066,13662,0,N,N,N,CP_Drtn,TT_Task,DT_FixedDUR2,TK_NotStart,DUKHCONI1AZ2RWGL6000,Excavation & Earth Filling,8177,144,0,80,0,1232,1232,80,500,0,500,,,,2014-05-03 08:00,2014-05-13 17:00,,2014-04-12 08:00,2014-04-22 17:00,2014-04-12 08:00,2014-04-22 17:00,2014-04-12 08:00,2014-04-22 17:00,2014-05-03 08:00,2014-05-13 17:00,,PT_Normal,,,,,hJKB9/cHT0OkpiVRKuafAA,,,,N,0,0,,,2013-02-16 15:54,2013-02-16 16:35,admin,admin
502977,6359,125066,13662,0,N,N,N,CP_Drtn,TT_Task,DT_FixedDUR2,TK_NotStart,DUKHCONI1AZ2RWGL6005,Laying of Sub Grade,8178,144,0,200,0,24,24,200,0,0,0,,,,2014-05-14 08:00,2014-06-11 17:00,,2014-04-23 08:00,2014-05-21 17:00,2014-04-23 08:00,2014-05-21 17:00,2014-04-23 08:00,2014-05-21 17:00,2014-05-14 08:00,2014-06-11 17:00,,PT_Normal,,,,,8AdM81uqRtOzWGAGsJ1Q7A,,,,N,0,0,,,2013-02-16 15:54,2013-02-16 16:35,admin,admin
502978,6359,125066,13662,0,N,N,N,CP_Drtn,TT_Task,DT_FixedDUR2,TK_NotStart,DUKHCONI1AZ2RWGL6010,Laying of Precast Kerbs,8178,144,0,200,0,24,24,200,0,0,0,,,,2014-05-26 08:00,2014-06-23 17:00,,2014-05-05 08:00,2014-06-02 17:00,2014-05-05 08:00,2014-06-02 17:00,2014-05-05 08:00,2014-06-02 17:00,2014-05-26 08:00,2014-06-23 17:00,,PT_Normal,,,,,BVbJYQTmT1SgzxPwrWMO4A,,,,N,0,0,,,2013-02-16 15:54,2013-02-16 16:35,admin,admin
502979,6359,125066,13662,0,N,N,N,CP_Drtn,TT_Task,DT_FixedDUR2,TK_NotStart,DUKHCONI1AZ2RWGL6015,Laying of Granular Sub Base Coarse,8173,144,0,160,0,1814,1814,160,600,0,600,,,,2014-06-07 08:00,2014-06-29 17:00,,2014-05-17 08:00,2014-06-08 17:00,2014-05-17 08:00,2014-06-08 17:00,2014-05-17 08:00,2014-06-08 17:00,2014-06-07 08:00,2014-06-29 17:00,,PT_Normal,,,,,iGNGEjhvQ7CV2oBAb8ZzAg,,,,N,0,0,,,2013-02-16 15:54,2013-02-16 16:35,admin,admin
502980,6359,125066,13662,0,N,N,N,CP_Drtn,TT_Task,DT_FixedDUR2,TK_NotStart,DUKHCONI1AZ2RWGL6020,Laying of Road Base Asphalt Concrete,8178,504,0,40,0,174,174,40,150,0,150,,,,2014-08-25 08:00,2014-08-30 17:00,,2014-06-09 08:00,2014-06-14 17:00,2014-06-09 08:00,2014-06-14 17:00,2014-06-09 08:00,2014-06-14 17:00,2014-08-25 08:00,2014-08-30 17:00,,PT_Normal,,,,,gawPy8c0TKmy2iWKeDqdWg,,,,N,0,0,,,2013-02-16 15:54,2013-02-16 16:35,admin,admin
502981,6359,125066,13662,0,N,N,N,CP_Drtn,TT_Task,DT_FixedDUR2,TK_NotStart,DUKHCONI1AZ2RWGL6025,Laying of Asphalt Wearing Coarse,8178,624,0,40,0,174,174,40,150,0,150,,,,2014-09-17 08:00,2014-09-22 17:00,,2014-06-15 08:00,2014-06-19 17:00,2014-06-15 08:00,2014-06-19 17:00,2014-06-15 08:00,2014-06-19 17:00,2014-09-17 08:00,2014-09-22 17:00,,PT_Normal,,,,,0hwwlv3IQfC28K6jkxSgLA,,,,N,0,0,,,2013-02-16 15:54,2013-02-16 16:35,admin,admin
502982,6359,125066,13662,0,N,N,N,CP_Drtn,TT_Task,DT_FixedDUR2,TK_NotStart,DUKHCONI1AZ2RWGL6030,Traffic Signage & Road Marking,8178,624,120,40,0,974,974,40,0,0,0,,,,2014-09-23 08:00,2014-09-28 17:00,,2014-06-21 08:00,2014-06-25 17:00,2014-06-21 08:00,2014-06-25 17:00,2014-06-21 08:00,2014-06-25 17:00,2014-09-23 08:00,2014-09-28 17:00,,PT_Normal,,,,,ZDJpX9u2RWKoYrUHWA+ZKg,,,,N,0,0,,,2013-02-16 15:54,2013-02-16 16:35,admin,admin
502983,6359,125067,13662,0,N,N,N,CP_Drtn,TT_Task,DT_FixedDUR2,TK_NotStart,DUKHCONI1AZ2FFGL5185,Excavation for firefighting line,8177,96,0,200,0,283,283,200,151,0,151,,,,2014-01-28 08:00,2014-02-26 17:00,,2014-01-14 08:00,2014-02-12 17:00,2014-01-14 08:00,2014-02-12 17:00,2014-01-14 08:00,2014-02-12 17:00,2014-01-28 08:00,2014-02-26 17:00,,PT_Normal,,,,,amNM8wyTQH6jYeKPlJ9vrQ,,,,N,0,0,,,2013-02-16 15:54,2013-02-16 16:35,admin,admin
502984,6359,125067,13662,0,N,N,N,CP_Drtn,TT_Task,DT_FixedDUR2,TK_NotStart,DUKHCONI1AZ2FFGL5190,Laying of firefighting line,8178,96,0,200,0,303.6,303.6,200,0,0,0,,,,2014-02-05 08:00,2014-03-06 17:00,,2014-01-22 08:00,2014-02-20 17:00,2014-01-22 08:00,2014-02-20 17:00,2014-01-22 08:00,2014-02-20 17:00,2014-02-05 08:00,2014-03-06 17:00,,PT_Normal,,,,,lo0wgmA2Sq2nRFKUt2BtXw,,,,N,0,0,,,2013-02-16 15:54,2013-02-16 16:35,admin,admin
502985,6359,125067,13662,0,N,N,N,CP_Drtn,TT_Task,DT_FixedDUR2,TK_NotStart,DUKHCONI1AZ2FFGL5195,Testing of firefighting line,8178,96,0,200,0,84,84,200,0,0,0,,,,2014-02-12 08:00,2014-03-12 17:00,,2014-01-28 08:00,2014-02-26 17:00,2014-01-28 08:00,2014-02-26 17:00,2014-01-28 08:00,2014-02-26 17:00,2014-02-12 08:00,2014-03-12 17:00,,PT_Normal,,,,,Dr5JaBDHSPq3ksZeX16n0Q,,,,N,0,0,,,2013-02-16 15:54,2013-02-16 16:35,admin,admin
502986,6359,125067,13662,0,N,N,N,CP_Drtn,TT_Task,DT_FixedDUR2,TK_NotStart,DUKHCONI1AZ2FFGL5200,Backfilling firefighting line,8177,96,0,200,0,329,329,200,275,0,275,,,,2014-02-18 08:00,2014-03-18 17:00,,2014-02-03 08:00,2014-03-04 17:00,2014-02-03 08:00,2014-03-04 17:00,2014-02-03 08:00,2014-03-04 17:00,2014-02-18 08:00,2014-03-18 17:00,,PT_Normal,,,,,O53FEvYnTAK4jZcq/T/sNA,,,,N,0,0,,,2013-02-16 15:54,2013-02-16 16:35,admin,admin
502987,6359,125067,13662,0,N,N,N,CP_Drtn,TT_Task,DT_FixedDUR2,TK_NotStart,DUKHCONI1AZ2FFGL5205,Construction of valve chambers & Thrust Blocks,8165,320,0,200,0,202,202,200,0,0,0,,,,2014-03-29 08:00,2014-04-26 17:00,,2014-02-09 08:00,2014-03-10 17:00,2014-02-09 08:00,2014-03-10 17:00,2014-02-09 08:00,2014-03-10 17:00,2014-03-29 08:00,2014-04-26 17:00,,PT_Normal,,,,,TKUoORnAQLunDvbzueqmZw,,,,N,0,0,,,2013-02-16 15:54,2013-02-16 16:35,admin,admin
502988,6359,125067,13662,0,N,N,N,CP_Drtn,TT_Task,DT_FixedDUR2,TK_NotStart,DUKHCONI1AZ2FFGL5210,Connection with existing Firewater System,8178,320,144,200,0,134.4,134.4,200,0,0,0,,,,2014-04-03 08:00,2014-05-01 17:00,,2014-02-16 08:00,2014-03-16 17:00,2014-02-16 08:00,2014-03-16 17:00,2014-02-16 08:00,2014-03-16 17:00,2014-04-03 08:00,2014-05-01 17:00,,PT_Normal,,,,,5J9CS50jTr26RXNQMBh+/Q,,,,N,0,0,,,2013-02-16 15:54,2013-02-16 16:35,admin,admin
502989,6359,125068,13662,0,N,N,N,CP_Drtn,TT_Task,DT_FixedDUR2,TK_NotStart,DUKHCONI1AZ2STGL5235,Excavation for Street lighting,8177,144,0,200,0,69,69,200,51,0,51,,,,2014-03-05 08:00,2014-04-02 17:00,,2014-02-12 08:00,2014-03-12 17:00,2014-02-12 08:00,2014-03-12 17:00,2014-02-12 08:00,2014-03-12 17:00,2014-03-05 08:00,2014-04-02 17:00,,PT_Normal,,,,,C3meAyvUQBeVomqp4yKXqg,,,,N,0,0,,,2013-02-16 15:54,2013-02-16 16:35,admin,admin
502990,6359,125068,13662,0,N,N,N,CP_Drtn,TT_Task,DT_FixedDUR2,TK_NotStart,DUKHCONI1AZ2STGL5240,Construction of Duct Banks,8178,144,0,200,0,1192.8,1192.8,200,0,0,0,,,,2014-03-11 08:00,2014-04-08 17:00,,2014-02-18 08:00,2014-03-18 17:00,2014-02-18 08:00,2014-03-18 17:00,2014-02-18 08:00,2014-03-18 17:00,2014-03-11 08:00,2014-04-08 17:00,,PT_Normal,,,,,+WrRwPEfQjyaQGqlRnctBA,,,,N,0,0,,,2013-02-16 15:54,2013-02-23 09:03,admin,admin
502991,6359,125068,13662,0,N,N,N,CP_Drtn,TT_Task,DT_FixedDUR2,TK_NotStart,DUKHCONI1AZ2STGL5245,Construction of Foundation,8172,144,0,200,0,638,638,200,0,0,0,,,,2014-03-11 08:00,2014-04-08 17:00,,2014-02-18 08:00,2014-03-18 17:00,2014-02-18 08:00,2014-03-18 17:00,2014-02-18 08:00,2014-03-18 17:00,2014-03-11 08:00,2014-04-08 17:00,,PT_Normal,,,,,BrVbyVyqSGCHyprNcrwITA,,,,N,0,0,,,2013-02-16 15:54,2013-02-16 16:35,admin,admin
502992,6359,125068,13662,0,N,N,N,CP_Drtn,TT_Task,DT_FixedDUR2,TK_NotStart,DUKHCONI1AZ2STGL5250,Backfilling Street Lighting,8177,144,0,200,0,287,287,200,275,0,275,,,,2014-03-17 08:00,2014-04-14 17:00,,2014-02-24 08:00,2014-03-24 17:00,2014-02-24 08:00,2014-03-24 17:00,2014-02-24 08:00,2014-03-24 17:00,2014-03-17 08:00,2014-04-14 17:00,,PT_Normal,,,,,8nUqEPNaTbOm0qNQwy6KVw,,,,N,0,0,,,2013-02-16 15:54,2013-02-16 16:35,admin,admin
502993,6359,125068,13662,0,N,N,N,CP_Drtn,TT_Task,DT_FixedDUR2,TK_NotStart,DUKHCONI1AZ2STGL5255,Installation of light Post,8178,744,72,200,0,216,216,200,0,0,0,,,,2014-06-29 08:00,2014-07-27 17:00,,2014-03-12 08:00,2014-04-09 17:00,2014-03-12 08:00,2014-04-09 17:00,2014-03-12 08:00,2014-04-09 17:00,2014-06-29 08:00,2014-07-27 17:00,,PT_Normal,,,,,RL2lzP4TTC2YCvm0IUfruQ,,,,N,0,0,,,2013-02-16 15:54,2013-02-16 16:35,admin,admin
502994,6359,125068,13662,0,N,N,N,CP_Drtn,TT_Task,DT_FixedDUR2,TK_NotStart,DUKHCONI1AZ2STGL5260,Electrical Works,8178,760,144,200,0,823.6,823.6,200,0,0,0,,,,2014-07-28 08:00,2014-08-28 17:00,,2014-04-08 08:00,2014-05-06 17:00,2014-04-08 08:00,2014-05-06 17:00,2014-04-08 08:00,2014-05-06 17:00,2014-07-28 08:00,2014-08-28 17:00,,PT_Normal,,,,,Fp2T653gRkCkbkEauIv8Ug,,,,N,0,0,,,2013-02-16 15:54,2013-02-16 16:35,admin,admin
502995,6359,125069,13662,0,N,N,N,CP_Drtn,TT_Task,DT_FixedDUR2,TK_NotStart,DUKHCONI1AZ2BWGL5315,Construction of Boundary Wall (Ht-3m),8165,592,0,200,0,224,224,200,0,0,0,,,,2014-06-02 08:00,2014-06-30 17:00,,2014-03-08 08:00,2014-04-05 17:00,2014-03-08 08:00,2014-04-05 17:00,2014-03-08 08:00,2014-04-05 17:00,2014-06-02 08:00,2014-06-30 17:00,,PT_Normal,,,,,taHw75rgTTepPkfTEYJ1Pg,,,,N,0,0,,,2013-02-16 15:54,2013-02-16 16:35,admin,admin
502996,6359,125069,13662,0,N,N,N,CP_Drtn,TT_Task,DT_FixedDUR2,TK_NotStart,DUKHCONI1AZ2BWGL5320,"Install.Steel Gate,Entance Barrier (3m Wall)",8178,592,0,200,0,28,28,200,0,0,0,,,,2014-06-18 08:00,2014-07-16 17:00,,2014-03-24 08:00,2014-04-21 17:00,2014-03-24 08:00,2014-04-21 17:00,2014-03-24 08:00,2014-04-21 17:00,2014-06-18 08:00,2014-07-16 17:00,,PT_Normal,,,,,Wgkb8LdPSPGfdeKPl0KtbQ,,,,N,0,0,,,2013-02-16 15:54,2013-02-16 16:35,admin,admin
502997,6359,125069,13662,0,N,N,N,CP_Drtn,TT_Task,DT_FixedDUR2,TK_NotStart,DUKHCONI1AZ2BWGL5325,Const. of Villa Front Boundary Wall (Ht-2m),8165,592,0,200,0,168,168,200,0,0,0,,,,2014-07-17 08:00,2014-08-18 17:00,,2014-04-22 08:00,2014-05-20 17:00,2014-04-22 08:00,2014-05-20 17:00,2014-04-22 08:00,2014-05-20 17:00,2014-07-17 08:00,2014-08-18 17:00,,PT_Normal,,,,,q8jTtcplQTuFusVZFdhDmw,,,,N,0,0,,,2013-02-16 15:54,2013-02-16 16:35,admin,admin
502998,6359,125069,13662,0,N,N,N,CP_Drtn,TT_Task,DT_FixedDUR2,TK_NotStart,DUKHCONI1AZ2BWGL5330,Const. of Blockwork fence Wall (Ht-1.85m),8165,592,88,200,0,154,154,200,0,0,0,,,,2014-07-29 08:00,2014-08-30 17:00,,2014-05-04 08:00,2014-06-01 17:00,2014-05-04 08:00,2014-06-01 17:00,2014-05-04 08:00,2014-06-01 17:00,2014-07-29 08:00,2014-08-30 17:00,,PT_Normal,,,,,ebv4YSn0Sp2MyULhb2V/UA,,,,N,0,0,,,2013-02-16 15:54,2013-02-16 16:35,admin,admin
502999,6359,125070,13662,0,N,N,N,CP_Drtn,TT_Task,DT_FixedDUR2,TK_NotStart,DUKHCONI1AZ2WSGL5180,"Installation of meter ,Accessories & Connection",8178,376,56,160,0,50.4,50.4,160,0,0,0,,,,2014-04-09 08:00,2014-05-01 17:00,,2014-02-13 08:00,2014-03-08 17:00,2014-02-13 08:00,2014-03-08 17:00,2014-02-13 08:00,2014-03-08 17:00,2014-04-09 08:00,2014-05-01 17:00,,PT_Normal,,,,,BEa8C6miSDKpgcB9kzAoXg,,,,N,0,0,,,2013-02-16 15:54,2013-02-16 16:35,admin,admin
503000,6359,125070,13662,0,N,N,N,CP_Drtn,TT_Task,DT_FixedDUR2,TK_NotStart,DUKHCONI1AZ2WSGL5160,Laying of water line,8178,96,0,200,0,285.6,285.6,200,0,0,0,,,,2014-01-11 08:00,2014-02-08 17:00,,2013-12-28 08:00,2014-01-25 17:00,2013-12-28 08:00,2014-01-25 17:00,2013-12-28 08:00,2014-01-25 17:00,2014-01-11 08:00,2014-02-08 17:00,,PT_Normal,,,,,z/aNvY42SV+fpu/czUBQyQ,,,,N,0,0,,,2013-02-16 15:54,2013-02-16 15:56,admin,admin
503001,6359,125070,13662,0,N,N,N,CP_Drtn,TT_Task,DT_FixedDUR2,TK_NotStart,DUKHCONI1AZ2WSGL5155,Excavation for water line,8177,96,0,200,0,401,401,200,251,0,251,,,,2014-01-05 08:00,2014-02-02 17:00,,2013-12-22 08:00,2014-01-19 17:00,2013-12-22 08:00,2014-01-19 17:00,2013-12-22 08:00,2014-01-19 17:00,2014-01-05 08:00,2014-02-02 17:00,,PT_Normal,,,,,CpX987nwQGOfoeW6gc2nVw,,,,N,0,0,,,2013-02-16 15:54,2013-02-16 15:56,admin,admin
503002,6359,125070,13662,0,N,N,N,CP_Drtn,TT_Task,DT_FixedDUR2,TK_NotStart,DUKHCONI1AZ2WSGL5165,Testing of potable water line,8178,96,0,200,0,84,84,200,0,0,0,,,,2014-01-16 08:00,2014-02-15 17:00,,2014-01-02 08:00,2014-01-30 17:00,2014-01-02 08:00,2014-01-30 17:00,2014-01-02 08:00,2014-01-30 17:00,2014-01-16 08:00,2014-02-15 17:00,,PT_Normal,,,,,DUyPE4GEQbezump8Dzqg2w,,,,N,0,0,,,2013-02-16 15:54,2013-02-16 15:56,admin,admin
503003,6359,125070,13662,0,N,N,N,CP_Drtn,TT_Task,DT_FixedDUR2,TK_NotStart,DUKHCONI1AZ2WSGL5170,Backfilling potable water line,8177,96,0,200,0,335,335,200,275,0,275,,,,2014-01-22 08:00,2014-02-20 17:00,,2014-01-08 08:00,2014-02-05 17:00,2014-01-08 08:00,2014-02-05 17:00,2014-01-08 08:00,2014-02-05 17:00,2014-01-22 08:00,2014-02-20 17:00,,PT_Normal,,,,,Z9kGdiDXTKC36hQPwbSuXw,,,,N,0,0,,,2013-02-16 15:54,2013-02-16 15:56,admin,admin
503004,6359,125070,13662,0,N,N,N,CP_Drtn,TT_Task,DT_FixedDUR2,TK_NotStart,DUKHCONI1AZ2WSGL5175,Construction of valve chambers & Thrust Blocks,8172,376,0,200,0,132,132,200,0,0,0,,,,2014-03-11 08:00,2014-04-08 17:00,,2014-01-14 08:00,2014-02-12 17:00,2014-01-14 08:00,2014-02-12 17:00,2014-01-14 08:00,2014-02-12 17:00,2014-03-11 08:00,2014-04-08 17:00,,PT_Normal,,,,,4chaqxNiS1ydYjM5gyUNMA,,,,N,0,0,,,2013-02-16 15:54,2013-02-16 15:56,admin,admin
503005,6359,125071,13662,0,N,N,N,CP_Drtn,TT_Task,DT_FixedDUR2,TK_NotStart,DUKHCONI1AZ2DRGL5125,Testing of Drainage line,8178,72,0,200,0,134.4,134.4,200,0,0,0,,,,2013-12-02 08:00,2013-12-31 17:00,,2013-11-21 08:00,2013-12-21 17:00,2013-11-21 08:00,2013-12-21 17:00,2013-11-21 08:00,2013-12-21 17:00,2013-12-02 08:00,2013-12-31 17:00,,PT_Normal,,,,,zB4NTv8/QY6ScgQ8FYR0zw,,,,N,0,0,,,2013-02-16 15:54,2013-02-16 15:56,admin,admin
503006,6359,125071,13662,0,N,N,N,CP_Drtn,TT_Task,DT_FixedDUR2,TK_NotStart,DUKHCONI1AZ2DRGL5130,Backfilling Drainage line,8177,72,0,120,0,402,402,120,330,0,330,,,,2013-12-21 08:00,2014-01-06 17:00,,2013-12-09 08:00,2013-12-26 17:00,2013-12-09 08:00,2013-12-26 17:00,2013-12-09 08:00,2013-12-26 17:00,2013-12-21 08:00,2014-01-06 17:00,,PT_Normal,,,,,NWFXiuupTdCfAXd6uLFoHg,,,,N,0,0,,,2013-02-16 15:54,2013-02-16 15:56,admin,admin
503007,6359,125071,13662,0,N,N,N,CP_Drtn,TT_Task,DT_FixedDUR2,TK_NotStart,DUKHCONI1AZ2DRGL5115,Excavation for Drainage line,8177,72,0,200,0,431,431,200,251,0,251,,,,2013-11-17 08:00,2013-12-15 17:00,,2013-11-06 08:00,2013-12-04 17:00,2013-11-06 08:00,2013-12-04 17:00,2013-11-06 08:00,2013-12-04 17:00,2013-11-17 08:00,2013-12-15 17:00,,PT_Normal,,,,,zOTr2q1UT7mkUNxmR1IlfA,,,,N,0,0,,,2013-02-16 15:54,2013-02-16 15:56,admin,admin
503008,6359,125071,13662,0,N,N,N,CP_Drtn,TT_Task,DT_FixedDUR2,TK_NotStart,DUKHCONI1AZ2DRGL5120,Laying of Drainage line,8178,72,0,200,0,276,276,200,0,0,0,,,,2013-11-24 08:00,2013-12-23 17:00,,2013-11-13 08:00,2013-12-11 17:00,2013-11-13 08:00,2013-12-11 17:00,2013-11-13 08:00,2013-12-11 17:00,2013-11-24 08:00,2013-12-23 17:00,,PT_Normal,,,,,w/4ymFGwQIu1o3MPwR4urA,,,,N,0,0,,,2013-02-16 15:54,2013-02-16 15:56,admin,admin
503009,6359,125072,13662,0,N,N,N,CP_Drtn,TT_Task,DT_FixedDUR2,TK_NotStart,DUKHCONI1AZ2SAGL5135,Construction of manholes Drainage,8177,616,144,200,0,6,6,200,0,0,0,,,,2014-03-11 08:00,2014-04-08 17:00,,2013-12-09 08:00,2014-01-07 17:00,2013-12-09 08:00,2014-01-07 17:00,2013-12-09 08:00,2014-01-07 17:00,2014-03-11 08:00,2014-04-08 17:00,,PT_Normal,,,,,qukPaSemSBK2wLOXcGi1Rw,,,,N,0,0,,,2013-02-16 15:54,2013-02-16 15:56,admin,admin
503010,6359,125072,13662,0,N,N,N,CP_Drtn,TT_Task,DT_FixedDUR2,TK_NotStart,DUKHCONI1AZ2SAGL5140,Construction of soakaways,8172,112,0,200,0,154,154,200,0,0,0,,,,2013-12-24 08:00,2014-01-21 17:00,,2013-12-07 08:00,2014-01-05 17:00,2013-12-07 08:00,2014-01-05 17:00,2013-12-07 08:00,2014-01-05 17:00,2013-12-24 08:00,2014-01-21 17:00,,PT_Normal,,,,,pG/ByaG9T4SkUCBdEypOBA,,,,N,0,0,,,2013-02-16 15:54,2013-02-16 15:56,admin,admin
503011,6359,125072,13662,0,N,N,N,CP_Drtn,TT_Task,DT_FixedDUR2,TK_NotStart,DUKHCONI1AZ2SAGL5145,Construction of Road gullies,8172,112,0,200,0,176,176,200,0,0,0,,,,2014-01-22 08:00,2014-02-20 17:00,,2014-01-06 08:00,2014-02-03 17:00,2014-01-06 08:00,2014-02-03 17:00,2014-01-06 08:00,2014-02-03 17:00,2014-01-22 08:00,2014-02-20 17:00,,PT_Normal,,,,,hJn4Vc7sS4OpPFfYn1FPFw,,,,N,0,0,,,2013-02-16 15:54,2013-02-16 15:56,admin,admin
503012,6359,125072,13662,0,N,N,N,CP_Drtn,TT_Task,DT_FixedDUR2,TK_NotStart,DUKHCONI1AZ2SAGL5150,Connection with existing sewer manhole,8177,432,288,160,0,6,6,160,0,0,0,,,,2014-04-09 08:00,2014-05-01 17:00,,2014-02-04 08:00,2014-02-27 17:00,2014-02-04 08:00,2014-02-27 17:00,2014-02-04 08:00,2014-02-27 17:00,2014-04-09 08:00,2014-05-01 17:00,,PT_Normal,,,,,gupmH9z1SIedQ+ip7XKgFQ,,,,N,0,0,,,2013-02-16 15:54,2013-02-16 16:35,admin,admin
503013,6359,125073,13662,0,N,N,N,CP_Drtn,TT_Task,DT_FixedDUR2,TK_NotStart,DUKHCONI1AZ2PSGL7015,Electrical Works-Parking Shed,8178,504,144,200,0,51.6,51.6,200,0,0,0,,,,2014-09-06 08:00,2014-10-04 17:00,,2014-06-21 08:00,2014-07-19 17:00,2014-06-21 08:00,2014-07-19 17:00,2014-06-21 08:00,2014-07-19 17:00,2014-09-06 08:00,2014-10-04 17:00,,PT_Normal,,,,,6JSYC7HkRdqDEB1blDjOhg,,,,N,0,0,,,2013-02-16 15:54,2013-02-16 16:35,admin,admin
503014,6359,125073,13662,0,N,N,N,CP_Drtn,TT_Task,DT_FixedDUR2,TK_NotStart,DUKHCONI1AZ2PSGL7000,Excavation,8177,544,40,120,0,148,148,120,75.999956,0,75.999956,,,,2014-08-13 08:00,2014-08-30 17:00,,2014-05-22 08:00,2014-06-08 17:00,2014-05-22 08:00,2014-06-08 17:00,2014-05-22 08:00,2014-06-08 17:00,2014-08-13 08:00,2014-08-30 17:00,,PT_Normal,,,,,aCQ/kle0TuOKlNdc4MnXzw,,,,N,0,0,,,2013-02-16 15:54,2013-02-16 16:35,admin,admin
503015,6359,125073,13662,0,N,N,N,CP_Drtn,TT_Task,DT_FixedDUR2,TK_NotStart,DUKHCONI1AZ2PSGL7005,Foundation casting,8165,504,0,120,0,252,252,120,0,0,0,,,,2014-08-19 08:00,2014-09-04 17:00,,2014-06-03 08:00,2014-06-19 17:00,2014-06-03 08:00,2014-06-19 17:00,2014-06-03 08:00,2014-06-19 17:00,2014-08-19 08:00,2014-09-04 17:00,,PT_Normal,,,,,YDBQsA2USiucnmbR8hzX4w,,,,N,0,0,,,2013-02-16 15:54,2013-02-16 16:35,admin,admin
503016,6359,125073,13662,0,N,N,N,CP_Drtn,TT_Task,DT_FixedDUR2,TK_NotStart,DUKHCONI1AZ2PSGL7010,"Column, Frame&  Fabrics  Erection",8178,504,0,200,0,286,286,200,0,0,0,,,,2014-08-31 08:00,2014-09-28 17:00,,2014-06-15 08:00,2014-07-13 17:00,2014-06-15 08:00,2014-07-13 17:00,2014-06-15 08:00,2014-07-13 17:00,2014-08-31 08:00,2014-09-28 17:00,,PT_Normal,,,,,992k2qvMR9KvR5p2Hfgr3Q,,,,N,0,0,,,2013-02-16 15:54,2013-02-16 16:35,admin,admin
503017,6359,125076,13662,0,N,N,N,CP_Drtn,TT_Task,DT_FixedDUR2,TK_NotStart,DUKHCONI1AZ5STGL5235,Excavation for Street lighting,8177,72,0,200,0,69,69,200,51,0,51,,,,2014-07-23 08:00,2014-08-24 17:00,,2014-07-13 08:00,2014-08-13 17:00,2014-07-13 08:00,2014-08-13 17:00,2014-07-13 08:00,2014-08-13 17:00,2014-07-23 08:00,2014-08-24 17:00,,PT_Normal,,,,,PXrNauWoTnOFKY9ktpHh8w,,,,N,0,0,,,2013-02-16 15:54,2013-02-16 16:35,admin,admin
503018,6359,125076,13662,0,N,N,N,CP_Drtn,TT_Task,DT_FixedDUR2,TK_NotStart,DUKHCONI1AZ5STGL5240,Construction of Duct Banks,8178,72,0,200,0,1192.8,1192.8,200,0,0,0,,,,2014-07-29 08:00,2014-08-30 17:00,,2014-07-19 08:00,2014-08-19 17:00,2014-07-19 08:00,2014-08-19 17:00,2014-07-19 08:00,2014-08-19 17:00,2014-07-29 08:00,2014-08-30 17:00,,PT_Normal,,,,,T6TgmZhhRsGvR+GPAmTg9w,,,,N,0,0,,,2013-02-16 15:54,2013-02-23 09:03,admin,admin
503019,6359,125076,13662,0,N,N,N,CP_Drtn,TT_Task,DT_FixedDUR2,TK_NotStart,DUKHCONI1AZ5STGL5245,Construction of Foundation,8172,72,0,200,0,638,638,200,0,0,0,,,,2014-07-29 08:00,2014-08-30 17:00,,2014-07-19 08:00,2014-08-19 17:00,2014-07-19 08:00,2014-08-19 17:00,2014-07-19 08:00,2014-08-19 17:00,2014-07-29 08:00,2014-08-30 17:00,,PT_Normal,,,,,AKKICfYvSzqjZ5qsQg8g2g,,,,N,0,0,,,2013-02-16 15:54,2013-02-16 16:35,admin,admin
503020,6359,125076,13662,0,N,N,N,CP_Drtn,TT_Task,DT_FixedDUR2,TK_NotStart,DUKHCONI1AZ5STGL5250,Backfilling Street Lighting,8177,72,0,200,0,287,287,200,275,0,275,,,,2014-08-07 08:00,2014-09-04 17:00,,2014-07-24 08:00,2014-08-25 17:00,2014-07-24 08:00,2014-08-25 17:00,2014-07-24 08:00,2014-08-25 17:00,2014-08-07 08:00,2014-09-04 17:00,,PT_Normal,,,,,c0IzOoBrT+CRty0rFR1gUw,,,,N,0,0,,,2013-02-16 15:54,2013-02-16 16:35,admin,admin
503021,6359,125076,13662,0,N,N,N,CP_Drtn,TT_Task,DT_FixedDUR2,TK_NotStart,DUKHCONI1AZ5STGL5255,Installation of light Post,8178,464,136,200,0,216,216,200,0,0,0,,,,2014-10-18 08:00,2014-11-15 17:00,,2014-08-09 08:00,2014-09-06 17:00,2014-08-09 08:00,2014-09-06 17:00,2014-08-09 08:00,2014-09-06 17:00,2014-10-18 08:00,2014-11-15 17:00,,PT_Normal,,,,,VN6JpKnWRzyZc7wLbnepRg,,,,N,0,0,,,2013-02-16 15:54,2013-02-16 16:35,admin,admin
503022,6359,125076,13662,0,N,N,N,CP_Drtn,TT_Task,DT_FixedDUR2,TK_NotStart,DUKHCONI1AZ5STGL5260,Electrical Works,8178,328,184,200,0,823.6,823.6,200,0,0,0,,,,2014-10-29 08:00,2014-11-26 17:00,,2014-09-09 08:00,2014-10-07 17:00,2014-09-09 08:00,2014-10-07 17:00,2014-09-09 08:00,2014-10-07 17:00,2014-10-29 08:00,2014-11-26 17:00,,PT_Normal,,,,,VKaePwCHTcuzsL9MiGeYGg,,,,N,0,0,,,2013-02-16 15:54,2013-02-16 16:35,admin,admin
503023,6359,125077,13662,0,N,N,N,CP_Drtn,TT_Task,DT_FixedDUR2,TK_NotStart,DUKHCONI1AZ5SLGL7205,Sweet Soil Laying,8178,184,0,200,0,2380,2380,200,0,0,0,,,,2014-11-27 08:00,2014-12-27 17:00,,2014-11-01 08:00,2014-11-29 17:00,2014-11-01 08:00,2014-11-29 17:00,2014-11-01 08:00,2014-11-29 17:00,2014-11-27 08:00,2014-12-27 17:00,,PT_Normal,,,,,7bLmSeLwTsyt2wD48DfyMg,,,,N,0,0,,,2013-02-16 15:54,2013-02-16 16:35,admin,admin
503024,6359,125077,13662,0,N,N,N,CP_Drtn,TT_Task,DT_FixedDUR2,TK_NotStart,DUKHCONI1AZ5SLGL7210,Plantation works,8178,184,184,200,0,588,588,200,0,0,0,,,,2014-12-09 08:00,2015-01-07 17:00,,2014-11-12 08:00,2014-12-10 17:00,2014-11-12 08:00,2014-12-10 17:00,2014-11-12 08:00,2014-12-10 17:00,2014-12-09 08:00,2015-01-07 17:00,,PT_Normal,,,,,DxGItTZxTuyu9PpyXAzZLw,,,,N,0,0,,,2013-02-16 15:54,2013-02-16 16:35,admin,admin
503025,6359,125077,13662,0,N,N,N,CP_Drtn,TT_Task,DT_FixedDUR2,TK_NotStart,DUKHCONI1AZ5SLGL7200,Excavation for Landscaping,8177,184,0,200,0,497,497,200,251,0,251,,,,2014-11-16 08:00,2014-12-14 17:00,,2014-10-20 08:00,2014-11-17 17:00,2014-10-20 08:00,2014-11-17 17:00,2014-10-20 08:00,2014-11-17 17:00,2014-11-16 08:00,2014-12-14 17:00,,PT_Normal,,,,,M3zJMBZ2T7Ku5vOY2AsO5A,,,,N,0,0,,,2013-02-16 15:54,2013-02-16 16:35,admin,admin
503026,6359,125078,13662,0,N,N,N,CP_Drtn,TT_Task,DT_FixedDUR2,TK_NotStart,DUKHCONI1AZ5ELGL5215,Excavation Cable  Trenches  & Duct Banks,8177,72,0,200,0,1374,1374,200,600,0,600,,,,2014-07-23 08:00,2014-08-24 17:00,,2014-07-13 08:00,2014-08-13 17:00,2014-07-13 08:00,2014-08-13 17:00,2014-07-13 08:00,2014-08-13 17:00,2014-07-23 08:00,2014-08-24 17:00,,PT_Normal,,,,,GVS/1lojTWuSduJ3xGgm6g,,,,N,0,0,,,2013-02-16 15:54,2013-02-16 16:35,admin,admin
503027,6359,125078,13662,0,N,N,N,CP_Drtn,TT_Task,DT_FixedDUR2,TK_NotStart,DUKHCONI1AZ5ELGL5220,Laying of electrical cables,8178,176,0,200,0,1834.8,1834.8,200,0,0,0,,,,2014-08-17 08:00,2014-09-14 17:00,,2014-07-19 08:00,2014-08-19 17:00,2014-07-19 08:00,2014-08-19 17:00,2014-07-19 08:00,2014-08-19 17:00,2014-08-17 08:00,2014-09-14 17:00,,PT_Normal,,,,,QeexUGijR+Wht7BIJZlC9Q,,,,N,0,0,,,2013-02-16 15:54,2013-02-16 16:35,admin,admin
503028,6359,125078,13662,0,N,N,N,CP_Drtn,TT_Task,DT_FixedDUR2,TK_NotStart,DUKHCONI1AZ5ELGL5225,Backfilling Electrical trench,8177,176,0,200,0,862,862,200,550,0,550,,,,2014-08-25 08:00,2014-09-22 17:00,,2014-07-27 08:00,2014-08-27 17:00,2014-07-27 08:00,2014-08-27 17:00,2014-07-27 08:00,2014-08-27 17:00,2014-08-25 08:00,2014-09-22 17:00,,PT_Normal,,,,,nDvBtnChQlu0ypS6JVrPow,,,,N,0,0,,,2013-02-16 15:54,2013-02-16 16:35,admin,admin
503029,6359,125078,13662,0,N,N,N,CP_Drtn,TT_Task,DT_FixedDUR2,TK_NotStart,DUKHCONI1AZ5ELGL5230,Construction of Submain Board & Feeder Pillar,8165,328,0,200,0,224,224,200,0,0,0,,,,2014-09-28 08:00,2014-10-28 17:00,,2014-08-11 08:00,2014-09-08 17:00,2014-08-11 08:00,2014-09-08 17:00,2014-08-11 08:00,2014-09-08 17:00,2014-09-28 08:00,2014-10-28 17:00,,PT_Normal,,,,,b5HXNqcZTIycvKy7rRBX4w,,,,N,0,0,,,2013-02-16 15:54,2013-02-16 16:35,admin,admin
503030,6359,125079,13662,0,N,N,N,CP_Drtn,TT_Task,DT_FixedDUR2,TK_NotStart,DUKHCONI1AZ5BWGL5315,Construction of Boundary Wall (Ht-3m),8165,272,0,200,0,224,224,200,0,0,0,,,,2014-09-17 08:00,2014-10-18 17:00,,2014-08-09 08:00,2014-09-06 17:00,2014-08-09 08:00,2014-09-06 17:00,2014-08-09 08:00,2014-09-06 17:00,2014-09-17 08:00,2014-10-18 17:00,,PT_Normal,,,,,s9f4oT5+Sp+Z8Q3ZxizrFw,,,,N,0,0,,,2013-02-16 15:54,2013-02-16 16:35,admin,admin
503031,6359,125079,13662,0,N,N,N,CP_Drtn,TT_Task,DT_FixedDUR2,TK_NotStart,DUKHCONI1AZ5BWGL5320,"Install.Steel Gate,Entance Barrier (3m Wall)",8178,272,0,200,0,28,28,200,0,0,0,,,,2014-10-04 08:00,2014-11-03 17:00,,2014-08-25 08:00,2014-09-22 17:00,2014-08-25 08:00,2014-09-22 17:00,2014-08-25 08:00,2014-09-22 17:00,2014-10-04 08:00,2014-11-03 17:00,,PT_Normal,,,,,vOjy6duEQnGRCy9g8fykHw,,,,N,0,0,,,2013-02-16 15:54,2013-02-16 16:35,admin,admin
503032,6359,125079,13662,0,N,N,N,CP_Drtn,TT_Task,DT_FixedDUR2,TK_NotStart,DUKHCONI1AZ5BWGL5325,Const. of Villa Front Boundary Wall (Ht-2m),8165,272,0,200,0,168,168,200,0,0,0,,,,2014-11-04 08:00,2014-12-02 17:00,,2014-09-23 08:00,2014-10-23 17:00,2014-09-23 08:00,2014-10-23 17:00,2014-09-23 08:00,2014-10-23 17:00,2014-11-04 08:00,2014-12-02 17:00,,PT_Normal,,,,,pUWaxAJtSIe/Vr07fjQMbg,,,,N,0,0,,,2013-02-16 15:54,2013-02-16 16:35,admin,admin
503033,6359,125079,13662,0,N,N,N,CP_Drtn,TT_Task,DT_FixedDUR2,TK_NotStart,DUKHCONI1AZ5BWGL5330,Const. of Blockwork fence Wall (Ht-1.85m),8165,360,280,200,0,154,154,200,0,0,0,,,,2014-11-29 08:00,2014-12-28 17:00,,2014-10-05 08:00,2014-11-04 17:00,2014-10-05 08:00,2014-11-04 17:00,2014-10-05 08:00,2014-11-04 17:00,2014-11-29 08:00,2014-12-28 17:00,,PT_Normal,,,,,W4D0pAR+QdybSgmlmsjdMQ,,,,N,0,0,,,2013-02-16 15:54,2013-02-16 16:35,admin,admin
503034,6359,125080,13662,0,N,N,N,CP_Drtn,TT_Task,DT_FixedDUR2,TK_NotStart,DUKHCONI1AZ5SAGL5135,Construction of manholes Drainage,8177,544,184,200,0,6,6,200,0,0,0,,,,2014-07-29 08:00,2014-08-30 17:00,,2014-05-11 08:00,2014-06-08 17:00,2014-05-11 08:00,2014-06-08 17:00,2014-05-11 08:00,2014-06-08 17:00,2014-07-29 08:00,2014-08-30 17:00,,PT_Normal,,,,,s7QC8+fsTka4OGR/Vqt7gg,,,,N,0,0,,,2013-02-16 15:54,2013-02-16 15:56,admin,admin
503035,6359,125080,13662,0,N,N,N,CP_Drtn,TT_Task,DT_FixedDUR2,TK_NotStart,DUKHCONI1AZ5SAGL5140,Construction of soakaways,8172,88,0,200,0,154,154,200,0,0,0,,,,2014-05-21 08:00,2014-06-18 17:00,,2014-05-08 08:00,2014-06-05 17:00,2014-05-08 08:00,2014-06-05 17:00,2014-05-08 08:00,2014-06-05 17:00,2014-05-21 08:00,2014-06-18 17:00,,PT_Normal,,,,,+381IWZ+R8O9axdEViZ9yg,,,,N,0,0,,,2013-02-16 15:54,2013-02-16 15:56,admin,admin
503036,6359,125080,13662,0,N,N,N,CP_Drtn,TT_Task,DT_FixedDUR2,TK_NotStart,DUKHCONI1AZ5SAGL5145,Construction of Road gullies,8172,88,0,200,0,176,176,200,0,0,0,,,,2014-06-19 08:00,2014-07-17 17:00,,2014-06-07 08:00,2014-07-05 17:00,2014-06-07 08:00,2014-07-05 17:00,2014-06-07 08:00,2014-07-05 17:00,2014-06-19 08:00,2014-07-17 17:00,,PT_Normal,,,,,4CCX9q8/RCmRl72TMkI3kg,,,,N,0,0,,,2013-02-16 15:54,2013-02-16 15:56,admin,admin
503037,6359,125080,13662,0,N,N,N,CP_Drtn,TT_Task,DT_FixedDUR2,TK_NotStart,DUKHCONI1AZ5SAGL5150,Connection with existing sewer manhole,8177,360,288,160,0,6,6,160,0,0,0,,,,2014-08-31 08:00,2014-09-22 17:00,,2014-07-06 08:00,2014-07-28 17:00,2014-07-06 08:00,2014-07-28 17:00,2014-07-06 08:00,2014-07-28 17:00,2014-08-31 08:00,2014-09-22 17:00,,PT_Normal,,,,,LLmG+euBRQSLc1fzI3qpeQ,,,,N,0,0,,,2013-02-16 15:54,2013-02-16 16:35,admin,admin
503038,6359,125081,13662,0,N,N,N,CP_Drtn,TT_Task,DT_FixedDUR2,TK_NotStart,DUKHCONI1AZ5RWGL6000,Excavation & Earth Filling,8177,72,0,80,0,1232,1232,80,500,0,500,,,,2014-09-23 08:00,2014-10-04 17:00,,2014-09-13 08:00,2014-09-23 17:00,2014-09-13 08:00,2014-09-23 17:00,2014-09-13 08:00,2014-09-23 17:00,2014-09-23 08:00,2014-10-04 17:00,,PT_Normal,,,,,q4A+FByFRP2gyl0vlNFo2w,,,,N,0,0,,,2013-02-16 15:54,2013-02-16 16:35,admin,admin
503039,6359,125081,13662,0,N,N,N,CP_Drtn,TT_Task,DT_FixedDUR2,TK_NotStart,DUKHCONI1AZ5RWGL6005,Laying of Sub Grade,8178,72,0,200,0,24,24,200,0,0,0,,,,2014-10-05 08:00,2014-11-04 17:00,,2014-09-24 08:00,2014-10-25 17:00,2014-09-24 08:00,2014-10-25 17:00,2014-09-24 08:00,2014-10-25 17:00,2014-10-05 08:00,2014-11-04 17:00,,PT_Normal,,,,,mvyoG2KuS2y6Xd4mYqFcmw,,,,N,0,0,,,2013-02-16 15:54,2013-02-16 16:35,admin,admin
503040,6359,125081,13662,0,N,N,N,CP_Drtn,TT_Task,DT_FixedDUR2,TK_NotStart,DUKHCONI1AZ5RWGL6015,Laying of Granular Sub Base Coarse,8173,72,0,160,0,1814,1814,160,600,0,600,,,,2014-10-29 08:00,2014-11-20 17:00,,2014-10-19 08:00,2014-11-10 17:00,2014-10-19 08:00,2014-11-10 17:00,2014-10-19 08:00,2014-11-10 17:00,2014-10-29 08:00,2014-11-20 17:00,,PT_Normal,,,,,5pQfwkeBTQWLIR5zZYeJvg,,,,N,0,0,,,2013-02-16 15:54,2013-02-16 16:35,admin,admin
503041,6359,125081,13662,0,N,N,N,CP_Drtn,TT_Task,DT_FixedDUR2,TK_NotStart,DUKHCONI1AZ5RWGL6020,Laying of Road Base Asphalt Concrete,8178,72,0,40,0,174,174,40,150,0,150,,,,2014-11-22 08:00,2014-11-26 17:00,,2014-11-11 08:00,2014-11-16 17:00,2014-11-11 08:00,2014-11-16 17:00,2014-11-11 08:00,2014-11-16 17:00,2014-11-22 08:00,2014-11-26 17:00,,PT_Normal,,,,,WEb4rxVASy2HcJwFzFa9xg,,,,N,0,0,,,2013-02-16 15:54,2013-02-16 16:35,admin,admin
503042,6359,125081,13662,0,N,N,N,CP_Drtn,TT_Task,DT_FixedDUR2,TK_NotStart,DUKHCONI1AZ5RWGL6025,Laying of Asphalt Wearing Coarse,8178,72,0,40,0,174,174,40,150,0,150,,,,2014-11-27 08:00,2014-12-02 17:00,,2014-11-17 08:00,2014-11-22 17:00,2014-11-17 08:00,2014-11-22 17:00,2014-11-17 08:00,2014-11-22 17:00,2014-11-27 08:00,2014-12-02 17:00,,PT_Normal,,,,,hJJmIb1JSXu8uRtlHPWhJw,,,,N,0,0,,,2013-02-16 15:54,2013-02-16 16:35,admin,admin
503043,6359,125081,13662,0,N,N,N,CP_Drtn,TT_Task,DT_FixedDUR2,TK_NotStart,DUKHCONI1AZ5RWGL6030,Traffic Signage & Road Marking,8178,200,120,40,0,974,974,40,0,0,0,,,,2014-12-23 08:00,2014-12-28 17:00,,2014-11-23 08:00,2014-11-27 17:00,2014-11-23 08:00,2014-11-27 17:00,2014-11-23 08:00,2014-11-27 17:00,2014-12-23 08:00,2014-12-28 17:00,,PT_Normal,,,,,3L1q3QMJQAWPtJOUszqJAw,,,,N,0,0,,,2013-02-16 15:54,2013-02-16 16:35,admin,admin
503044,6359,125081,13662,0,N,N,N,CP_Drtn,TT_Task,DT_FixedDUR2,TK_NotStart,DUKHCONI1AZ5RWGL6010,Laying of Precast Kerbs,8178,72,0,200,0,24,24,200,0,0,0,,,,2014-10-19 08:00,2014-11-16 17:00,,2014-10-06 08:00,2014-11-05 17:00,2014-10-06 08:00,2014-11-05 17:00,2014-10-06 08:00,2014-11-05 17:00,2014-10-19 08:00,2014-11-16 17:00,,PT_Normal,,,,,JLnyzHJRTDOFpttHHtO+vw,,,,N,0,0,,,2013-02-16 15:54,2013-02-16 16:35,admin,admin
503045,6359,125082,13662,0,N,N,N,CP_Drtn,TT_Task,DT_FixedDUR2,TK_NotStart,DUKHCONI1AZ5TCGL5295,Excavation Telecommunication trenches,8177,72,0,160,0,528,528,160,300,0,300,,,,2014-08-19 08:00,2014-09-10 17:00,,2014-08-09 08:00,2014-08-31 17:00,2014-08-09 08:00,2014-08-31 17:00,2014-08-09 08:00,2014-08-31 17:00,2014-08-19 08:00,2014-09-10 17:00,,PT_Normal,,,,,3MhNs/pmR7+vZnjpWaqM8Q,,,,N,0,0,,,2013-02-16 15:54,2013-02-16 16:35,admin,admin
503046,6359,125082,13662,0,N,N,N,CP_Drtn,TT_Task,DT_FixedDUR2,TK_NotStart,DUKHCONI1AZ5TCGL5300,Laying of cables,8178,72,0,160,0,795.2,795.2,160,0,0,0,,,,2014-08-25 08:00,2014-09-16 17:00,,2014-08-14 08:00,2014-09-06 17:00,2014-08-14 08:00,2014-09-06 17:00,2014-08-14 08:00,2014-09-06 17:00,2014-08-25 08:00,2014-09-16 17:00,,PT_Normal,,,,,VvUl7W/2Rs2HRVEZREg4zw,,,,N,0,0,,,2013-02-16 15:54,2013-02-16 16:35,admin,admin
503047,6359,125082,13662,0,N,N,N,CP_Drtn,TT_Task,DT_FixedDUR2,TK_NotStart,DUKHCONI1AZ5TCGL5305,Backfilling telecommunication trench,8177,72,0,160,0,530,530,160,440,0,440,,,,2014-08-31 08:00,2014-09-22 17:00,,2014-08-20 08:00,2014-09-11 17:00,2014-08-20 08:00,2014-09-11 17:00,2014-08-20 08:00,2014-09-11 17:00,2014-08-31 08:00,2014-09-22 17:00,,PT_Normal,,,,,Wr91fwCESgqd0ISzyB0x7w,,,,N,0,0,,,2013-02-16 15:54,2013-02-16 16:35,admin,admin
503048,6359,125082,13662,0,N,N,N,CP_Drtn,TT_Task,DT_FixedDUR2,TK_NotStart,DUKHCONI1AZ5TCGL5310,Connection & Installation,8178,224,16,160,0,344.4,344.4,160,0,0,0,,,,2014-10-04 08:00,2014-10-28 17:00,,2014-09-01 08:00,2014-09-23 17:00,2014-09-01 08:00,2014-09-23 17:00,2014-09-01 08:00,2014-09-23 17:00,2014-10-04 08:00,2014-10-28 17:00,,PT_Normal,,,,,sCMHCyNPTqCduAX2CE0DUg,,,,N,0,0,,,2013-02-16 15:54,2013-02-16 16:35,admin,admin
503049,6359,125083,13662,0,N,N,N,CP_Drtn,TT_Task,DT_FixedDUR2,TK_NotStart,DUKHCONI1AZ5FFGL5185,Excavation for firefighting line,8177,72,0,200,0,283,283,200,151,0,151,,,,2014-06-25 08:00,2014-07-23 17:00,,2014-06-15 08:00,2014-07-13 17:00,2014-06-15 08:00,2014-07-13 17:00,2014-06-15 08:00,2014-07-13 17:00,2014-06-25 08:00,2014-07-23 17:00,,PT_Normal,,,,,K/MQ549YQkG0bv7cEhqzRg,,,,N,0,0,,,2013-02-16 15:54,2013-02-16 16:35,admin,admin
503050,6359,125083,13662,0,N,N,N,CP_Drtn,TT_Task,DT_FixedDUR2,TK_NotStart,DUKHCONI1AZ5FFGL5190,Laying of firefighting line,8178,72,0,200,0,303.6,303.6,200,0,0,0,,,,2014-07-03 08:00,2014-07-31 17:00,,2014-06-23 08:00,2014-07-21 17:00,2014-06-23 08:00,2014-07-21 17:00,2014-06-23 08:00,2014-07-21 17:00,2014-07-03 08:00,2014-07-31 17:00,,PT_Normal,,,,,SvWrNXTFTKywSyDgNdggZQ,,,,N,0,0,,,2013-02-16 15:54,2013-02-16 16:35,admin,admin
503051,6359,125083,13662,0,N,N,N,CP_Drtn,TT_Task,DT_FixedDUR2,TK_NotStart,DUKHCONI1AZ5FFGL5195,Testing of firefighting line,8178,72,0,200,0,84,84,200,0,0,0,,,,2014-07-09 08:00,2014-08-10 17:00,,2014-06-29 08:00,2014-07-27 17:00,2014-06-29 08:00,2014-07-27 17:00,2014-06-29 08:00,2014-07-27 17:00,2014-07-09 08:00,2014-08-10 17:00,,PT_Normal,,,,,0YC/nkxVQKyR/p+mznoFog,,,,N,0,0,,,2013-02-16 15:54,2013-02-16 16:35,admin,admin
503052,6359,125083,13662,0,N,N,N,CP_Drtn,TT_Task,DT_FixedDUR2,TK_NotStart,DUKHCONI1AZ5FFGL5200,Backfilling firefighting line,8177,72,0,200,0,329,329,200,275,0,275,,,,2014-07-15 08:00,2014-08-16 17:00,,2014-07-05 08:00,2014-08-05 17:00,2014-07-05 08:00,2014-08-05 17:00,2014-07-05 08:00,2014-08-05 17:00,2014-07-15 08:00,2014-08-16 17:00,,PT_Normal,,,,,xneOKwsbTDyQQwHvGa3crw,,,,N,0,0,,,2013-02-16 15:54,2013-02-16 16:35,admin,admin
503053,6359,125083,13662,0,N,N,N,CP_Drtn,TT_Task,DT_FixedDUR2,TK_NotStart,DUKHCONI1AZ5FFGL5205,Construction of valve chambers & Thrust Blocks,8165,248,0,200,0,202,202,200,0,0,0,,,,2014-08-19 08:00,2014-09-16 17:00,,2014-07-10 08:00,2014-08-11 17:00,2014-07-10 08:00,2014-08-11 17:00,2014-07-10 08:00,2014-08-11 17:00,2014-08-19 08:00,2014-09-16 17:00,,PT_Normal,,,,,pY+gAh6gRRWR2dkcHbyMgA,,,,N,0,0,,,2013-02-16 15:54,2013-02-16 16:35,admin,admin
503054,6359,125083,13662,0,N,N,N,CP_Drtn,TT_Task,DT_FixedDUR2,TK_NotStart,DUKHCONI1AZ5FFGL5210,Connection with existing Firewater System,8178,248,176,200,0,134.4,134.4,200,0,0,0,,,,2014-08-25 08:00,2014-09-22 17:00,,2014-07-16 08:00,2014-08-17 17:00,2014-07-16 08:00,2014-08-17 17:00,2014-07-16 08:00,2014-08-17 17:00,2014-08-25 08:00,2014-09-22 17:00,,PT_Normal,,,,,JzmHhmfqQNyH6kyp7zsqLg,,,,N,0,0,,,2013-02-16 15:54,2013-02-16 16:35,admin,admin
503055,6359,125084,13662,0,N,N,N,CP_Drtn,TT_Task,DT_FixedDUR2,TK_NotStart,DUKHCONI1AZ5HDGL7020,Precast Concrete Kerbs works,8173,184,0,160,0,1178,1178,160,0,0,0,,,,2014-10-12 08:00,2014-11-03 17:00,,2014-09-13 08:00,2014-10-05 17:00,2014-09-13 08:00,2014-10-05 17:00,2014-09-13 08:00,2014-10-05 17:00,2014-10-12 08:00,2014-11-03 17:00,,PT_Normal,,,,,SzoqZ8wLQKO2nH74AdOR/g,,,,N,0,0,,,2013-02-16 15:54,2013-02-16 16:35,admin,admin
503056,6359,125084,13662,0,N,N,N,CP_Drtn,TT_Task,DT_FixedDUR2,TK_NotStart,DUKHCONI1AZ5HDGL7025,Interlocking for Walkways,8174,184,0,200,0,806,806,200,0,0,0,,,,2014-10-23 08:00,2014-11-20 17:00,,2014-09-24 08:00,2014-10-25 17:00,2014-09-24 08:00,2014-10-25 17:00,2014-09-24 08:00,2014-10-25 17:00,2014-10-23 08:00,2014-11-20 17:00,,PT_Normal,,,,,TERV3RJnRxmVKajHuAbvrQ,,,,N,0,0,,,2013-02-16 15:54,2013-02-16 16:35,admin,admin
503057,6359,125084,13662,0,N,N,N,CP_Drtn,TT_Task,DT_FixedDUR2,TK_NotStart,DUKHCONI1AZ5HDGL7030,Construction of Retaining wall,8165,184,0,200,0,756,756,200,0,0,0,,,,2014-11-04 08:00,2014-12-02 17:00,,2014-10-06 08:00,2014-11-05 17:00,2014-10-06 08:00,2014-11-05 17:00,2014-10-06 08:00,2014-11-05 17:00,2014-11-04 08:00,2014-12-02 17:00,,PT_Normal,,,,,HgUfer1aS2O5QTdGh88Zyg,,,,N,0,0,,,2013-02-16 15:54,2013-02-16 16:35,admin,admin
503058,6359,125084,13662,0,N,N,N,CP_Drtn,TT_Task,DT_FixedDUR2,TK_NotStart,DUKHCONI1AZ5HDGL7035,Construction of Wash Stone Boulders,8170,184,0,200,0,88,88,200,0,0,0,,,,2014-11-04 08:00,2014-12-02 17:00,,2014-10-06 08:00,2014-11-05 17:00,2014-10-06 08:00,2014-11-05 17:00,2014-10-06 08:00,2014-11-05 17:00,2014-11-04 08:00,2014-12-02 17:00,,PT_Normal,,,,,5h2Mzs/UQH+f0e3cOXHrlg,,,,N,0,0,,,2013-02-16 15:54,2013-02-16 16:35,admin,admin
503059,6359,125084,13662,0,N,N,N,CP_Drtn,TT_Task,DT_FixedDUR2,TK_NotStart,DUKHCONI1AZ5HDGL7040,Construction of Speed Humps,8167,72,72,80,0,14,14,80,0,0,0,,,,2014-12-03 08:00,2014-12-14 17:00,,2014-11-23 08:00,2014-12-03 17:00,2014-11-23 08:00,2014-12-03 17:00,2014-11-23 08:00,2014-12-03 17:00,2014-12-03 08:00,2014-12-14 17:00,,PT_Normal,,,,,VVGR/nrqRiWhxLKTvAOYKQ,,,,N,0,0,,,2013-02-16 15:54,2013-02-16 16:35,admin,admin
503060,6359,125085,13662,0,N,N,N,CP_Drtn,TT_Task,DT_FixedDUR2,TK_NotStart,DUKHCONI1AZ5DRGL5115,Excavation for Drainage line,8177,72,0,200,0,431,431,200,251,0,251,,,,2014-04-19 08:00,2014-05-17 17:00,,2014-04-08 08:00,2014-05-06 17:00,2014-04-08 08:00,2014-05-06 17:00,2014-04-08 08:00,2014-05-06 17:00,2014-04-19 08:00,2014-05-17 17:00,,PT_Normal,,,,,kP10o29wTbiO2egqJW3bDg,,,,N,0,0,,,2013-02-16 15:54,2013-02-16 15:56,admin,admin
503061,6359,125085,13662,0,N,N,N,CP_Drtn,TT_Task,DT_FixedDUR2,TK_NotStart,DUKHCONI1AZ5DRGL5120,Laying of Drainage line,8178,72,0,200,0,276,276,200,0,0,0,,,,2014-04-26 08:00,2014-05-24 17:00,,2014-04-15 08:00,2014-05-13 17:00,2014-04-15 08:00,2014-05-13 17:00,2014-04-15 08:00,2014-05-13 17:00,2014-04-26 08:00,2014-05-24 17:00,,PT_Normal,,,,,JiHg2Nr9QhCuWe75Ybsfbw,,,,N,0,0,,,2013-02-16 15:54,2013-02-16 15:56,admin,admin
503062,6359,125085,13662,0,N,N,N,CP_Drtn,TT_Task,DT_FixedDUR2,TK_NotStart,DUKHCONI1AZ5DRGL5125,Testing of Drainage line,8178,72,0,200,0,134.4,134.4,200,0,0,0,,,,2014-05-04 08:00,2014-06-01 17:00,,2014-04-23 08:00,2014-05-21 17:00,2014-04-23 08:00,2014-05-21 17:00,2014-04-23 08:00,2014-05-21 17:00,2014-05-04 08:00,2014-06-01 17:00,,PT_Normal,,,,,5ZtliP40RSaBThg30cPN/A,,,,N,0,0,,,2013-02-16 15:54,2013-02-16 15:56,admin,admin
503063,6359,125085,13662,0,N,N,N,CP_Drtn,TT_Task,DT_FixedDUR2,TK_NotStart,DUKHCONI1AZ5DRGL5130,Backfilling Drainage line,8177,72,0,120,0,402,402,120,330,0,330,,,,2014-05-21 08:00,2014-06-07 17:00,,2014-05-11 08:00,2014-05-27 17:00,2014-05-11 08:00,2014-05-27 17:00,2014-05-11 08:00,2014-05-27 17:00,2014-05-21 08:00,2014-06-07 17:00,,PT_Normal,,,,,Lh6mJjRHSy+Hc3znKmBnhg,,,,N,0,0,,,2013-02-16 15:54,2013-02-16 15:56,admin,admin
503064,6359,125086,13662,0,N,N,N,CP_Drtn,TT_Task,DT_FixedDUR2,TK_NotStart,DUKHCONI1AZ5PSGL7000,Excavation,8177,120,40,120,0,148,148,120,75.999956,0,75.999956,,,,2014-11-11 08:00,2014-11-27 17:00,,2014-10-25 08:00,2014-11-10 17:00,2014-10-25 08:00,2014-11-10 17:00,2014-10-25 08:00,2014-11-10 17:00,2014-11-11 08:00,2014-11-27 17:00,,PT_Normal,,,,,EOFApkJhTw+3vtmKMMldZw,,,,N,0,0,,,2013-02-16 15:54,2013-02-16 16:35,admin,admin
503065,6359,125086,13662,0,N,N,N,CP_Drtn,TT_Task,DT_FixedDUR2,TK_NotStart,DUKHCONI1AZ5PSGL7005,Foundation casting,8165,80,0,120,0,252,252,120,0,0,0,,,,2014-11-17 08:00,2014-12-03 17:00,,2014-11-05 08:00,2014-11-22 17:00,2014-11-05 08:00,2014-11-22 17:00,2014-11-05 08:00,2014-11-22 17:00,2014-11-17 08:00,2014-12-03 17:00,,PT_Normal,,,,,tAVTmRfdRmuwmJbc0yJMpQ,,,,N,0,0,,,2013-02-16 15:54,2013-02-16 16:35,admin,admin
503066,6359,125086,13662,0,N,N,N,CP_Drtn,TT_Task,DT_FixedDUR2,TK_NotStart,DUKHCONI1AZ5PSGL7010,"Column, Frame&  Fabrics  Erection",8178,80,0,200,0,286,286,200,0,0,0,,,,2014-11-29 08:00,2014-12-28 17:00,,2014-11-17 08:00,2014-12-15 17:00,2014-11-17 08:00,2014-12-15 17:00,2014-11-17 08:00,2014-12-15 17:00,2014-11-29 08:00,2014-12-28 17:00,,PT_Normal,,,,,hnHJWHXaSgqKzLUOemLh5g,,,,N,0,0,,,2013-02-16 15:54,2013-02-16 16:35,admin,admin
503067,6359,125086,13662,0,N,N,N,CP_Drtn,TT_Task,DT_FixedDUR2,TK_NotStart,DUKHCONI1AZ5PSGL7015,Electrical Works-Parking Shed,8178,80,80,200,0,51.6,51.6,200,0,0,0,,,,2014-12-04 08:00,2015-01-03 17:00,,2014-11-23 08:00,2014-12-22 17:00,2014-11-23 08:00,2014-12-22 17:00,2014-11-23 08:00,2014-12-22 17:00,2014-12-04 08:00,2015-01-03 17:00,,PT_Normal,,,,,dkLjAPKTSXWbunfs1IkhWQ,,,,N,0,0,,,2013-02-16 15:54,2013-02-16 16:35,admin,admin
503068,6359,125087,13662,0,N,N,N,CP_Drtn,TT_Task,DT_FixedDUR2,TK_NotStart,DUKHCONI1AZ5IRGL5265,Excavation for irrigation line,8177,272,0,200,0,812,812,200,500,0,500,,,,2014-10-07 08:00,2014-11-06 17:00,,2014-08-28 08:00,2014-09-25 17:00,2014-08-28 08:00,2014-09-25 17:00,2014-08-28 08:00,2014-09-25 17:00,2014-10-07 08:00,2014-11-06 17:00,,PT_Normal,,,,,SVGh/N8XR0aMmwgtnt12iw,,,,N,0,0,,,2013-02-16 15:54,2013-02-16 16:35,admin,admin
503069,6359,125087,13662,0,N,N,N,CP_Drtn,TT_Task,DT_FixedDUR2,TK_NotStart,DUKHCONI1AZ5IRGL5270,Laying of irrigationline,8178,272,0,200,0,386.4,386.4,200,0,0,0,,,,2014-10-15 08:00,2014-11-12 17:00,,2014-09-03 08:00,2014-10-01 17:00,2014-09-03 08:00,2014-10-01 17:00,2014-09-03 08:00,2014-10-01 17:00,2014-10-15 08:00,2014-11-12 17:00,,PT_Normal,,,,,NZKN7k+rSt6sPIPWIeC4aA,,,,N,0,0,,,2013-02-16 15:54,2013-02-23 09:03,admin,admin
503070,6359,125087,13662,0,N,N,N,CP_Drtn,TT_Task,DT_FixedDUR2,TK_NotStart,DUKHCONI1AZ5IRGL5275,Testing of irrigation line,8178,272,0,200,0,319.2,319.2,200,0,0,0,,,,2014-10-21 08:00,2014-11-18 17:00,,2014-09-09 08:00,2014-10-07 17:00,2014-09-09 08:00,2014-10-07 17:00,2014-09-09 08:00,2014-10-07 17:00,2014-10-21 08:00,2014-11-18 17:00,,PT_Normal,,,,,itf3Qp9SS+uwWzdu4H//2Q,,,,N,0,0,,,2013-02-16 15:54,2013-02-23 09:03,admin,admin
503071,6359,125087,13662,0,N,N,N,CP_Drtn,TT_Task,DT_FixedDUR2,TK_NotStart,DUKHCONI1AZ5IRGL5280,Backfilling irrigation line,8177,272,0,200,0,676,676,200,550,0,550,,,,2014-10-27 08:00,2014-11-24 17:00,,2014-09-15 08:00,2014-10-15 17:00,2014-09-15 08:00,2014-10-15 17:00,2014-09-15 08:00,2014-10-15 17:00,2014-10-27 08:00,2014-11-24 17:00,,PT_Normal,,,,,i1q9FlNnRS2OqkHMum/BnQ,,,,N,0,0,,,2013-02-16 15:54,2013-02-16 16:35,admin,admin
503072,6359,125087,13662,0,N,N,N,CP_Drtn,TT_Task,DT_FixedDUR2,TK_NotStart,DUKHCONI1AZ5IRGL5285,"Construction of Thrust Blocks,Pull boxes",8178,272,0,200,0,116.4,116.4,200,0,0,0,,,,2014-11-08 08:00,2014-12-06 17:00,,2014-09-27 08:00,2014-10-27 17:00,2014-09-27 08:00,2014-10-27 17:00,2014-09-27 08:00,2014-10-27 17:00,2014-11-08 08:00,2014-12-06 17:00,,PT_Normal,,,,,vuhJCxqaSiSkOTcaI8StQQ,,,,N,0,0,,,2013-02-16 15:54,2013-02-16 16:35,admin,admin
503073,6359,125087,13662,0,N,N,N,CP_Drtn,TT_Task,DT_FixedDUR2,TK_NotStart,DUKHCONI1AZ5IRGL5290,"Irrigation Fittings (Nozzle,Values)",8178,272,88,200,0,285.6,285.6,200,0,0,0,,,,2014-11-16 08:00,2014-12-14 17:00,,2014-10-05 08:00,2014-11-04 17:00,2014-10-05 08:00,2014-11-04 17:00,2014-10-05 08:00,2014-11-04 17:00,2014-11-16 08:00,2014-12-14 17:00,,PT_Normal,,,,,jyHwc382QgOkxLLQiSo2jw,,,,N,0,0,,,2013-02-16 15:54,2013-02-16 16:35,admin,admin
503074,6359,125088,13662,0,N,N,N,CP_Drtn,TT_Task,DT_FixedDUR2,TK_NotStart,DUKHCONI1AZ5WSGL5155,Excavation for water line,8177,72,0,200,0,401,401,200,251,0,251,,,,2014-06-02 08:00,2014-06-30 17:00,,2014-05-22 08:00,2014-06-19 17:00,2014-05-22 08:00,2014-06-19 17:00,2014-05-22 08:00,2014-06-19 17:00,2014-06-02 08:00,2014-06-30 17:00,,PT_Normal,,,,,/bk017jRRWmVf7z/PoftDw,,,,N,0,0,,,2013-02-16 15:54,2013-02-16 15:56,admin,admin
503075,6359,125088,13662,0,N,N,N,CP_Drtn,TT_Task,DT_FixedDUR2,TK_NotStart,DUKHCONI1AZ5WSGL5160,Laying of water line,8178,72,0,200,0,285.6,285.6,200,0,0,0,,,,2014-06-08 08:00,2014-07-06 17:00,,2014-05-28 08:00,2014-06-25 17:00,2014-05-28 08:00,2014-06-25 17:00,2014-05-28 08:00,2014-06-25 17:00,2014-06-08 08:00,2014-07-06 17:00,,PT_Normal,,,,,9KF7z4phQI6d7lq2nfSBoA,,,,N,0,0,,,2013-02-16 15:54,2013-02-16 15:56,admin,admin
503076,6359,125088,13662,0,N,N,N,CP_Drtn,TT_Task,DT_FixedDUR2,TK_NotStart,DUKHCONI1AZ5WSGL5165,Testing of potable water line,8178,72,0,200,0,84,84,200,0,0,0,,,,2014-06-14 08:00,2014-07-12 17:00,,2014-06-03 08:00,2014-07-01 17:00,2014-06-03 08:00,2014-07-01 17:00,2014-06-03 08:00,2014-07-01 17:00,2014-06-14 08:00,2014-07-12 17:00,,PT_Normal,,,,,cNAn67F0QjaojyES0O7KnQ,,,,N,0,0,,,2013-02-16 15:54,2013-02-16 15:56,admin,admin
503077,6359,125088,13662,0,N,N,N,CP_Drtn,TT_Task,DT_FixedDUR2,TK_NotStart,DUKHCONI1AZ5WSGL5170,Backfilling potable water line,8177,72,0,200,0,335,335,200,275,0,275,,,,2014-06-19 08:00,2014-07-17 17:00,,2014-06-09 08:00,2014-07-07 17:00,2014-06-09 08:00,2014-07-07 17:00,2014-06-09 08:00,2014-07-07 17:00,2014-06-19 08:00,2014-07-17 17:00,,PT_Normal,,,,,E2WfkReWRaq1opc1hRTxZQ,,,,N,0,0,,,2013-02-16 15:54,2013-02-16 15:56,admin,admin
503078,6359,125088,13662,0,N,N,N,CP_Drtn,TT_Task,DT_FixedDUR2,TK_NotStart,DUKHCONI1AZ5WSGL5175,Construction of valve chambers & Thrust Blocks,8172,304,0,200,0,132,132,200,0,0,0,,,,2014-07-29 08:00,2014-08-30 17:00,,2014-06-15 08:00,2014-07-13 17:00,2014-06-15 08:00,2014-07-13 17:00,2014-06-15 08:00,2014-07-13 17:00,2014-07-29 08:00,2014-08-30 17:00,,PT_Normal,,,,,wJQmNHZzQGKoyrk7tBAZkQ,,,,N,0,0,,,2013-02-16 15:54,2013-02-16 15:56,admin,admin
503079,6359,125088,13662,0,N,N,N,CP_Drtn,TT_Task,DT_FixedDUR2,TK_NotStart,DUKHCONI1AZ5WSGL5180,"Installation of meter ,Accessories & Connection",8178,304,56,160,0,50.4,50.4,160,0,0,0,,,,2014-08-31 08:00,2014-09-22 17:00,,2014-07-14 08:00,2014-08-09 17:00,2014-07-14 08:00,2014-08-09 17:00,2014-07-14 08:00,2014-08-09 17:00,2014-08-31 08:00,2014-09-22 17:00,,PT_Normal,,,,,pVsp7C6QTaG7seOiS6hguQ,,,,N,0,0,,,2013-02-16 15:54,2013-02-16 16:35,admin,admin
503080,6359,125091,13662,0,N,N,N,CP_Drtn,TT_Task,DT_FixedDUR2,TK_NotStart,DUKHCONI1ASBIWGL7400,Excavation,8177,144,0,144,0,324,324,144,180,0,180,,,,2014-06-16 08:00,2014-07-06 17:00,,2014-05-26 08:00,2014-06-15 17:00,2014-05-26 08:00,2014-06-15 17:00,2014-05-26 08:00,2014-06-15 17:00,2014-06-16 08:00,2014-07-06 17:00,,PT_Normal,,,,,QBD4k8XQRlWtRu+Ku6fmEA,,,,N,0,0,,,2013-02-16 15:54,2013-02-16 15:56,admin,admin
503081,6359,125091,13662,0,N,N,N,CP_Drtn,TT_Task,DT_FixedDUR2,TK_NotStart,DUKHCONI1ASBIWGL7405,Blinding & base waterproofing,8163,144,0,80,0,200,200,80,0,0,0,,,,2014-07-07 08:00,2014-07-17 17:00,,2014-06-16 08:00,2014-06-26 17:00,2014-06-16 08:00,2014-06-26 17:00,2014-06-16 08:00,2014-06-26 17:00,2014-07-07 08:00,2014-07-17 17:00,,PT_Normal,,,,,icy9EX3NRF6JcJvDi58MvA,,,,N,0,0,,,2013-02-16 15:54,2013-02-16 15:56,admin,admin
503082,6359,125091,13662,0,N,N,N,CP_Drtn,TT_Task,DT_FixedDUR2,TK_NotStart,DUKHCONI1ASBIWGL7410,Construction of Raft slab,8165,144,0,96,0,630,630,96,0,0,0,,,,2014-07-19 08:00,2014-07-31 17:00,,2014-06-28 08:00,2014-07-10 17:00,2014-06-28 08:00,2014-07-10 17:00,2014-06-28 08:00,2014-07-10 17:00,2014-07-19 08:00,2014-07-31 17:00,,PT_Normal,,,,,EGgBLasdTR2mm7boS4G5Fg,,,,N,0,0,,,2013-02-16 15:54,2013-02-16 15:56,admin,admin
503083,6359,125091,13662,0,N,N,N,CP_Drtn,TT_Task,DT_FixedDUR2,TK_NotStart,DUKHCONI1ASBIWGL7415,Construction of RCC Wall,8165,144,0,200,0,1708,1708,200,0,0,0,,,,2014-08-05 08:00,2014-09-02 17:00,,2014-07-12 08:00,2014-08-12 17:00,2014-07-12 08:00,2014-08-12 17:00,2014-07-12 08:00,2014-08-12 17:00,2014-08-05 08:00,2014-09-02 17:00,,PT_Normal,,,,,65fifWjRQ0OjcwXvaj5nQQ,,,,N,0,0,,,2013-02-16 15:54,2013-02-16 15:56,admin,admin
503084,6359,125091,13662,0,N,N,N,CP_Drtn,TT_Task,DT_FixedDUR2,TK_NotStart,DUKHCONI1ASBIWGL7420,Construction of  Roof Slab,8165,144,0,160,0,490,490,160,0,0,0,,,,2014-09-03 08:00,2014-09-25 17:00,,2014-08-13 08:00,2014-09-04 17:00,2014-08-13 08:00,2014-09-04 17:00,2014-08-13 08:00,2014-09-04 17:00,2014-09-03 08:00,2014-09-25 17:00,,PT_Normal,,,,,BeSOQ3FNTvC+zFNO6WXKRA,,,,N,0,0,,,2013-02-16 15:54,2013-02-16 15:56,admin,admin
503085,6359,125091,13662,0,N,N,N,CP_Drtn,TT_Task,DT_FixedDUR2,TK_NotStart,DUKHCONI1ASBIWGL7425,Waterproofing & Backfilling,8177,192,0,120,0,273,273,120,165,0,165,,,,2014-10-04 08:00,2014-10-22 17:00,,2014-09-06 08:00,2014-09-22 17:00,2014-09-06 08:00,2014-09-22 17:00,2014-09-06 08:00,2014-09-22 17:00,2014-10-04 08:00,2014-10-22 17:00,,PT_Normal,,,,,5RaH9lVjSgqF0AoV6gYXNA,,,,N,0,0,,,2013-02-16 15:54,2013-02-16 15:56,admin,admin
503086,6359,125091,13662,0,N,N,N,CP_Drtn,TT_Task,DT_FixedDUR2,TK_NotStart,DUKHCONI1ASBIWGL7430,Floor screed,8164,144,0,40,0,66,66,40,0,0,0,,,,2014-10-23 08:00,2014-10-28 17:00,,2014-09-30 08:00,2014-10-05 17:00,2014-09-30 08:00,2014-10-05 17:00,2014-09-30 08:00,2014-10-05 17:00,2014-10-23 08:00,2014-10-28 17:00,,PT_Normal,,,,,pTkjC0cdQy6SmpxbNLrRwA,,,,N,0,0,,,2013-02-16 15:54,2013-02-16 15:56,admin,admin
503087,6359,125091,13662,0,N,N,N,CP_Drtn,TT_Task,DT_FixedDUR2,TK_NotStart,DUKHCONI1ASBIWGL7455,Internal epoxy coating & Painting,8178,144,0,40,0,44,44,40,0,0,0,,,,2014-11-27 08:00,2014-12-02 17:00,,2014-11-06 08:00,2014-11-11 17:00,2014-11-06 08:00,2014-11-11 17:00,2014-11-06 08:00,2014-11-11 17:00,2014-11-27 08:00,2014-12-02 17:00,,PT_Normal,,,,,W63/TiR6QDqamIOtfBMCsQ,,,,N,0,0,,,2013-02-16 15:54,2013-02-16 15:56,admin,admin
503088,6359,125091,13662,0,N,N,N,CP_Drtn,TT_Task,DT_FixedDUR2,TK_NotStart,DUKHCONI1ASBIWGL7460,Installation of Steel Ladder,8178,144,0,40,0,14,14,40,0,0,0,,,,2014-12-03 08:00,2014-12-08 17:00,,2014-11-12 08:00,2014-11-17 17:00,2014-11-12 08:00,2014-11-17 17:00,2014-11-12 08:00,2014-11-17 17:00,2014-12-03 08:00,2014-12-08 17:00,,PT_Normal,,,,,RO0or04eQI2/PvsvfrB1Vg,,,,N,0,0,,,2013-02-16 15:54,2013-02-16 15:56,admin,admin
503089,6359,125091,13662,0,N,N,N,CP_Drtn,TT_Task,DT_FixedDUR2,TK_NotStart,DUKHCONI1ASBIWGL7465,Installation of G.I Handrails,8178,144,144,40,0,164,164,40,0,0,0,,,,2014-12-09 08:00,2014-12-14 17:00,,2014-11-18 08:00,2014-11-23 17:00,2014-11-18 08:00,2014-11-23 17:00,2014-11-18 08:00,2014-11-23 17:00,2014-12-09 08:00,2014-12-14 17:00,,PT_Normal,,,,,ksL7gVbnSBWI+x4usb1jRg,,,,N,0,0,,,2013-02-16 15:54,2013-02-16 15:56,admin,admin
503090,6359,125091,13662,0,N,N,N,CP_Drtn,TT_Task,DT_FixedDUR2,TK_NotStart,DUKHCONI1ASBIWGL7440,"Plumbing , Drainage & Firefighting  works",8178,144,0,200,0,50.4,50.4,200,0,0,0,,,,2014-10-29 08:00,2014-11-26 17:00,,2014-10-06 08:00,2014-11-05 17:00,2014-10-06 08:00,2014-11-05 17:00,2014-10-06 08:00,2014-11-05 17:00,2014-10-29 08:00,2014-11-26 17:00,,PT_Normal,,,,,6XCP+Fb8RMWrXdNfowim3g,,,,N,0,0,,,2013-02-16 15:54,2013-02-16 15:56,admin,admin
503091,6359,125091,13662,0,N,N,N,CP_Drtn,TT_Task,DT_FixedDUR2,TK_NotStart,DUKHCONI1ASBIWGL7445,AC Works,8178,144,0,200,0,159.2,159.2,200,0,0,0,,,,2014-10-29 08:00,2014-11-26 17:00,,2014-10-06 08:00,2014-11-05 17:00,2014-10-06 08:00,2014-11-05 17:00,2014-10-06 08:00,2014-11-05 17:00,2014-10-29 08:00,2014-11-26 17:00,,PT_Normal,,,,,3rpCs9YPQBe8ZgqBsxHM+A,,,,N,0,0,,,2013-02-16 15:54,2013-02-23 09:03,admin,admin
503092,6359,125091,13662,0,N,N,N,CP_Drtn,TT_Task,DT_FixedDUR2,TK_NotStart,DUKHCONI1ASBIWGL7450,Electrical Works,8178,144,0,200,0,325.2,325.2,200,0,0,0,,,,2014-10-29 08:00,2014-11-26 17:00,,2014-10-06 08:00,2014-11-05 17:00,2014-10-06 08:00,2014-11-05 17:00,2014-10-06 08:00,2014-11-05 17:00,2014-10-29 08:00,2014-11-26 17:00,,PT_Normal,,,,,JlgGV7YLRdCvARg+ABtryg,,,,N,0,0,,,2013-02-16 15:54,2013-02-23 09:03,admin,admin
503093,6359,125091,13662,0,N,N,N,CP_Drtn,TT_Task,DT_FixedDUR2,TK_NotStart,DUKHCONI1ASBIWGL7950,Laying of Interlock,8174,312,0,80,0,58,58,80,0,0,0,,,,2014-11-10 08:00,2014-11-20 17:00,,2014-09-23 08:00,2014-10-04 17:00,2014-09-23 08:00,2014-10-04 17:00,2014-09-23 08:00,2014-10-04 17:00,2014-11-10 08:00,2014-11-20 17:00,,PT_Normal,,,,,xy9x1cRsQxS+cOh8Ba3vnA,,,,N,0,0,,,2013-02-16 15:54,2013-02-16 15:56,admin,admin
503094,6359,125091,13662,0,N,N,N,CP_Drtn,TT_Task,DT_FixedDUR2,TK_NotStart,DUKHCONI1ASBIWGL7435,Installation of Boundary Fences,8165,312,168,120,0,42,42,120,0,0,0,,,,2014-11-22 08:00,2014-12-08 17:00,,2014-10-05 08:00,2014-10-23 17:00,2014-10-05 08:00,2014-10-23 17:00,2014-10-05 08:00,2014-10-23 17:00,2014-11-22 08:00,2014-12-08 17:00,,PT_Normal,,,,,WHWa1ObER+yEjHWLPZfs4A,,,,N,0,0,,,2013-02-16 15:54,2013-02-16 15:56,admin,admin
503095,6359,125092,13662,0,N,N,N,CP_Drtn,TT_Task,DT_FixedDUR2,TK_NotStart,DUKHCONI1ASBGHGL7800,Excavation,8162,240,0,80,0,32,32,80,20,0,20,,,,2014-08-05 08:00,2014-08-16 17:00,,2014-06-28 08:00,2014-07-08 17:00,2014-06-28 08:00,2014-07-08 17:00,2014-06-28 08:00,2014-07-08 17:00,2014-08-05 08:00,2014-08-16 17:00,,PT_Normal,,,,,zDGsBQxLSp23KQzeIpAHDg,,,,N,0,0,,,2013-02-16 15:54,2013-02-16 15:56,admin,admin
503096,6359,125092,13662,0,N,N,N,CP_Drtn,TT_Task,DT_FixedDUR2,TK_NotStart,DUKHCONI1ASBGHGL7805,Construction of foundation & Grade slab,8165,240,0,160,0,280,280,160,0,0,0,,,,2014-08-17 08:00,2014-09-08 17:00,,2014-07-09 08:00,2014-07-31 17:00,2014-07-09 08:00,2014-07-31 17:00,2014-07-09 08:00,2014-07-31 17:00,2014-08-17 08:00,2014-09-08 17:00,,PT_Normal,,,,,fCrrGYBgQguk0TXmB92Yrw,,,,N,0,0,,,2013-02-16 15:54,2013-02-16 15:56,admin,admin
503097,6359,125092,13662,0,N,N,N,CP_Drtn,TT_Task,DT_FixedDUR2,TK_NotStart,DUKHCONI1ASBGHGL7810,"Construction Column,Beams & Roof Slab",8165,240,0,160,0,280,280,160,0,0,0,,,,2014-09-09 08:00,2014-10-01 17:00,,2014-08-05 08:00,2014-08-27 17:00,2014-08-05 08:00,2014-08-27 17:00,2014-08-05 08:00,2014-08-27 17:00,2014-09-09 08:00,2014-10-01 17:00,,PT_Normal,,,,,5A25ZTAORr+05DLmBbhqLQ,,,,N,0,0,,,2013-02-16 15:54,2013-02-16 15:56,admin,admin
503098,6359,125092,13662,0,N,N,N,CP_Drtn,TT_Task,DT_FixedDUR2,TK_NotStart,DUKHCONI1ASBGHGL7815,Finishing Works,8164,240,0,200,0,1000,1000,200,0,0,0,,,,2014-10-29 08:00,2014-11-26 17:00,,2014-09-22 08:00,2014-10-22 17:00,2014-09-22 08:00,2014-10-22 17:00,2014-09-22 08:00,2014-10-22 17:00,2014-10-29 08:00,2014-11-26 17:00,,PT_Normal,,,,,OjCl6xSIRTuulxYLY7Ftng,,,,N,0,0,,,2013-02-16 15:54,2013-02-16 15:56,admin,admin
503099,6359,125092,13662,0,N,N,N,CP_Drtn,TT_Task,DT_FixedDUR2,TK_NotStart,DUKHCONI1ASBGHGL7820,"Plumbing , Drainage & Firefighting  works",8181,240,0,200,0,282.8,282.8,200,0,0,0,,,,2014-11-10 08:00,2014-12-08 17:00,,2014-10-04 08:00,2014-11-03 17:00,2014-10-04 08:00,2014-11-03 17:00,2014-10-04 08:00,2014-11-03 17:00,2014-11-10 08:00,2014-12-08 17:00,,PT_Normal,,,,,KULbdTVVQL+jC3ZJ1AiIvg,,,,N,0,0,,,2013-02-16 15:54,2013-02-16 15:56,admin,admin
503100,6359,125092,13662,0,N,N,N,CP_Drtn,TT_Task,DT_FixedDUR2,TK_NotStart,DUKHCONI1ASBGHGL7825,AC Works,,240,0,200,0,0,0,200,0,0,0,,,,2014-11-10 08:00,2014-12-08 17:00,,2014-10-04 08:00,2014-11-03 17:00,2014-10-04 08:00,2014-11-03 17:00,2014-10-04 08:00,2014-11-03 17:00,2014-11-10 08:00,2014-12-08 17:00,,PT_Normal,,,,,D68GdzzrSbGZF/ENky8n9g,,,,N,0,0,,,2013-02-16 15:54,2013-02-16 15:56,admin,admin
503101,6359,125092,13662,0,N,N,N,CP_Drtn,TT_Task,DT_FixedDUR2,TK_NotStart,DUKHCONI1ASBGHGL7830,Electrical Works-Telecom Room,8180,240,0,200,0,416,416,200,0,0,0,,,,2014-11-10 08:00,2014-12-08 17:00,,2014-10-04 08:00,2014-11-03 17:00,2014-10-04 08:00,2014-11-03 17:00,2014-10-04 08:00,2014-11-03 17:00,2014-11-10 08:00,2014-12-08 17:00,,PT_Normal,,,,,CYMRHmAySj+jMUU5xpL1tA,,,,N,0,0,,,2013-02-16 15:54,2013-02-16 15:56,admin,admin
503102,6359,125092,13662,0,N,N,N,CP_Drtn,TT_Task,DT_FixedDUR2,TK_NotStart,DUKHCONI1ASBGHGL7835,Final Paintings,8178,240,240,40,0,275,275,40,0,0,0,,,,2014-12-09 08:00,2014-12-14 17:00,,2014-11-04 08:00,2014-11-09 17:00,2014-11-04 08:00,2014-11-09 17:00,2014-11-04 08:00,2014-11-09 17:00,2014-12-09 08:00,2014-12-14 17:00,,PT_Normal,,,,,EIy96vkDQ+yIlHcMXRQsaQ,,,,N,0,0,,,2013-02-16 15:54,2013-02-16 15:56,admin,admin
503103,6359,125093,13662,0,N,N,N,CP_Drtn,TT_Task,DT_FixedDUR2,TK_NotStart,DUKHCONI1ASBTRGL7600,Excavation,8177,240,0,80,0,32,32,80,20,0,20,,,,2014-07-21 08:00,2014-07-31 17:00,,2014-06-16 08:00,2014-06-26 17:00,2014-06-16 08:00,2014-06-26 17:00,2014-06-16 08:00,2014-06-26 17:00,2014-07-21 08:00,2014-07-31 17:00,,PT_Normal,,,,,3OzdKHLDS4ewMfYka9dV4A,,,,N,0,0,,,2013-02-16 15:54,2013-02-16 15:56,admin,admin
503104,6359,125093,13662,0,N,N,N,CP_Drtn,TT_Task,DT_FixedDUR2,TK_NotStart,DUKHCONI1ASBTRGL7605,Construction of foundation & Grade slab,8165,320,0,160,0,280,280,160,0,0,0,,,,2014-08-17 08:00,2014-09-08 17:00,,2014-06-28 08:00,2014-07-20 17:00,2014-06-28 08:00,2014-07-20 17:00,2014-06-28 08:00,2014-07-20 17:00,2014-08-17 08:00,2014-09-08 17:00,,PT_Normal,,,,,e5xfVflFRpG4rVpVPlvZsg,,,,N,0,0,,,2013-02-16 15:54,2013-02-16 15:56,admin,admin
503105,6359,125093,13662,0,N,N,N,CP_Drtn,TT_Task,DT_FixedDUR2,TK_NotStart,DUKHCONI1ASBTRGL7610,"Construction Column,Beams & Roof Slab",8165,320,0,160,0,280,280,160,0,0,0,,,,2014-09-09 08:00,2014-10-01 17:00,,2014-07-21 08:00,2014-08-16 17:00,2014-07-21 08:00,2014-08-16 17:00,2014-07-21 08:00,2014-08-16 17:00,2014-09-09 08:00,2014-10-01 17:00,,PT_Normal,,,,,kDxi/wWYQkyXSBiYIVTB1w,,,,N,0,0,,,2013-02-16 15:54,2013-02-16 15:56,admin,admin
503106,6359,125093,13662,0,N,N,N,CP_Drtn,TT_Task,DT_FixedDUR2,TK_NotStart,DUKHCONI1ASBTRGL7615,Finishing Works,8164,320,32,200,0,1000,1000,200,0,0,0,,,,2014-10-29 08:00,2014-11-26 17:00,,2014-09-10 08:00,2014-10-08 17:00,2014-09-10 08:00,2014-10-08 17:00,2014-09-10 08:00,2014-10-08 17:00,2014-10-29 08:00,2014-11-26 17:00,,PT_Normal,,,,,2stscppyTs2Geaydz8QUNg,,,,N,0,0,,,2013-02-16 15:54,2013-02-16 16:35,admin,admin
503107,6359,125093,13662,0,N,N,N,CP_Drtn,TT_Task,DT_FixedDUR2,TK_NotStart,DUKHCONI1ASBTRGL7620,"Plumbing , Drainage & Firefighting  works",8178,288,0,200,0,282.8,282.8,200,0,0,0,,,,2014-11-10 08:00,2014-12-08 17:00,,2014-09-27 08:00,2014-10-27 17:00,2014-09-27 08:00,2014-10-27 17:00,2014-09-27 08:00,2014-10-27 17:00,2014-11-10 08:00,2014-12-08 17:00,,PT_Normal,,,,,Fx8AW660Sdu81+phA4grKw,,,,N,0,0,,,2013-02-16 15:54,2013-02-16 16:35,admin,admin
503108,6359,125093,13662,0,N,N,N,CP_Drtn,TT_Task,DT_FixedDUR2,TK_NotStart,DUKHCONI1ASBTRGL7625,AC Works,8178,288,0,200,0,284,284,200,0,0,0,,,,2014-11-10 08:00,2014-12-08 17:00,,2014-09-27 08:00,2014-10-27 17:00,2014-09-27 08:00,2014-10-27 17:00,2014-09-27 08:00,2014-10-27 17:00,2014-11-10 08:00,2014-12-08 17:00,,PT_Normal,,,,,ylu+8DwWT+uci4Wvz1f83g,,,,N,0,0,,,2013-02-16 15:54,2013-02-16 16:35,admin,admin
503109,6359,125093,13662,0,N,N,N,CP_Drtn,TT_Task,DT_FixedDUR2,TK_NotStart,DUKHCONI1ASBTRGL7630,Electrical Works-Telecom Room,8178,288,0,200,0,416,416,200,0,0,0,,,,2014-11-10 08:00,2014-12-08 17:00,,2014-09-27 08:00,2014-10-27 17:00,2014-09-27 08:00,2014-10-27 17:00,2014-09-27 08:00,2014-10-27 17:00,2014-11-10 08:00,2014-12-08 17:00,,PT_Normal,,,,,yTXn1LAuSC6SDUdxbq6wdA,,,,N,0,0,,,2013-02-16 15:54,2013-02-16 16:35,admin,admin
503110,6359,125093,13662,0,N,N,N,CP_Drtn,TT_Task,DT_FixedDUR2,TK_NotStart,DUKHCONI1ASBTRGL7635,Final Paintings,8178,288,288,40,0,275,275,40,0,0,0,,,,2014-12-09 08:00,2014-12-14 17:00,,2014-10-28 08:00,2014-11-02 17:00,2014-10-28 08:00,2014-11-02 17:00,2014-10-28 08:00,2014-11-02 17:00,2014-12-09 08:00,2014-12-14 17:00,,PT_Normal,,,,,vYneHOZuQ+aCi4LYTmbiFw,,,,N,0,0,,,2013-02-16 15:54,2013-02-16 16:35,admin,admin
503111,6359,125094,13662,0,N,N,N,CP_Drtn,TT_Task,DT_FixedDUR2,TK_NotStart,DUKHCONI1ASBSSGL7920,Hard landscaping around substation,8178,280,0,240,0,720,720,240,0,0,0,,,,2014-11-05 08:00,2014-12-09 17:00,,2014-09-23 08:00,2014-10-29 17:00,2014-09-23 08:00,2014-10-29 17:00,2014-09-23 08:00,2014-10-29 17:00,2014-11-05 08:00,2014-12-09 17:00,,PT_Normal,,,,,2DVhAXyhRSKmSrSGxVnUOQ,,,,N,0,0,,,2013-02-16 15:54,2013-02-16 16:35,admin,admin
503112,6359,125094,13662,0,N,N,N,CP_Drtn,TT_Task,DT_FixedDUR2,TK_NotStart,DUKHCONI1ASBSSGL7925,Soft landscaping around substation,8305,280,0,240,0,480,480,240,0,0,0,,,,2014-11-19 08:00,2014-12-24 17:00,,2014-10-07 08:00,2014-11-12 17:00,2014-10-07 08:00,2014-11-12 17:00,2014-10-07 08:00,2014-11-12 17:00,2014-11-19 08:00,2014-12-24 17:00,,PT_Normal,,,,,1Vc5tj8kSAixTDqYyl6DRg,,,,N,0,0,,,2013-02-16 15:54,2013-02-16 16:35,admin,admin
503113,6359,125094,13662,0,N,N,N,CP_Drtn,TT_Task,DT_FixedDUR2,TK_NotStart,DUKHCONI1ASBSSGL7930,Construction of Drainage Channel,8177,280,0,240,0,720,720,240,0,0,0,,,,2014-10-22 08:00,2014-11-25 17:00,,2014-09-09 08:00,2014-10-15 17:00,2014-09-09 08:00,2014-10-15 17:00,2014-09-09 08:00,2014-10-15 17:00,2014-10-22 08:00,2014-11-25 17:00,,PT_Normal,,,,,6kx06Z56QBOfd+A9rtsZ/g,,,,N,0,0,,,2013-02-16 15:54,2013-02-16 16:35,admin,admin
503114,6359,125094,13662,0,N,N,N,CP_Drtn,TT_Task,DT_FixedDUR2,TK_NotStart,DUKHCONI1ASBSSGL7935,Fencing Works,8177,280,96,240,0,720,720,240,0,0,0,,,,2014-12-03 08:00,2015-01-07 17:00,,2014-10-23 08:00,2014-11-26 17:00,2014-10-23 08:00,2014-11-26 17:00,2014-10-23 08:00,2014-11-26 17:00,2014-12-03 08:00,2015-01-07 17:00,,PT_Normal,,,,,6CBd8ciJRAOK+8Pm5g4osQ,,,,N,0,0,,,2013-02-16 15:54,2013-02-16 16:35,admin,admin
503115,6359,125095,13662,0,N,N,N,CP_Drtn,TT_Task,DT_FixedDUR2,TK_NotStart,DUKHCONI1ASBGZGL7900,Construction of Concrete structure,8165,248,0,160,0,124,124,160,0,0,0,,,,2014-09-22 08:00,2014-10-16 17:00,,2014-08-17 08:00,2014-09-08 17:00,2014-08-17 08:00,2014-09-08 17:00,2014-08-17 08:00,2014-09-08 17:00,2014-09-22 08:00,2014-10-16 17:00,,PT_Normal,,,,,zs2FSQJhRqqfxT+02exsGQ,,,,N,0,0,,,2013-02-16 15:54,2013-02-16 16:35,admin,admin
503116,6359,125095,13662,0,N,N,N,CP_Drtn,TT_Task,DT_FixedDUR2,TK_NotStart,DUKHCONI1ASBGZGL7905,Installation of Wooden Works,8178,248,0,200,0,300,300,200,0,0,0,,,,2014-10-04 08:00,2014-11-03 17:00,,2014-08-28 08:00,2014-09-25 17:00,2014-08-28 08:00,2014-09-25 17:00,2014-08-28 08:00,2014-09-25 17:00,2014-10-04 08:00,2014-11-03 17:00,,PT_Normal,,,,,XeFpghYsSyayY/ngvzQ2Nw,,,,N,0,0,,,2013-02-16 15:54,2013-02-16 16:35,admin,admin
503117,6359,125095,13662,0,N,N,N,CP_Drtn,TT_Task,DT_FixedDUR2,TK_NotStart,DUKHCONI1ASBGZGL7910,Electrical Works-Gazebo,8178,248,64,120,0,125.6,125.6,120,0,0,0,,,,2014-11-04 08:00,2014-11-20 17:00,,2014-09-27 08:00,2014-10-15 17:00,2014-09-27 08:00,2014-10-15 17:00,2014-09-27 08:00,2014-10-15 17:00,2014-11-04 08:00,2014-11-20 17:00,,PT_Normal,,,,,xSfcKYtbQ7WczSCjo+PBBw,,,,N,0,0,,,2013-02-16 15:54,2013-02-16 16:35,admin,admin
503118,6359,125095,13662,0,N,N,N,CP_Drtn,TT_Task,DT_FixedDUR2,TK_NotStart,DUKHCONI1ASBGZGL7915,Park Benches  Installation,8178,328,80,120,0,120,120,120,0,0,0,,,,2014-10-18 08:00,2014-11-03 17:00,,2014-08-28 08:00,2014-09-14 17:00,2014-08-28 08:00,2014-09-14 17:00,2014-08-28 08:00,2014-09-14 17:00,2014-10-18 08:00,2014-11-03 17:00,,PT_Normal,,,,,4cgzSm2+R/G7/WfHZls45g,,,,N,0,0,,,2013-02-16 15:54,2013-02-16 16:35,admin,admin
503119,6359,125098,13662,0,N,N,N,CP_Drtn,TT_Task,DT_FixedDUR2,TK_NotStart,DUKHCONI1AZ3DRGL5115,Excavation for Drainage line,8177,72,0,200,0,431,431,200,251,0,251,,,,2014-01-07 08:00,2014-02-04 17:00,,2013-12-28 08:00,2014-01-25 17:00,2013-12-28 08:00,2014-01-25 17:00,2013-12-28 08:00,2014-01-25 17:00,2014-01-07 08:00,2014-02-04 17:00,,PT_Normal,,,,,nK7JcpV6T2+xkB/uwTdKFA,,,,N,0,0,,,2013-02-16 15:54,2013-02-16 15:56,admin,admin
503120,6359,125098,13662,0,N,N,N,CP_Drtn,TT_Task,DT_FixedDUR2,TK_NotStart,DUKHCONI1AZ3DRGL5120,Laying of Drainage line,8178,72,0,200,0,276,276,200,0,0,0,,,,2014-01-14 08:00,2014-02-12 17:00,,2014-01-04 08:00,2014-02-01 17:00,2014-01-04 08:00,2014-02-01 17:00,2014-01-04 08:00,2014-02-01 17:00,2014-01-14 08:00,2014-02-12 17:00,,PT_Normal,,,,,uRFf/iBLR5Ot7w4s76x+7g,,,,N,0,0,,,2013-02-16 15:54,2013-02-16 15:56,admin,admin
503121,6359,125098,13662,0,N,N,N,CP_Drtn,TT_Task,DT_FixedDUR2,TK_NotStart,DUKHCONI1AZ3DRGL5125,Testing of Drainage line,8178,72,0,200,0,134.4,134.4,200,0,0,0,,,,2014-01-22 08:00,2014-02-20 17:00,,2014-01-12 08:00,2014-02-09 17:00,2014-01-12 08:00,2014-02-09 17:00,2014-01-12 08:00,2014-02-09 17:00,2014-01-22 08:00,2014-02-20 17:00,,PT_Normal,,,,,6cvsrlZGT3Cjw2L4JweGIw,,,,N,0,0,,,2013-02-16 15:54,2013-02-16 15:56,admin,admin
503122,6359,125098,13662,0,N,N,N,CP_Drtn,TT_Task,DT_FixedDUR2,TK_NotStart,DUKHCONI1AZ3DRGL5130,Backfilling Drainage line,8177,72,0,120,0,402,402,120,330,0,330,,,,2014-02-09 08:00,2014-02-26 17:00,,2014-01-29 08:00,2014-02-16 17:00,2014-01-29 08:00,2014-02-16 17:00,2014-01-29 08:00,2014-02-16 17:00,2014-02-09 08:00,2014-02-26 17:00,,PT_Normal,,,,,9BTImtqYQQ2hLko8BZLSuw,,,,N,0,0,,,2013-02-16 15:54,2013-02-16 15:56,admin,admin
503123,6359,125099,13662,0,N,N,N,CP_Drtn,TT_Task,DT_FixedDUR2,TK_NotStart,DUKHCONI1AZ3BWGL5315,Construction of Boundary Wall (Ht-3m),8165,560,0,200,0,224,224,200,0,0,0,,,,2014-07-17 08:00,2014-08-18 17:00,,2014-04-27 08:00,2014-05-25 17:00,2014-04-27 08:00,2014-05-25 17:00,2014-04-27 08:00,2014-05-25 17:00,2014-07-17 08:00,2014-08-18 17:00,,PT_Normal,,,,,XT6/6CWLQU+PZ4zb/CKp4Q,,,,N,0,0,,,2013-02-16 15:54,2013-02-16 16:35,admin,admin
503124,6359,125099,13662,0,N,N,N,CP_Drtn,TT_Task,DT_FixedDUR2,TK_NotStart,DUKHCONI1AZ3BWGL5320,"Install.Steel Gate,Entance Barrier (3m Wall)",8178,560,0,200,0,28,28,200,0,0,0,,,,2014-08-06 08:00,2014-09-03 17:00,,2014-05-13 08:00,2014-06-10 17:00,2014-05-13 08:00,2014-06-10 17:00,2014-05-13 08:00,2014-06-10 17:00,2014-08-06 08:00,2014-09-03 17:00,,PT_Normal,,,,,13j6RWbBQ1yeOAQOT4TKBg,,,,N,0,0,,,2013-02-16 15:54,2013-02-16 16:35,admin,admin
503125,6359,125099,13662,0,N,N,N,CP_Drtn,TT_Task,DT_FixedDUR2,TK_NotStart,DUKHCONI1AZ3BWGL5325,Const. of Villa Front Boundary Wall (Ht-2m),8165,560,0,200,0,168,168,200,0,0,0,,,,2014-09-04 08:00,2014-10-02 17:00,,2014-06-11 08:00,2014-07-09 17:00,2014-06-11 08:00,2014-07-09 17:00,2014-06-11 08:00,2014-07-09 17:00,2014-09-04 08:00,2014-10-02 17:00,,PT_Normal,,,,,4urkWwhORTmv8/KkVt7yRg,,,,N,0,0,,,2013-02-16 15:54,2013-02-16 16:35,admin,admin
503126,6359,125099,13662,0,N,N,N,CP_Drtn,TT_Task,DT_FixedDUR2,TK_NotStart,DUKHCONI1AZ3BWGL5330,Const. of Blockwork fence Wall (Ht-1.85m),8165,648,144,200,0,154,154,200,0,0,0,,,,2014-09-29 08:00,2014-10-29 17:00,,2014-06-23 08:00,2014-07-21 17:00,2014-06-23 08:00,2014-07-21 17:00,2014-06-23 08:00,2014-07-21 17:00,2014-09-29 08:00,2014-10-29 17:00,,PT_Normal,,,,,dMpb+KDkRvSMY8ZeUQq2Ig,,,,N,0,0,,,2013-02-16 15:54,2013-02-16 16:35,admin,admin
503127,6359,125100,13662,0,N,N,N,CP_Drtn,TT_Task,DT_FixedDUR2,TK_NotStart,DUKHCONI1AZ3SAGL5135,Construction of manholes Drainage,8177,592,144,200,0,6,6,200,0,0,0,,,,2014-04-27 08:00,2014-05-25 17:00,,2014-01-29 08:00,2014-02-27 17:00,2014-01-29 08:00,2014-02-27 17:00,2014-01-29 08:00,2014-02-27 17:00,2014-04-27 08:00,2014-05-25 17:00,,PT_Normal,,,,,5pFFp1o6RmO4x2vJYwYuDg,,,,N,0,0,,,2013-02-16 15:54,2013-02-16 15:56,admin,admin
503128,6359,125100,13662,0,N,N,N,CP_Drtn,TT_Task,DT_FixedDUR2,TK_NotStart,DUKHCONI1AZ3SAGL5140,Construction of soakaways,8172,104,0,200,0,154,154,200,0,0,0,,,,2014-02-12 08:00,2014-03-12 17:00,,2014-01-27 08:00,2014-02-25 17:00,2014-01-27 08:00,2014-02-25 17:00,2014-01-27 08:00,2014-02-25 17:00,2014-02-12 08:00,2014-03-12 17:00,,PT_Normal,,,,,gps9ivlcSM6nAgtBJOGfLA,,,,N,0,0,,,2013-02-16 15:54,2013-02-16 15:56,admin,admin
503129,6359,125100,13662,0,N,N,N,CP_Drtn,TT_Task,DT_FixedDUR2,TK_NotStart,DUKHCONI1AZ3SAGL5145,Construction of Road gullies,8172,104,0,200,0,176,176,200,0,0,0,,,,2014-03-13 08:00,2014-04-10 17:00,,2014-02-26 08:00,2014-03-26 17:00,2014-02-26 08:00,2014-03-26 17:00,2014-02-26 08:00,2014-03-26 17:00,2014-03-13 08:00,2014-04-10 17:00,,PT_Normal,,,,,D7BRcx+jT3SrPGQ4ilQ1Uw,,,,N,0,0,,,2013-02-16 15:54,2013-02-16 15:56,admin,admin
503130,6359,125100,13662,0,N,N,N,CP_Drtn,TT_Task,DT_FixedDUR2,TK_NotStart,DUKHCONI1AZ3SAGL5150,Connection with existing sewer manhole,8177,408,288,160,0,6,6,160,0,0,0,,,,2014-05-26 08:00,2014-06-17 17:00,,2014-03-27 08:00,2014-04-19 17:00,2014-03-27 08:00,2014-04-19 17:00,2014-03-27 08:00,2014-04-19 17:00,2014-05-26 08:00,2014-06-17 17:00,,PT_Normal,,,,,XUfVWwwWQGCjCNBwXN68uw,,,,N,0,0,,,2013-02-16 15:54,2013-02-16 16:35,admin,admin
503131,6359,125101,13662,0,N,N,N,CP_Drtn,TT_Task,DT_FixedDUR2,TK_NotStart,DUKHCONI1AZ3FFGL5185,Excavation for firefighting line,8177,88,0,200,0,283,283,200,151,0,151,,,,2014-03-19 08:00,2014-04-16 17:00,,2014-03-06 08:00,2014-04-03 17:00,2014-03-06 08:00,2014-04-03 17:00,2014-03-06 08:00,2014-04-03 17:00,2014-03-19 08:00,2014-04-16 17:00,,PT_Normal,,,,,uTPyv7TjR+GzdUT029XXtg,,,,N,0,0,,,2013-02-16 15:54,2013-02-16 16:35,admin,admin
503132,6359,125101,13662,0,N,N,N,CP_Drtn,TT_Task,DT_FixedDUR2,TK_NotStart,DUKHCONI1AZ3FFGL5190,Laying of firefighting line,8178,88,0,200,0,303.6,303.6,200,0,0,0,,,,2014-03-27 08:00,2014-04-24 17:00,,2014-03-15 08:00,2014-04-12 17:00,2014-03-15 08:00,2014-04-12 17:00,2014-03-15 08:00,2014-04-12 17:00,2014-03-27 08:00,2014-04-24 17:00,,PT_Normal,,,,,tSkn+nbzR12z6RzSuiVthA,,,,N,0,0,,,2013-02-16 15:54,2013-02-16 16:35,admin,admin
503133,6359,125101,13662,0,N,N,N,CP_Drtn,TT_Task,DT_FixedDUR2,TK_NotStart,DUKHCONI1AZ3FFGL5195,Testing of firefighting line,8178,88,0,200,0,84,84,200,0,0,0,,,,2014-04-02 08:00,2014-04-30 17:00,,2014-03-20 08:00,2014-04-17 17:00,2014-03-20 08:00,2014-04-17 17:00,2014-03-20 08:00,2014-04-17 17:00,2014-04-02 08:00,2014-04-30 17:00,,PT_Normal,,,,,Wtl7GGRURjmYQUf0EyU/gA,,,,N,0,0,,,2013-02-16 15:54,2013-02-16 16:35,admin,admin
503134,6359,125101,13662,0,N,N,N,CP_Drtn,TT_Task,DT_FixedDUR2,TK_NotStart,DUKHCONI1AZ3FFGL5200,Backfilling firefighting line,8177,88,0,200,0,329,329,200,275,0,275,,,,2014-04-08 08:00,2014-05-06 17:00,,2014-03-26 08:00,2014-04-23 17:00,2014-03-26 08:00,2014-04-23 17:00,2014-03-26 08:00,2014-04-23 17:00,2014-04-08 08:00,2014-05-06 17:00,,PT_Normal,,,,,FK5vHzXsSpGHxj65qfm+GA,,,,N,0,0,,,2013-02-16 15:54,2013-02-16 16:35,admin,admin
503135,6359,125101,13662,0,N,N,N,CP_Drtn,TT_Task,DT_FixedDUR2,TK_NotStart,DUKHCONI1AZ3FFGL5205,Construction of valve chambers & Thrust Blocks,8165,296,0,200,0,202,202,200,0,0,0,,,,2014-05-14 08:00,2014-06-11 17:00,,2014-04-01 08:00,2014-04-29 17:00,2014-04-01 08:00,2014-04-29 17:00,2014-04-01 08:00,2014-04-29 17:00,2014-05-14 08:00,2014-06-11 17:00,,PT_Normal,,,,,03yRKp1RSH+8oB1pkI1qvQ,,,,N,0,0,,,2013-02-16 15:54,2013-02-16 16:35,admin,admin
503136,6359,125101,13662,0,N,N,N,CP_Drtn,TT_Task,DT_FixedDUR2,TK_NotStart,DUKHCONI1AZ3FFGL5210,Connection with existing Firewater System,8178,296,144,200,0,134.4,134.4,200,0,0,0,,,,2014-05-20 08:00,2014-06-17 17:00,,2014-04-07 08:00,2014-05-05 17:00,2014-04-07 08:00,2014-05-05 17:00,2014-04-07 08:00,2014-05-05 17:00,2014-05-20 08:00,2014-06-17 17:00,,PT_Normal,,,,,+V9Bej99S7u82Wk+W3f+tA,,,,N,0,0,,,2013-02-16 15:54,2013-02-16 16:35,admin,admin
503137,6359,125102,13662,0,N,N,N,CP_Drtn,TT_Task,DT_FixedDUR2,TK_NotStart,DUKHCONI1AZ3ELGL5215,Excavation Cable  Trenches  & Duct Banks,8177,120,0,200,0,1374,1374,200,600,0,600,,,,2014-04-21 08:00,2014-05-19 17:00,,2014-04-03 08:00,2014-05-01 17:00,2014-04-03 08:00,2014-05-01 17:00,2014-04-03 08:00,2014-05-01 17:00,2014-04-21 08:00,2014-05-19 17:00,,PT_Normal,,,,,45pd52IjTX6YB03PrbyxKw,,,,N,0,0,,,2013-02-16 15:54,2013-02-16 16:35,admin,admin
503138,6359,125102,13662,0,N,N,N,CP_Drtn,TT_Task,DT_FixedDUR2,TK_NotStart,DUKHCONI1AZ3ELGL5220,Laying of electrical cables,8178,144,0,200,0,1834.8,1834.8,200,0,0,0,,,,2014-04-30 08:00,2014-05-28 17:00,,2014-04-09 08:00,2014-05-07 17:00,2014-04-09 08:00,2014-05-07 17:00,2014-04-09 08:00,2014-05-07 17:00,2014-04-30 08:00,2014-05-28 17:00,,PT_Normal,,,,,u8+Gch+cTp2Hvog3/53Qkg,,,,N,0,0,,,2013-02-16 15:54,2013-02-16 16:35,admin,admin
503139,6359,125102,13662,0,N,N,N,CP_Drtn,TT_Task,DT_FixedDUR2,TK_NotStart,DUKHCONI1AZ3ELGL5225,Backfilling Electrical trench,8177,144,0,200,0,862,862,200,550,0,550,,,,2014-05-08 08:00,2014-06-05 17:00,,2014-04-17 08:00,2014-05-15 17:00,2014-04-17 08:00,2014-05-15 17:00,2014-04-17 08:00,2014-05-15 17:00,2014-05-08 08:00,2014-06-05 17:00,,PT_Normal,,,,,xLBr4u3SSqGqGHOzGXCodQ,,,,N,0,0,,,2013-02-16 15:54,2013-02-16 16:35,admin,admin
503140,6359,125102,13662,0,N,N,N,CP_Drtn,TT_Task,DT_FixedDUR2,TK_NotStart,DUKHCONI1AZ3ELGL5230,Construction of Submain Board & Feeder Pillar,8165,616,0,200,0,224,224,200,0,0,0,,,,2014-07-28 08:00,2014-08-28 17:00,,2014-04-29 08:00,2014-05-27 17:00,2014-04-29 08:00,2014-05-27 17:00,2014-04-29 08:00,2014-05-27 17:00,2014-07-28 08:00,2014-08-28 17:00,,PT_Normal,,,,,GK6ZesZ/QKCdBU19jY2Hgg,,,,N,0,0,,,2013-02-16 15:54,2013-02-16 16:35,admin,admin
503141,6359,125103,13662,0,N,N,N,CP_Drtn,TT_Task,DT_FixedDUR2,TK_NotStart,DUKHCONI1AZ3STGL5235,Excavation for Street lighting,8177,120,0,200,0,69,69,200,51,0,51,,,,2014-04-21 08:00,2014-05-19 17:00,,2014-04-03 08:00,2014-05-01 17:00,2014-04-03 08:00,2014-05-01 17:00,2014-04-03 08:00,2014-05-01 17:00,2014-04-21 08:00,2014-05-19 17:00,,PT_Normal,,,,,+zHM405zTyyE34uoQdYZEg,,,,N,0,0,,,2013-02-16 15:54,2013-02-16 16:35,admin,admin
503142,6359,125103,13662,0,N,N,N,CP_Drtn,TT_Task,DT_FixedDUR2,TK_NotStart,DUKHCONI1AZ3STGL5240,Construction of Duct Banks,8178,120,0,200,0,1192.8,1192.8,200,0,0,0,,,,2014-04-27 08:00,2014-05-25 17:00,,2014-04-09 08:00,2014-05-07 17:00,2014-04-09 08:00,2014-05-07 17:00,2014-04-09 08:00,2014-05-07 17:00,2014-04-27 08:00,2014-05-25 17:00,,PT_Normal,,,,,CU6Fmtz/T3a4oKMtfFYK2A,,,,N,0,0,,,2013-02-16 15:54,2013-02-23 09:03,admin,admin
503143,6359,125103,13662,0,N,N,N,CP_Drtn,TT_Task,DT_FixedDUR2,TK_NotStart,DUKHCONI1AZ3STGL5245,Construction of Foundation,8172,120,0,200,0,638,638,200,0,0,0,,,,2014-04-27 08:00,2014-05-25 17:00,,2014-04-09 08:00,2014-05-07 17:00,2014-04-09 08:00,2014-05-07 17:00,2014-04-09 08:00,2014-05-07 17:00,2014-04-27 08:00,2014-05-25 17:00,,PT_Normal,,,,,fJSFhOwxS/at7HwpaNFolg,,,,N,0,0,,,2013-02-16 15:54,2013-02-16 16:35,admin,admin
503144,6359,125103,13662,0,N,N,N,CP_Drtn,TT_Task,DT_FixedDUR2,TK_NotStart,DUKHCONI1AZ3STGL5250,Backfilling Street Lighting,8177,120,0,200,0,287,287,200,275,0,275,,,,2014-05-03 08:00,2014-05-31 17:00,,2014-04-15 08:00,2014-05-13 17:00,2014-04-15 08:00,2014-05-13 17:00,2014-04-15 08:00,2014-05-13 17:00,2014-05-03 08:00,2014-05-31 17:00,,PT_Normal,,,,,n6oJX7UFTA2djj8ttyI36Q,,,,N,0,0,,,2013-02-16 15:54,2013-02-16 16:35,admin,admin
503145,6359,125103,13662,0,N,N,N,CP_Drtn,TT_Task,DT_FixedDUR2,TK_NotStart,DUKHCONI1AZ3STGL5255,Installation of light Post,8178,632,16,200,0,216,216,200,0,0,0,,,,2014-07-28 08:00,2014-08-28 17:00,,2014-04-27 08:00,2014-05-25 17:00,2014-04-27 08:00,2014-05-25 17:00,2014-04-27 08:00,2014-05-25 17:00,2014-07-28 08:00,2014-08-28 17:00,,PT_Normal,,,,,uQCFXi4SToaDqh3ZMOcTTA,,,,N,0,0,,,2013-02-16 15:54,2013-02-16 16:35,admin,admin
503146,6359,125103,13662,0,N,N,N,CP_Drtn,TT_Task,DT_FixedDUR2,TK_NotStart,DUKHCONI1AZ3STGL5260,Electrical Works,8178,616,144,200,0,823.6,823.6,200,0,0,0,,,,2014-08-30 08:00,2014-09-27 17:00,,2014-05-28 08:00,2014-06-25 17:00,2014-05-28 08:00,2014-06-25 17:00,2014-05-28 08:00,2014-06-25 17:00,2014-08-30 08:00,2014-09-27 17:00,,PT_Normal,,,,,oAJGqnU6QROOGbcGUGI0Jw,,,,N,0,0,,,2013-02-16 15:54,2013-02-16 16:35,admin,admin
503147,6359,125104,13662,0,N,N,N,CP_Drtn,TT_Task,DT_FixedDUR2,TK_NotStart,DUKHCONI1AZ3RWGL6000,Excavation & Earth Filling,8177,120,0,80,0,1232,1232,80,500,0,500,,,,2014-06-18 08:00,2014-06-29 17:00,,2014-06-01 08:00,2014-06-11 17:00,2014-06-01 08:00,2014-06-11 17:00,2014-06-01 08:00,2014-06-11 17:00,2014-06-18 08:00,2014-06-29 17:00,,PT_Normal,,,,,HZxlx+x3R6umezzOe4q9NA,,,,N,0,0,,,2013-02-16 15:54,2013-02-16 16:35,admin,admin
503148,6359,125104,13662,0,N,N,N,CP_Drtn,TT_Task,DT_FixedDUR2,TK_NotStart,DUKHCONI1AZ3RWGL6005,Laying of Sub Grade,8178,120,0,200,0,24,24,200,0,0,0,,,,2014-06-30 08:00,2014-07-28 17:00,,2014-06-12 08:00,2014-07-10 17:00,2014-06-12 08:00,2014-07-10 17:00,2014-06-12 08:00,2014-07-10 17:00,2014-06-30 08:00,2014-07-28 17:00,,PT_Normal,,,,,J1/dffhhR9OXt+/AHQulgw,,,,N,0,0,,,2013-02-16 15:54,2013-02-16 16:35,admin,admin
503149,6359,125104,13662,0,N,N,N,CP_Drtn,TT_Task,DT_FixedDUR2,TK_NotStart,DUKHCONI1AZ3RWGL6010,Laying of Precast Kerbs,8178,120,0,200,0,24,24,200,0,0,0,,,,2014-07-12 08:00,2014-08-12 17:00,,2014-06-24 08:00,2014-07-22 17:00,2014-06-24 08:00,2014-07-22 17:00,2014-06-24 08:00,2014-07-22 17:00,2014-07-12 08:00,2014-08-12 17:00,,PT_Normal,,,,,Iabs8xMeR+unzZ1EoM63tQ,,,,N,0,0,,,2013-02-16 15:54,2013-02-16 16:35,admin,admin
503150,6359,125104,13662,0,N,N,N,CP_Drtn,TT_Task,DT_FixedDUR2,TK_NotStart,DUKHCONI1AZ3RWGL6015,Laying of Granular Sub Base Coarse,8173,120,0,160,0,1814,1814,160,600,0,600,,,,2014-07-23 08:00,2014-08-18 17:00,,2014-07-06 08:00,2014-07-28 17:00,2014-07-06 08:00,2014-07-28 17:00,2014-07-06 08:00,2014-07-28 17:00,2014-07-23 08:00,2014-08-18 17:00,,PT_Normal,,,,,eiG7Lv/hTy2Q7vtJhyQbPQ,,,,N,0,0,,,2013-02-16 15:54,2013-02-16 16:35,admin,admin
503151,6359,125104,13662,0,N,N,N,CP_Drtn,TT_Task,DT_FixedDUR2,TK_NotStart,DUKHCONI1AZ3RWGL6020,Laying of Road Base Asphalt Concrete,8178,360,0,40,0,174,174,40,150,0,150,,,,2014-09-23 08:00,2014-09-28 17:00,,2014-07-29 08:00,2014-08-06 17:00,2014-07-29 08:00,2014-08-06 17:00,2014-07-29 08:00,2014-08-06 17:00,2014-09-23 08:00,2014-09-28 17:00,,PT_Normal,,,,,6ciHV9kPSrWiY26YhK++sg,,,,N,0,0,,,2013-02-16 15:54,2013-02-16 16:35,admin,admin
503152,6359,125104,13662,0,N,N,N,CP_Drtn,TT_Task,DT_FixedDUR2,TK_NotStart,DUKHCONI1AZ3RWGL6025,Laying of Asphalt Wearing Coarse,8178,480,0,40,0,174,174,40,150,0,150,,,,2014-10-19 08:00,2014-10-23 17:00,,2014-08-07 08:00,2014-08-12 17:00,2014-08-07 08:00,2014-08-12 17:00,2014-08-07 08:00,2014-08-12 17:00,2014-10-19 08:00,2014-10-23 17:00,,PT_Normal,,,,,Gr021jE1Q3+MzYyidZ4AnA,,,,N,0,0,,,2013-02-16 15:54,2013-02-16 16:35,admin,admin
503153,6359,125104,13662,0,N,N,N,CP_Drtn,TT_Task,DT_FixedDUR2,TK_NotStart,DUKHCONI1AZ3RWGL6030,Traffic Signage & Road Marking,8178,480,120,40,0,974,974,40,0,0,0,,,,2014-10-25 08:00,2014-10-29 17:00,,2014-08-13 08:00,2014-08-18 17:00,2014-08-13 08:00,2014-08-18 17:00,2014-08-13 08:00,2014-08-18 17:00,2014-10-25 08:00,2014-10-29 17:00,,PT_Normal,,,,,Bt/KR7vJSaGSz+QsrvsQjw,,,,N,0,0,,,2013-02-16 15:54,2013-02-16 16:35,admin,admin
503154,6359,125105,13662,0,N,N,N,CP_Drtn,TT_Task,DT_FixedDUR2,TK_NotStart,DUKHCONI1AZ3WSGL5155,Excavation for water line,8177,88,0,200,0,401,401,200,251,0,251,,,,2014-02-24 08:00,2014-03-24 17:00,,2014-02-10 08:00,2014-03-11 17:00,2014-02-10 08:00,2014-03-11 17:00,2014-02-10 08:00,2014-03-11 17:00,2014-02-24 08:00,2014-03-24 17:00,,PT_Normal,,,,,82XIGZFFRcqYXtP9oa6SIQ,,,,N,0,0,,,2013-02-16 15:54,2013-02-16 15:56,admin,admin
503155,6359,125105,13662,0,N,N,N,CP_Drtn,TT_Task,DT_FixedDUR2,TK_NotStart,DUKHCONI1AZ3WSGL5160,Laying of water line,8178,88,0,200,0,285.6,285.6,200,0,0,0,,,,2014-03-02 08:00,2014-03-30 17:00,,2014-02-17 08:00,2014-03-17 17:00,2014-02-17 08:00,2014-03-17 17:00,2014-02-17 08:00,2014-03-17 17:00,2014-03-02 08:00,2014-03-30 17:00,,PT_Normal,,,,,B0YMeryfQ2miCBYHtV4+Qw,,,,N,0,0,,,2013-02-16 15:54,2013-02-16 15:56,admin,admin
503156,6359,125105,13662,0,N,N,N,CP_Drtn,TT_Task,DT_FixedDUR2,TK_NotStart,DUKHCONI1AZ3WSGL5165,Testing of potable water line,8178,88,0,200,0,84,84,200,0,0,0,,,,2014-03-08 08:00,2014-04-05 17:00,,2014-02-23 08:00,2014-03-23 17:00,2014-02-23 08:00,2014-03-23 17:00,2014-02-23 08:00,2014-03-23 17:00,2014-03-08 08:00,2014-04-05 17:00,,PT_Normal,,,,,e+FbSOw/R6i1dtwAKEum5A,,,,N,0,0,,,2013-02-16 15:54,2013-02-16 15:56,admin,admin
503157,6359,125105,13662,0,N,N,N,CP_Drtn,TT_Task,DT_FixedDUR2,TK_NotStart,DUKHCONI1AZ3WSGL5170,Backfilling potable water line,8177,88,0,200,0,335,335,200,275,0,275,,,,2014-03-13 08:00,2014-04-10 17:00,,2014-03-01 08:00,2014-03-29 17:00,2014-03-01 08:00,2014-03-29 17:00,2014-03-01 08:00,2014-03-29 17:00,2014-03-13 08:00,2014-04-10 17:00,,PT_Normal,,,,,MWo6N5oFQ7KJe6Apq2Zj9A,,,,N,0,0,,,2013-02-16 15:54,2013-02-16 15:56,admin,admin
503158,6359,125105,13662,0,N,N,N,CP_Drtn,TT_Task,DT_FixedDUR2,TK_NotStart,DUKHCONI1AZ3WSGL5175,Construction of valve chambers & Thrust Blocks,8172,352,0,200,0,132,132,200,0,0,0,,,,2014-04-27 08:00,2014-05-25 17:00,,2014-03-06 08:00,2014-04-03 17:00,2014-03-06 08:00,2014-04-03 17:00,2014-03-06 08:00,2014-04-03 17:00,2014-04-27 08:00,2014-05-25 17:00,,PT_Normal,,,,,p3JI1T+VRXyJtWKeBOyFJg,,,,N,0,0,,,2013-02-16 15:54,2013-02-16 15:56,admin,admin
503159,6359,125105,13662,0,N,N,N,CP_Drtn,TT_Task,DT_FixedDUR2,TK_NotStart,DUKHCONI1AZ3WSGL5180,"Installation of meter ,Accessories & Connection",8178,352,56,160,0,50.4,50.4,160,0,0,0,,,,2014-05-26 08:00,2014-06-17 17:00,,2014-04-05 08:00,2014-04-27 17:00,2014-04-05 08:00,2014-04-27 17:00,2014-04-05 08:00,2014-04-27 17:00,2014-05-26 08:00,2014-06-17 17:00,,PT_Normal,,,,,tYfn27tCSpacL+tat8HjCg,,,,N,0,0,,,2013-02-16 15:54,2013-02-16 16:35,admin,admin
503160,6359,125106,13662,0,N,N,N,CP_Drtn,TT_Task,DT_FixedDUR2,TK_NotStart,DUKHCONI1AZ3TCGL5295,Excavation Telecommunication trenches,8177,120,0,160,0,528,528,160,300,0,300,,,,2014-05-14 08:00,2014-06-05 17:00,,2014-04-27 08:00,2014-05-19 17:00,2014-04-27 08:00,2014-05-19 17:00,2014-04-27 08:00,2014-05-19 17:00,2014-05-14 08:00,2014-06-05 17:00,,PT_Normal,,,,,d1S6MeDyQHObGCFxyD0Q7g,,,,N,0,0,,,2013-02-16 15:54,2013-02-16 16:35,admin,admin
503161,6359,125106,13662,0,N,N,N,CP_Drtn,TT_Task,DT_FixedDUR2,TK_NotStart,DUKHCONI1AZ3TCGL5300,Laying of cables,8178,120,0,160,0,795.2,795.2,160,0,0,0,,,,2014-05-20 08:00,2014-06-11 17:00,,2014-05-03 08:00,2014-05-25 17:00,2014-05-03 08:00,2014-05-25 17:00,2014-05-03 08:00,2014-05-25 17:00,2014-05-20 08:00,2014-06-11 17:00,,PT_Normal,,,,,SBeH3bQ/SP+q25gCFkYO6Q,,,,N,0,0,,,2013-02-16 15:54,2013-02-16 16:35,admin,admin
503162,6359,125106,13662,0,N,N,N,CP_Drtn,TT_Task,DT_FixedDUR2,TK_NotStart,DUKHCONI1AZ3TCGL5305,Backfilling telecommunication trench,8177,120,0,160,0,530,530,160,440,0,440,,,,2014-05-26 08:00,2014-06-17 17:00,,2014-05-08 08:00,2014-05-31 17:00,2014-05-08 08:00,2014-05-31 17:00,2014-05-08 08:00,2014-05-31 17:00,2014-05-26 08:00,2014-06-17 17:00,,PT_Normal,,,,,zPKBj1dDTz+1HC0+4jbWWw,,,,N,0,0,,,2013-02-16 15:54,2013-02-16 16:35,admin,admin
503163,6359,125106,13662,0,N,N,N,CP_Drtn,TT_Task,DT_FixedDUR2,TK_NotStart,DUKHCONI1AZ3TCGL5310,Connection & Installation,8178,592,184,160,0,344.4,344.4,160,0,0,0,,,,2014-08-18 08:00,2014-09-09 17:00,,2014-05-20 08:00,2014-06-11 17:00,2014-05-20 08:00,2014-06-11 17:00,2014-05-20 08:00,2014-06-11 17:00,2014-08-18 08:00,2014-09-09 17:00,,PT_Normal,,,,,BXvlQUWwT8+ON2DnEhWTnQ,,,,N,0,0,,,2013-02-16 15:54,2013-02-16 16:35,admin,admin
503164,6359,125107,13662,0,N,N,N,CP_Drtn,TT_Task,DT_FixedDUR2,TK_NotStart,DUKHCONI1AZ3SLGL7200,Excavation,8177,312,0,200,0,497,497,200,251,0,251,,,,2014-08-24 08:00,2014-09-21 17:00,,2014-07-06 08:00,2014-08-06 17:00,2014-07-06 08:00,2014-08-06 17:00,2014-07-06 08:00,2014-08-06 17:00,2014-08-24 08:00,2014-09-21 17:00,,PT_Normal,,,,,aHLdiNoBQm+KntDevP3KpA,,,,N,0,0,,,2013-02-16 15:54,2013-02-16 16:35,admin,admin
503165,6359,125107,13662,0,N,N,N,CP_Drtn,TT_Task,DT_FixedDUR2,TK_NotStart,DUKHCONI1AZ3SLGL7205,Sweet Soil Laying,8178,312,0,200,0,2380,2380,200,0,0,0,,,,2014-09-04 08:00,2014-10-02 17:00,,2014-07-17 08:00,2014-08-18 17:00,2014-07-17 08:00,2014-08-18 17:00,2014-07-17 08:00,2014-08-18 17:00,2014-09-04 08:00,2014-10-02 17:00,,PT_Normal,,,,,F3klrIsBQimg/4V7jQbl2A,,,,N,0,0,,,2013-02-16 15:54,2013-02-16 16:35,admin,admin
503166,6359,125107,13662,0,N,N,N,CP_Drtn,TT_Task,DT_FixedDUR2,TK_NotStart,DUKHCONI1AZ3SLGL7210,Plantation works,8178,472,144,200,0,588,588,200,0,0,0,,,,2014-10-12 08:00,2014-11-09 17:00,,2014-07-29 08:00,2014-08-30 17:00,2014-07-29 08:00,2014-08-30 17:00,2014-07-29 08:00,2014-08-30 17:00,2014-10-12 08:00,2014-11-09 17:00,,PT_Normal,,,,,4GLI1TjvRIOhdQTrSCBKDw,,,,N,0,0,,,2013-02-16 15:54,2013-02-16 16:35,admin,admin
503167,6359,125108,13662,0,N,N,N,CP_Drtn,TT_Task,DT_FixedDUR2,TK_NotStart,DUKHCONI1AZ3HDGL7020,Precast Concrete Kerbs works,8173,312,0,160,0,1178,1178,160,0,0,0,,,,2014-07-16 08:00,2014-08-11 17:00,,2014-06-01 08:00,2014-06-23 17:00,2014-06-01 08:00,2014-06-23 17:00,2014-06-01 08:00,2014-06-23 17:00,2014-07-16 08:00,2014-08-11 17:00,,PT_Normal,,,,,3AWduIgOTT+9TCDoCuqZxA,,,,N,0,0,,,2013-02-16 15:54,2013-02-16 16:35,admin,admin
503168,6359,125108,13662,0,N,N,N,CP_Drtn,TT_Task,DT_FixedDUR2,TK_NotStart,DUKHCONI1AZ3HDGL7025,Interlocking for Walkways,8174,312,0,200,0,806,806,200,0,0,0,,,,2014-07-28 08:00,2014-08-28 17:00,,2014-06-12 08:00,2014-07-10 17:00,2014-06-12 08:00,2014-07-10 17:00,2014-06-12 08:00,2014-07-10 17:00,2014-07-28 08:00,2014-08-28 17:00,,PT_Normal,,,,,qkIPwiOPTcSl9phttx1YCA,,,,N,0,0,,,2013-02-16 15:54,2013-02-16 16:35,admin,admin
503169,6359,125108,13662,0,N,N,N,CP_Drtn,TT_Task,DT_FixedDUR2,TK_NotStart,DUKHCONI1AZ3HDGL7030,Construction of Retaining wall,8165,312,0,200,0,756,756,200,0,0,0,,,,2014-08-12 08:00,2014-09-09 17:00,,2014-06-24 08:00,2014-07-22 17:00,2014-06-24 08:00,2014-07-22 17:00,2014-06-24 08:00,2014-07-22 17:00,2014-08-12 08:00,2014-09-09 17:00,,PT_Normal,,,,,4DzirRtZTaqCSQcR2cYsZA,,,,N,0,0,,,2013-02-16 15:54,2013-02-16 16:35,admin,admin
503170,6359,125108,13662,0,N,N,N,CP_Drtn,TT_Task,DT_FixedDUR2,TK_NotStart,DUKHCONI1AZ3HDGL7040,Construction of Speed Humps,8167,592,264,80,0,14,14,80,0,0,0,,,,2014-11-10 08:00,2014-11-20 17:00,,2014-08-13 08:00,2014-08-24 17:00,2014-08-13 08:00,2014-08-24 17:00,2014-08-13 08:00,2014-08-24 17:00,2014-11-10 08:00,2014-11-20 17:00,,PT_Normal,,,,,VNZkBlPvRsWgYrNs1ArGFw,,,,N,0,0,,,2013-02-16 15:54,2013-02-16 16:35,admin,admin
503171,6359,125108,13662,0,N,N,N,CP_Drtn,TT_Task,DT_FixedDUR2,TK_NotStart,DUKHCONI1AZ3HDGL7035,Construction of Wash Stone Boulders,8170,312,0,200,0,88,88,200,0,0,0,,,,2014-08-12 08:00,2014-09-09 17:00,,2014-06-24 08:00,2014-07-22 17:00,2014-06-24 08:00,2014-07-22 17:00,2014-06-24 08:00,2014-07-22 17:00,2014-08-12 08:00,2014-09-09 17:00,,PT_Normal,,,,,nKGkk6mhTMy22IHRXii7XA,,,,N,0,0,,,2013-02-16 15:54,2013-02-16 16:35,admin,admin
503172,6359,125109,13662,0,N,N,N,CP_Drtn,TT_Task,DT_FixedDUR2,TK_NotStart,DUKHCONI1AZ3IRGL5265,Excavation for irrigation line,8177,320,0,200,0,812,812,200,500,0,500,,,,2014-07-02 08:00,2014-07-30 17:00,,2014-05-17 08:00,2014-06-14 17:00,2014-05-17 08:00,2014-06-14 17:00,2014-05-17 08:00,2014-06-14 17:00,2014-07-02 08:00,2014-07-30 17:00,,PT_Normal,,,,,+U0MPfOIRg2OE7o7h04+zg,,,,N,0,0,,,2013-02-16 15:54,2013-02-16 16:35,admin,admin
503173,6359,125109,13662,0,N,N,N,CP_Drtn,TT_Task,DT_FixedDUR2,TK_NotStart,DUKHCONI1AZ3IRGL5270,Laying of irrigationline,8178,320,0,200,0,386.4,386.4,200,0,0,0,,,,2014-07-08 08:00,2014-08-09 17:00,,2014-05-22 08:00,2014-06-19 17:00,2014-05-22 08:00,2014-06-19 17:00,2014-05-22 08:00,2014-06-19 17:00,2014-07-08 08:00,2014-08-09 17:00,,PT_Normal,,,,,2X0kpmBDQH+0vv9UaJWHnQ,,,,N,0,0,,,2013-02-16 15:54,2013-02-23 09:03,admin,admin
503174,6359,125109,13662,0,N,N,N,CP_Drtn,TT_Task,DT_FixedDUR2,TK_NotStart,DUKHCONI1AZ3IRGL5275,Testing of irrigation line,8178,320,0,200,0,319.2,319.2,200,0,0,0,,,,2014-07-14 08:00,2014-08-14 17:00,,2014-05-28 08:00,2014-06-25 17:00,2014-05-28 08:00,2014-06-25 17:00,2014-05-28 08:00,2014-06-25 17:00,2014-07-14 08:00,2014-08-14 17:00,,PT_Normal,,,,,JMhRrOoqSpafW9ujvnCf/A,,,,N,0,0,,,2013-02-16 15:54,2013-02-23 09:03,admin,admin
503175,6359,125109,13662,0,N,N,N,CP_Drtn,TT_Task,DT_FixedDUR2,TK_NotStart,DUKHCONI1AZ3IRGL5280,Backfilling irrigation line,8177,320,0,200,0,676,676,200,550,0,550,,,,2014-07-20 08:00,2014-08-20 17:00,,2014-06-03 08:00,2014-07-01 17:00,2014-06-03 08:00,2014-07-01 17:00,2014-06-03 08:00,2014-07-01 17:00,2014-07-20 08:00,2014-08-20 17:00,,PT_Normal,,,,,itCYlkLRQNChhi7nSdJNTg,,,,N,0,0,,,2013-02-16 15:54,2013-02-16 16:35,admin,admin
503176,6359,125109,13662,0,N,N,N,CP_Drtn,TT_Task,DT_FixedDUR2,TK_NotStart,DUKHCONI1AZ3IRGL5285,"Construction of Thrust Blocks,Pull boxes",8178,400,0,200,0,116.4,116.4,200,0,0,0,,,,2014-08-16 08:00,2014-09-13 17:00,,2014-06-15 08:00,2014-07-13 17:00,2014-06-15 08:00,2014-07-13 17:00,2014-06-15 08:00,2014-07-13 17:00,2014-08-16 08:00,2014-09-13 17:00,,PT_Normal,,,,,kqKu1QanSyy0FkbLLflF0A,,,,N,0,0,,,2013-02-16 15:54,2013-02-16 16:35,admin,admin
503177,6359,125109,13662,0,N,N,N,CP_Drtn,TT_Task,DT_FixedDUR2,TK_NotStart,DUKHCONI1AZ3IRGL5290,"Irrigation Fittings (Nozzle,Values)",8178,400,88,200,0,285.6,285.6,200,0,0,0,,,,2014-08-24 08:00,2014-09-21 17:00,,2014-06-23 08:00,2014-07-21 17:00,2014-06-23 08:00,2014-07-21 17:00,2014-06-23 08:00,2014-07-21 17:00,2014-08-24 08:00,2014-09-21 17:00,,PT_Normal,,,,,0oSWNe6UToa3Q2iAAwjLlQ,,,,N,0,0,,,2013-02-16 15:54,2013-02-16 16:35,admin,admin
503178,6359,125110,13662,0,N,N,N,CP_Drtn,TT_Task,DT_FixedDUR2,TK_NotStart,DUKHCONI1AZ3PSGL7010,"Column, Frame&  Fabrics  Erection",8178,360,0,200,0,286,286,200,0,0,0,,,,2014-09-29 08:00,2014-10-29 17:00,,2014-08-07 08:00,2014-09-04 17:00,2014-08-07 08:00,2014-09-04 17:00,2014-08-07 08:00,2014-09-04 17:00,2014-09-29 08:00,2014-10-29 17:00,,PT_Normal,,,,,cZM56tgAS5ylmcn9YDkTAw,,,,N,0,0,,,2013-02-16 15:54,2013-02-16 16:35,admin,admin
503179,6359,125110,13662,0,N,N,N,CP_Drtn,TT_Task,DT_FixedDUR2,TK_NotStart,DUKHCONI1AZ3PSGL7015,Electrical Works-Parking Shed,8178,360,144,200,0,51.6,51.6,200,0,0,0,,,,2014-10-05 08:00,2014-11-04 17:00,,2014-08-13 08:00,2014-09-10 17:00,2014-08-13 08:00,2014-09-10 17:00,2014-08-13 08:00,2014-09-10 17:00,2014-10-05 08:00,2014-11-04 17:00,,PT_Normal,,,,,ps9c3MzUQ82u82YEIETZkw,,,,N,0,0,,,2013-02-16 15:54,2013-02-16 16:35,admin,admin
503180,6359,125110,13662,0,N,N,N,CP_Drtn,TT_Task,DT_FixedDUR2,TK_NotStart,DUKHCONI1AZ3PSGL7000,Excavation,8177,400,40,120,0,148,148,120,75.999956,0,75.999956,,,,2014-09-11 08:00,2014-09-28 17:00,,2014-07-12 08:00,2014-07-28 17:00,2014-07-12 08:00,2014-07-28 17:00,2014-07-12 08:00,2014-07-28 17:00,2014-09-11 08:00,2014-09-28 17:00,,PT_Normal,,,,,94Td96/ETBWzyGlpWUrOVg,,,,N,0,0,,,2013-02-16 15:54,2013-02-16 16:35,admin,admin
503181,6359,125110,13662,0,N,N,N,CP_Drtn,TT_Task,DT_FixedDUR2,TK_NotStart,DUKHCONI1AZ3PSGL7005,Foundation casting,8165,360,0,120,0,252,252,120,0,0,0,,,,2014-09-17 08:00,2014-10-04 17:00,,2014-07-23 08:00,2014-08-12 17:00,2014-07-23 08:00,2014-08-12 17:00,2014-07-23 08:00,2014-08-12 17:00,2014-09-17 08:00,2014-10-04 17:00,,PT_Normal,,,,,bdAyGhJ7T3GNBcesIqVH2A,,,,N,0,0,,,2013-02-16 15:54,2013-02-16 16:35,admin,admin
503182,6359,125115,13662,0,N,N,N,CP_Drtn,TT_Task,DT_FixedDUR2,TK_NotStart,DUKHCONP2AZ1STUG1000,Footing Excavation,8177,0,0,200,0,476,476,200,224,0,224,,,,2013-02-23 08:00,2013-03-23 17:00,,2013-02-23 08:00,2013-03-23 17:00,2013-02-23 08:00,2013-03-23 17:00,2013-02-23 08:00,2013-03-23 17:00,2013-02-23 08:00,2013-03-23 17:00,,PT_Normal,,,,,tcbPa7nGRECUyGtIEcd2mg,,,,N,0,0,,,2013-02-16 15:54,2013-02-16 15:56,admin,admin
503183,6359,125115,13662,0,N,N,N,CP_Drtn,TT_Task,DT_FixedDUR2,TK_NotStart,DUKHCONP2AZ1STUG1005,Footing Antitermite,8178,0,0,160,0,902,902,160,0,0,0,,,,2013-03-06 08:00,2013-03-28 17:00,,2013-03-06 08:00,2013-03-28 17:00,2013-03-06 08:00,2013-03-28 17:00,2013-03-06 08:00,2013-03-28 17:00,2013-03-06 08:00,2013-03-28 17:00,,PT_Normal,,,,,6VFfSVciTFevENoUcnk7yQ,,,,N,0,0,,,2013-02-16 15:54,2013-02-16 15:56,admin,admin
503184,6359,125115,13662,0,N,N,N,CP_Drtn,TT_Task,DT_FixedDUR2,TK_NotStart,DUKHCONP2AZ1STUG1010,Footing Blinding,8163,0,0,160,0,29.75,29.75,160,0,0,0,,,,2013-03-09 08:00,2013-03-31 17:00,,2013-03-09 08:00,2013-03-31 17:00,2013-03-09 08:00,2013-03-31 17:00,2013-03-09 08:00,2013-03-31 17:00,2013-03-09 08:00,2013-03-31 17:00,,PT_Normal,,,,,mPAbhiXYR+CI0pXuXRVr4A,,,,N,0,0,,,2013-02-16 15:54,2013-02-16 15:56,admin,admin
503185,6359,125115,13662,0,N,N,N,CP_Drtn,TT_Task,DT_FixedDUR2,TK_NotStart,DUKHCONP2AZ1STUG1015,Footing Waterproofing & Screed,8164,0,0,160,0,681,681,160,0,0,0,,,,2013-03-12 08:00,2013-04-03 17:00,,2013-03-12 08:00,2013-04-03 17:00,2013-03-12 08:00,2013-04-03 17:00,2013-03-12 08:00,2013-04-03 17:00,2013-03-12 08:00,2013-04-03 17:00,,PT_Normal,,,,,c+azP95WR6aqECpMfsTcsA,,,,N,0,0,,,2013-02-16 15:54,2013-02-16 15:56,admin,admin
503186,6359,125115,13662,0,N,N,N,CP_Drtn,TT_Task,DT_FixedDUR2,TK_NotStart,DUKHCONP2AZ1STUG1020,Construction of foundations,8165,0,0,160,0,1335.25,1335.25,160,0,0,0,,,,2013-03-24 08:00,2013-04-15 17:00,,2013-03-24 08:00,2013-04-15 17:00,2013-03-24 08:00,2013-04-15 17:00,2013-03-24 08:00,2013-04-15 17:00,2013-03-24 08:00,2013-04-15 17:00,,PT_Normal,,,,,5kDqrzvCSf+3dP4lzIOnwQ,,,,N,0,0,,,2013-02-16 15:54,2013-02-16 15:56,admin,admin
503187,6359,125115,13662,0,N,N,N,CP_Drtn,TT_Task,DT_FixedDUR2,TK_NotStart,DUKHCONP2AZ1STUG1025,Construction of neck of columns,8165,0,0,160,0,1389.5,1389.5,160,0,0,0,,,,2013-04-02 08:00,2013-04-24 17:00,,2013-04-02 08:00,2013-04-24 17:00,2013-04-02 08:00,2013-04-24 17:00,2013-04-02 08:00,2013-04-24 17:00,2013-04-02 08:00,2013-04-24 17:00,,PT_Normal,,,,,wvTJSOHqRc2obecF4VpDcw,,,,N,0,0,,,2013-02-16 15:54,2013-02-16 15:56,admin,admin
503188,6359,125115,13662,0,N,N,N,CP_Drtn,TT_Task,DT_FixedDUR2,TK_NotStart,DUKHCONP2AZ1STUG1030,Waterproofing Footing & Neck Column,8178,0,0,160,0,125.5,125.5,160,0,0,0,,,,2013-04-11 08:00,2013-05-04 17:00,,2013-04-11 08:00,2013-05-04 17:00,2013-04-11 08:00,2013-05-04 17:00,2013-04-11 08:00,2013-05-04 17:00,2013-04-11 08:00,2013-05-04 17:00,,PT_Normal,,,,,N7IimtouQ/mrDvTEVOWxbA,,,,N,0,0,,,2013-02-16 15:54,2013-02-16 15:56,admin,admin
503189,6359,125115,13662,0,N,N,N,CP_Drtn,TT_Task,DT_FixedDUR2,TK_NotStart,DUKHCONP2AZ1STUG1035,Backfilling Upto Grade Beam Bottom,8177,0,0,160,0,822,822,160,660,0,660,,,,2013-04-23 08:00,2013-05-15 17:00,,2013-04-23 08:00,2013-05-15 17:00,2013-04-23 08:00,2013-05-15 17:00,2013-04-23 08:00,2013-05-15 17:00,2013-04-23 08:00,2013-05-15 17:00,,PT_Normal,,,,,8jRfWeDGT82ErmeZeSbKGQ,,,,N,0,0,,,2013-02-16 15:54,2013-02-16 15:56,admin,admin
503190,6359,125115,13662,0,N,N,N,CP_Drtn,TT_Task,DT_FixedDUR2,TK_NotStart,DUKHCONP2AZ1STUG1040,Construction of Grade Beams,8163,0,0,200,0,2514.75,2514.75,200,0,0,0,,,,2013-05-05 08:00,2013-06-02 17:00,,2013-05-05 08:00,2013-06-02 17:00,2013-05-05 08:00,2013-06-02 17:00,2013-05-05 08:00,2013-06-02 17:00,2013-05-05 08:00,2013-06-02 17:00,,PT_Normal,,,,,y4K6TIc/RJmgrvHA05YiZQ,,,,N,0,0,,,2013-02-16 15:54,2013-02-16 15:56,admin,admin
503191,6359,125115,13662,0,N,N,N,CP_Drtn,TT_Task,DT_FixedDUR2,TK_NotStart,DUKHCONP2AZ1STUG1045,Construction of slab on grade,8163,0,0,200,0,1541.75,1541.75,200,0,0,0,,,,2013-06-02 08:00,2013-06-30 17:00,,2013-06-02 08:00,2013-06-30 17:00,2013-06-02 08:00,2013-06-30 17:00,2013-06-02 08:00,2013-06-30 17:00,2013-06-02 08:00,2013-06-30 17:00,,PT_Normal,,,,,HlsLiUHAR+KIByvve8GmPw,,,,N,0,0,,,2013-02-16 15:54,2013-02-16 15:56,admin,admin
503192,6359,125117,13662,0,N,N,N,CP_Drtn,TT_Task,DT_FixedDUR2,TK_NotStart,DUKHCONP2AZ1STRF2060,Construction of Parapets,8165,0,0,160,0,521.5,521.5,160,0,0,0,,,,2013-08-01 08:00,2013-08-27 17:00,,2013-08-01 08:00,2013-08-27 17:00,2013-08-01 08:00,2013-08-27 17:00,2013-08-01 08:00,2013-08-27 17:00,2013-08-01 08:00,2013-08-27 17:00,,PT_Normal,,,,,oOxRZD5BRIqUhkO4wavoBA,,,,N,0,0,,,2013-02-16 15:54,2013-02-16 15:56,admin,admin
503193,6359,125117,13662,0,N,N,N,CP_Drtn,TT_Task,DT_FixedDUR2,TK_NotStart,DUKHCONP2AZ1STRF2065,Construction of up stands/Plinth,8166,240,0,160,0,84,84,160,0,0,0,,,,2013-09-16 08:00,2013-10-08 17:00,,2013-08-08 08:00,2013-09-03 17:00,2013-08-08 08:00,2013-09-03 17:00,2013-08-08 08:00,2013-09-03 17:00,2013-09-16 08:00,2013-10-08 17:00,,PT_Normal,,,,,6oan1iwcReK3q49UKHLgMw,,,,N,0,0,,,2013-02-16 15:54,2013-02-16 15:56,admin,admin
503194,6359,125118,13662,0,N,N,N,CP_Drtn,TT_Task,DT_FixedDUR2,TK_NotStart,DUKHCONP2AZ1STGF2000,Column-Rebar & Formwork,8165,0,0,160,0,1524.25,1524.25,160,0,0,0,,,,2013-06-19 08:00,2013-07-11 17:00,,2013-06-19 08:00,2013-07-11 17:00,2013-06-19 08:00,2013-07-11 17:00,2013-06-19 08:00,2013-07-11 17:00,2013-06-19 08:00,2013-07-11 17:00,,PT_Normal,,,,,1rqk3qMiR1uI25f3vtB7Lg,,,,N,0,0,,,2013-02-16 15:54,2013-02-16 15:56,admin,admin
503195,6359,125118,13662,0,N,N,N,CP_Drtn,TT_Task,DT_FixedDUR2,TK_NotStart,DUKHCONP2AZ1STGF2005,Column-Concrete,8167,0,0,120,0,105,105,120,0,0,0,,,,2013-06-30 08:00,2013-07-16 17:00,,2013-06-30 08:00,2013-07-16 17:00,2013-06-30 08:00,2013-07-16 17:00,2013-06-30 08:00,2013-07-16 17:00,2013-06-30 08:00,2013-07-16 17:00,,PT_Normal,,,,,vxw5AT+jQaWSy7TI8RtQFA,,,,N,0,0,,,2013-02-16 15:54,2013-02-16 15:56,admin,admin
503196,6359,125118,13662,0,N,N,N,CP_Drtn,TT_Task,DT_FixedDUR2,TK_NotStart,DUKHCONP2AZ1STGF2010,"Beam, Stairs ,Slab-Rebar & Formwork",8165,0,0,200,0,6076,6076,200,0,0,0,,,,2013-07-08 08:00,2013-08-05 17:00,,2013-07-08 08:00,2013-08-05 17:00,2013-07-08 08:00,2013-08-05 17:00,2013-07-08 08:00,2013-08-05 17:00,2013-07-08 08:00,2013-08-05 17:00,,PT_Normal,,,,,Ucq1LKlrSr+opnkGqGuHBg,,,,N,0,0,,,2013-02-16 15:54,2013-02-16 15:56,admin,admin
503197,6359,125118,13662,0,N,N,N,CP_Drtn,TT_Task,DT_FixedDUR2,TK_NotStart,DUKHCONP2AZ1STGF2015,"Beam, Stairs ,Slab-Concrete",8167,0,0,120,0,1302,1302,120,0,0,0,,,,2013-07-24 08:00,2013-08-13 17:00,,2013-07-24 08:00,2013-08-13 17:00,2013-07-24 08:00,2013-08-13 17:00,2013-07-24 08:00,2013-08-13 17:00,2013-07-24 08:00,2013-08-13 17:00,,PT_Normal,,,,,FpDBoRDJRb+RmQDORWe8Fg,,,,N,0,0,,,2013-02-16 15:54,2013-02-16 15:56,admin,admin
503198,6359,125120,13662,0,N,N,N,CP_Drtn,TT_Task,DT_FixedDUR2,TK_NotStart,DUKHCONP2AZ1MSEX5335,Aluminum Roll-up Shutter with 2m Wall,8178,232,16,200,0,400,400,200,0,0,0,,,,2014-04-17 08:00,2014-05-15 17:00,,2014-03-15 08:00,2014-04-12 17:00,2014-03-15 08:00,2014-04-12 17:00,2014-03-15 08:00,2014-04-12 17:00,2014-04-17 08:00,2014-05-15 17:00,,PT_Normal,,,,,W4j3he9tRY6larcg7TZKsw,,,,N,0,0,,,2013-02-16 15:54,2013-02-16 16:45,admin,admin
503199,6359,125120,13662,0,N,N,N,CP_Drtn,TT_Task,DT_FixedDUR2,TK_NotStart,DUKHCONP2AZ1MSEX5020,Construction Entrance Ramp,8164,240,0,160,0,363.25,363.25,160,0,0,0,,,,2013-10-28 08:00,2013-11-19 17:00,,2013-09-21 08:00,2013-10-13 17:00,2013-09-21 08:00,2013-10-13 17:00,2013-09-21 08:00,2013-10-13 17:00,2013-10-28 08:00,2013-11-19 17:00,,PT_Normal,,,,,bBMxTBeXTuGX8loJBOBJ3Q,,,,N,0,0,,,2013-02-16 15:54,2013-02-16 15:56,admin,admin
503200,6359,125120,13662,0,N,N,N,CP_Drtn,TT_Task,DT_FixedDUR2,TK_NotStart,DUKHCONP2AZ1MSEX5025,SS.Handrails and Balustrades,8178,280,0,160,0,112.75,112.75,160,0,0,0,,,,2013-11-20 08:00,2013-12-12 17:00,,2013-10-08 08:00,2013-11-02 17:00,2013-10-08 08:00,2013-11-02 17:00,2013-10-08 08:00,2013-11-02 17:00,2013-11-20 08:00,2013-12-12 17:00,,PT_Normal,,,,,FE84Rl+ISP64I7dCC9fIJg,,,,N,0,0,,,2013-02-16 15:54,2013-02-16 15:56,admin,admin
503201,6359,125120,13662,0,N,N,N,CP_Drtn,TT_Task,DT_FixedDUR2,TK_NotStart,DUKHCONP2AZ1MSEX5015,Construction of grease Trap,8178,336,0,160,0,139.75,139.75,160,0,0,0,,,,2013-12-24 08:00,2014-01-15 17:00,,2013-11-04 08:00,2013-11-26 17:00,2013-11-04 08:00,2013-11-26 17:00,2013-11-04 08:00,2013-11-26 17:00,2013-12-24 08:00,2014-01-15 17:00,,PT_Normal,,,,,kSvPE+qETGmTp/Ben2AJiQ,,,,N,0,0,,,2013-02-16 15:54,2013-02-16 15:56,admin,admin
503202,6359,125120,13662,0,N,N,N,CP_Drtn,TT_Task,DT_FixedDUR2,TK_NotStart,DUKHCONP2AZ1MSEX5005,"Construction  of Soak pit, Chambers",8172,336,0,200,0,55,55,200,0,0,0,,,,2013-12-03 08:00,2014-01-01 17:00,,2013-10-13 08:00,2013-11-12 17:00,2013-10-13 08:00,2013-11-12 17:00,2013-10-13 08:00,2013-11-12 17:00,2013-12-03 08:00,2014-01-01 17:00,,PT_Normal,,,,,NC/vulh/RE+TIRsES+FWzg,,,,N,0,0,,,2013-02-16 15:54,2013-02-16 15:56,admin,admin
503203,6359,125120,13662,0,N,N,N,CP_Drtn,TT_Task,DT_FixedDUR2,TK_NotStart,DUKHCONP2AZ1MSEX5055,Installation Steel Door,8178,280,0,160,0,180,180,160,0,0,0,,,,2013-11-09 08:00,2013-12-01 17:00,,2013-09-26 08:00,2013-10-21 17:00,2013-09-26 08:00,2013-10-21 17:00,2013-09-26 08:00,2013-10-21 17:00,2013-11-09 08:00,2013-12-01 17:00,,PT_Normal,,,,,AXTOFpFCS1a+OVpYL6L/sA,,,,N,0,0,,,2013-02-16 15:54,2013-02-16 15:56,admin,admin
503204,6359,125120,13662,0,N,N,N,CP_Drtn,TT_Task,DT_FixedDUR2,TK_NotStart,DUKHCONP2AZ1MSEX5010,Telephone cable laying,8177,480,72,200,0,500,500,200,0,0,0,,,,2014-02-06 08:00,2014-03-08 17:00,,2013-11-27 08:00,2013-12-26 17:00,2013-11-27 08:00,2013-12-26 17:00,2013-11-27 08:00,2013-12-26 17:00,2014-02-06 08:00,2014-03-08 17:00,,PT_Normal,,,,,1NsWiWwoTYO2sxrjED/B2w,,,,N,0,0,,,2013-02-16 15:54,2013-02-16 15:56,admin,admin
503205,6359,125120,13662,0,N,N,N,CP_Drtn,TT_Task,DT_FixedDUR2,TK_NotStart,DUKHCONP2AZ1MSEX5000,Construction of Manholes,8172,336,0,200,0,110,110,200,0,0,0,,,,2013-11-19 08:00,2013-12-17 17:00,,2013-09-29 08:00,2013-10-29 17:00,2013-09-29 08:00,2013-10-29 17:00,2013-09-29 08:00,2013-10-29 17:00,2013-11-19 08:00,2013-12-17 17:00,,PT_Normal,,,,,woNND/0dSKa85hbw9sV+Fg,,,,N,0,0,,,2013-02-16 15:54,2013-02-16 15:56,admin,admin
503206,6359,125121,13662,0,N,N,N,CP_Drtn,TT_Task,DT_FixedDUR2,TK_NotStart,DUKHCONP2AZ1SLEX5105,Laying of Grass/ green area,8178,168,0,160,0,1785,1785,160,0,0,0,,,,2014-01-07 08:00,2014-01-29 17:00,,2013-12-12 08:00,2014-01-05 17:00,2013-12-12 08:00,2014-01-05 17:00,2013-12-12 08:00,2014-01-05 17:00,2014-01-07 08:00,2014-01-29 17:00,,PT_Normal,,,,,KvML0d+4S66R57PA0cTQaQ,,,,N,0,0,,,2013-02-16 15:54,2013-02-16 15:56,admin,admin
503207,6359,125121,13662,0,N,N,N,CP_Drtn,TT_Task,DT_FixedDUR2,TK_NotStart,DUKHCONP2AZ1SLEX5110,Laying of Palm tree,8178,488,0,160,0,455,455,160,0,0,0,,,,2014-03-08 08:00,2014-03-30 17:00,,2013-12-25 08:00,2014-01-16 17:00,2013-12-25 08:00,2014-01-16 17:00,2013-12-25 08:00,2014-01-16 17:00,2014-03-08 08:00,2014-03-30 17:00,,PT_Normal,,,,,ScszIDXSTN2c3PASCKWjBw,,,,N,0,0,,,2013-02-16 15:54,2013-02-16 15:56,admin,admin
503208,6359,125122,13662,0,N,N,N,CP_Drtn,TT_Task,DT_FixedDUR2,TK_NotStart,DUKHCONP2AZ1WEEX5030,Excavation,8177,120,0,160,0,110,110,160,80,0,80,,,,2013-10-12 08:00,2013-11-05 17:00,,2013-09-24 08:00,2013-10-16 17:00,2013-09-24 08:00,2013-10-16 17:00,2013-09-24 08:00,2013-10-16 17:00,2013-10-12 08:00,2013-11-05 17:00,,PT_Normal,,,,,22+oT0Y9RgKq0MFS1byiqw,,,,N,0,0,,,2013-02-16 15:54,2013-02-16 15:56,admin,admin
503209,6359,125122,13662,0,N,N,N,CP_Drtn,TT_Task,DT_FixedDUR2,TK_NotStart,DUKHCONP2AZ1WEEX5035,Construction of Raft,8167,200,0,200,0,175,175,200,0,0,0,,,,2013-11-03 08:00,2013-12-01 17:00,,2013-10-02 08:00,2013-11-02 17:00,2013-10-02 08:00,2013-11-02 17:00,2013-10-02 08:00,2013-11-02 17:00,2013-11-03 08:00,2013-12-01 17:00,,PT_Normal,,,,,OgDBqtiLSsaRr9jcFaghBQ,,,,N,0,0,,,2013-02-16 15:54,2013-02-16 15:56,admin,admin
503210,6359,125122,13662,0,N,N,N,CP_Drtn,TT_Task,DT_FixedDUR2,TK_NotStart,DUKHCONP2AZ1WEEX5040,Block works & Plastering,8168,200,0,200,0,577,577,200,0,0,0,,,,2013-11-12 08:00,2013-12-10 17:00,,2013-10-12 08:00,2013-11-11 17:00,2013-10-12 08:00,2013-11-11 17:00,2013-10-12 08:00,2013-11-11 17:00,2013-11-12 08:00,2013-12-10 17:00,,PT_Normal,,,,,X5YtncoXQK2G78VXo+lZAg,,,,N,0,0,,,2013-02-16 15:54,2013-02-16 15:56,admin,admin
503211,6359,125122,13662,0,N,N,N,CP_Drtn,TT_Task,DT_FixedDUR2,TK_NotStart,DUKHCONP2AZ1WEEX5050,Installation of Steel Gate,8178,200,0,160,0,125,125,160,0,0,0,,,,2013-12-11 08:00,2014-01-04 17:00,,2013-11-12 08:00,2013-12-04 17:00,2013-11-12 08:00,2013-12-04 17:00,2013-11-12 08:00,2013-12-04 17:00,2013-12-11 08:00,2014-01-04 17:00,,PT_Normal,,,,,famvELzSQdKzu47+q7CVyw,,,,N,0,0,,,2013-02-16 15:54,2013-02-16 15:56,admin,admin
503212,6359,125122,13662,0,N,N,N,CP_Drtn,TT_Task,DT_FixedDUR2,TK_NotStart,DUKHCONP2AZ1WEEX5060,Structural steel &  SS Shed cover installation,8178,200,120,200,0,445.25,445.25,200,0,0,0,,,,2013-12-17 08:00,2014-01-15 17:00,,2013-11-18 08:00,2013-12-16 17:00,2013-11-18 08:00,2013-12-16 17:00,2013-11-18 08:00,2013-12-16 17:00,2013-12-17 08:00,2014-01-15 17:00,,PT_Normal,,,,,IrI2qCz1RJOLF6RSAwupBw,,,,N,0,0,,,2013-02-16 15:54,2013-02-16 15:56,admin,admin
503213,6359,125122,13662,0,N,N,N,CP_Drtn,TT_Task,DT_FixedDUR2,TK_NotStart,DUKHCONP2AZ1WEEX5065,"Install. of Water Tank,Chiller,Pump & Meter",8178,80,0,200,0,239,239,200,0,0,0,,,,2013-12-30 08:00,2014-01-27 17:00,,2013-12-17 08:00,2014-01-15 17:00,2013-12-17 08:00,2014-01-15 17:00,2013-12-17 08:00,2014-01-15 17:00,2013-12-30 08:00,2014-01-27 17:00,,PT_Normal,,,,,XIgGErlHS+6EPwy6o8fVzw,,,,N,0,0,,,2013-02-16 15:54,2013-02-16 15:56,admin,admin
503214,6359,125122,13662,0,N,N,N,CP_Drtn,TT_Task,DT_FixedDUR2,TK_NotStart,DUKHCONP2AZ1WEEX5070,Installation ladder for water Tank,8178,160,40,160,0,200,200,160,0,0,0,,,,2014-01-19 08:00,2014-02-10 17:00,,2013-12-26 08:00,2014-01-18 17:00,2013-12-26 08:00,2014-01-18 17:00,2013-12-26 08:00,2014-01-18 17:00,2014-01-19 08:00,2014-02-10 17:00,,PT_Normal,,,,,usVKajLTSEuyyxdRiOdOPA,,,,N,0,0,,,2013-02-16 15:54,2013-02-16 15:56,admin,admin
503215,6359,125122,13662,0,N,N,N,CP_Drtn,TT_Task,DT_FixedDUR2,TK_NotStart,DUKHCONP2AZ1WEEX5045,Flooring & Painting,8164,200,0,200,0,280.25,280.25,200,0,0,0,,,,2013-11-24 08:00,2013-12-23 17:00,,2013-10-26 08:00,2013-11-23 17:00,2013-10-26 08:00,2013-11-23 17:00,2013-10-26 08:00,2013-11-23 17:00,2013-11-24 08:00,2013-12-23 17:00,,PT_Normal,,,,,60xPq/h1SZi6ZeqZjnhL/Q,,,,N,0,0,,,2013-02-16 15:54,2013-02-16 15:56,admin,admin
503216,6359,125123,13662,0,N,N,N,CP_Drtn,TT_Task,DT_FixedDUR2,TK_NotStart,DUKHCONP2AZ1HDEX5090,kerb works,8173,280,0,160,0,196.75,196.75,160,0,0,0,,,,2013-11-28 08:00,2013-12-22 17:00,,2013-10-16 08:00,2013-11-10 17:00,2013-10-16 08:00,2013-11-10 17:00,2013-10-16 08:00,2013-11-10 17:00,2013-11-28 08:00,2013-12-22 17:00,,PT_Normal,,,,,p4F5DrBBT1ipOqP7nWkkvw,,,,N,0,0,,,2013-02-16 15:54,2013-02-16 15:56,admin,admin
503217,6359,125123,13662,0,N,N,N,CP_Drtn,TT_Task,DT_FixedDUR2,TK_NotStart,DUKHCONP2AZ1HDEX5095,Cobble Stone Works,8170,280,0,160,0,71.75,71.75,160,0,0,0,,,,2013-12-10 08:00,2014-01-02 17:00,,2013-10-30 08:00,2013-11-21 17:00,2013-10-30 08:00,2013-11-21 17:00,2013-10-30 08:00,2013-11-21 17:00,2013-12-10 08:00,2014-01-02 17:00,,PT_Normal,,,,,fRLu0NptSo6iS376wUJu3A,,,,N,0,0,,,2013-02-16 15:54,2013-02-16 15:56,admin,admin
503218,6359,125123,13662,0,N,N,N,CP_Drtn,TT_Task,DT_FixedDUR2,TK_NotStart,DUKHCONP2AZ1HDEX5100,Interlock works,8174,280,112,160,0,249.75,249.75,160,0,0,0,,,,2013-12-26 08:00,2014-01-18 17:00,,2013-11-14 08:00,2013-12-07 17:00,2013-11-14 08:00,2013-12-07 17:00,2013-11-14 08:00,2013-12-07 17:00,2013-12-26 08:00,2014-01-18 17:00,,PT_Normal,,,,,m7a17atASlWBRZurjpNoNQ,,,,N,0,0,,,2013-02-16 15:54,2013-02-16 15:56,admin,admin
503219,6359,125126,13662,0,N,N,N,CP_Drtn,TT_Task,DT_FixedDUR2,TK_NotStart,DUKHCONP2AZ1ACGF4600,Installation AC Pipes,8178,224,0,160,0,463.75,463.75,160,0,0,0,,,,2013-11-06 08:00,2013-11-28 17:00,,2013-10-02 08:00,2013-10-27 17:00,2013-10-02 08:00,2013-10-27 17:00,2013-10-02 08:00,2013-10-27 17:00,2013-11-06 08:00,2013-11-28 17:00,,PT_Normal,,,,,lFtV+0PSRICqgK3uPsyUsA,,,,N,0,0,,,2013-02-16 15:54,2013-02-16 15:56,admin,admin
503220,6359,125126,13662,0,N,N,N,CP_Drtn,TT_Task,DT_FixedDUR2,TK_NotStart,DUKHCONP2AZ1ACGF4605,Fixing of Ventilation Equipments,8178,272,0,200,0,71,71,200,0,0,0,,,,2014-02-13 08:00,2014-03-13 17:00,,2014-01-04 08:00,2014-02-01 17:00,2014-01-04 08:00,2014-02-01 17:00,2014-01-04 08:00,2014-02-01 17:00,2014-02-13 08:00,2014-03-13 17:00,,PT_Normal,,,,,ftbviXZ+SAe35FckroVMuA,,,,N,0,0,,,2013-02-16 15:54,2013-02-16 15:56,admin,admin
503221,6359,125126,13662,0,N,N,N,CP_Drtn,TT_Task,DT_FixedDUR2,TK_NotStart,DUKHCONP2AZ1ACGF4610,Fixing of Split AC,8178,272,0,160,0,129,129,160,0,0,0,,,,2014-03-08 08:00,2014-03-30 17:00,,2014-01-26 08:00,2014-02-18 17:00,2014-01-26 08:00,2014-02-18 17:00,2014-01-26 08:00,2014-02-18 17:00,2014-03-08 08:00,2014-03-30 17:00,,PT_Normal,,,,,0uv8jVqcTq+0Lb1Jwc2sjw,,,,N,0,0,,,2013-02-16 15:54,2013-02-16 15:56,admin,admin
503222,6359,125127,13662,0,N,N,N,CP_Drtn,TT_Task,DT_FixedDUR2,TK_NotStart,DUKHCONP2AZ1ACRF4630,Installation of Refrigerant Pipes,8178,528,48,160,0,15.05,15.05,160,0,0,0,,,,2014-01-07 08:00,2014-01-29 17:00,,2013-10-21 08:00,2013-11-12 17:00,2013-10-21 08:00,2013-11-12 17:00,2013-10-21 08:00,2013-11-12 17:00,2014-01-07 08:00,2014-01-29 17:00,,PT_Normal,,,,,Sclw8b9XQ+C3dOIu0RsxPg,,,,N,0,0,,,2013-02-16 15:54,2013-02-16 15:56,admin,admin
503223,6359,125127,13662,0,N,N,N,CP_Drtn,TT_Task,DT_FixedDUR2,TK_NotStart,DUKHCONP2AZ1ACRF4635,Installation of Condensing Unit,8178,312,0,200,0,108.75,108.75,200,0,0,0,,,,2014-03-19 08:00,2014-04-16 17:00,,2014-02-01 08:00,2014-03-02 17:00,2014-02-01 08:00,2014-03-02 17:00,2014-02-01 08:00,2014-03-02 17:00,2014-03-19 08:00,2014-04-16 17:00,,PT_Normal,,,,,Ji/j6U7wSFqtJVEAW3yyeg,,,,N,0,0,,,2013-02-16 15:54,2013-02-16 15:56,admin,admin
503224,6359,125129,13662,0,N,N,N,CP_Drtn,TT_Task,DT_FixedDUR2,TK_NotStart,DUKHCONP2AZ1ELRF4070,Installation of Isolator,8178,384,0,144,0,301,301,144,0,0,0,,,,2014-03-19 08:00,2014-04-08 17:00,,2014-01-21 08:00,2014-02-10 17:00,2014-01-21 08:00,2014-02-10 17:00,2014-01-21 08:00,2014-02-10 17:00,2014-03-19 08:00,2014-04-08 17:00,,PT_Normal,,,,,3Ugs88zXStCLj6K0tvvaRQ,,,,N,0,0,,,2013-02-16 15:54,2013-02-16 15:56,admin,admin
503225,6359,125129,13662,0,N,N,N,CP_Drtn,TT_Task,DT_FixedDUR2,TK_NotStart,DUKHCONP2AZ1ELRF4075,Installation of TV Dish Antenna,8178,384,0,160,0,157,157,160,0,0,0,,,,2014-03-31 08:00,2014-04-22 17:00,,2014-02-02 08:00,2014-02-25 17:00,2014-02-02 08:00,2014-02-25 17:00,2014-02-02 08:00,2014-02-25 17:00,2014-03-31 08:00,2014-04-22 17:00,,PT_Normal,,,,,Ke5gB0bUS1G2I5P7l/AbjA,,,,N,0,0,,,2013-02-16 15:54,2013-02-16 15:56,admin,admin
503226,6359,125130,13662,0,N,N,N,CP_Drtn,TT_Task,DT_FixedDUR2,TK_NotStart,DUKHCONP2AZ1ELGF4000,Fixing of wall conduits & switch socket boxes,8178,56,0,160,0,494.95,494.95,160,0,0,0,,,,2013-09-19 08:00,2013-10-12 17:00,,2013-09-11 08:00,2013-10-03 17:00,2013-09-11 08:00,2013-10-03 17:00,2013-09-11 08:00,2013-10-03 17:00,2013-09-19 08:00,2013-10-12 17:00,,PT_Normal,,,,,fUMeuUY/RhqeZF+IxuX8og,,,,N,0,0,,,2013-02-16 15:54,2013-02-16 15:56,admin,admin
503227,6359,125130,13662,0,N,N,N,CP_Drtn,TT_Task,DT_FixedDUR2,TK_NotStart,DUKHCONP2AZ1ELGF4005,Cable tray & trunking installation,8178,104,0,160,0,1704,1704,160,0,0,0,,,,2013-10-05 08:00,2013-10-29 17:00,,2013-09-19 08:00,2013-10-12 17:00,2013-09-19 08:00,2013-10-12 17:00,2013-09-19 08:00,2013-10-12 17:00,2013-10-05 08:00,2013-10-29 17:00,,PT_Normal,,,,,erAt+7zGSIiJLKRZ/ZW3Yw,,,,N,0,0,,,2013-02-16 15:54,2013-02-16 15:56,admin,admin
503228,6359,125130,13662,0,N,N,N,CP_Drtn,TT_Task,DT_FixedDUR2,TK_NotStart,DUKHCONP2AZ1ELGF4010,Installation of wiring & Main Cabling,8178,328,272,160,0,345.2,345.2,160,0,0,0,,,,2013-11-17 08:00,2013-12-09 17:00,,2013-09-28 08:00,2013-10-22 17:00,2013-09-28 08:00,2013-10-22 17:00,2013-09-28 08:00,2013-10-22 17:00,2013-11-17 08:00,2013-12-09 17:00,,PT_Normal,,,,,SyNlqynBTIiHWMMYZ2YxHQ,,,,N,0,0,,,2013-02-16 15:54,2013-02-16 15:56,admin,admin
503229,6359,125130,13662,0,N,N,N,CP_Drtn,TT_Task,DT_FixedDUR2,TK_NotStart,DUKHCONP2AZ1ELGF4020,"Installation  of DBS,MCCB Accessories.",8178,384,0,160,0,142,142,160,0,0,0,,,,2014-02-22 08:00,2014-03-16 17:00,,2013-12-26 08:00,2014-01-18 17:00,2013-12-26 08:00,2014-01-18 17:00,2013-12-26 08:00,2014-01-18 17:00,2014-02-22 08:00,2014-03-16 17:00,,PT_Normal,,,,,/BPRhDvTR5qfZ6vaZ3aPwA,,,,N,0,0,,,2013-02-16 15:54,2013-02-16 15:56,admin,admin
503230,6359,125130,13662,0,N,N,N,CP_Drtn,TT_Task,DT_FixedDUR2,TK_NotStart,DUKHCONP2AZ1ELGF4025,Installation of Lighting fixtures & Accessories,8178,384,0,160,0,328.95,328.95,160,0,0,0,,,,2014-03-05 08:00,2014-03-27 17:00,,2014-01-07 08:00,2014-01-29 17:00,2014-01-07 08:00,2014-01-29 17:00,2014-01-07 08:00,2014-01-29 17:00,2014-03-05 08:00,2014-03-27 17:00,,PT_Normal,,,,,XqA95MLAS/2eIFtAb5U7fg,,,,N,0,0,,,2013-02-16 15:54,2013-02-23 09:03,admin,admin
503231,6359,125130,13662,0,N,N,N,CP_Drtn,TT_Task,DT_FixedDUR2,TK_NotStart,DUKHCONP2AZ1ELGF4015,Install. of CAMS & Fire Fighting Accessories,8178,104,0,160,0,924,924,160,0,0,0,,,,2014-01-19 08:00,2014-02-10 17:00,,2014-01-04 08:00,2014-01-26 17:00,2014-01-04 08:00,2014-01-26 17:00,2014-01-04 08:00,2014-01-26 17:00,2014-01-19 08:00,2014-02-10 17:00,,PT_Normal,,,,,ruNjfSJaTzqxCA+Ysu5s5A,,,,N,0,0,,,2013-02-16 15:54,2013-02-16 15:56,admin,admin
503232,6359,125130,13662,0,N,N,N,CP_Drtn,TT_Task,DT_FixedDUR2,TK_NotStart,DUKHCONP2AZ1ELGF4030,Installation of Telephone System,8178,408,0,160,0,127,127,160,0,0,0,,,,2014-03-09 08:00,2014-03-31 17:00,,2014-01-07 08:00,2014-01-29 17:00,2014-01-07 08:00,2014-01-29 17:00,2014-01-07 08:00,2014-01-29 17:00,2014-03-09 08:00,2014-03-31 17:00,,PT_Normal,,,,,ZKCAaJLCTYafgP/DNYKODg,,,,N,0,0,,,2013-02-16 15:54,2013-02-16 15:56,admin,admin
503233,6359,125132,13662,0,N,N,N,CP_Drtn,TT_Task,DT_FixedDUR2,TK_NotStart,DUKHCONP2AZ1PLGF4305,Installation of Plumbing pipes & testing,8178,48,0,160,0,1195.8,1195.8,160,0,0,0,,,,2013-09-19 08:00,2013-10-12 17:00,,2013-09-12 08:00,2013-10-05 17:00,2013-09-12 08:00,2013-10-05 17:00,2013-09-12 08:00,2013-10-05 17:00,2013-09-19 08:00,2013-10-12 17:00,,PT_Normal,,,,,ljUsuWTNS3mU8bxmm+2xSw,,,,N,0,0,,,2013-02-16 15:54,2013-02-23 09:03,admin,admin
503234,6359,125132,13662,0,N,N,N,CP_Drtn,TT_Task,DT_FixedDUR2,TK_NotStart,DUKHCONP2AZ1PLGF4310,Installation of Drainage pipes &testing,8178,240,0,144,0,59.55,59.55,144,0,0,0,,,,2013-10-22 08:00,2013-11-11 17:00,,2013-09-15 08:00,2013-10-05 17:00,2013-09-15 08:00,2013-10-05 17:00,2013-09-15 08:00,2013-10-05 17:00,2013-10-22 08:00,2013-11-11 17:00,,PT_Normal,,,,,Pfx9RsAbQka4Owe3DHMr3A,,,,N,0,0,,,2013-02-16 15:54,2013-02-16 15:56,admin,admin
503235,6359,125132,13662,0,N,N,N,CP_Drtn,TT_Task,DT_FixedDUR2,TK_NotStart,DUKHCONP2AZ1PLGF4315,Sanitary Fittings & Accessories,8178,56,0,160,0,182.7,182.7,160,0,0,0,,,,2014-01-13 08:00,2014-02-04 17:00,,2014-01-05 08:00,2014-01-27 17:00,2014-01-05 08:00,2014-01-27 17:00,2014-01-05 08:00,2014-01-27 17:00,2014-01-13 08:00,2014-02-04 17:00,,PT_Normal,,,,,8Bsg1Y9GR7SHZBlllvzAyg,,,,N,0,0,,,2013-02-16 15:54,2013-02-23 09:03,admin,admin
503236,6359,125132,13662,0,N,N,N,CP_Drtn,TT_Task,DT_FixedDUR2,TK_NotStart,DUKHCONP2AZ1PLGF4320,Installation of Water Heater,8178,496,0,120,0,126,126,120,0,0,0,,,,2014-04-12 08:00,2014-04-28 17:00,,2014-01-28 08:00,2014-02-15 17:00,2014-01-28 08:00,2014-02-15 17:00,2014-01-28 08:00,2014-02-15 17:00,2014-04-12 08:00,2014-04-28 17:00,,PT_Normal,,,,,mEP/UDLvRTOvQZjkE0x+yQ,,,,N,0,0,,,2013-02-16 15:54,2013-02-16 15:56,admin,admin
503237,6359,125132,13662,0,N,N,N,CP_Drtn,TT_Task,DT_FixedDUR2,TK_NotStart,DUKHCONP2AZ1PLUG4300,Drainage / Storm Pipes in Grade Slab,8178,0,0,160,0,182.4,182.4,160,0,0,0,,,,2013-05-23 08:00,2013-06-15 17:00,,2013-05-23 08:00,2013-06-15 17:00,2013-05-23 08:00,2013-06-15 17:00,2013-05-23 08:00,2013-06-15 17:00,2013-05-23 08:00,2013-06-15 17:00,,PT_Normal,,,,,JkQKFW48SkOPoNagRxdr/w,,,,N,0,0,,,2013-02-16 15:54,2013-02-16 15:56,admin,admin
503238,6359,125133,13662,0,N,N,N,CP_Drtn,TT_Task,DT_FixedDUR2,TK_NotStart,DUKHCONP2AZ1PLRF4350,Installation of Rain water Pipes,8178,120,0,120,0,221.7,221.7,120,0,0,0,,,,2013-12-24 08:00,2014-01-09 17:00,,2013-12-05 08:00,2013-12-23 17:00,2013-12-05 08:00,2013-12-23 17:00,2013-12-05 08:00,2013-12-23 17:00,2013-12-24 08:00,2014-01-09 17:00,,PT_Normal,,,,,hI6hvq2tT861UWIYmMIVVg,,,,N,0,0,,,2013-02-16 15:54,2013-02-16 15:56,admin,admin
503239,6359,125134,13662,0,N,N,N,CP_Drtn,TT_Task,DT_FixedDUR2,TK_NotStart,DUKHCONP2AZ1ACTC8000,Pre-Commissioning & Testing of AC Works,8178,472,472,200,0,1500,1500,200,0,0,0,,,,2014-05-17 08:00,2014-06-14 17:00,,2014-03-09 08:00,2014-04-06 17:00,2014-03-09 08:00,2014-04-06 17:00,2014-03-09 08:00,2014-04-06 17:00,2014-05-17 08:00,2014-06-14 17:00,,PT_Normal,,,,,0ieLHMBFR4ulBCP7GL6htQ,,,,N,0,0,,,2013-02-16 15:54,2013-02-16 16:35,admin,admin
503240,6359,125134,13662,0,N,N,N,CP_Drtn,TT_Task,DT_FixedDUR2,TK_NotStart,DUKHCONP2AZ1ELTC8010,Pre-Commissioning & Testing of Electrical Works,8178,472,472,200,0,3000,3000,200,0,0,0,,,,2014-05-17 08:00,2014-06-14 17:00,,2014-03-09 08:00,2014-04-06 17:00,2014-03-09 08:00,2014-04-06 17:00,2014-03-09 08:00,2014-04-06 17:00,2014-05-17 08:00,2014-06-14 17:00,,PT_Normal,,,,,rlYiK9sZRque0l9er9qAdg,,,,N,0,0,,,2013-02-16 15:54,2013-02-16 16:35,admin,admin
503241,6359,125134,13662,0,N,N,N,CP_Drtn,TT_Task,DT_FixedDUR2,TK_NotStart,DUKHCONP2AZ1PLTC8005,Pre-Commissioning & Testing of Plumbing Works,8178,472,472,200,0,3000,3000,200,0,0,0,,,,2014-05-17 08:00,2014-06-14 17:00,,2014-03-09 08:00,2014-04-06 17:00,2014-03-09 08:00,2014-04-06 17:00,2014-03-09 08:00,2014-04-06 17:00,2014-05-17 08:00,2014-06-14 17:00,,PT_Normal,,,,,hxgIh8HdSYC5k6dneaaFpQ,,,,N,0,0,,,2013-02-16 15:54,2013-02-16 16:35,admin,admin
503242,6359,125137,13662,0,N,N,N,CP_Drtn,TT_Task,DT_FixedDUR2,TK_NotStart,DUKHCONP2AZ1ARGF3045,Fixing of Suspension systems,8178,56,0,120,0,543.75,543.75,120,0,0,0,,,,2013-12-09 08:00,2013-12-26 17:00,,2013-12-01 08:00,2013-12-17 17:00,2013-12-01 08:00,2013-12-17 17:00,2013-12-01 08:00,2013-12-17 17:00,2013-12-09 08:00,2013-12-26 17:00,,PT_Normal,,,,,4kg43StqSmOFTd2mAc/Log,,,,N,0,0,,,2013-02-16 15:54,2013-02-16 15:56,admin,admin
503243,6359,125137,13662,0,N,N,N,CP_Drtn,TT_Task,DT_FixedDUR2,TK_NotStart,DUKHCONP2AZ1ARGF3060,Gypsum board false ceiling,8178,56,0,160,0,543.75,543.75,160,0,0,0,,,,2013-12-26 08:00,2014-01-18 17:00,,2013-12-17 08:00,2014-01-09 17:00,2013-12-17 08:00,2014-01-09 17:00,2013-12-17 08:00,2014-01-09 17:00,2013-12-26 08:00,2014-01-18 17:00,,PT_Normal,,,,,rcmVlDH/RZmtdzZTvnLDRw,,,,N,0,0,,,2013-02-16 15:54,2013-02-16 15:56,admin,admin
503244,6359,125137,13662,0,N,N,N,CP_Drtn,TT_Task,DT_FixedDUR2,TK_NotStart,DUKHCONP2AZ1ARGF3065,Wooden door,8178,56,0,120,0,165,165,120,0,0,0,,,,2014-01-07 08:00,2014-01-23 17:00,,2013-12-30 08:00,2014-01-15 17:00,2013-12-30 08:00,2014-01-15 17:00,2013-12-30 08:00,2014-01-15 17:00,2014-01-07 08:00,2014-01-23 17:00,,PT_Normal,,,,,ilJC+b8MT5qx+6r/TuJIXA,,,,N,0,0,,,2013-02-16 15:54,2013-02-16 15:56,admin,admin
503245,6359,125137,13662,0,N,N,N,CP_Drtn,TT_Task,DT_FixedDUR2,TK_NotStart,DUKHCONP2AZ1ARGF3080,Aluminum windows,8178,352,16,144,0,110,110,144,0,0,0,,,,2014-03-10 08:00,2014-03-30 17:00,,2014-01-16 08:00,2014-02-05 17:00,2014-01-16 08:00,2014-02-05 17:00,2014-01-16 08:00,2014-02-05 17:00,2014-03-10 08:00,2014-03-30 17:00,,PT_Normal,,,,,pBbSBZ1TStaCw0YAP+leTA,,,,N,0,0,,,2013-02-16 15:54,2013-02-16 15:56,admin,admin
503246,6359,125137,13662,0,N,N,N,CP_Drtn,TT_Task,DT_FixedDUR2,TK_NotStart,DUKHCONP2AZ1ARGF3075,Carpentry & Joinery Works,8178,80,0,144,0,440,440,144,0,0,0,,,,2014-01-16 08:00,2014-02-05 17:00,,2014-01-05 08:00,2014-01-25 17:00,2014-01-05 08:00,2014-01-25 17:00,2014-01-05 08:00,2014-01-25 17:00,2014-01-16 08:00,2014-02-05 17:00,,PT_Normal,,,,,YiCfvQexQSaLpiSqsiXDBg,,,,N,0,0,,,2013-02-16 15:54,2013-02-16 15:56,admin,admin
503247,6359,125137,13662,0,N,N,N,CP_Drtn,TT_Task,DT_FixedDUR2,TK_NotStart,DUKHCONP2AZ1ARGF3090,Installation of Granite Counter Top,8171,104,40,120,0,82.5,82.5,120,0,0,0,,,,2014-01-30 08:00,2014-02-17 17:00,,2014-01-15 08:00,2014-02-01 17:00,2014-01-15 08:00,2014-02-01 17:00,2014-01-15 08:00,2014-02-01 17:00,2014-01-30 08:00,2014-02-17 17:00,,PT_Normal,,,,,yM/zvpkOTZSX9QPt5neVLQ,,,,N,0,0,,,2013-02-16 15:54,2013-02-16 15:56,admin,admin
503248,6359,125137,13662,0,N,N,N,CP_Drtn,TT_Task,DT_FixedDUR2,TK_NotStart,DUKHCONP2AZ1ARGF3095,Final Painting,8178,272,0,200,0,1501.5,1501.5,200,0,0,0,,,,2014-03-19 08:00,2014-04-16 17:00,,2014-02-06 08:00,2014-03-08 17:00,2014-02-06 08:00,2014-03-08 17:00,2014-02-06 08:00,2014-03-08 17:00,2014-03-19 08:00,2014-04-16 17:00,,PT_Normal,,,,,poPc71djSkGekzR3vmj/Gg,,,,N,0,0,,,2013-02-16 15:54,2013-02-16 15:56,admin,admin
503249,6359,125137,13662,0,N,N,N,CP_Drtn,TT_Task,DT_FixedDUR2,TK_NotStart,DUKHCONP2AZ1ARGF3000,Block work,8168,48,0,200,0,4750,4750,200,0,0,0,,,,2013-09-04 08:00,2013-10-02 17:00,,2013-08-28 08:00,2013-09-25 17:00,2013-08-28 08:00,2013-09-25 17:00,2013-08-28 08:00,2013-09-25 17:00,2013-09-04 08:00,2013-10-02 17:00,,PT_Normal,,,,,wZqifH4qTay8d286EBXJEg,,,,N,0,0,,,2013-02-16 15:54,2013-02-16 15:56,admin,admin
503250,6359,125137,13662,0,N,N,N,CP_Drtn,TT_Task,DT_FixedDUR2,TK_NotStart,DUKHCONP2AZ1ARGF3005,Plastering work,8169,48,0,200,0,2375,2375,200,0,0,0,,,,2013-09-25 08:00,2013-10-26 17:00,,2013-09-18 08:00,2013-10-16 17:00,2013-09-18 08:00,2013-10-16 17:00,2013-09-18 08:00,2013-10-16 17:00,2013-09-25 08:00,2013-10-26 17:00,,PT_Normal,,,,,eJdL+44YTVeCUya320EAwg,,,,N,0,0,,,2013-02-16 15:54,2013-02-16 15:56,admin,admin
503251,6359,125137,13662,0,N,N,N,CP_Drtn,TT_Task,DT_FixedDUR2,TK_NotStart,DUKHCONP2AZ1ARGF3010,Flooring screed,8164,200,0,160,0,528,528,160,0,0,0,,,,2013-10-31 08:00,2013-11-23 17:00,,2013-09-30 08:00,2013-10-24 17:00,2013-09-30 08:00,2013-10-24 17:00,2013-09-30 08:00,2013-10-24 17:00,2013-10-31 08:00,2013-11-23 17:00,,PT_Normal,,,,,EVpLyObYTeS58sspStRR+g,,,,N,0,0,,,2013-02-16 15:54,2013-02-16 15:56,admin,admin
503252,6359,125137,13662,0,N,N,N,CP_Drtn,TT_Task,DT_FixedDUR2,TK_NotStart,DUKHCONP2AZ1ARGF3015,Wet area waterproofing & Protection Screed,8178,56,0,160,0,71.5,71.5,160,0,0,0,,,,2013-10-10 08:00,2013-11-04 17:00,,2013-10-02 08:00,2013-10-27 17:00,2013-10-02 08:00,2013-10-27 17:00,2013-10-02 08:00,2013-10-27 17:00,2013-10-10 08:00,2013-11-04 17:00,,PT_Normal,,,,,zSfl/1LeRlC2Hv3rdwLKGQ,,,,N,0,0,,,2013-02-16 15:54,2013-02-16 15:56,admin,admin
503253,6359,125137,13662,0,N,N,N,CP_Drtn,TT_Task,DT_FixedDUR2,TK_NotStart,DUKHCONP2AZ1ARGF3030,Paint First coat,8178,48,0,160,0,1501.5,1501.5,160,0,0,0,,,,2013-10-13 08:00,2013-11-06 17:00,,2013-10-06 08:00,2013-10-30 17:00,2013-10-06 08:00,2013-10-30 17:00,2013-10-06 08:00,2013-10-30 17:00,2013-10-13 08:00,2013-11-06 17:00,,PT_Normal,,,,,5TAVl4MrQVKnw37HWnyG5Q,,,,N,0,0,,,2013-02-16 15:54,2013-02-16 15:56,admin,admin
503254,6359,125137,13662,0,N,N,N,CP_Drtn,TT_Task,DT_FixedDUR2,TK_NotStart,DUKHCONP2AZ1ARGF3020,Ceramic Wall Tiling,8170,56,0,120,0,843.75,843.75,120,0,0,0,,,,2013-10-31 08:00,2013-11-17 17:00,,2013-10-23 08:00,2013-11-09 17:00,2013-10-23 08:00,2013-11-09 17:00,2013-10-23 08:00,2013-11-09 17:00,2013-10-31 08:00,2013-11-17 17:00,,PT_Normal,,,,,gfj3t1qpSUS7OVlqqmF+rQ,,,,N,0,0,,,2013-02-16 15:54,2013-02-16 15:56,admin,admin
503255,6359,125137,13662,0,N,N,N,CP_Drtn,TT_Task,DT_FixedDUR2,TK_NotStart,DUKHCONP2AZ1ARGF3025,Porcelain Tile flooring,8170,56,0,160,0,858,858,160,0,0,0,,,,2013-11-17 08:00,2013-12-09 17:00,,2013-11-09 08:00,2013-12-01 17:00,2013-11-09 08:00,2013-12-01 17:00,2013-11-09 08:00,2013-12-01 17:00,2013-11-17 08:00,2013-12-09 17:00,,PT_Normal,,,,,9Hsd+Cn6Ty6eAU5+wZucgg,,,,N,0,0,,,2013-02-16 15:54,2013-02-16 15:56,admin,admin
503256,6359,125137,13662,0,N,N,N,CP_Drtn,TT_Task,DT_FixedDUR2,TK_NotStart,DUKHCONP2AZ1ARGF3040,Cobble Tile flooring,8170,248,40,120,0,250,250,120,0,0,0,,,,2014-01-21 08:00,2014-02-06 17:00,,2013-12-15 08:00,2014-01-01 17:00,2013-12-15 08:00,2014-01-01 17:00,2013-12-15 08:00,2014-01-01 17:00,2014-01-21 08:00,2014-02-06 17:00,,PT_Normal,,,,,T2K7uMcrSr2zjFwV0Zh8ng,,,,N,0,0,,,2013-02-16 15:54,2013-02-16 15:56,admin,admin
503257,6359,125137,13662,0,N,N,N,CP_Drtn,TT_Task,DT_FixedDUR2,TK_NotStart,DUKHCONP2AZ1ARGF3035,Slate Tile Flooring & Skirting,8170,120,0,144,0,1312.5,1312.5,144,0,0,0,,,,2013-12-14 08:00,2014-01-04 17:00,,2013-11-26 08:00,2013-12-16 17:00,2013-11-26 08:00,2013-12-16 17:00,2013-11-26 08:00,2013-12-16 17:00,2013-12-14 08:00,2014-01-04 17:00,,PT_Normal,,,,,k/1VT27XQ7qT9v955KGD1w,,,,N,0,0,,,2013-02-16 15:54,2013-02-16 15:56,admin,admin
503258,6359,125139,13662,0,N,N,N,CP_Drtn,TT_Task,DT_FixedDUR2,TK_NotStart,DUKHCONP2AZ1AREL3665,External Plastering,8169,280,0,200,0,3343.75,3343.75,200,0,0,0,,,,2013-11-21 08:00,2013-12-21 17:00,,2013-10-09 08:00,2013-11-09 17:00,2013-10-09 08:00,2013-11-09 17:00,2013-10-09 08:00,2013-11-09 17:00,2013-11-21 08:00,2013-12-21 17:00,,PT_Normal,,,,,gmYw3fYnR324Mc+u2F2OIA,,,,N,0,0,,,2013-02-16 15:54,2013-02-16 15:56,admin,admin
503259,6359,125139,13662,0,N,N,N,CP_Drtn,TT_Task,DT_FixedDUR2,TK_NotStart,DUKHCONP2AZ1AREL3680,External Painting,8178,520,80,160,0,1173.25,1173.25,160,0,0,0,,,,2014-01-19 08:00,2014-02-10 17:00,,2013-11-03 08:00,2013-11-25 17:00,2013-11-03 08:00,2013-11-25 17:00,2013-11-03 08:00,2013-11-25 17:00,2014-01-19 08:00,2014-02-10 17:00,,PT_Normal,,,,,gW4e2LUiSHCDnC122AQvAw,,,,N,0,0,,,2013-02-16 15:54,2013-02-16 15:56,admin,admin
503260,6359,125140,13662,0,N,N,N,CP_Drtn,TT_Task,DT_FixedDUR2,TK_NotStart,DUKHCONP2AZ1ARRF3625,Laying of Pitched Roof,8174,240,0,200,0,213,213,200,0,0,0,,,,2013-09-30 08:00,2013-10-30 17:00,,2013-08-26 08:00,2013-09-23 17:00,2013-08-26 08:00,2013-09-23 17:00,2013-08-26 08:00,2013-09-23 17:00,2013-09-30 08:00,2013-10-30 17:00,,PT_Normal,,,,,ZHsSh6WySwuBSKmkc1w2gg,,,,N,0,0,,,2013-02-16 15:54,2013-02-16 15:56,admin,admin
503261,6359,125140,13662,0,N,N,N,CP_Drtn,TT_Task,DT_FixedDUR2,TK_NotStart,DUKHCONP2AZ1ARRF3630,Leveling Screed for Waterproofing,8164,240,0,144,0,162.5,162.5,144,0,0,0,,,,2013-10-14 08:00,2013-11-05 17:00,,2013-09-09 08:00,2013-09-29 17:00,2013-09-09 08:00,2013-09-29 17:00,2013-09-09 08:00,2013-09-29 17:00,2013-10-14 08:00,2013-11-05 17:00,,PT_Normal,,,,,Bskb8SXtRTu2IMgo4oieGA,,,,N,0,0,,,2013-02-16 15:54,2013-02-16 15:56,admin,admin
503262,6359,125140,13662,0,N,N,N,CP_Drtn,TT_Task,DT_FixedDUR2,TK_NotStart,DUKHCONP2AZ1ARRF3635,Laying of Waterproofing Membrane,8178,280,0,144,0,602.25,602.25,144,0,0,0,,,,2013-10-28 08:00,2013-11-17 17:00,,2013-09-15 08:00,2013-10-05 17:00,2013-09-15 08:00,2013-10-05 17:00,2013-09-15 08:00,2013-10-05 17:00,2013-10-28 08:00,2013-11-17 17:00,,PT_Normal,,,,,A6HhLCkIRvGW0B0NBmNCZw,,,,N,0,0,,,2013-02-16 15:54,2013-02-16 15:56,admin,admin
503263,6359,125140,13662,0,N,N,N,CP_Drtn,TT_Task,DT_FixedDUR2,TK_NotStart,DUKHCONP2AZ1ARRF3640,Installation of Insulation & Protection,8178,280,0,144,0,286,286,144,0,0,0,,,,2013-11-02 08:00,2013-11-21 17:00,,2013-09-19 08:00,2013-10-09 17:00,2013-09-19 08:00,2013-10-09 17:00,2013-09-19 08:00,2013-10-09 17:00,2013-11-02 08:00,2013-11-21 17:00,,PT_Normal,,,,,HoLxOQYNRBGYup9pYlqWhA,,,,N,0,0,,,2013-02-16 15:54,2013-02-16 15:56,admin,admin
503264,6359,125140,13662,0,N,N,N,CP_Drtn,TT_Task,DT_FixedDUR2,TK_NotStart,DUKHCONP2AZ1ARRF3645,Lime Stone Chips & Paving slab Installation,8170,280,0,144,0,286,286,144,0,0,0,,,,2013-11-10 08:00,2013-11-30 17:00,,2013-09-28 08:00,2013-10-20 17:00,2013-09-28 08:00,2013-10-20 17:00,2013-09-28 08:00,2013-10-20 17:00,2013-11-10 08:00,2013-11-30 17:00,,PT_Normal,,,,,FcUkL18aSIuVF8/F1mUiow,,,,N,0,0,,,2013-02-16 15:54,2013-02-16 15:56,admin,admin
503265,6359,125140,13662,0,N,N,N,CP_Drtn,TT_Task,DT_FixedDUR2,TK_NotStart,DUKHCONP2AZ1ARRF3660,Installation of Access Ladder,8178,632,80,160,0,110,110,160,0,0,0,,,,2014-01-07 08:00,2014-01-29 17:00,,2013-10-03 08:00,2013-10-28 17:00,2013-10-03 08:00,2013-10-28 17:00,2013-10-03 08:00,2013-10-28 17:00,2014-01-07 08:00,2014-01-29 17:00,,PT_Normal,,,,,tGT83NyMSIGTPCjXDGpIfg,,,,N,0,0,,,2013-02-16 15:54,2013-02-16 15:56,admin,admin
503266,6359,125141,13662,0,N,N,N,CP_Drtn,TT_Task,DT_FixedDUR2,TK_NotStart,DUKHCONP2AGNSP001000,"Survey works,",8175,0,0,160,0,87.5,87.5,160,0,0,0,,,,2012-11-18 08:00,2012-12-10 17:00,,2012-11-18 08:00,2012-12-10 17:00,2012-11-18 08:00,2012-12-10 17:00,2012-11-18 08:00,2012-12-10 17:00,2012-11-18 08:00,2012-12-10 17:00,,PT_Normal,,,,,BDH0J36fTXW9a/8S19uIew,,,,N,0,0,,,2013-02-16 15:54,2013-02-16 15:56,admin,admin
503267,6359,125141,13662,0,N,N,N,CP_Drtn,TT_Task,DT_FixedDUR2,TK_NotStart,DUKHCONP2AGNSP002000,Scanning for Existing Services for rerouting,8180,0,0,80,0,325,325,80,0,0,0,,,,2012-12-05 08:00,2012-12-16 17:00,,2012-12-05 08:00,2012-12-16 17:00,2012-12-05 08:00,2012-12-16 17:00,2012-12-05 08:00,2012-12-16 17:00,2012-12-05 08:00,2012-12-16 17:00,,PT_Normal,,,,,ppORvVg9TQa2iVzStsC4GA,,,,N,0,0,,,2013-02-16 15:54,2013-02-16 15:56,admin,admin
503268,6359,125141,13662,0,N,N,N,CP_Drtn,TT_Task,DT_FixedDUR2,TK_NotStart,DUKHCONP2AGNSP003000,Site stripping,8177,384,0,160,0,675,675,160,300,0,300,,,,2013-01-31 08:00,2013-02-24 17:00,,2012-12-05 08:00,2012-12-29 17:00,2012-12-05 08:00,2012-12-29 17:00,2012-12-05 08:00,2012-12-29 17:00,2013-01-31 08:00,2013-02-24 17:00,,PT_Normal,,,,,x3vQuk97RSGzyaMP8SKfXQ,,,,N,0,0,,,2013-02-16 15:54,2013-02-16 15:56,admin,admin
503269,6359,125141,13662,0,N,N,N,CP_Drtn,TT_Task,DT_FixedDUR2,TK_NotStart,DUKHCONP2AGNSP004000,Demolition of Existing building & landscaping,8177,384,0,160,0,2687.5,2687.5,160,1750,0,1750,,,,2013-02-07 08:00,2013-03-03 17:00,,2012-12-12 08:00,2013-01-05 17:00,2012-12-12 08:00,2013-01-05 17:00,2012-12-12 08:00,2013-01-05 17:00,2013-02-07 08:00,2013-03-03 17:00,,PT_Normal,,,,,181qLHsJSj2bKe2EPrq2ew,,,,N,0,0,,,2013-02-16 15:54,2013-02-16 15:56,admin,admin
503270,6359,125141,13662,0,N,N,N,CP_Drtn,TT_Task,DT_FixedDUR2,TK_NotStart,DUKHCONP2AGNSP005000,Demolition of existing services works,8177,384,384,160,0,775,775,160,400,0,400,,,,2013-02-16 08:00,2013-03-10 17:00,,2012-12-20 08:00,2013-01-12 17:00,2012-12-20 08:00,2013-01-12 17:00,2012-12-20 08:00,2013-01-12 17:00,2013-02-16 08:00,2013-03-10 17:00,,PT_Normal,,,,,ojasJTNFQoGfOrqnRlczMw,,,,N,0,0,,,2013-02-16 15:54,2013-02-16 15:56,admin,admin
503271,6359,125141,13662,0,N,N,N,CP_Drtn,TT_Task,DT_FixedDUR2,TK_NotStart,DUKHCONP2AGNSP002100,Submission of Scanning Reports,,0,0,56,0,48,48,56,0,0,0,,,,2012-12-17 08:00,2012-12-25 17:00,,2012-12-17 08:00,2012-12-25 17:00,2012-12-17 08:00,2012-12-25 17:00,2012-12-17 08:00,2012-12-25 17:00,2012-12-17 08:00,2012-12-25 17:00,,PT_Normal,,,,,FB9ABQxbSSCisHa7VE45aA,X6g8P8xaSruGyGDe80BZow,,,N,0,0,,,2013-02-16 15:54,2013-02-16 15:56,admin,admin
503272,6359,125141,13662,0,N,N,N,CP_Drtn,TT_Task,DT_FixedDUR2,TK_NotStart,DUKHCONP2AGNSP002200,Information Required for  Rerouting,,0,0,112,0,0,0,112,0,0,0,,,,2012-12-26 08:00,2013-01-10 17:00,,2012-12-26 08:00,2013-01-10 17:00,2012-12-26 08:00,2013-01-10 17:00,2012-12-26 08:00,2013-01-10 17:00,2012-12-26 08:00,2013-01-10 17:00,,PT_Normal,,,,,aD3+cfJsQFeyA7JQe9qLFA,G4W1dBGg0UuF/M5dHjAf+Q,,,N,0,0,,,2013-02-16 15:54,2013-02-16 15:56,admin,admin
503273,6359,125141,13662,0,N,N,N,CP_Drtn,TT_Task,DT_FixedDUR2,TK_NotStart,DUKHCONP2AGNSP002300,Preparation & Submission for New Layout,,0,0,56,0,40,40,56,0,0,0,,,,2013-01-12 08:00,2013-01-19 17:00,,2013-01-12 08:00,2013-01-19 17:00,2013-01-12 08:00,2013-01-19 17:00,2013-01-12 08:00,2013-01-19 17:00,2013-01-12 08:00,2013-01-19 17:00,,PT_Normal,,,,,cSNvToNHQbuLL0lLQtpG6g,VsckLxeAp0C9pl0wxj5E/Q,,,N,0,0,,,2013-02-16 15:54,2013-02-16 15:56,admin,admin
503274,6359,125141,13662,0,N,N,N,CP_Drtn,TT_Task,DT_FixedDUR2,TK_NotStart,DUKHCONP2AGNSP002400,Approval for new Layout for rerouting,,0,0,112,0,0,0,112,0,0,0,,,,2013-01-20 08:00,2013-02-04 17:00,,2013-01-20 08:00,2013-02-04 17:00,2013-01-20 08:00,2013-02-04 17:00,2013-01-20 08:00,2013-02-04 17:00,2013-01-20 08:00,2013-02-04 17:00,,PT_Normal,,,,,a8Rl6vDlQUKgGM89dupXDA,nchmWbR/s0Wr0F//VVLvvg,,,N,0,0,,,2013-02-16 15:54,2013-02-16 15:56,admin,admin
503275,6359,125141,13662,0,N,N,N,CP_Drtn,TT_Task,DT_FixedDUR2,TK_NotStart,DUKHCONP2AGNSP002500,Rerouting Works,8180,0,0,200,0,325,325,200,0,0,0,,,,2013-02-05 08:00,2013-03-06 17:00,,2013-02-05 08:00,2013-03-06 17:00,2013-02-05 08:00,2013-03-06 17:00,2013-02-05 08:00,2013-03-06 17:00,2013-02-05 08:00,2013-03-06 17:00,,PT_Normal,,,,,gGmE0FINTBWRrCcVrQjSQQ,F9W9WBvdd0ywqVbvBEXKNQ,,,N,0,0,,,2013-02-16 15:54,2013-02-16 15:56,admin,admin
503276,6359,125145,13662,0,N,N,N,CP_Drtn,TT_Task,DT_FixedDUR2,TK_NotStart,DUKHCONP2AMKARGF3000,Block work,8168,48,0,48,0,950,950,48,0,0,0,,,,2013-08-28 08:00,2013-09-03 17:00,,2013-08-21 08:00,2013-08-27 17:00,2013-08-21 08:00,2013-08-27 17:00,2013-08-21 08:00,2013-08-27 17:00,2013-08-28 08:00,2013-09-03 17:00,,PT_Normal,,,,,Q5C1L4YSQoGL0Fz1lUJFIg,,,,N,0,0,,,2013-02-16 15:54,2013-02-16 15:56,admin,admin
503277,6359,125145,13662,0,N,N,N,CP_Drtn,TT_Task,DT_FixedDUR2,TK_NotStart,DUKHCONP2AMKARGF3005,Plastering work,8169,96,0,56,0,475,475,56,0,0,0,,,,2013-09-17 08:00,2013-09-24 17:00,,2013-09-03 08:00,2013-09-10 17:00,2013-09-03 08:00,2013-09-10 17:00,2013-09-03 08:00,2013-09-10 17:00,2013-09-17 08:00,2013-09-24 17:00,,PT_Normal,,,,,25s27gyYTWqxSulWFkhrIA,,,,N,0,0,,,2013-02-16 15:54,2013-02-16 15:56,admin,admin
503278,6359,125145,13662,0,N,N,N,CP_Drtn,TT_Task,DT_FixedDUR2,TK_NotStart,DUKHCONP2AMKARGF3010,Flooring screed,8164,168,0,56,0,106.25,106.25,56,0,0,0,,,,2013-10-01 08:00,2013-10-08 17:00,,2013-09-07 08:00,2013-09-14 17:00,2013-09-07 08:00,2013-09-14 17:00,2013-09-07 08:00,2013-09-14 17:00,2013-10-01 08:00,2013-10-08 17:00,,PT_Normal,,,,,i5MwmkXaSLyxOc0z1cuXlw,,,,N,0,0,,,2013-02-16 15:54,2013-02-16 15:56,admin,admin
503279,6359,125145,13662,0,N,N,N,CP_Drtn,TT_Task,DT_FixedDUR2,TK_NotStart,DUKHCONP2AMKARGF3015,Wet area waterproofing & Protection Screed,8178,168,0,40,0,15.5,15.5,40,0,0,0,,,,2013-10-05 08:00,2013-10-09 17:00,,2013-09-10 08:00,2013-09-15 17:00,2013-09-10 08:00,2013-09-15 17:00,2013-09-10 08:00,2013-09-15 17:00,2013-10-05 08:00,2013-10-09 17:00,,PT_Normal,,,,,inn+mOmvTzijpSpj64ZBPg,,,,N,0,0,,,2013-02-16 15:54,2013-02-16 15:56,admin,admin
503280,6359,125145,13662,0,N,N,N,CP_Drtn,TT_Task,DT_FixedDUR2,TK_NotStart,DUKHCONP2AMKARGF3030,Paint First coat,8178,80,0,40,0,300.3,300.3,40,0,0,0,,,,2013-10-07 08:00,2013-10-12 17:00,,2013-09-25 08:00,2013-09-30 17:00,2013-09-25 08:00,2013-09-30 17:00,2013-09-25 08:00,2013-09-30 17:00,2013-10-07 08:00,2013-10-12 17:00,,PT_Normal,,,,,tYNL4sA7SZyuDlmY1+8+aw,,,,N,0,0,,,2013-02-16 15:54,2013-02-16 15:56,admin,admin
503281,6359,125145,13662,0,N,N,N,CP_Drtn,TT_Task,DT_FixedDUR2,TK_NotStart,DUKHCONP2AMKARGF3020,Ceramic Wall Tiling,8170,208,0,48,0,168.75,168.75,48,0,0,0,,,,2013-10-16 08:00,2013-10-24 17:00,,2013-09-16 08:00,2013-09-22 17:00,2013-09-16 08:00,2013-09-22 17:00,2013-09-16 08:00,2013-09-22 17:00,2013-10-16 08:00,2013-10-24 17:00,,PT_Normal,,,,,eY7ZK6P+RAyYddsVlfpQcw,,,,N,0,0,,,2013-02-16 15:54,2013-02-16 15:56,admin,admin
503282,6359,125145,13662,0,N,N,N,CP_Drtn,TT_Task,DT_FixedDUR2,TK_NotStart,DUKHCONP2AMKARGF3025,Porcelain Tile flooring,8170,208,0,48,0,172.25,172.25,48,0,0,0,,,,2013-10-26 08:00,2013-10-31 17:00,,2013-09-23 08:00,2013-09-29 17:00,2013-09-23 08:00,2013-09-29 17:00,2013-09-23 08:00,2013-09-29 17:00,2013-10-26 08:00,2013-10-31 17:00,,PT_Normal,,,,,/X7qUVW1Tjej8lWKuwWyFg,,,,N,0,0,,,2013-02-16 15:54,2013-02-16 15:56,admin,admin
503283,6359,125145,13662,0,N,N,N,CP_Drtn,TT_Task,DT_FixedDUR2,TK_NotStart,DUKHCONP2AMKARGF3040,Cobble Tile flooring,8170,416,0,40,0,50,50,40,0,0,0,,,,2013-12-02 08:00,2013-12-07 17:00,,2013-09-30 08:00,2013-10-05 17:00,2013-09-30 08:00,2013-10-05 17:00,2013-09-30 08:00,2013-10-05 17:00,2013-12-02 08:00,2013-12-07 17:00,,PT_Normal,,,,,RPWvn5ejTFKRwRbiQxAkQg,,,,N,0,0,,,2013-02-16 15:54,2013-02-16 15:56,admin,admin
503284,6359,125145,13662,0,N,N,N,CP_Drtn,TT_Task,DT_FixedDUR2,TK_NotStart,DUKHCONP2AMKARGF3035,Slate Tile Flooring & Skirting,8170,416,296,40,0,262.5,262.5,40,0,0,0,,,,2013-12-08 08:00,2013-12-12 17:00,,2013-10-06 08:00,2013-10-10 17:00,2013-10-06 08:00,2013-10-10 17:00,2013-10-06 08:00,2013-10-10 17:00,2013-12-08 08:00,2013-12-12 17:00,,PT_Normal,,,,,9YT/qbyuTny0hXQ2okpDCQ,,,,N,0,0,,,2013-02-16 15:54,2013-02-16 15:56,admin,admin
503285,6359,125145,13662,0,N,N,N,CP_Drtn,TT_Task,DT_FixedDUR2,TK_NotStart,DUKHCONP2AMKARGF3045,Fixing of Suspension systems,8178,200,0,56,0,109.75,109.75,56,0,0,0,,,,2013-11-02 08:00,2013-11-09 17:00,,2013-10-01 08:00,2013-10-08 17:00,2013-10-01 08:00,2013-10-08 17:00,2013-10-01 08:00,2013-10-08 17:00,2013-11-02 08:00,2013-11-09 17:00,,PT_Normal,,,,,TQHY4S+gSEG+lHUvl4T2xA,,,,N,0,0,,,2013-02-16 15:54,2013-02-16 15:56,admin,admin
503286,6359,125145,13662,0,N,N,N,CP_Drtn,TT_Task,DT_FixedDUR2,TK_NotStart,DUKHCONP2AMKARGF3060,Gypsum board false ceiling,8178,200,0,64,0,109.75,109.75,64,0,0,0,,,,2013-11-10 08:00,2013-11-18 17:00,,2013-10-09 08:00,2013-10-20 17:00,2013-10-09 08:00,2013-10-20 17:00,2013-10-09 08:00,2013-10-20 17:00,2013-11-10 08:00,2013-11-18 17:00,,PT_Normal,,,,,7758lk08QhWZsuC5PW074Q,,,,N,0,0,,,2013-02-16 15:54,2013-02-16 15:56,admin,admin
503287,6359,125145,13662,0,N,N,N,CP_Drtn,TT_Task,DT_FixedDUR2,TK_NotStart,DUKHCONP2AMKARGF3065,Wooden door,8178,200,0,56,0,33,33,56,0,0,0,,,,2013-11-19 08:00,2013-11-26 17:00,,2013-10-21 08:00,2013-10-28 17:00,2013-10-21 08:00,2013-10-28 17:00,2013-10-21 08:00,2013-10-28 17:00,2013-11-19 08:00,2013-11-26 17:00,,PT_Normal,,,,,q41ylKJvT4aBnzq/zDrFtA,,,,N,0,0,,,2013-02-16 15:54,2013-02-16 15:56,admin,admin
503288,6359,125145,13662,0,N,N,N,CP_Drtn,TT_Task,DT_FixedDUR2,TK_NotStart,DUKHCONP2AMKARGF3080,Aluminum windows,8178,520,120,56,0,22,22,56,0,0,0,,,,2014-01-14 08:00,2014-01-21 17:00,,2013-10-29 08:00,2013-11-05 17:00,2013-10-29 08:00,2013-11-05 17:00,2013-10-29 08:00,2013-11-05 17:00,2014-01-14 08:00,2014-01-21 17:00,,PT_Normal,,,,,lKKThmXBQSCkbaKSTGrYWg,,,,N,0,0,,,2013-02-16 15:54,2013-02-16 15:56,admin,admin
503289,6359,125145,13662,0,N,N,N,CP_Drtn,TT_Task,DT_FixedDUR2,TK_NotStart,DUKHCONP2AMKARGF3075,Carpentry & Joinery Works,8178,360,0,80,0,88,88,80,0,0,0,,,,2014-01-05 08:00,2014-01-15 17:00,,2013-11-12 08:00,2013-11-23 17:00,2013-11-12 08:00,2013-11-23 17:00,2013-11-12 08:00,2013-11-23 17:00,2014-01-05 08:00,2014-01-15 17:00,,PT_Normal,,,,,/tfVC51LRF+oQJRzO0cwXw,,,,N,0,0,,,2013-02-16 15:54,2013-02-16 15:56,admin,admin
503290,6359,125145,13662,0,N,N,N,CP_Drtn,TT_Task,DT_FixedDUR2,TK_NotStart,DUKHCONP2AMKARGF3090,Installation of Granite Counter Top,8171,400,0,56,0,16.5,16.5,56,0,0,0,,,,2014-01-22 08:00,2014-01-29 17:00,,2013-11-24 08:00,2013-12-01 17:00,2013-11-24 08:00,2013-12-01 17:00,2013-11-24 08:00,2013-12-01 17:00,2014-01-22 08:00,2014-01-29 17:00,,PT_Normal,,,,,kcHkhqXVRrGDJE178HQQGw,,,,N,0,0,,,2013-02-16 15:54,2013-02-16 15:56,admin,admin
503291,6359,125145,13662,0,N,N,N,CP_Drtn,TT_Task,DT_FixedDUR2,TK_NotStart,DUKHCONP2AMKARGF3095,Final Painting,8178,664,392,56,0,300.3,300.3,56,0,0,0,,,,2014-03-11 08:00,2014-03-18 17:00,,2013-12-02 08:00,2013-12-09 17:00,2013-12-02 08:00,2013-12-09 17:00,2013-12-02 08:00,2013-12-09 17:00,2014-03-11 08:00,2014-03-18 17:00,,PT_Normal,,,,,xD4oV0bWR/W+RIo0BCaFqQ,,,,N,0,0,,,2013-02-16 15:54,2013-02-16 15:56,admin,admin
503292,6359,125147,13662,0,N,N,N,CP_Drtn,TT_Task,DT_FixedDUR2,TK_NotStart,DUKHCONP2AMKAREL3665,External Plastering,8169,240,0,80,0,668.75,668.75,80,0,0,0,,,,2013-10-14 08:00,2013-10-27 17:00,,2013-09-09 08:00,2013-09-19 17:00,2013-09-09 08:00,2013-09-19 17:00,2013-09-09 08:00,2013-09-19 17:00,2013-10-14 08:00,2013-10-27 17:00,,PT_Normal,,,,,ZN9JQm3PSeqWZBXOnWlXyg,,,,N,0,0,,,2013-02-16 15:54,2013-02-16 15:56,admin,admin
503293,6359,125147,13662,0,N,N,N,CP_Drtn,TT_Task,DT_FixedDUR2,TK_NotStart,DUKHCONP2AMKAREL3680,External Painting,8178,304,0,56,0,234.75,234.75,56,0,0,0,,,,2013-11-06 08:00,2013-11-13 17:00,,2013-09-21 08:00,2013-09-28 17:00,2013-09-21 08:00,2013-09-28 17:00,2013-09-21 08:00,2013-09-28 17:00,2013-11-06 08:00,2013-11-13 17:00,,PT_Normal,,,,,GiEOmsKhRniWBwbD6vqGVA,,,,N,0,0,,,2013-02-16 15:54,2013-02-16 15:56,admin,admin
503294,6359,125148,13662,0,N,N,N,CP_Drtn,TT_Task,DT_FixedDUR2,TK_NotStart,DUKHCONP2AMKARRF3625,Laying of Pitched Roof,8174,240,0,56,0,43,43,56,0,0,0,,,,2013-09-22 08:00,2013-09-29 17:00,,2013-08-18 08:00,2013-08-25 17:00,2013-08-18 08:00,2013-08-25 17:00,2013-08-18 08:00,2013-08-25 17:00,2013-09-22 08:00,2013-09-29 17:00,,PT_Normal,,,,,kUURgrM5QJeCOH2rUbJwaw,,,,N,0,0,,,2013-02-16 15:54,2013-02-16 15:56,admin,admin
503295,6359,125148,13662,0,N,N,N,CP_Drtn,TT_Task,DT_FixedDUR2,TK_NotStart,DUKHCONP2AMKARRF3630,Leveling Screed for Waterproofing,8164,240,0,16,0,33,33,16,0,0,0,,,,2013-09-30 08:00,2013-10-01 17:00,,2013-08-26 08:00,2013-08-27 17:00,2013-08-26 08:00,2013-08-27 17:00,2013-08-26 08:00,2013-08-27 17:00,2013-09-30 08:00,2013-10-01 17:00,,PT_Normal,,,,,rMhSfh4XQD2u11a+zizNbg,,,,N,0,0,,,2013-02-16 15:54,2013-02-16 15:56,admin,admin
503296,6359,125148,13662,0,N,N,N,CP_Drtn,TT_Task,DT_FixedDUR2,TK_NotStart,DUKHCONP2AMKARRF3635,Laying of Waterproofing Membrane,8178,240,0,32,0,121,121,32,0,0,0,,,,2013-10-02 08:00,2013-10-06 17:00,,2013-08-28 08:00,2013-09-01 17:00,2013-08-28 08:00,2013-09-01 17:00,2013-08-28 08:00,2013-09-01 17:00,2013-10-02 08:00,2013-10-06 17:00,,PT_Normal,,,,,qK76p+CdTZmi6u2T28mYAQ,,,,N,0,0,,,2013-02-16 15:54,2013-02-16 15:56,admin,admin
503297,6359,125148,13662,0,N,N,N,CP_Drtn,TT_Task,DT_FixedDUR2,TK_NotStart,DUKHCONP2AMKARRF3640,Installation of Insulation & Protection,8178,240,0,32,0,57.75,57.75,32,0,0,0,,,,2013-10-07 08:00,2013-10-10 17:00,,2013-09-02 08:00,2013-09-05 17:00,2013-09-02 08:00,2013-09-05 17:00,2013-09-02 08:00,2013-09-05 17:00,2013-10-07 08:00,2013-10-10 17:00,,PT_Normal,,,,,FN+43azISaCRjTHuHGeVnQ,,,,N,0,0,,,2013-02-16 15:54,2013-02-16 15:56,admin,admin
503298,6359,125148,13662,0,N,N,N,CP_Drtn,TT_Task,DT_FixedDUR2,TK_NotStart,DUKHCONP2AMKARRF3645,Lime Stone Chips & Paving slab Installation,8170,240,0,16,0,58.5,58.5,16,0,0,0,,,,2013-10-12 08:00,2013-10-13 17:00,,2013-09-07 08:00,2013-09-08 17:00,2013-09-07 08:00,2013-09-08 17:00,2013-09-07 08:00,2013-09-08 17:00,2013-10-12 08:00,2013-10-13 17:00,,PT_Normal,,,,,TLIf7nwVR+iPz0UwKpnzqg,,,,N,0,0,,,2013-02-16 15:54,2013-02-16 15:56,admin,admin
503299,6359,125148,13662,0,N,N,N,CP_Drtn,TT_Task,DT_FixedDUR2,TK_NotStart,DUKHCONP2AMKARRF3660,Installation of Access Ladder,8178,728,96,40,0,22,22,40,0,0,0,,,,2014-01-01 08:00,2014-01-06 17:00,,2013-09-14 08:00,2013-09-18 17:00,2013-09-14 08:00,2013-09-18 17:00,2013-09-14 08:00,2013-09-18 17:00,2014-01-01 08:00,2014-01-06 17:00,,PT_Normal,,,,,1Xm651gRTCuvXyrxHX3Ttw,,,,N,0,0,,,2013-02-16 15:54,2013-02-16 15:56,admin,admin
503300,6359,125151,13662,0,N,N,N,CP_Drtn,TT_Task,DT_FixedDUR2,TK_NotStart,DUKHCONP2AMKACRF4630,Installation of Refrigerant Pipes,8178,704,176,40,0,2.15,2.15,40,0,0,0,,,,2014-01-01 08:00,2014-01-06 17:00,,2013-09-17 08:00,2013-09-22 17:00,2013-09-17 08:00,2013-09-22 17:00,2013-09-17 08:00,2013-09-22 17:00,2014-01-01 08:00,2014-01-06 17:00,,PT_Normal,,,,,nSY7FtkdSj6namRTQOEkXw,,,,N,0,0,,,2013-02-16 15:54,2013-02-23 09:03,admin,admin
503301,6359,125151,13662,0,N,N,N,CP_Drtn,TT_Task,DT_FixedDUR2,TK_NotStart,DUKHCONP2AMKACRF4635,Installation of Condensing Unit,8178,784,120,64,0,22.05,22.05,64,0,0,0,,,,2014-03-02 08:00,2014-03-10 17:00,,2013-11-05 08:00,2013-11-13 17:00,2013-11-05 08:00,2013-11-13 17:00,2013-11-05 08:00,2013-11-13 17:00,2014-03-02 08:00,2014-03-10 17:00,,PT_Normal,,,,,CatG/u6vRQuJTa3fSxFBYA,,,,N,0,0,,,2013-02-16 15:54,2013-02-16 15:56,admin,admin
503302,6359,125152,13662,0,N,N,N,CP_Drtn,TT_Task,DT_FixedDUR2,TK_NotStart,DUKHCONP2AMKACGF4600,Installation AC Pipes,8178,328,0,40,0,93.05,93.05,40,0,0,0,,,,2013-10-31 08:00,2013-11-05 17:00,,2013-09-11 08:00,2013-09-16 17:00,2013-09-11 08:00,2013-09-16 17:00,2013-09-11 08:00,2013-09-16 17:00,2013-10-31 08:00,2013-11-05 17:00,,PT_Normal,,,,,Qmi9YCl+R4KzxS6dN3PgTQ,,,,N,0,0,,,2013-02-16 15:54,2013-02-16 15:56,admin,admin
503303,6359,125152,13662,0,N,N,N,CP_Drtn,TT_Task,DT_FixedDUR2,TK_NotStart,DUKHCONP2AMKACGF4605,Fixing of Ventilation Equipments,8178,736,0,40,0,14.2,14.2,40,0,0,0,,,,2014-02-06 08:00,2014-02-12 17:00,,2013-10-21 08:00,2013-10-26 17:00,2013-10-21 08:00,2013-10-26 17:00,2013-10-21 08:00,2013-10-26 17:00,2014-02-06 08:00,2014-02-12 17:00,,PT_Normal,,,,,/K1ToYZxTHqp9CcEXC7XLg,,,,N,0,0,,,2013-02-16 15:54,2013-02-16 15:56,admin,admin
503304,6359,125152,13662,0,N,N,N,CP_Drtn,TT_Task,DT_FixedDUR2,TK_NotStart,DUKHCONP2AMKACGF4610,Fixing of Split AC,8178,784,0,64,0,25.8,25.8,64,0,0,0,,,,2014-02-20 08:00,2014-03-01 17:00,,2013-10-27 08:00,2013-11-04 17:00,2013-10-27 08:00,2013-11-04 17:00,2013-10-27 08:00,2013-11-04 17:00,2014-02-20 08:00,2014-03-01 17:00,,PT_Normal,,,,,lUildzo9RMW7I7T/17TAnA,,,,N,0,0,,,2013-02-16 15:54,2013-02-16 15:56,admin,admin
503305,6359,125154,13662,0,N,N,N,CP_Drtn,TT_Task,DT_FixedDUR2,TK_NotStart,DUKHCONP2AMKELRF4070,Installation of Isolator,8178,776,0,40,0,60.2,60.2,40,0,0,0,,,,2014-02-25 08:00,2014-03-02 17:00,,2013-11-02 08:00,2013-11-06 17:00,2013-11-02 08:00,2013-11-06 17:00,2013-11-02 08:00,2013-11-06 17:00,2014-02-25 08:00,2014-03-02 17:00,,PT_Normal,,,,,D7U/WqYvTnO1PGu3xxVxrg,,,,N,0,0,,,2013-02-16 15:54,2013-02-16 15:56,admin,admin
503306,6359,125154,13662,0,N,N,N,CP_Drtn,TT_Task,DT_FixedDUR2,TK_NotStart,DUKHCONP2AMKELRF4075,Installation of TV Dish Antenna,8178,776,112,56,0,31.4,31.4,56,0,0,0,,,,2014-03-03 08:00,2014-03-10 17:00,,2013-11-07 08:00,2013-11-14 17:00,2013-11-07 08:00,2013-11-14 17:00,2013-11-07 08:00,2013-11-14 17:00,2014-03-03 08:00,2014-03-10 17:00,,PT_Normal,,,,,HbKNpqLyRWe6F8SJOHWE4Q,,,,N,0,0,,,2013-02-16 15:54,2013-02-16 15:56,admin,admin
503307,6359,125155,13662,0,N,N,N,CP_Drtn,TT_Task,DT_FixedDUR2,TK_NotStart,DUKHCONP2AMKELGF4000,Fixing of wall conduits & switch socket boxes,8178,96,0,40,0,99.85,99.85,40,0,0,0,,,,2013-09-11 08:00,2013-09-16 17:00,,2013-08-28 08:00,2013-09-02 17:00,2013-08-28 08:00,2013-09-02 17:00,2013-08-28 08:00,2013-09-02 17:00,2013-09-11 08:00,2013-09-16 17:00,,PT_Normal,,,,,P8GaviJ3Q8W4058vU4UL0g,,,,N,0,0,,,2013-02-16 15:54,2013-02-16 15:56,admin,admin
503308,6359,125155,13662,0,N,N,N,CP_Drtn,TT_Task,DT_FixedDUR2,TK_NotStart,DUKHCONP2AMKELGF4005,Cable tray & trunking installation,8178,120,0,40,0,340.8,340.8,40,0,0,0,,,,2013-09-29 08:00,2013-10-03 17:00,,2013-09-11 08:00,2013-09-16 17:00,2013-09-11 08:00,2013-09-16 17:00,2013-09-11 08:00,2013-09-16 17:00,2013-09-29 08:00,2013-10-03 17:00,,PT_Normal,,,,,F5ERn825SfunlRscOMzXtg,,,,N,0,0,,,2013-02-16 15:54,2013-02-16 15:56,admin,admin
503309,6359,125155,13662,0,N,N,N,CP_Drtn,TT_Task,DT_FixedDUR2,TK_NotStart,DUKHCONP2AMKELGF4010,Installation of wiring & Main Cabling,8178,256,32,40,0,69.6,69.6,40,0,0,0,,,,2013-10-27 08:00,2013-10-31 17:00,,2013-09-17 08:00,2013-09-22 17:00,2013-09-17 08:00,2013-09-22 17:00,2013-09-17 08:00,2013-09-22 17:00,2013-10-27 08:00,2013-10-31 17:00,,PT_Normal,,,,,P5p2hcqDQHmyY9v287uAHw,,,,N,0,0,,,2013-02-16 15:54,2013-02-23 09:03,admin,admin
503310,6359,125155,13662,0,N,N,N,CP_Drtn,TT_Task,DT_FixedDUR2,TK_NotStart,DUKHCONP2AMKELGF4020,"Installation  of DBS,MCCB Accessories.",8178,528,0,40,0,28.4,28.4,40,0,0,0,,,,2014-01-07 08:00,2014-01-12 17:00,,2013-10-21 08:00,2013-10-26 17:00,2013-10-21 08:00,2013-10-26 17:00,2013-10-21 08:00,2013-10-26 17:00,2014-01-07 08:00,2014-01-12 17:00,,PT_Normal,,,,,CdNYlvMkT3GEjpVr+yUpnQ,,,,N,0,0,,,2013-02-16 15:54,2013-02-16 15:56,admin,admin
503311,6359,125155,13662,0,N,N,N,CP_Drtn,TT_Task,DT_FixedDUR2,TK_NotStart,DUKHCONP2AMKELGF4025,Installation of Lighting fixtures & Accessories,8178,528,0,40,0,66.65,66.65,40,0,0,0,,,,2014-01-13 08:00,2014-01-18 17:00,,2013-10-27 08:00,2013-10-31 17:00,2013-10-27 08:00,2013-10-31 17:00,2013-10-27 08:00,2013-10-31 17:00,2014-01-13 08:00,2014-01-18 17:00,,PT_Normal,,,,,ylUgWU4zT5G01NkEfmGOQw,,,,N,0,0,,,2013-02-16 15:54,2013-02-16 15:56,admin,admin
503312,6359,125155,13662,0,N,N,N,CP_Drtn,TT_Task,DT_FixedDUR2,TK_NotStart,DUKHCONP2AMKELGF4015,Install. of CAMS & Fire Fighting Accessories,8178,472,368,56,0,184.8,184.8,56,0,0,0,,,,2014-01-11 08:00,2014-01-18 17:00,,2013-11-02 08:00,2013-11-09 17:00,2013-11-02 08:00,2013-11-09 17:00,2013-11-02 08:00,2013-11-09 17:00,2014-01-11 08:00,2014-01-18 17:00,,PT_Normal,,,,,UHXOkAtnRaeR1Xp/BkwsEw,,,,N,0,0,,,2013-02-16 15:54,2013-02-16 15:56,admin,admin
503313,6359,125155,13662,0,N,N,N,CP_Drtn,TT_Task,DT_FixedDUR2,TK_NotStart,DUKHCONP2AMKELGF4030,Installation of Telephone System,8178,776,0,40,0,25.4,25.4,40,0,0,0,,,,2014-02-19 08:00,2014-02-24 17:00,,2013-10-27 08:00,2013-10-31 17:00,2013-10-27 08:00,2013-10-31 17:00,2013-10-27 08:00,2013-10-31 17:00,2014-02-19 08:00,2014-02-24 17:00,,PT_Normal,,,,,Pz2HC7ajShyULtMTjYouCA,,,,N,0,0,,,2013-02-16 15:54,2013-02-16 15:56,admin,admin
503314,6359,125157,13662,0,N,N,N,CP_Drtn,TT_Task,DT_FixedDUR2,TK_NotStart,DUKHCONP2AMKPLRF4350,Installation of Rain water Pipes,8178,80,0,40,0,43.5,43.5,40,0,0,0,,,,2013-12-11 08:00,2013-12-16 17:00,,2013-11-30 08:00,2013-12-04 17:00,2013-11-30 08:00,2013-12-04 17:00,2013-11-30 08:00,2013-12-04 17:00,2013-12-11 08:00,2013-12-16 17:00,,PT_Normal,,,,,U+a6iR2ZR92PPo/vuUHCwA,,,,N,0,0,,,2013-02-16 15:54,2013-02-16 15:56,admin,admin
503315,6359,125158,13662,0,N,N,N,CP_Drtn,TT_Task,DT_FixedDUR2,TK_NotStart,DUKHCONP2AMKPLGF4305,Installation of Plumbing pipes & testing,8178,112,0,40,0,239.4,239.4,40,0,0,0,,,,2013-09-14 08:00,2013-09-18 17:00,,2013-08-28 08:00,2013-09-02 17:00,2013-08-28 08:00,2013-09-02 17:00,2013-08-28 08:00,2013-09-02 17:00,2013-09-14 08:00,2013-09-18 17:00,,PT_Normal,,,,,BP/wLYmOTWeuS16Nv+th8w,,,,N,0,0,,,2013-02-16 15:54,2013-02-16 15:56,admin,admin
503316,6359,125158,13662,0,N,N,N,CP_Drtn,TT_Task,DT_FixedDUR2,TK_NotStart,DUKHCONP2AMKPLGF4310,Installation of Drainage pipes &testing,8178,120,0,40,0,12.45,12.45,40,0,0,0,,,,2013-09-15 08:00,2013-09-19 17:00,,2013-08-28 08:00,2013-09-02 17:00,2013-08-28 08:00,2013-09-02 17:00,2013-08-28 08:00,2013-09-02 17:00,2013-09-15 08:00,2013-09-19 17:00,,PT_Normal,,,,,NLUVIl/oTa6PNSW6eZeoXw,,,,N,0,0,,,2013-02-16 15:54,2013-02-16 15:56,admin,admin
503317,6359,125158,13662,0,N,N,N,CP_Drtn,TT_Task,DT_FixedDUR2,TK_NotStart,DUKHCONP2AMKPLGF4315,Sanitary Fittings & Accessories,8178,80,0,56,0,35.7,35.7,56,0,0,0,,,,2013-11-27 08:00,2013-12-04 17:00,,2013-11-16 08:00,2013-11-23 17:00,2013-11-16 08:00,2013-11-23 17:00,2013-11-16 08:00,2013-11-23 17:00,2013-11-27 08:00,2013-12-04 17:00,,PT_Normal,,,,,M9wTjDmZQXGXClSvYhTk2Q,,,,N,0,0,,,2013-02-16 15:54,2013-02-16 15:56,admin,admin
503318,6359,125158,13662,0,N,N,N,CP_Drtn,TT_Task,DT_FixedDUR2,TK_NotStart,DUKHCONP2AMKPLGF4320,Installation of Water Heater,8178,80,0,40,0,25.2,25.2,40,0,0,0,,,,2013-12-05 08:00,2013-12-10 17:00,,2013-11-24 08:00,2013-11-28 17:00,2013-11-24 08:00,2013-11-28 17:00,2013-11-24 08:00,2013-11-28 17:00,2013-12-05 08:00,2013-12-10 17:00,,PT_Normal,,,,,buMMamQoTES1fzSIWC7f5g,,,,N,0,0,,,2013-02-16 15:54,2013-02-16 15:56,admin,admin
503319,6359,125160,13662,0,N,N,N,CP_Drtn,TT_Task,DT_FixedDUR2,TK_NotStart,DUKHCONP2AMKSLEX5105,Laying of Grass/ green area,8178,168,0,56,0,357,357,56,0,0,0,,,,2013-12-30 08:00,2014-01-06 17:00,,2013-12-04 08:00,2013-12-11 17:00,2013-12-04 08:00,2013-12-11 17:00,2013-12-04 08:00,2013-12-11 17:00,2013-12-30 08:00,2014-01-06 17:00,,PT_Normal,,,,,/jZWqLFzTBGuVxEUx1U4Jw,,,,N,0,0,,,2013-02-16 15:54,2013-02-16 15:56,admin,admin
503320,6359,125160,13662,0,N,N,N,CP_Drtn,TT_Task,DT_FixedDUR2,TK_NotStart,DUKHCONP2AMKSLEX5110,Laying of Palm tree,8178,512,24,56,0,91,91,56,0,0,0,,,,2014-02-27 08:00,2014-03-06 17:00,,2013-12-12 08:00,2013-12-21 17:00,2013-12-12 08:00,2013-12-21 17:00,2013-12-12 08:00,2013-12-21 17:00,2014-02-27 08:00,2014-03-06 17:00,,PT_Normal,,,,,Yk6qoPn1QBOtfdNgJ25gZg,,,,N,0,0,,,2013-02-16 15:54,2013-02-16 15:56,admin,admin
503321,6359,125161,13662,0,N,N,N,CP_Drtn,TT_Task,DT_FixedDUR2,TK_NotStart,DUKHCONP2AMKHDEX5100,Interlock works,8174,424,144,40,0,50.25,50.25,40,0,0,0,,,,2013-12-21 08:00,2013-12-25 17:00,,2013-10-16 08:00,2013-10-23 17:00,2013-10-16 08:00,2013-10-23 17:00,2013-10-16 08:00,2013-10-23 17:00,2013-12-21 08:00,2013-12-25 17:00,,PT_Normal,,,,,qSkwslZDTaWrybjWPOnfwg,,,,N,0,0,,,2013-02-16 15:54,2013-02-16 15:56,admin,admin
503322,6359,125161,13662,0,N,N,N,CP_Drtn,TT_Task,DT_FixedDUR2,TK_NotStart,DUKHCONP2AMKHDEX5090,kerb works,8173,320,0,40,0,39.25,39.25,40,0,0,0,,,,2013-11-23 08:00,2013-11-27 17:00,,2013-10-05 08:00,2013-10-09 17:00,2013-10-05 08:00,2013-10-09 17:00,2013-10-05 08:00,2013-10-09 17:00,2013-11-23 08:00,2013-11-27 17:00,,PT_Normal,,,,,1t0aKDJVSTKwQV09OmlJJw,,,,N,0,0,,,2013-02-16 15:54,2013-02-16 15:56,admin,admin
503323,6359,125161,13662,0,N,N,N,CP_Drtn,TT_Task,DT_FixedDUR2,TK_NotStart,DUKHCONP2AMKHDEX5095,Cobble Stone Works,8170,360,0,40,0,14.25,14.25,40,0,0,0,,,,2013-12-04 08:00,2013-12-09 17:00,,2013-10-10 08:00,2013-10-15 17:00,2013-10-10 08:00,2013-10-15 17:00,2013-10-10 08:00,2013-10-15 17:00,2013-12-04 08:00,2013-12-09 17:00,,PT_Normal,,,,,ajhOlf3KRK6pPetJktiHSw,,,,N,0,0,,,2013-02-16 15:54,2013-02-16 15:56,admin,admin
503324,6359,125162,13662,0,N,N,N,CP_Drtn,TT_Task,DT_FixedDUR2,TK_NotStart,DUKHCONP2AMKMSEX5005,"Construction  of Soak pit, Chambers",8172,120,0,56,0,11,11,56,0,0,0,,,,2013-09-29 08:00,2013-10-06 17:00,,2013-09-11 08:00,2013-09-18 17:00,2013-09-11 08:00,2013-09-18 17:00,2013-09-11 08:00,2013-09-18 17:00,2013-09-29 08:00,2013-10-06 17:00,,PT_Normal,,,,,xfhcHDuvSGacy/2Z503M3A,,,,N,0,0,,,2013-02-16 15:54,2013-02-16 15:56,admin,admin
503325,6359,125162,13662,0,N,N,N,CP_Drtn,TT_Task,DT_FixedDUR2,TK_NotStart,DUKHCONP2AMKMSEX5020,Construction Entrance Ramp,8164,240,0,56,0,72.75,72.75,56,0,0,0,,,,2013-10-28 08:00,2013-11-04 17:00,,2013-09-21 08:00,2013-09-28 17:00,2013-09-21 08:00,2013-09-28 17:00,2013-09-21 08:00,2013-09-28 17:00,2013-10-28 08:00,2013-11-04 17:00,,PT_Normal,,,,,gtKeu1VGR/6nu9anjgp0JQ,,,,N,0,0,,,2013-02-16 15:54,2013-02-16 15:56,admin,admin
503326,6359,125162,13662,0,N,N,N,CP_Drtn,TT_Task,DT_FixedDUR2,TK_NotStart,DUKHCONP2AMKMSEX5025,SS.Handrails and Balustrades,8178,304,0,40,0,23.25,23.25,40,0,0,0,,,,2013-11-14 08:00,2013-11-19 17:00,,2013-09-29 08:00,2013-10-03 17:00,2013-09-29 08:00,2013-10-03 17:00,2013-09-29 08:00,2013-10-03 17:00,2013-11-14 08:00,2013-11-19 17:00,,PT_Normal,,,,,mR2esEVZRDuO7UUr2x8RCQ,,,,N,0,0,,,2013-02-16 15:54,2013-02-16 15:56,admin,admin
503327,6359,125162,13662,0,N,N,N,CP_Drtn,TT_Task,DT_FixedDUR2,TK_NotStart,DUKHCONP2AMKMSEX5015,Construction of grease Trap,8178,120,0,56,0,28.25,28.25,56,0,0,0,,,,2013-10-07 08:00,2013-10-14 17:00,,2013-09-19 08:00,2013-09-26 17:00,2013-09-19 08:00,2013-09-26 17:00,2013-09-19 08:00,2013-09-26 17:00,2013-10-07 08:00,2013-10-14 17:00,,PT_Normal,,,,,QRdo97ZeS5O1o4+ggPGwCg,,,,N,0,0,,,2013-02-16 15:54,2013-02-16 15:56,admin,admin
503328,6359,125162,13662,0,N,N,N,CP_Drtn,TT_Task,DT_FixedDUR2,TK_NotStart,DUKHCONP2AMKMSEX5000,Construction of Manholes,8172,120,0,56,0,22,22,56,0,0,0,,,,2013-09-21 08:00,2013-09-28 17:00,,2013-09-03 08:00,2013-09-10 17:00,2013-09-03 08:00,2013-09-10 17:00,2013-09-03 08:00,2013-09-10 17:00,2013-09-21 08:00,2013-09-28 17:00,,PT_Normal,,,,,E2n30t/UR72MLzkjx/nd3g,,,,N,0,0,,,2013-02-16 15:54,2013-02-16 15:56,admin,admin
503329,6359,125163,13662,0,N,N,N,CP_Drtn,TT_Task,DT_FixedDUR2,TK_NotStart,DUKHCONP2AMKWEEX5030,Excavation,8177,120,0,32,0,78,78,32,72,0,72,,,,2013-10-07 08:00,2013-10-10 17:00,,2013-09-19 08:00,2013-09-23 17:00,2013-09-19 08:00,2013-09-23 17:00,2013-09-19 08:00,2013-09-23 17:00,2013-10-07 08:00,2013-10-10 17:00,,PT_Normal,,,,,kkDHO3/qSRivD6vWd2VMpw,,,,N,0,0,,,2013-02-16 15:54,2013-02-16 15:56,admin,admin
503330,6359,125163,13662,0,N,N,N,CP_Drtn,TT_Task,DT_FixedDUR2,TK_NotStart,DUKHCONP2AMKWEEX5035,Construction of Raft,8167,200,0,56,0,35,35,56,0,0,0,,,,2013-10-26 08:00,2013-11-02 17:00,,2013-09-24 08:00,2013-10-01 17:00,2013-09-24 08:00,2013-10-01 17:00,2013-09-24 08:00,2013-10-01 17:00,2013-10-26 08:00,2013-11-02 17:00,,PT_Normal,,,,,pfYjQk1PSAakLdyHj9SLdg,,,,N,0,0,,,2013-02-16 15:54,2013-02-16 15:56,admin,admin
503331,6359,125163,13662,0,N,N,N,CP_Drtn,TT_Task,DT_FixedDUR2,TK_NotStart,DUKHCONP2AMKWEEX5040,Block works & Plastering,8168,208,0,56,0,115,115,56,0,0,0,,,,2013-11-04 08:00,2013-11-11 17:00,,2013-10-02 08:00,2013-10-09 17:00,2013-10-02 08:00,2013-10-09 17:00,2013-10-02 08:00,2013-10-09 17:00,2013-11-04 08:00,2013-11-11 17:00,,PT_Normal,,,,,ykxVuVAvT7ywHKcQHHE5Lg,,,,N,0,0,,,2013-02-16 15:54,2013-02-16 15:56,admin,admin
503332,6359,125163,13662,0,N,N,N,CP_Drtn,TT_Task,DT_FixedDUR2,TK_NotStart,DUKHCONP2AMKWEEX5045,Flooring & Painting,8164,232,32,56,0,55.75,55.75,56,0,0,0,,,,2013-11-16 08:00,2013-11-23 17:00,,2013-10-10 08:00,2013-10-20 17:00,2013-10-10 08:00,2013-10-20 17:00,2013-10-10 08:00,2013-10-20 17:00,2013-11-16 08:00,2013-11-23 17:00,,PT_Normal,,,,,qKLzgK+9R5m4vZ5MnZQz8Q,,,,N,0,0,,,2013-02-16 15:54,2013-02-16 15:56,admin,admin
503333,6359,125163,13662,0,N,N,N,CP_Drtn,TT_Task,DT_FixedDUR2,TK_NotStart,DUKHCONP2AMKWEEX5050,Installation of Steel Gate,8178,224,0,40,0,25,25,40,0,0,0,,,,2013-11-30 08:00,2013-12-04 17:00,,2013-10-28 08:00,2013-11-02 17:00,2013-10-28 08:00,2013-11-02 17:00,2013-10-28 08:00,2013-11-02 17:00,2013-11-30 08:00,2013-12-04 17:00,,PT_Normal,,,,,F5mN4c+dSpu9MO+kMN/8Iw,,,,N,0,0,,,2013-02-16 15:54,2013-02-16 15:56,admin,admin
503334,6359,125163,13662,0,N,N,N,CP_Drtn,TT_Task,DT_FixedDUR2,TK_NotStart,DUKHCONP2AMKWEEX5060,Structural steel &  SS Shed cover installation,8178,224,24,80,0,88.75,88.75,80,0,0,0,,,,2013-12-05 08:00,2013-12-16 17:00,,2013-11-03 08:00,2013-11-13 17:00,2013-11-03 08:00,2013-11-13 17:00,2013-11-03 08:00,2013-11-13 17:00,2013-12-05 08:00,2013-12-16 17:00,,PT_Normal,,,,,Y+U4N5alQoGSNrnRAXmRhw,,,,N,0,0,,,2013-02-16 15:54,2013-02-16 15:56,admin,admin
503335,6359,125163,13662,0,N,N,N,CP_Drtn,TT_Task,DT_FixedDUR2,TK_NotStart,DUKHCONP2AMKWEEX5065,"Install. of Water Tank,Chiller,Pump & Meter",8178,80,0,80,0,47.8,47.8,80,0,0,0,,,,2013-12-17 08:00,2013-12-29 17:00,,2013-12-05 08:00,2013-12-16 17:00,2013-12-05 08:00,2013-12-16 17:00,2013-12-05 08:00,2013-12-16 17:00,2013-12-17 08:00,2013-12-29 17:00,,PT_Normal,,,,,3Loh2LkVSWeUMJHfyP+BFQ,,,,N,0,0,,,2013-02-16 15:54,2013-02-16 15:56,admin,admin
503336,6359,125167,13662,0,N,N,N,CP_Drtn,TT_Task,DT_FixedDUR2,TK_NotStart,DUKHCONP2AZ2PLUG4300,Drainage / Storm Pipes in Grade Slab,8178,104,0,160,0,182.4,182.4,160,0,0,0,,,,2013-07-02 08:00,2013-07-24 17:00,,2013-06-17 08:00,2013-07-09 17:00,2013-06-17 08:00,2013-07-09 17:00,2013-06-17 08:00,2013-07-09 17:00,2013-07-02 08:00,2013-07-24 17:00,,PT_Normal,,,,,agxS4WYkRjadYvrV3iqZxA,,,,N,0,0,,,2013-02-16 15:54,2013-02-16 15:56,admin,admin
503337,6359,125167,13662,0,N,N,N,CP_Drtn,TT_Task,DT_FixedDUR2,TK_NotStart,DUKHCONP2AZ2PLGF4320,Installation of Water Heater,8178,496,224,120,0,151.2,151.2,120,0,0,0,,,,2014-04-29 08:00,2014-05-15 17:00,,2014-02-16 08:00,2014-03-04 17:00,2014-02-16 08:00,2014-03-04 17:00,2014-02-16 08:00,2014-03-04 17:00,2014-04-29 08:00,2014-05-15 17:00,,PT_Normal,,,,,/nEb6c7hTc2IsdiLqnP5lg,,,,N,0,0,,,2013-02-16 15:54,2013-02-23 09:03,admin,admin
503338,6359,125167,13662,0,N,N,N,CP_Drtn,TT_Task,DT_FixedDUR2,TK_NotStart,DUKHCONP2AZ2PLGF4305,Installation of Plumbing pipes & testing,8178,104,0,160,0,1435.2,1435.2,160,0,0,0,,,,2013-10-13 08:00,2013-11-06 17:00,,2013-09-28 08:00,2013-10-22 17:00,2013-09-28 08:00,2013-10-22 17:00,2013-09-28 08:00,2013-10-22 17:00,2013-10-13 08:00,2013-11-06 17:00,,PT_Normal,,,,,d8hmgZAOTuCxZZgY6AfygA,,,,N,0,0,,,2013-02-16 15:54,2013-02-16 15:56,admin,admin
503339,6359,125167,13662,0,N,N,N,CP_Drtn,TT_Task,DT_FixedDUR2,TK_NotStart,DUKHCONP2AZ2PLGF4310,Installation of Drainage pipes &testing,8178,256,72,144,0,72,72,144,0,0,0,,,,2013-11-14 08:00,2013-12-04 17:00,,2013-10-06 08:00,2013-10-28 17:00,2013-10-06 08:00,2013-10-28 17:00,2013-10-06 08:00,2013-10-28 17:00,2013-11-14 08:00,2013-12-04 17:00,,PT_Normal,,,,,de7lv/BBT8elU3r+FyhfHQ,,,,N,0,0,,,2013-02-16 15:54,2013-02-16 15:56,admin,admin
503340,6359,125167,13662,0,N,N,N,CP_Drtn,TT_Task,DT_FixedDUR2,TK_NotStart,DUKHCONP2AZ2PLGF4315,Sanitary Fittings & Accessories,8178,56,0,160,0,218.4,218.4,160,0,0,0,,,,2014-02-05 08:00,2014-03-01 17:00,,2014-01-28 08:00,2014-02-20 17:00,2014-01-28 08:00,2014-02-20 17:00,2014-01-28 08:00,2014-02-20 17:00,2014-02-05 08:00,2014-03-01 17:00,,PT_Normal,,,,,k/UnKE6iRkqq94B3UZAZAQ,,,,N,0,0,,,2013-02-16 15:54,2013-02-16 15:56,admin,admin
503341,6359,125168,13662,0,N,N,N,CP_Drtn,TT_Task,DT_FixedDUR2,TK_NotStart,DUKHCONP2AZ2PLRF4350,Installation of Rain water Pipes,8178,200,0,120,0,265.2,265.2,120,0,0,0,,,,2014-01-22 08:00,2014-02-08 17:00,,2013-12-24 08:00,2014-01-09 17:00,2013-12-24 08:00,2014-01-09 17:00,2013-12-24 08:00,2014-01-09 17:00,2014-01-22 08:00,2014-02-08 17:00,,PT_Normal,,,,,0BXhYEOSQ02VbYiZqUdnnw,,,,N,0,0,,,2013-02-16 15:54,2013-02-23 09:03,admin,admin
503342,6359,125170,13662,0,N,N,N,CP_Drtn,TT_Task,DT_FixedDUR2,TK_NotStart,DUKHCONP2AZ2ELGF4000,Fixing of wall conduits & switch socket boxes,8178,104,0,160,0,594.8,594.8,160,0,0,0,,,,2013-10-13 08:00,2013-11-06 17:00,,2013-09-28 08:00,2013-10-22 17:00,2013-09-28 08:00,2013-10-22 17:00,2013-09-28 08:00,2013-10-22 17:00,2013-10-13 08:00,2013-11-06 17:00,,PT_Normal,,,,,qAmw94RqQSaWDB5OouwREg,,,,N,0,0,,,2013-02-16 15:54,2013-02-23 09:03,admin,admin
503343,6359,125170,13662,0,N,N,N,CP_Drtn,TT_Task,DT_FixedDUR2,TK_NotStart,DUKHCONP2AZ2ELGF4005,Cable tray & trunking installation,8178,104,0,160,0,2044.8,2044.8,160,0,0,0,,,,2013-10-30 08:00,2013-11-21 17:00,,2013-10-13 08:00,2013-11-06 17:00,2013-10-13 08:00,2013-11-06 17:00,2013-10-13 08:00,2013-11-06 17:00,2013-10-30 08:00,2013-11-21 17:00,,PT_Normal,,,,,YHzK4ZjoTTWzm8Up+zO1mQ,,,,N,0,0,,,2013-02-16 15:54,2013-02-16 15:56,admin,admin
503344,6359,125170,13662,0,N,N,N,CP_Drtn,TT_Task,DT_FixedDUR2,TK_NotStart,DUKHCONP2AZ2ELGF4010,Installation of wiring & Main Cabling,8178,328,272,160,0,414.8,414.8,160,0,0,0,,,,2013-12-10 08:00,2014-01-02 17:00,,2013-10-23 08:00,2013-11-14 17:00,2013-10-23 08:00,2013-11-14 17:00,2013-10-23 08:00,2013-11-14 17:00,2013-12-10 08:00,2014-01-02 17:00,,PT_Normal,,,,,tpZ1j9+FRAOIqI4BesvHpw,,,,N,0,0,,,2013-02-16 15:54,2013-02-16 15:56,admin,admin
503345,6359,125170,13662,0,N,N,N,CP_Drtn,TT_Task,DT_FixedDUR2,TK_NotStart,DUKHCONP2AZ2ELGF4020,"Installation  of DBS,MCCB Accessories.",8178,384,0,160,0,170.4,170.4,160,0,0,0,,,,2014-03-17 08:00,2014-04-08 17:00,,2014-01-19 08:00,2014-02-10 17:00,2014-01-19 08:00,2014-02-10 17:00,2014-01-19 08:00,2014-02-10 17:00,2014-03-17 08:00,2014-04-08 17:00,,PT_Normal,,,,,SimkYRgHQ7+Wp5CDGDQmuQ,,,,N,0,0,,,2013-02-16 15:54,2013-02-16 15:56,admin,admin
503346,6359,125170,13662,0,N,N,N,CP_Drtn,TT_Task,DT_FixedDUR2,TK_NotStart,DUKHCONP2AZ2ELGF4025,Installation of Lighting fixtures & Accessories,8178,384,0,160,0,395.6,395.6,160,0,0,0,,,,2014-03-29 08:00,2014-04-20 17:00,,2014-01-30 08:00,2014-02-23 17:00,2014-01-30 08:00,2014-02-23 17:00,2014-01-30 08:00,2014-02-23 17:00,2014-03-29 08:00,2014-04-20 17:00,,PT_Normal,,,,,T3ckivPJQXazXrf4lOgn1Q,,,,N,0,0,,,2013-02-16 15:54,2013-02-16 15:56,admin,admin
503347,6359,125170,13662,0,N,N,N,CP_Drtn,TT_Task,DT_FixedDUR2,TK_NotStart,DUKHCONP2AZ2ELGF4015,Install. of CAMS & Fire Fighting Accessories,8178,104,0,160,0,1108.8,1108.8,160,0,0,0,,,,2014-02-12 08:00,2014-03-06 17:00,,2014-01-27 08:00,2014-02-19 17:00,2014-01-27 08:00,2014-02-19 17:00,2014-01-27 08:00,2014-02-19 17:00,2014-02-12 08:00,2014-03-06 17:00,,PT_Normal,,,,,U7SKlNjERk68gFMttHXJIQ,,,,N,0,0,,,2013-02-16 15:54,2013-02-23 09:03,admin,admin
503348,6359,125170,13662,0,N,N,N,CP_Drtn,TT_Task,DT_FixedDUR2,TK_NotStart,DUKHCONP2AZ2ELGF4030,Installation of Telephone System,8178,408,24,160,0,152.4,152.4,160,0,0,0,,,,2014-04-01 08:00,2014-04-23 17:00,,2014-01-30 08:00,2014-02-23 17:00,2014-01-30 08:00,2014-02-23 17:00,2014-01-30 08:00,2014-02-23 17:00,2014-04-01 08:00,2014-04-23 17:00,,PT_Normal,,,,,TCVXM6YsTLWTDQ6vFrpbxQ,,,,N,0,0,,,2013-02-16 15:54,2013-02-16 15:56,admin,admin
503349,6359,125171,13662,0,N,N,N,CP_Drtn,TT_Task,DT_FixedDUR2,TK_NotStart,DUKHCONP2AZ2ELRF4070,Installation of Isolator,8178,384,0,144,0,361.2,361.2,144,0,0,0,,,,2014-04-12 08:00,2014-05-01 17:00,,2014-02-15 08:00,2014-03-06 17:00,2014-02-15 08:00,2014-03-06 17:00,2014-02-15 08:00,2014-03-06 17:00,2014-04-12 08:00,2014-05-01 17:00,,PT_Normal,,,,,qDvi/xblQOeCfqCwq3XE0g,,,,N,0,0,,,2013-02-16 15:54,2013-02-23 09:03,admin,admin
503350,6359,125171,13662,0,N,N,N,CP_Drtn,TT_Task,DT_FixedDUR2,TK_NotStart,DUKHCONP2AZ2ELRF4075,Installation of TV Dish Antenna,8178,384,112,160,0,188.4,188.4,160,0,0,0,,,,2014-04-23 08:00,2014-05-15 17:00,,2014-02-26 08:00,2014-03-20 17:00,2014-02-26 08:00,2014-03-20 17:00,2014-02-26 08:00,2014-03-20 17:00,2014-04-23 08:00,2014-05-15 17:00,,PT_Normal,,,,,tjpEyWH9RLqM91kG7Nf7Ow,,,,N,0,0,,,2013-02-16 15:54,2013-02-16 15:56,admin,admin
503351,6359,125173,13662,0,N,N,N,CP_Drtn,TT_Task,DT_FixedDUR2,TK_NotStart,DUKHCONP2AZ2ACRF4630,Installation of Refrigerant Pipes,8178,480,40,160,0,17.2,17.2,160,0,0,0,,,,2014-01-30 08:00,2014-02-23 17:00,,2013-11-20 08:00,2013-12-12 17:00,2013-11-20 08:00,2013-12-12 17:00,2013-11-20 08:00,2013-12-12 17:00,2014-01-30 08:00,2014-02-23 17:00,,PT_Normal,,,,,jtNyJ+9fSqy5Mw68ieykEQ,,,,N,0,0,,,2013-02-16 15:54,2013-02-23 09:03,admin,admin
503352,6359,125173,13662,0,N,N,N,CP_Drtn,TT_Task,DT_FixedDUR2,TK_NotStart,DUKHCONP2AZ2ACRF4635,Installation of Condensing Unit,8178,312,40,200,0,130.8,130.8,200,0,0,0,,,,2014-04-17 08:00,2014-05-15 17:00,,2014-03-03 08:00,2014-03-31 17:00,2014-03-03 08:00,2014-03-31 17:00,2014-03-03 08:00,2014-03-31 17:00,2014-04-17 08:00,2014-05-15 17:00,,PT_Normal,,,,,4cqFykrcRCG+YTt61LLTrA,,,,N,0,0,,,2013-02-16 15:54,2013-02-16 15:56,admin,admin
503353,6359,125174,13662,0,N,N,N,CP_Drtn,TT_Task,DT_FixedDUR2,TK_NotStart,DUKHCONP2AZ2ACGF4600,Installation AC Pipes,8178,224,0,160,0,556.8,556.8,160,0,0,0,,,,2013-11-30 08:00,2013-12-23 17:00,,2013-10-28 08:00,2013-11-19 17:00,2013-10-28 08:00,2013-11-19 17:00,2013-10-28 08:00,2013-11-19 17:00,2013-11-30 08:00,2013-12-23 17:00,,PT_Normal,,,,,HpcxR2+uRYKuVYSiiDsCBg,,,,N,0,0,,,2013-02-16 15:54,2013-02-23 09:03,admin,admin
503354,6359,125174,13662,0,N,N,N,CP_Drtn,TT_Task,DT_FixedDUR2,TK_NotStart,DUKHCONP2AZ2ACGF4605,Fixing of Ventilation Equipments,8178,312,0,200,0,85.2,85.2,200,0,0,0,,,,2014-03-15 08:00,2014-04-12 17:00,,2014-01-27 08:00,2014-02-25 17:00,2014-01-27 08:00,2014-02-25 17:00,2014-01-27 08:00,2014-02-25 17:00,2014-03-15 08:00,2014-04-12 17:00,,PT_Normal,,,,,YlK0/8sQS5KsiJbCklT/dw,,,,N,0,0,,,2013-02-16 15:54,2013-02-16 15:56,admin,admin
503355,6359,125174,13662,0,N,N,N,CP_Drtn,TT_Task,DT_FixedDUR2,TK_NotStart,DUKHCONP2AZ2ACGF4610,Fixing of Split AC,8178,312,40,160,0,154.8,154.8,160,0,0,0,,,,2014-04-06 08:00,2014-04-28 17:00,,2014-02-19 08:00,2014-03-13 17:00,2014-02-19 08:00,2014-03-13 17:00,2014-02-19 08:00,2014-03-13 17:00,2014-04-06 08:00,2014-04-28 17:00,,PT_Normal,,,,,nYE92YMDSO2QRhpVac7/eg,,,,N,0,0,,,2013-02-16 15:54,2013-02-16 15:56,admin,admin
503356,6359,125177,13662,0,N,N,N,CP_Drtn,TT_Task,DT_FixedDUR2,TK_NotStart,DUKHCONP2AZ2ARRF3645,Lime Stone Chips & Paving slab Installation,8170,240,0,144,0,344.5,344.5,144,0,0,0,,,,2013-12-09 08:00,2013-12-30 17:00,,2013-11-04 08:00,2013-11-24 17:00,2013-11-04 08:00,2013-11-24 17:00,2013-11-04 08:00,2013-11-24 17:00,2013-12-09 08:00,2013-12-30 17:00,,PT_Normal,,,,,2x/hPppbRxylGYQUSl8zlw,,,,N,0,0,,,2013-02-16 15:54,2013-02-16 15:56,admin,admin
503357,6359,125177,13662,0,N,N,N,CP_Drtn,TT_Task,DT_FixedDUR2,TK_NotStart,DUKHCONP2AZ2ARRF3660,Installation of Access Ladder,8178,552,40,160,0,132,132,160,0,0,0,,,,2014-01-30 08:00,2014-02-23 17:00,,2013-11-10 08:00,2013-12-02 17:00,2013-11-10 08:00,2013-12-02 17:00,2013-11-10 08:00,2013-12-02 17:00,2014-01-30 08:00,2014-02-23 17:00,,PT_Normal,,,,,WGAzc6c9QQSDAkWJ9wjl5Q,,,,N,0,0,,,2013-02-16 15:54,2013-02-16 15:56,admin,admin
503358,6359,125177,13662,0,N,N,N,CP_Drtn,TT_Task,DT_FixedDUR2,TK_NotStart,DUKHCONP2AZ2ARRF3625,Laying of Pitched Roof,8174,240,0,200,0,256,256,200,0,0,0,,,,2013-11-06 08:00,2013-12-04 17:00,,2013-09-30 08:00,2013-10-30 17:00,2013-09-30 08:00,2013-10-30 17:00,2013-09-30 08:00,2013-10-30 17:00,2013-11-06 08:00,2013-12-04 17:00,,PT_Normal,,,,,edQqAHg3Q+uqhtVOERxGAA,,,,N,0,0,,,2013-02-16 15:54,2013-02-16 15:56,admin,admin
503359,6359,125177,13662,0,N,N,N,CP_Drtn,TT_Task,DT_FixedDUR2,TK_NotStart,DUKHCONP2AZ2ARRF3630,Leveling Screed for Waterproofing,8164,240,0,144,0,195.5,195.5,144,0,0,0,,,,2013-11-20 08:00,2013-12-10 17:00,,2013-10-14 08:00,2013-11-05 17:00,2013-10-14 08:00,2013-11-05 17:00,2013-10-14 08:00,2013-11-05 17:00,2013-11-20 08:00,2013-12-10 17:00,,PT_Normal,,,,,3+pAnhooRvCxAqSjeqN0Ug,,,,N,0,0,,,2013-02-16 15:54,2013-02-16 15:56,admin,admin
503360,6359,125177,13662,0,N,N,N,CP_Drtn,TT_Task,DT_FixedDUR2,TK_NotStart,DUKHCONP2AZ2ARRF3635,Laying of Waterproofing Membrane,8178,240,0,144,0,722.25,722.25,144,0,0,0,,,,2013-11-26 08:00,2013-12-16 17:00,,2013-10-22 08:00,2013-11-11 17:00,2013-10-22 08:00,2013-11-11 17:00,2013-10-22 08:00,2013-11-11 17:00,2013-11-26 08:00,2013-12-16 17:00,,PT_Normal,,,,,Uxrb0HVyQiuS1qegYrqWnQ,,,,N,0,0,,,2013-02-16 15:54,2013-02-16 15:56,admin,admin
503361,6359,125177,13662,0,N,N,N,CP_Drtn,TT_Task,DT_FixedDUR2,TK_NotStart,DUKHCONP2AZ2ARRF3640,Installation of Insulation & Protection,8178,240,0,144,0,343.75,343.75,144,0,0,0,,,,2013-12-01 08:00,2013-12-22 17:00,,2013-10-27 08:00,2013-11-16 17:00,2013-10-27 08:00,2013-11-16 17:00,2013-10-27 08:00,2013-11-16 17:00,2013-12-01 08:00,2013-12-22 17:00,,PT_Normal,,,,,7KEcl9H8SPWv/frg54C8QQ,,,,N,0,0,,,2013-02-16 15:54,2013-02-16 15:56,admin,admin
503362,6359,125178,13662,0,N,N,N,CP_Drtn,TT_Task,DT_FixedDUR2,TK_NotStart,DUKHCONP2AZ2AREL3665,External Plastering,8169,240,0,200,0,4012.5,4012.5,200,0,0,0,,,,2013-12-22 08:00,2014-01-19 17:00,,2013-11-16 08:00,2013-12-14 17:00,2013-11-16 08:00,2013-12-14 17:00,2013-11-16 08:00,2013-12-14 17:00,2013-12-22 08:00,2014-01-19 17:00,,PT_Normal,,,,,vOgC/iYNS56s52Tehx0aiQ,,,,N,0,0,,,2013-02-16 15:54,2013-02-16 15:56,admin,admin
503363,6359,125178,13662,0,N,N,N,CP_Drtn,TT_Task,DT_FixedDUR2,TK_NotStart,DUKHCONP2AZ2AREL3680,External Painting,8178,440,40,160,0,1408,1408,160,0,0,0,,,,2014-02-12 08:00,2014-03-06 17:00,,2013-12-08 08:00,2013-12-31 17:00,2013-12-08 08:00,2013-12-31 17:00,2013-12-08 08:00,2013-12-31 17:00,2014-02-12 08:00,2014-03-06 17:00,,PT_Normal,,,,,cBNUIkQNTuKodTaKlk8x1A,,,,N,0,0,,,2013-02-16 15:54,2013-02-16 15:56,admin,admin
503364,6359,125180,13662,0,N,N,N,CP_Drtn,TT_Task,DT_FixedDUR2,TK_NotStart,DUKHCONP2AZ2ARGF3000,Block work,8168,104,0,200,0,5700,5700,200,0,0,0,,,,2013-09-29 08:00,2013-10-29 17:00,,2013-09-14 08:00,2013-10-12 17:00,2013-09-14 08:00,2013-10-12 17:00,2013-09-14 08:00,2013-10-12 17:00,2013-09-29 08:00,2013-10-29 17:00,,PT_Normal,,,,,Jg73Wv9CSWeDZY/aMtP+9A,,,,N,0,0,,,2013-02-16 15:54,2013-02-16 15:56,admin,admin
503365,6359,125180,13662,0,N,N,N,CP_Drtn,TT_Task,DT_FixedDUR2,TK_NotStart,DUKHCONP2AZ2ARGF3005,Plastering work,8169,104,0,200,0,2850,2850,200,0,0,0,,,,2013-10-21 08:00,2013-11-18 17:00,,2013-10-03 08:00,2013-11-03 17:00,2013-10-03 08:00,2013-11-03 17:00,2013-10-03 08:00,2013-11-03 17:00,2013-10-21 08:00,2013-11-18 17:00,,PT_Normal,,,,,gvIex9CuQKaEPSV5N+/kew,,,,N,0,0,,,2013-02-16 15:54,2013-02-16 15:56,admin,admin
503366,6359,125180,13662,0,N,N,N,CP_Drtn,TT_Task,DT_FixedDUR2,TK_NotStart,DUKHCONP2AZ2ARGF3010,Flooring screed,8164,200,144,160,0,634.25,634.25,160,0,0,0,,,,2013-11-24 08:00,2013-12-16 17:00,,2013-10-26 08:00,2013-11-17 17:00,2013-10-26 08:00,2013-11-17 17:00,2013-10-26 08:00,2013-11-17 17:00,2013-11-24 08:00,2013-12-16 17:00,,PT_Normal,,,,,6judCWByQ2aovX+GUkGr3A,,,,N,0,0,,,2013-02-16 15:54,2013-02-16 15:56,admin,admin
503367,6359,125180,13662,0,N,N,N,CP_Drtn,TT_Task,DT_FixedDUR2,TK_NotStart,DUKHCONP2AZ2ARGF3015,Wet area waterproofing & Protection Screed,8178,112,0,160,0,87,87,160,0,0,0,,,,2013-11-05 08:00,2013-11-27 17:00,,2013-10-20 08:00,2013-11-11 17:00,2013-10-20 08:00,2013-11-11 17:00,2013-10-20 08:00,2013-11-11 17:00,2013-11-05 08:00,2013-11-27 17:00,,PT_Normal,,,,,oIGsQGw4Q4e90PLF8sm08g,,,,N,0,0,,,2013-02-16 15:54,2013-02-16 15:56,admin,admin
503368,6359,125180,13662,0,N,N,N,CP_Drtn,TT_Task,DT_FixedDUR2,TK_NotStart,DUKHCONP2AZ2ARGF3030,Paint First coat,8178,48,0,160,0,1801.8,1801.8,160,0,0,0,,,,2013-11-07 08:00,2013-11-30 17:00,,2013-10-31 08:00,2013-11-23 17:00,2013-10-31 08:00,2013-11-23 17:00,2013-10-31 08:00,2013-11-23 17:00,2013-11-07 08:00,2013-11-30 17:00,,PT_Normal,,,,,PMjOH9fAQqSmydMNELZEPA,,,,N,0,0,,,2013-02-16 15:54,2013-02-23 09:03,admin,admin
503369,6359,125180,13662,0,N,N,N,CP_Drtn,TT_Task,DT_FixedDUR2,TK_NotStart,DUKHCONP2AZ2ARGF3020,Ceramic Wall Tiling,8170,112,56,120,0,1012.5,1012.5,120,0,0,0,,,,2013-11-24 08:00,2013-12-10 17:00,,2013-11-07 08:00,2013-11-24 17:00,2013-11-07 08:00,2013-11-24 17:00,2013-11-07 08:00,2013-11-24 17:00,2013-11-24 08:00,2013-12-10 17:00,,PT_Normal,,,,,GxnA6J+sSeGfRtZOdz+10w,,,,N,0,0,,,2013-02-16 15:54,2013-02-16 15:56,admin,admin
503370,6359,125180,13662,0,N,N,N,CP_Drtn,TT_Task,DT_FixedDUR2,TK_NotStart,DUKHCONP2AZ2ARGF3025,Porcelain Tile flooring,8170,56,0,160,0,1030.25,1030.25,160,0,0,0,,,,2013-12-10 08:00,2014-01-02 17:00,,2013-12-02 08:00,2013-12-25 17:00,2013-12-02 08:00,2013-12-25 17:00,2013-12-02 08:00,2013-12-25 17:00,2013-12-10 08:00,2014-01-02 17:00,,PT_Normal,,,,,7S3tqbzZSqahK2EfAjolgg,,,,N,0,0,,,2013-02-16 15:54,2013-02-16 15:56,admin,admin
503371,6359,125180,13662,0,N,N,N,CP_Drtn,TT_Task,DT_FixedDUR2,TK_NotStart,DUKHCONP2AZ2ARGF3040,Cobble Tile flooring,8170,208,24,120,0,300,300,120,0,0,0,,,,2014-02-08 08:00,2014-02-25 17:00,,2014-01-08 08:00,2014-01-25 17:00,2014-01-08 08:00,2014-01-25 17:00,2014-01-08 08:00,2014-01-25 17:00,2014-02-08 08:00,2014-02-25 17:00,,PT_Normal,,,,,i5dbrqPjTzufzZ1vnFGaNA,,,,N,0,0,,,2013-02-16 15:54,2013-02-16 15:56,admin,admin
503372,6359,125180,13662,0,N,N,N,CP_Drtn,TT_Task,DT_FixedDUR2,TK_NotStart,DUKHCONP2AZ2ARGF3035,Slate Tile Flooring & Skirting,8170,104,0,144,0,1575,1575,144,0,0,0,,,,2014-01-05 08:00,2014-01-25 17:00,,2013-12-21 08:00,2014-01-09 17:00,2013-12-21 08:00,2014-01-09 17:00,2013-12-21 08:00,2014-01-09 17:00,2014-01-05 08:00,2014-01-25 17:00,,PT_Normal,,,,,/W7XycU4ROuL51Weu641YA,,,,N,0,0,,,2013-02-16 15:54,2013-02-16 15:56,admin,admin
503373,6359,125180,13662,0,N,N,N,CP_Drtn,TT_Task,DT_FixedDUR2,TK_NotStart,DUKHCONP2AZ2ARGF3045,Fixing of Suspension systems,8178,56,0,120,0,653.5,653.5,120,0,0,0,,,,2014-01-02 08:00,2014-01-19 17:00,,2013-12-25 08:00,2014-01-11 17:00,2013-12-25 08:00,2014-01-11 17:00,2013-12-25 08:00,2014-01-11 17:00,2014-01-02 08:00,2014-01-19 17:00,,PT_Normal,,,,,UhRGPz/FR1+CZLrdZV7U/g,,,,N,0,0,,,2013-02-16 15:54,2013-02-16 15:56,admin,admin
503374,6359,125180,13662,0,N,N,N,CP_Drtn,TT_Task,DT_FixedDUR2,TK_NotStart,DUKHCONP2AZ2ARGF3060,Gypsum board false ceiling,8178,56,0,160,0,653.5,653.5,160,0,0,0,,,,2014-01-19 08:00,2014-02-10 17:00,,2014-01-11 08:00,2014-02-02 17:00,2014-01-11 08:00,2014-02-02 17:00,2014-01-11 08:00,2014-02-02 17:00,2014-01-19 08:00,2014-02-10 17:00,,PT_Normal,,,,,wUHa2swSTemRkrp/1lzqxg,,,,N,0,0,,,2013-02-16 15:54,2013-02-16 15:56,admin,admin
503375,6359,125180,13662,0,N,N,N,CP_Drtn,TT_Task,DT_FixedDUR2,TK_NotStart,DUKHCONP2AZ2ARGF3065,Wooden door,8178,56,0,120,0,198,198,120,0,0,0,,,,2014-01-30 08:00,2014-02-17 17:00,,2014-01-22 08:00,2014-02-08 17:00,2014-01-22 08:00,2014-02-08 17:00,2014-01-22 08:00,2014-02-08 17:00,2014-01-30 08:00,2014-02-17 17:00,,PT_Normal,,,,,EPQDZMMoQr2nbzkY+p38/A,,,,N,0,0,,,2013-02-16 15:54,2013-02-16 15:56,admin,admin
503376,6359,125180,13662,0,N,N,N,CP_Drtn,TT_Task,DT_FixedDUR2,TK_NotStart,DUKHCONP2AZ2ARGF3080,Aluminum windows,8178,392,120,144,0,132,132,144,0,0,0,,,,2014-04-08 08:00,2014-04-28 17:00,,2014-02-09 08:00,2014-03-02 17:00,2014-02-09 08:00,2014-03-02 17:00,2014-02-09 08:00,2014-03-02 17:00,2014-04-08 08:00,2014-04-28 17:00,,PT_Normal,,,,,/lAvxsJnTTi016nF2SWmOA,,,,N,0,0,,,2013-02-16 15:54,2013-02-16 15:56,admin,admin
503377,6359,125180,13662,0,N,N,N,CP_Drtn,TT_Task,DT_FixedDUR2,TK_NotStart,DUKHCONP2AZ2ARGF3075,Carpentry & Joinery Works,8178,64,0,144,0,528,528,144,0,0,0,,,,2014-02-06 08:00,2014-02-27 17:00,,2014-01-28 08:00,2014-02-18 17:00,2014-01-28 08:00,2014-02-18 17:00,2014-01-28 08:00,2014-02-18 17:00,2014-02-06 08:00,2014-02-27 17:00,,PT_Normal,,,,,VIG4GOm2SMW2jIipp1KriA,,,,N,0,0,,,2013-02-16 15:54,2013-02-16 15:56,admin,admin
503378,6359,125180,13662,0,N,N,N,CP_Drtn,TT_Task,DT_FixedDUR2,TK_NotStart,DUKHCONP2AZ2ARGF3090,Installation of Granite Counter Top,8171,64,0,120,0,99,99,120,0,0,0,,,,2014-02-18 08:00,2014-03-06 17:00,,2014-02-08 08:00,2014-02-25 17:00,2014-02-08 08:00,2014-02-25 17:00,2014-02-08 08:00,2014-02-25 17:00,2014-02-18 08:00,2014-03-06 17:00,,PT_Normal,,,,,dCW4TJvDQ6q9pmGGAlTBMw,,,,N,0,0,,,2013-02-16 15:54,2013-02-16 15:56,admin,admin
503379,6359,125180,13662,0,N,N,N,CP_Drtn,TT_Task,DT_FixedDUR2,TK_NotStart,DUKHCONP2AZ2ARGF3095,Final Painting,8178,272,0,200,0,1801.8,1801.8,200,0,0,0,,,,2014-04-17 08:00,2014-05-15 17:00,,2014-03-09 08:00,2014-04-06 17:00,2014-03-09 08:00,2014-04-06 17:00,2014-03-09 08:00,2014-04-06 17:00,2014-04-17 08:00,2014-05-15 17:00,,PT_Normal,,,,,Pap0qlI7TdW0WL/A5UESzA,,,,N,0,0,,,2013-02-16 15:54,2013-02-23 09:03,admin,admin
503380,6359,125183,13662,0,N,N,N,CP_Drtn,TT_Task,DT_FixedDUR2,TK_NotStart,DUKHCONP2AZ2STRF2060,Construction of Parapets,8165,152,0,160,0,521.5,521.5,160,0,0,0,,,,2013-09-19 08:00,2013-10-12 17:00,,2013-08-28 08:00,2013-09-19 17:00,2013-08-28 08:00,2013-09-19 17:00,2013-08-28 08:00,2013-09-19 17:00,2013-09-19 08:00,2013-10-12 17:00,,PT_Normal,,,,,T5/wivEtSlyv/ddQHWxs6Q,,,,N,0,0,,,2013-02-16 15:54,2013-02-16 15:56,admin,admin
503381,6359,125183,13662,0,N,N,N,CP_Drtn,TT_Task,DT_FixedDUR2,TK_NotStart,DUKHCONP2AZ2STRF2065,Construction of up stands/Plinth,8166,336,96,160,0,84,84,160,0,0,0,,,,2013-10-26 08:00,2013-11-17 17:00,,2013-09-04 08:00,2013-09-26 17:00,2013-09-04 08:00,2013-09-26 17:00,2013-09-04 08:00,2013-09-26 17:00,2013-10-26 08:00,2013-11-17 17:00,,PT_Normal,,,,,z5dTGIPiQ5m2HCczfDx41Q,,,,N,0,0,,,2013-02-16 15:54,2013-02-16 15:56,admin,admin
503382,6359,125184,13662,0,N,N,N,CP_Drtn,TT_Task,DT_FixedDUR2,TK_NotStart,DUKHCONP2AZ2STGF2000,Column-Rebar & Formwork,8165,104,0,160,0,1524.25,1524.25,160,0,0,0,,,,2013-07-28 08:00,2013-08-22 17:00,,2013-07-13 08:00,2013-08-04 17:00,2013-07-13 08:00,2013-08-04 17:00,2013-07-13 08:00,2013-08-04 17:00,2013-07-28 08:00,2013-08-22 17:00,,PT_Normal,,,,,x3g22rLpSNWeFkCB9sH36g,,,,N,0,0,,,2013-02-16 15:54,2013-02-16 15:56,admin,admin
503383,6359,125184,13662,0,N,N,N,CP_Drtn,TT_Task,DT_FixedDUR2,TK_NotStart,DUKHCONP2AZ2STGF2005,Column-Concrete,8167,104,0,120,0,105,105,120,0,0,0,,,,2013-08-07 08:00,2013-08-27 17:00,,2013-07-23 08:00,2013-08-08 17:00,2013-07-23 08:00,2013-08-08 17:00,2013-07-23 08:00,2013-08-08 17:00,2013-08-07 08:00,2013-08-27 17:00,,PT_Normal,,,,,7bZL3ZwyQoy9Edl5VjB7zA,,,,N,0,0,,,2013-02-16 15:54,2013-02-16 15:56,admin,admin
503384,6359,125184,13662,0,N,N,N,CP_Drtn,TT_Task,DT_FixedDUR2,TK_NotStart,DUKHCONP2AZ2STGF2010,"Beam, Stairs ,Slab-Rebar & Formwork",8165,104,0,200,0,6076,6076,200,0,0,0,,,,2013-08-19 08:00,2013-09-16 17:00,,2013-07-31 08:00,2013-09-01 17:00,2013-07-31 08:00,2013-09-01 17:00,2013-07-31 08:00,2013-09-01 17:00,2013-08-19 08:00,2013-09-16 17:00,,PT_Normal,,,,,nuwZrHipRXihepspeSSewA,,,,N,0,0,,,2013-02-16 15:54,2013-02-16 15:56,admin,admin
503385,6359,125184,13662,0,N,N,N,CP_Drtn,TT_Task,DT_FixedDUR2,TK_NotStart,DUKHCONP2AZ2STGF2015,"Beam, Stairs ,Slab-Concrete",8167,104,0,120,0,1302,1302,120,0,0,0,,,,2013-09-04 08:00,2013-09-21 17:00,,2013-08-20 08:00,2013-09-05 17:00,2013-08-20 08:00,2013-09-05 17:00,2013-08-20 08:00,2013-09-05 17:00,2013-09-04 08:00,2013-09-21 17:00,,PT_Normal,,,,,kgsD/eV9SMabLPaXby0ImQ,,,,N,0,0,,,2013-02-16 15:54,2013-02-16 15:56,admin,admin
503386,6359,125186,13662,0,N,N,N,CP_Drtn,TT_Task,DT_FixedDUR2,TK_NotStart,DUKHCONP2AZ2STUG1000,Footing Excavation,8177,104,0,200,0,476,476,200,224,0,224,,,,2013-04-08 08:00,2013-05-06 17:00,,2013-03-24 08:00,2013-04-21 17:00,2013-03-24 08:00,2013-04-21 17:00,2013-03-24 08:00,2013-04-21 17:00,2013-04-08 08:00,2013-05-06 17:00,,PT_Normal,,,,,XaFLJZSuQgCOCET8+gWzmg,,,,N,0,0,,,2013-02-16 15:54,2013-02-16 15:56,admin,admin
503387,6359,125186,13662,0,N,N,N,CP_Drtn,TT_Task,DT_FixedDUR2,TK_NotStart,DUKHCONP2AZ2STUG1005,Footing Antitermite,8178,104,0,160,0,902,902,160,0,0,0,,,,2013-04-20 08:00,2013-05-12 17:00,,2013-04-04 08:00,2013-04-27 17:00,2013-04-04 08:00,2013-04-27 17:00,2013-04-04 08:00,2013-04-27 17:00,2013-04-20 08:00,2013-05-12 17:00,,PT_Normal,,,,,2OnDl0hySRmaBFoU4+mCBg,,,,N,0,0,,,2013-02-16 15:54,2013-02-16 15:56,admin,admin
503388,6359,125186,13662,0,N,N,N,CP_Drtn,TT_Task,DT_FixedDUR2,TK_NotStart,DUKHCONP2AZ2STUG1010,Footing Blinding,8163,104,0,160,0,29.75,29.75,160,0,0,0,,,,2013-04-22 08:00,2013-05-14 17:00,,2013-04-07 08:00,2013-04-29 17:00,2013-04-07 08:00,2013-04-29 17:00,2013-04-07 08:00,2013-04-29 17:00,2013-04-22 08:00,2013-05-14 17:00,,PT_Normal,,,,,Zu6yHkdXTUu93qyQCHZOJA,,,,N,0,0,,,2013-02-16 15:54,2013-02-16 15:56,admin,admin
503389,6359,125186,13662,0,N,N,N,CP_Drtn,TT_Task,DT_FixedDUR2,TK_NotStart,DUKHCONP2AZ2STUG1015,Footing Waterproofing & Screed,8164,104,0,160,0,681,681,160,0,0,0,,,,2013-04-28 08:00,2013-05-20 17:00,,2013-04-13 08:00,2013-05-05 17:00,2013-04-13 08:00,2013-05-05 17:00,2013-04-13 08:00,2013-05-05 17:00,2013-04-28 08:00,2013-05-20 17:00,,PT_Normal,,,,,YDX11mxaQcWCSXPrvY+7Ww,,,,N,0,0,,,2013-02-16 15:54,2013-02-16 15:56,admin,admin
503390,6359,125186,13662,0,N,N,N,CP_Drtn,TT_Task,DT_FixedDUR2,TK_NotStart,DUKHCONP2AZ2STUG1020,Construction of foundations,8165,104,0,160,0,1335.25,1335.25,160,0,0,0,,,,2013-05-07 08:00,2013-05-29 17:00,,2013-04-22 08:00,2013-05-14 17:00,2013-04-22 08:00,2013-05-14 17:00,2013-04-22 08:00,2013-05-14 17:00,2013-05-07 08:00,2013-05-29 17:00,,PT_Normal,,,,,Gsak5FH9Rpur5WAM7X00jQ,,,,N,0,0,,,2013-02-16 15:54,2013-02-16 15:56,admin,admin
503391,6359,125186,13662,0,N,N,N,CP_Drtn,TT_Task,DT_FixedDUR2,TK_NotStart,DUKHCONP2AZ2STUG1025,Construction of neck of columns,8165,104,0,160,0,1389.5,1389.5,160,0,0,0,,,,2013-05-16 08:00,2013-06-08 17:00,,2013-05-01 08:00,2013-05-23 17:00,2013-05-01 08:00,2013-05-23 17:00,2013-05-01 08:00,2013-05-23 17:00,2013-05-16 08:00,2013-06-08 17:00,,PT_Normal,,,,,b09m8bfjRxaIinEWGKcw1w,,,,N,0,0,,,2013-02-16 15:54,2013-02-16 15:56,admin,admin
503392,6359,125186,13662,0,N,N,N,CP_Drtn,TT_Task,DT_FixedDUR2,TK_NotStart,DUKHCONP2AZ2STUG1030,Waterproofing Footing & Neck Column,8178,104,0,160,0,125.5,125.5,160,0,0,0,,,,2013-05-26 08:00,2013-06-17 17:00,,2013-05-11 08:00,2013-06-02 17:00,2013-05-11 08:00,2013-06-02 17:00,2013-05-11 08:00,2013-06-02 17:00,2013-05-26 08:00,2013-06-17 17:00,,PT_Normal,,,,,qB6uQs6CQE+47eguf/oW+w,,,,N,0,0,,,2013-02-16 15:54,2013-02-16 15:56,admin,admin
503393,6359,125186,13662,0,N,N,N,CP_Drtn,TT_Task,DT_FixedDUR2,TK_NotStart,DUKHCONP2AZ2STUG1035,Backfilling Upto Grade Beam Bottom,8177,104,0,160,0,822,822,160,660,0,660,,,,2013-06-06 08:00,2013-06-29 17:00,,2013-05-22 08:00,2013-06-13 17:00,2013-05-22 08:00,2013-06-13 17:00,2013-05-22 08:00,2013-06-13 17:00,2013-06-06 08:00,2013-06-29 17:00,,PT_Normal,,,,,PY8gccm8RR6U22LOAoWraQ,,,,N,0,0,,,2013-02-16 15:54,2013-02-16 15:56,admin,admin
503394,6359,125186,13662,0,N,N,N,CP_Drtn,TT_Task,DT_FixedDUR2,TK_NotStart,DUKHCONP2AZ2STUG1040,Construction of Grade Beams,8163,104,0,200,0,2514.75,2514.75,200,0,0,0,,,,2013-06-18 08:00,2013-07-16 17:00,,2013-06-03 08:00,2013-07-01 17:00,2013-06-03 08:00,2013-07-01 17:00,2013-06-03 08:00,2013-07-01 17:00,2013-06-18 08:00,2013-07-16 17:00,,PT_Normal,,,,,R2amyerVSyuykGEvSD6vTQ,,,,N,0,0,,,2013-02-16 15:54,2013-02-16 15:56,admin,admin
503395,6359,125186,13662,0,N,N,N,CP_Drtn,TT_Task,DT_FixedDUR2,TK_NotStart,DUKHCONP2AZ2STUG1045,Construction of slab on grade,8163,104,0,200,0,1541.75,1541.75,200,0,0,0,,,,2013-07-10 08:00,2013-08-07 17:00,,2013-06-25 08:00,2013-07-23 17:00,2013-06-25 08:00,2013-07-23 17:00,2013-06-25 08:00,2013-07-23 17:00,2013-07-10 08:00,2013-08-07 17:00,,PT_Normal,,,,,g1EZaK4mSaO2JEO3cILa8A,,,,N,0,0,,,2013-02-16 15:54,2013-02-16 15:56,admin,admin
503396,6359,125188,13662,0,N,N,N,CP_Drtn,TT_Task,DT_FixedDUR2,TK_NotStart,DUKHCONP2AZ2WEEX5030,Excavation,8177,120,0,160,0,116,116,160,80,0,80,,,,2013-11-06 08:00,2013-11-28 17:00,,2013-10-20 08:00,2013-11-11 17:00,2013-10-20 08:00,2013-11-11 17:00,2013-10-20 08:00,2013-11-11 17:00,2013-11-06 08:00,2013-11-28 17:00,,PT_Normal,,,,,fo+UlYW4RsibkqkxtBJ/2A,,,,N,0,0,,,2013-02-16 15:54,2013-02-16 15:56,admin,admin
503397,6359,125188,13662,0,N,N,N,CP_Drtn,TT_Task,DT_FixedDUR2,TK_NotStart,DUKHCONP2AZ2WEEX5035,Construction of Raft,8167,256,0,200,0,210,210,200,0,0,0,,,,2013-12-02 08:00,2013-12-31 17:00,,2013-10-26 08:00,2013-11-23 17:00,2013-10-26 08:00,2013-11-23 17:00,2013-10-26 08:00,2013-11-23 17:00,2013-12-02 08:00,2013-12-31 17:00,,PT_Normal,,,,,FDBEng5MQtywcFI1sjocAw,,,,N,0,0,,,2013-02-16 15:54,2013-02-16 15:56,admin,admin
503398,6359,125188,13662,0,N,N,N,CP_Drtn,TT_Task,DT_FixedDUR2,TK_NotStart,DUKHCONP2AZ2WEEX5040,Block works & Plastering,8168,256,0,200,0,692,692,200,0,0,0,,,,2013-12-11 08:00,2014-01-09 17:00,,2013-11-04 08:00,2013-12-02 17:00,2013-11-04 08:00,2013-12-02 17:00,2013-11-04 08:00,2013-12-02 17:00,2013-12-11 08:00,2014-01-09 17:00,,PT_Normal,,,,,WdC+squ/S6qeqxalggSOcQ,,,,N,0,0,,,2013-02-16 15:54,2013-02-16 15:56,admin,admin
503399,6359,125188,13662,0,N,N,N,CP_Drtn,TT_Task,DT_FixedDUR2,TK_NotStart,DUKHCONP2AZ2WEEX5045,Flooring & Painting,8164,256,16,200,0,336,336,200,0,0,0,,,,2013-12-24 08:00,2014-01-21 17:00,,2013-11-16 08:00,2013-12-14 17:00,2013-11-16 08:00,2013-12-14 17:00,2013-11-16 08:00,2013-12-14 17:00,2013-12-24 08:00,2014-01-21 17:00,,PT_Normal,,,,,1FW3NqlxTa2fcf9pf7+NWA,,,,N,0,0,,,2013-02-16 15:54,2013-02-16 15:56,admin,admin
503400,6359,125188,13662,0,N,N,N,CP_Drtn,TT_Task,DT_FixedDUR2,TK_NotStart,DUKHCONP2AZ2WEEX5050,Installation of Steel Gate,8178,240,0,160,0,150,150,160,0,0,0,,,,2014-01-11 08:00,2014-02-02 17:00,,2013-12-05 08:00,2013-12-29 17:00,2013-12-05 08:00,2013-12-29 17:00,2013-12-05 08:00,2013-12-29 17:00,2014-01-11 08:00,2014-02-02 17:00,,PT_Normal,,,,,SmheBnUCRY2a1xxYIPlx3w,,,,N,0,0,,,2013-02-16 15:54,2013-02-16 15:56,admin,admin
503401,6359,125188,13662,0,N,N,N,CP_Drtn,TT_Task,DT_FixedDUR2,TK_NotStart,DUKHCONP2AZ2WEEX5060,Structural steel &  SS Shed cover installation,8178,240,160,200,0,534,534,200,0,0,0,,,,2014-01-16 08:00,2014-02-15 17:00,,2013-12-11 08:00,2014-01-09 17:00,2013-12-11 08:00,2014-01-09 17:00,2013-12-11 08:00,2014-01-09 17:00,2014-01-16 08:00,2014-02-15 17:00,,PT_Normal,,,,,Pg3RyUmCQe+45G1xP8I9mg,,,,N,0,0,,,2013-02-16 15:54,2013-02-16 15:56,admin,admin
503402,6359,125188,13662,0,N,N,N,CP_Drtn,TT_Task,DT_FixedDUR2,TK_NotStart,DUKHCONP2AZ2WEEX5065,"Install. of Water Tank,Chiller,Pump & Meter",8178,80,0,200,0,286.8,286.8,200,0,0,0,,,,2014-01-28 08:00,2014-02-26 17:00,,2014-01-16 08:00,2014-02-15 17:00,2014-01-16 08:00,2014-02-15 17:00,2014-01-16 08:00,2014-02-15 17:00,2014-01-28 08:00,2014-02-26 17:00,,PT_Normal,,,,,G7HRWTeQR6O7Q+cmrFJfFA,,,,N,0,0,,,2013-02-16 15:54,2013-02-23 09:03,admin,admin
503403,6359,125188,13662,0,N,N,N,CP_Drtn,TT_Task,DT_FixedDUR2,TK_NotStart,DUKHCONP2AZ2WEEX5070,Installation ladder for water Tank,8178,120,40,160,0,200,200,160,0,0,0,,,,2014-02-12 08:00,2014-03-06 17:00,,2014-01-25 08:00,2014-02-17 17:00,2014-01-25 08:00,2014-02-17 17:00,2014-01-25 08:00,2014-02-17 17:00,2014-02-12 08:00,2014-03-06 17:00,,PT_Normal,,,,,nl6bre5tTlCG96+EUWHEWg,,,,N,0,0,,,2013-02-16 15:54,2013-02-16 15:56,admin,admin
503404,6359,125189,13662,0,N,N,N,CP_Drtn,TT_Task,DT_FixedDUR2,TK_NotStart,DUKHCONP2AZ2SLEX5105,Laying of Grass/ green area,8178,168,0,160,0,2142,2142,160,0,0,0,,,,2014-01-30 08:00,2014-02-23 17:00,,2014-01-06 08:00,2014-01-28 17:00,2014-01-06 08:00,2014-01-28 17:00,2014-01-06 08:00,2014-01-28 17:00,2014-01-30 08:00,2014-02-23 17:00,,PT_Normal,,,,,W7/3YSXpSm+VZerTvVFmKA,,,,N,0,0,,,2013-02-16 15:54,2013-02-16 15:56,admin,admin
503405,6359,125189,13662,0,N,N,N,CP_Drtn,TT_Task,DT_FixedDUR2,TK_NotStart,DUKHCONP2AZ2SLEX5110,Laying of Palm tree,8178,488,0,160,0,546,546,160,0,0,0,,,,2014-03-31 08:00,2014-04-22 17:00,,2014-01-18 08:00,2014-02-09 17:00,2014-01-18 08:00,2014-02-09 17:00,2014-01-18 08:00,2014-02-09 17:00,2014-03-31 08:00,2014-04-22 17:00,,PT_Normal,,,,,4RWAWJraRzKhAJDibpqm4g,,,,N,0,0,,,2013-02-16 15:54,2013-02-16 15:56,admin,admin
503406,6359,125190,13662,0,N,N,N,CP_Drtn,TT_Task,DT_FixedDUR2,TK_NotStart,DUKHCONP2AZ2MSEX5335,Aluminum Roll-up Shutter with 2m Wall,8178,216,216,200,0,400,400,200,0,0,0,,,,2014-05-17 08:00,2014-06-14 17:00,,2014-04-15 08:00,2014-05-13 17:00,2014-04-15 08:00,2014-05-13 17:00,2014-04-15 08:00,2014-05-13 17:00,2014-05-17 08:00,2014-06-14 17:00,,PT_Normal,,,,,20s58K8YQfmZcgF4q/8Cow,,,,N,0,0,,,2013-02-16 15:54,2013-02-16 16:45,admin,admin
503407,6359,125190,13662,0,N,N,N,CP_Drtn,TT_Task,DT_FixedDUR2,TK_NotStart,DUKHCONP2AZ2MSEX5020,Construction Entrance Ramp,8164,240,0,160,0,436,436,160,0,0,0,,,,2013-11-20 08:00,2013-12-12 17:00,,2013-10-14 08:00,2013-11-07 17:00,2013-10-14 08:00,2013-11-07 17:00,2013-10-14 08:00,2013-11-07 17:00,2013-11-20 08:00,2013-12-12 17:00,,PT_Normal,,,,,UZ/cSrl4SwWkHfDaMypK7g,,,,N,0,0,,,2013-02-16 15:54,2013-02-16 15:56,admin,admin
503408,6359,125190,13662,0,N,N,N,CP_Drtn,TT_Task,DT_FixedDUR2,TK_NotStart,DUKHCONP2AZ2MSEX5015,Construction of grease Trap,8178,336,0,160,0,168,168,160,0,0,0,,,,2014-01-22 08:00,2014-02-15 17:00,,2013-12-03 08:00,2013-12-26 17:00,2013-12-03 08:00,2013-12-26 17:00,2013-12-03 08:00,2013-12-26 17:00,2014-01-22 08:00,2014-02-15 17:00,,PT_Normal,,,,,NbNBD5RAT7OVsYpOqCbk5Q,,,,N,0,0,,,2013-02-16 15:54,2013-02-16 15:56,admin,admin
503409,6359,125190,13662,0,N,N,N,CP_Drtn,TT_Task,DT_FixedDUR2,TK_NotStart,DUKHCONP2AZ2MSEX5000,Construction of Manholes,8172,336,0,200,0,132,132,200,0,0,0,,,,2013-12-19 08:00,2014-01-16 17:00,,2013-10-30 08:00,2013-11-27 17:00,2013-10-30 08:00,2013-11-27 17:00,2013-10-30 08:00,2013-11-27 17:00,2013-12-19 08:00,2014-01-16 17:00,,PT_Normal,,,,,5CcB+bTOTvqtQxkuoA2+BQ,,,,N,0,0,,,2013-02-16 15:54,2013-02-16 15:56,admin,admin
503410,6359,125190,13662,0,N,N,N,CP_Drtn,TT_Task,DT_FixedDUR2,TK_NotStart,DUKHCONP2AZ2MSEX5005,"Construction  of Soak pit, Chambers",8172,336,0,200,0,66,66,200,0,0,0,,,,2014-01-02 08:00,2014-01-30 17:00,,2013-11-13 08:00,2013-12-11 17:00,2013-11-13 08:00,2013-12-11 17:00,2013-11-13 08:00,2013-12-11 17:00,2014-01-02 08:00,2014-01-30 17:00,,PT_Normal,,,,,+G0urk6VQeqcxRSO4B2mcQ,,,,N,0,0,,,2013-02-16 15:54,2013-02-16 15:56,admin,admin
503411,6359,125190,13662,0,N,N,N,CP_Drtn,TT_Task,DT_FixedDUR2,TK_NotStart,DUKHCONP2AZ2MSEX5055,Installation Steel Door,8178,240,0,160,0,180,180,160,0,0,0,,,,2013-12-02 08:00,2013-12-25 17:00,,2013-10-28 08:00,2013-11-19 17:00,2013-10-28 08:00,2013-11-19 17:00,2013-10-28 08:00,2013-11-19 17:00,2013-12-02 08:00,2013-12-25 17:00,,PT_Normal,,,,,fDnrOL9RQm6hIvuz9BvsFA,,,,N,0,0,,,2013-02-16 15:54,2013-02-16 15:56,admin,admin
503412,6359,125190,13662,0,N,N,N,CP_Drtn,TT_Task,DT_FixedDUR2,TK_NotStart,DUKHCONP2AZ2MSEX5010,Telephone cable laying,8177,440,32,200,0,500,500,200,0,0,0,,,,2014-03-03 08:00,2014-03-31 17:00,,2013-12-28 08:00,2014-01-25 17:00,2013-12-28 08:00,2014-01-25 17:00,2013-12-28 08:00,2014-01-25 17:00,2014-03-03 08:00,2014-03-31 17:00,,PT_Normal,,,,,VwvbAqI+QiiEXgXNZ67XTg,,,,N,0,0,,,2013-02-16 15:54,2013-02-16 15:56,admin,admin
503413,6359,125190,13662,0,N,N,N,CP_Drtn,TT_Task,DT_FixedDUR2,TK_NotStart,DUKHCONP2AZ2MSEX5025,SS.Handrails and Balustrades,8178,240,0,160,0,136,136,160,0,0,0,,,,2013-12-14 08:00,2014-01-06 17:00,,2013-11-09 08:00,2013-12-01 17:00,2013-11-09 08:00,2013-12-01 17:00,2013-11-09 08:00,2013-12-01 17:00,2013-12-14 08:00,2014-01-06 17:00,,PT_Normal,,,,,I/GjYq+fRxqxB/6NxwXxdA,,,,N,0,0,,,2013-02-16 15:54,2013-02-16 15:56,admin,admin
503414,6359,125191,13662,0,N,N,N,CP_Drtn,TT_Task,DT_FixedDUR2,TK_NotStart,DUKHCONP2AZ2HDEX5090,kerb works,8173,240,0,160,0,236,236,160,0,0,0,,,,2013-12-23 08:00,2014-01-14 17:00,,2013-11-17 08:00,2013-12-09 17:00,2013-11-17 08:00,2013-12-09 17:00,2013-11-17 08:00,2013-12-09 17:00,2013-12-23 08:00,2014-01-14 17:00,,PT_Normal,,,,,sMQAI/KnQRSxvh/6LHtH3g,,,,N,0,0,,,2013-02-16 15:54,2013-02-16 15:56,admin,admin
503415,6359,125191,13662,0,N,N,N,CP_Drtn,TT_Task,DT_FixedDUR2,TK_NotStart,DUKHCONP2AZ2HDEX5095,Cobble Stone Works,8170,240,0,160,0,86,86,160,0,0,0,,,,2014-01-04 08:00,2014-01-26 17:00,,2013-11-28 08:00,2013-12-22 17:00,2013-11-28 08:00,2013-12-22 17:00,2013-11-28 08:00,2013-12-22 17:00,2014-01-04 08:00,2014-01-26 17:00,,PT_Normal,,,,,jJMecWs9TrC4HyFwz9IE+w,,,,N,0,0,,,2013-02-16 15:54,2013-02-16 15:56,admin,admin
503416,6359,125191,13662,0,N,N,N,CP_Drtn,TT_Task,DT_FixedDUR2,TK_NotStart,DUKHCONP2AZ2HDEX5100,Interlock works,8174,240,72,160,0,300,300,160,0,0,0,,,,2014-01-19 08:00,2014-02-10 17:00,,2013-12-14 08:00,2014-01-06 17:00,2013-12-14 08:00,2014-01-06 17:00,2013-12-14 08:00,2014-01-06 17:00,2014-01-19 08:00,2014-02-10 17:00,,PT_Normal,,,,,c4bwjvNRSYWYNnfdq/rmAQ,,,,N,0,0,,,2013-02-16 15:54,2013-02-16 15:56,admin,admin
503417,6359,125192,13662,0,N,N,N,CP_Drtn,TT_Task,DT_FixedDUR2,TK_NotStart,DUKHCONP2AZ2PLTC8005,Pre-Commissioning & Testing of Plumbing Works,8178,272,272,200,0,3000,3000,200,0,0,0,,,,2014-05-17 08:00,2014-06-14 17:00,,2014-04-07 08:00,2014-05-05 17:00,2014-04-07 08:00,2014-05-05 17:00,2014-04-07 08:00,2014-05-05 17:00,2014-05-17 08:00,2014-06-14 17:00,,PT_Normal,,,,,BJ0NicgmSyikxw4eVWUnUQ,,,,N,0,0,,,2013-02-16 15:54,2013-02-16 16:35,admin,admin
503418,6359,125192,13662,0,N,N,N,CP_Drtn,TT_Task,DT_FixedDUR2,TK_NotStart,DUKHCONP2AZ2ACTC8000,Pre-Commissioning & Testing of AC Works,8178,272,272,200,0,1500,1500,200,0,0,0,,,,2014-05-17 08:00,2014-06-14 17:00,,2014-04-07 08:00,2014-05-05 17:00,2014-04-07 08:00,2014-05-05 17:00,2014-04-07 08:00,2014-05-05 17:00,2014-05-17 08:00,2014-06-14 17:00,,PT_Normal,,,,,UqVMt6IuQae998T2h8zZ5w,,,,N,0,0,,,2013-02-16 15:54,2013-02-16 16:35,admin,admin
503419,6359,125192,13662,0,N,N,N,CP_Drtn,TT_Task,DT_FixedDUR2,TK_NotStart,DUKHCONP2AZ2ELTC8010,Pre-Commissioning & Testing of Electrical Works,8178,272,272,200,0,3000,3000,200,0,0,0,,,,2014-05-17 08:00,2014-06-14 17:00,,2014-04-07 08:00,2014-05-05 17:00,2014-04-07 08:00,2014-05-05 17:00,2014-04-07 08:00,2014-05-05 17:00,2014-05-17 08:00,2014-06-14 17:00,,PT_Normal,,,,,HHnf8gcwTgqgP07aPVGNpg,,,,N,0,0,,,2013-02-16 15:54,2013-02-16 16:35,admin,admin
503420,6359,125196,13662,0,N,N,N,CP_Drtn,TT_Task,DT_FixedDUR2,TK_NotStart,DUKHCONI2BZ2TCGL5295,Excavation Telecommunication trenches,8177,136,0,160,0,362,362,160,200,0,200,,,,2014-02-12 08:00,2014-03-06 17:00,,2014-01-22 08:00,2014-02-15 17:00,2014-01-22 08:00,2014-02-15 17:00,2014-01-22 08:00,2014-02-15 17:00,2014-02-12 08:00,2014-03-06 17:00,,PT_Normal,,,,,6R1P3TVLRUSTrwksWUjnQA,,,,N,0,0,,,2013-02-16 15:54,2013-02-16 15:56,admin,admin
503421,6359,125196,13662,0,N,N,N,CP_Drtn,TT_Task,DT_FixedDUR2,TK_NotStart,DUKHCONI2BZ2TCGL5300,Laying of cables,8178,136,0,160,0,954.4,954.4,160,0,0,0,,,,2014-02-18 08:00,2014-03-12 17:00,,2014-01-28 08:00,2014-02-20 17:00,2014-01-28 08:00,2014-02-20 17:00,2014-01-28 08:00,2014-02-20 17:00,2014-02-18 08:00,2014-03-12 17:00,,PT_Normal,,,,,pvYBRB+SSoy4sUCohsY9sQ,,,,N,0,0,,,2013-02-16 15:54,2013-02-16 15:56,admin,admin
503422,6359,125196,13662,0,N,N,N,CP_Drtn,TT_Task,DT_FixedDUR2,TK_NotStart,DUKHCONI2BZ2TCGL5305,Backfilling telecommunication trench,8177,136,0,160,0,286,286,160,220,0,220,,,,2014-02-24 08:00,2014-03-18 17:00,,2014-02-03 08:00,2014-02-26 17:00,2014-02-03 08:00,2014-02-26 17:00,2014-02-03 08:00,2014-02-26 17:00,2014-02-24 08:00,2014-03-18 17:00,,PT_Normal,,,,,hiAa1rtJSquWMG/CILB4Mg,,,,N,0,0,,,2013-02-16 15:54,2013-02-16 15:56,admin,admin
503423,6359,125196,13662,0,N,N,N,CP_Drtn,TT_Task,DT_FixedDUR2,TK_NotStart,DUKHCONI2BZ2TCGL5310,Connection & Installation,8178,336,184,160,0,79.2,79.2,160,0,0,0,,,,2014-04-06 08:00,2014-04-28 17:00,,2014-02-16 08:00,2014-03-10 17:00,2014-02-16 08:00,2014-03-10 17:00,2014-02-16 08:00,2014-03-10 17:00,2014-04-06 08:00,2014-04-28 17:00,,PT_Normal,,,,,u2dDELuZSWyiAt34KWrvZw,,,,N,0,0,,,2013-02-16 15:54,2013-02-16 15:56,admin,admin
503424,6359,125197,13662,0,N,N,N,CP_Drtn,TT_Task,DT_FixedDUR2,TK_NotStart,DUKHCONI2BZ2HDGL7020,Precast Concrete Kerbs works,8173,216,0,160,0,650,650,160,0,0,0,,,,2014-03-19 08:00,2014-04-10 17:00,,2014-02-16 08:00,2014-03-10 17:00,2014-02-16 08:00,2014-03-10 17:00,2014-02-16 08:00,2014-03-10 17:00,2014-03-19 08:00,2014-04-10 17:00,,PT_Normal,,,,,lJ1CVWQARBeQYEjzeJehKw,,,,N,0,0,,,2013-02-16 15:54,2013-02-16 15:56,admin,admin
503425,6359,125197,13662,0,N,N,N,CP_Drtn,TT_Task,DT_FixedDUR2,TK_NotStart,DUKHCONI2BZ2HDGL7025,Interlocking for Walkways,8174,216,0,200,0,762,762,200,0,0,0,,,,2014-03-31 08:00,2014-04-28 17:00,,2014-02-27 08:00,2014-03-27 17:00,2014-02-27 08:00,2014-03-27 17:00,2014-02-27 08:00,2014-03-27 17:00,2014-03-31 08:00,2014-04-28 17:00,,PT_Normal,,,,,wLMqUg/ZTmahFcIkAAcidg,,,,N,0,0,,,2013-02-16 15:54,2013-02-16 15:56,admin,admin
503426,6359,125197,13662,0,N,N,N,CP_Drtn,TT_Task,DT_FixedDUR2,TK_NotStart,DUKHCONI2BZ2HDGL7030,Construction of Retaining wall,8165,216,0,200,0,216,216,200,0,0,0,,,,2014-04-12 08:00,2014-05-10 17:00,,2014-03-11 08:00,2014-04-08 17:00,2014-03-11 08:00,2014-04-08 17:00,2014-03-11 08:00,2014-04-08 17:00,2014-04-12 08:00,2014-05-10 17:00,,PT_Normal,,,,,CwD0adMXQ5uttHSnTi3bPQ,,,,N,0,0,,,2013-02-16 15:54,2013-02-16 15:56,admin,admin
503427,6359,125197,13662,0,N,N,N,CP_Drtn,TT_Task,DT_FixedDUR2,TK_NotStart,DUKHCONI2BZ2HDGL7035,Construction of Wash Stone Boulders,8170,216,0,200,0,396,396,200,0,0,0,,,,2014-04-12 08:00,2014-05-10 17:00,,2014-03-11 08:00,2014-04-08 17:00,2014-03-11 08:00,2014-04-08 17:00,2014-03-11 08:00,2014-04-08 17:00,2014-04-12 08:00,2014-05-10 17:00,,PT_Normal,,,,,7lv2KikrRWKHkRW4t8jUWQ,,,,N,0,0,,,2013-02-16 15:54,2013-02-16 15:56,admin,admin
503428,6359,125197,13662,0,N,N,N,CP_Drtn,TT_Task,DT_FixedDUR2,TK_NotStart,DUKHCONI2BZ2HDGL7040,Construction of Speed Humps,8167,256,256,80,0,14,14,80,0,0,0,,,,2014-06-03 08:00,2014-06-14 17:00,,2014-04-27 08:00,2014-05-07 17:00,2014-04-27 08:00,2014-05-07 17:00,2014-04-27 08:00,2014-05-07 17:00,2014-06-03 08:00,2014-06-14 17:00,,PT_Normal,,,,,ok+wt9xhS+io80HztOH82w,,,,N,0,0,,,2013-02-16 15:54,2013-02-16 15:56,admin,admin
503429,6359,125198,13662,0,N,N,N,CP_Drtn,TT_Task,DT_FixedDUR2,TK_NotStart,DUKHCONI2BZ2PSGL7000,Excavation,8177,176,40,120,0,49,49,120,31.000038,0,31.000038,,,,2014-04-23 08:00,2014-05-10 17:00,,2014-03-29 08:00,2014-04-14 17:00,2014-03-29 08:00,2014-04-14 17:00,2014-03-29 08:00,2014-04-14 17:00,2014-04-23 08:00,2014-05-10 17:00,,PT_Normal,,,,,di7W3kWKTIWdF0o3TBeCfQ,,,,N,0,0,,,2013-02-16 15:54,2013-02-23 09:03,admin,admin
503430,6359,125198,13662,0,N,N,N,CP_Drtn,TT_Task,DT_FixedDUR2,TK_NotStart,DUKHCONI2BZ2PSGL7005,Foundation casting,8165,136,0,120,0,1912,1912,120,0,0,0,,,,2014-04-29 08:00,2014-05-15 17:00,,2014-04-09 08:00,2014-04-26 17:00,2014-04-09 08:00,2014-04-26 17:00,2014-04-09 08:00,2014-04-26 17:00,2014-04-29 08:00,2014-05-15 17:00,,PT_Normal,,,,,pzMVP3PuSNSgTtM1xizDrA,,,,N,0,0,,,2013-02-16 15:54,2013-02-16 15:56,admin,admin
503431,6359,125198,13662,0,N,N,N,CP_Drtn,TT_Task,DT_FixedDUR2,TK_NotStart,DUKHCONI2BZ2PSGL7010,"Column, Frame&  Fabrics  Erection",8178,136,0,200,0,286,286,200,0,0,0,,,,2014-05-11 08:00,2014-06-08 17:00,,2014-04-21 08:00,2014-05-19 17:00,2014-04-21 08:00,2014-05-19 17:00,2014-04-21 08:00,2014-05-19 17:00,2014-05-11 08:00,2014-06-08 17:00,,PT_Normal,,,,,nTjt5OkvTOO/e9c+rCP/iw,,,,N,0,0,,,2013-02-16 15:54,2013-02-16 15:56,admin,admin
503432,6359,125198,13662,0,N,N,N,CP_Drtn,TT_Task,DT_FixedDUR2,TK_NotStart,DUKHCONI2BZ2PSGL7015,Electrical Works-Parking Shed,8178,136,136,200,0,51.6,51.6,200,0,0,0,,,,2014-05-17 08:00,2014-06-14 17:00,,2014-04-27 08:00,2014-05-25 17:00,2014-04-27 08:00,2014-05-25 17:00,2014-04-27 08:00,2014-05-25 17:00,2014-05-17 08:00,2014-06-14 17:00,,PT_Normal,,,,,3xpOzwFITzuEjuhkYatuiQ,,,,N,0,0,,,2013-02-16 15:54,2013-02-16 15:56,admin,admin
503433,6359,125199,13662,0,N,N,N,CP_Drtn,TT_Task,DT_FixedDUR2,TK_NotStart,DUKHCONI2BZ2SLGL7210,Plantation works,8178,216,216,200,0,574,574,200,0,0,0,,,,2014-05-17 08:00,2014-06-14 17:00,,2014-04-15 08:00,2014-05-13 17:00,2014-04-15 08:00,2014-05-13 17:00,2014-04-15 08:00,2014-05-13 17:00,2014-05-17 08:00,2014-06-14 17:00,,PT_Normal,,,,,pl41cuJITDm8NXvTJ9lpdw,,,,N,0,0,,,2013-02-16 15:54,2013-02-16 15:56,admin,admin
503434,6359,125199,13662,0,N,N,N,CP_Drtn,TT_Task,DT_FixedDUR2,TK_NotStart,DUKHCONI2BZ2SLGL7200,Excavation for Landscaping,8177,216,0,200,0,2844,2844,200,1500,0,1500,,,,2014-04-23 08:00,2014-05-21 17:00,,2014-03-23 08:00,2014-04-20 17:00,2014-03-23 08:00,2014-04-20 17:00,2014-03-23 08:00,2014-04-20 17:00,2014-04-23 08:00,2014-05-21 17:00,,PT_Normal,,,,,iVRBPtIFQ5ujz93TQzrfdg,,,,N,0,0,,,2013-02-16 15:54,2013-02-16 15:56,admin,admin
503435,6359,125199,13662,0,N,N,N,CP_Drtn,TT_Task,DT_FixedDUR2,TK_NotStart,DUKHCONI2BZ2SLGL7205,Sweet Soil Laying,8178,216,0,200,0,630,630,200,0,0,0,,,,2014-05-05 08:00,2014-06-02 17:00,,2014-04-03 08:00,2014-05-01 17:00,2014-04-03 08:00,2014-05-01 17:00,2014-04-03 08:00,2014-05-01 17:00,2014-05-05 08:00,2014-06-02 17:00,,PT_Normal,,,,,10WpZKSDR3m7BQwzlQyz6w,,,,N,0,0,,,2013-02-16 15:54,2013-02-16 15:56,admin,admin
503436,6359,125200,13662,0,N,N,N,CP_Drtn,TT_Task,DT_FixedDUR2,TK_NotStart,DUKHCONI2BZ2RWGL6000,Excavation & Earth Filling,8177,136,0,80,0,1190,1190,80,500,0,500,,,,2014-03-08 08:00,2014-03-18 17:00,,2014-02-16 08:00,2014-02-26 17:00,2014-02-16 08:00,2014-02-26 17:00,2014-02-16 08:00,2014-02-26 17:00,2014-03-08 08:00,2014-03-18 17:00,,PT_Normal,,,,,Fx53YhCcR4uO9qIiXQ02QQ,,,,N,0,0,,,2013-02-16 15:54,2013-02-16 15:56,admin,admin
503437,6359,125200,13662,0,N,N,N,CP_Drtn,TT_Task,DT_FixedDUR2,TK_NotStart,DUKHCONI2BZ2RWGL6005,Laying of Sub Grade,8178,136,0,200,0,24,24,200,0,0,0,,,,2014-03-19 08:00,2014-04-16 17:00,,2014-02-27 08:00,2014-03-27 17:00,2014-02-27 08:00,2014-03-27 17:00,2014-02-27 08:00,2014-03-27 17:00,2014-03-19 08:00,2014-04-16 17:00,,PT_Normal,,,,,hvGepzrdTxykEgbkDyT8sg,,,,N,0,0,,,2013-02-16 15:54,2013-02-16 15:56,admin,admin
503438,6359,125200,13662,0,N,N,N,CP_Drtn,TT_Task,DT_FixedDUR2,TK_NotStart,DUKHCONI2BZ2RWGL6010,Laying of Precast Kerbs,8178,136,0,200,0,24,24,200,0,0,0,,,,2014-03-31 08:00,2014-04-28 17:00,,2014-03-11 08:00,2014-04-08 17:00,2014-03-11 08:00,2014-04-08 17:00,2014-03-11 08:00,2014-04-08 17:00,2014-03-31 08:00,2014-04-28 17:00,,PT_Normal,,,,,PVG3XhPTRrOdYL5aW4QKwg,,,,N,0,0,,,2013-02-16 15:54,2013-02-16 15:56,admin,admin
503439,6359,125200,13662,0,N,N,N,CP_Drtn,TT_Task,DT_FixedDUR2,TK_NotStart,DUKHCONI2BZ2RWGL6015,Laying of Granular Sub Base Coarse,8173,136,0,160,0,1536,1536,160,600,0,600,,,,2014-04-12 08:00,2014-05-04 17:00,,2014-03-23 08:00,2014-04-14 17:00,2014-03-23 08:00,2014-04-14 17:00,2014-03-23 08:00,2014-04-14 17:00,2014-04-12 08:00,2014-05-04 17:00,,PT_Normal,,,,,R0LcoV3mQsq0pYvmF89LSA,,,,N,0,0,,,2013-02-16 15:54,2013-02-16 15:56,admin,admin
503440,6359,125200,13662,0,N,N,N,CP_Drtn,TT_Task,DT_FixedDUR2,TK_NotStart,DUKHCONI2BZ2RWGL6020,Laying of Road Base Asphalt Concrete,8178,136,0,40,0,174,174,40,150,0,150,,,,2014-05-05 08:00,2014-05-10 17:00,,2014-04-15 08:00,2014-04-20 17:00,2014-04-15 08:00,2014-04-20 17:00,2014-04-15 08:00,2014-04-20 17:00,2014-05-05 08:00,2014-05-10 17:00,,PT_Normal,,,,,giPLDeM8TrGpdzdZobqV3w,,,,N,0,0,,,2013-02-16 15:54,2013-02-16 15:56,admin,admin
503441,6359,125200,13662,0,N,N,N,CP_Drtn,TT_Task,DT_FixedDUR2,TK_NotStart,DUKHCONI2BZ2RWGL6025,Laying of Asphalt Wearing Coarse,8178,256,0,40,0,174,174,40,150,0,150,,,,2014-05-28 08:00,2014-06-02 17:00,,2014-04-21 08:00,2014-04-26 17:00,2014-04-21 08:00,2014-04-26 17:00,2014-04-21 08:00,2014-04-26 17:00,2014-05-28 08:00,2014-06-02 17:00,,PT_Normal,,,,,30K/vdhzQ/+OT8uu9whKDw,,,,N,0,0,,,2013-02-16 15:54,2013-02-16 15:56,admin,admin
503442,6359,125200,13662,0,N,N,N,CP_Drtn,TT_Task,DT_FixedDUR2,TK_NotStart,DUKHCONI2BZ2RWGL6030,Traffic Signage & Road Marking,8178,256,120,40,0,680,680,40,0,0,0,,,,2014-06-03 08:00,2014-06-08 17:00,,2014-04-27 08:00,2014-05-01 17:00,2014-04-27 08:00,2014-05-01 17:00,2014-04-27 08:00,2014-05-01 17:00,2014-06-03 08:00,2014-06-08 17:00,,PT_Normal,,,,,gS/2q0F6QpevpkJ5tAyclw,,,,N,0,0,,,2013-02-16 15:54,2013-02-16 15:56,admin,admin
503443,6359,125201,13662,0,N,N,N,CP_Drtn,TT_Task,DT_FixedDUR2,TK_NotStart,DUKHCONI2BZ2WSGL5155,Excavation for water line,8177,152,0,200,0,455,455,200,251,0,251,,,,2013-11-27 08:00,2013-12-26 17:00,,2013-11-05 08:00,2013-12-03 17:00,2013-11-05 08:00,2013-12-03 17:00,2013-11-05 08:00,2013-12-03 17:00,2013-11-27 08:00,2013-12-26 17:00,,PT_Normal,,,,,s7mixdjiSOSoPqlQTYW27Q,,,,N,0,0,,,2013-02-16 15:54,2013-02-16 15:56,admin,admin
503444,6359,125201,13662,0,N,N,N,CP_Drtn,TT_Task,DT_FixedDUR2,TK_NotStart,DUKHCONI2BZ2WSGL5160,Laying of water line,8178,152,0,200,0,386.4,386.4,200,0,0,0,,,,2013-12-03 08:00,2014-01-01 17:00,,2013-11-11 08:00,2013-12-09 17:00,2013-11-11 08:00,2013-12-09 17:00,2013-11-11 08:00,2013-12-09 17:00,2013-12-03 08:00,2014-01-01 17:00,,PT_Normal,,,,,rO/LiZKqS7CormiCZlHIrw,,,,N,0,0,,,2013-02-16 15:54,2013-02-23 09:03,admin,admin
503445,6359,125201,13662,0,N,N,N,CP_Drtn,TT_Task,DT_FixedDUR2,TK_NotStart,DUKHCONI2BZ2WSGL5165,Testing of potable water line,8178,152,0,200,0,117.6,117.6,200,0,0,0,,,,2013-12-09 08:00,2014-01-07 17:00,,2013-11-17 08:00,2013-12-15 17:00,2013-11-17 08:00,2013-12-15 17:00,2013-11-17 08:00,2013-12-15 17:00,2013-12-09 08:00,2014-01-07 17:00,,PT_Normal,,,,,f+DOe3vBRtyFTOBZSGF3LA,,,,N,0,0,,,2013-02-16 15:54,2013-02-16 15:56,admin,admin
503446,6359,125201,13662,0,N,N,N,CP_Drtn,TT_Task,DT_FixedDUR2,TK_NotStart,DUKHCONI2BZ2WSGL5170,Backfilling potable water line,8177,152,0,200,0,359,359,200,275,0,275,,,,2013-12-15 08:00,2014-01-13 17:00,,2013-11-23 08:00,2013-12-22 17:00,2013-11-23 08:00,2013-12-22 17:00,2013-11-23 08:00,2013-12-22 17:00,2013-12-15 08:00,2014-01-13 17:00,,PT_Normal,,,,,dOIhdwR8SB2Q03MrgUcOlA,,,,N,0,0,,,2013-02-16 15:54,2013-02-16 15:56,admin,admin
503447,6359,125201,13662,0,N,N,N,CP_Drtn,TT_Task,DT_FixedDUR2,TK_NotStart,DUKHCONI2BZ2WSGL5175,Construction of valve chambers & Thrust Blocks,8172,304,0,200,0,80,80,200,0,0,0,,,,2014-01-13 08:00,2014-02-10 17:00,,2013-11-28 08:00,2013-12-28 17:00,2013-11-28 08:00,2013-12-28 17:00,2013-11-28 08:00,2013-12-28 17:00,2014-01-13 08:00,2014-02-10 17:00,,PT_Normal,,,,,jr2PhZC7SDWIS4slh1khWQ,,,,N,0,0,,,2013-02-16 15:54,2013-02-16 15:56,admin,admin
503448,6359,125201,13662,0,N,N,N,CP_Drtn,TT_Task,DT_FixedDUR2,TK_NotStart,DUKHCONI2BZ2WSGL5180,"Installation of meter ,Accessories & Connection",8178,304,72,160,0,33.6,33.6,160,0,0,0,,,,2014-02-12 08:00,2014-03-06 17:00,,2013-12-29 08:00,2014-01-20 17:00,2013-12-29 08:00,2014-01-20 17:00,2013-12-29 08:00,2014-01-20 17:00,2014-02-12 08:00,2014-03-06 17:00,,PT_Normal,,,,,HOXX8eIBQzelLdaaWPSu0w,,,,N,0,0,,,2013-02-16 15:54,2013-02-16 15:56,admin,admin
503449,6359,125202,13662,0,N,N,N,CP_Drtn,TT_Task,DT_FixedDUR2,TK_NotStart,DUKHCONI2BZ2SAGL5135,Construction of manholes Drainage,8172,584,200,200,0,44,44,200,0,0,0,,,,2014-01-13 08:00,2014-02-10 17:00,,2013-10-16 08:00,2013-11-16 17:00,2013-10-16 08:00,2013-11-16 17:00,2013-10-16 08:00,2013-11-16 17:00,2014-01-13 08:00,2014-02-10 17:00,,PT_Normal,,,,,kQtYBGfDRs+r95cLViRrpQ,,,,N,0,0,,,2013-02-16 15:54,2013-02-16 15:56,admin,admin
503450,6359,125202,13662,0,N,N,N,CP_Drtn,TT_Task,DT_FixedDUR2,TK_NotStart,DUKHCONI2BZ2SAGL5140,Construction of soakaways,8172,192,0,200,0,190,190,200,0,0,0,,,,2013-11-16 08:00,2013-12-14 17:00,,2013-10-16 08:00,2013-11-16 17:00,2013-10-16 08:00,2013-11-16 17:00,2013-10-16 08:00,2013-11-16 17:00,2013-11-16 08:00,2013-12-14 17:00,,PT_Normal,,,,,FiR4PZFpRtykP08uwHixWg,,,,N,0,0,,,2013-02-16 15:54,2013-02-16 15:56,admin,admin
503451,6359,125202,13662,0,N,N,N,CP_Drtn,TT_Task,DT_FixedDUR2,TK_NotStart,DUKHCONI2BZ2SAGL5145,Construction of Road gullies,8172,192,0,200,0,190,190,200,0,0,0,,,,2013-12-15 08:00,2014-01-13 17:00,,2013-11-17 08:00,2013-12-15 17:00,2013-11-17 08:00,2013-12-15 17:00,2013-11-17 08:00,2013-12-15 17:00,2013-12-15 08:00,2014-01-13 17:00,,PT_Normal,,,,,Gl9gFOV/QsWognIlLcf86A,,,,N,0,0,,,2013-02-16 15:54,2013-02-16 15:56,admin,admin
503452,6359,125202,13662,0,N,N,N,CP_Drtn,TT_Task,DT_FixedDUR2,TK_NotStart,DUKHCONI2BZ2SAGL5150,Connection with existing sewer manhole,8172,384,248,160,0,44,44,160,0,0,0,,,,2014-02-12 08:00,2014-03-06 17:00,,2013-12-16 08:00,2014-01-08 17:00,2013-12-16 08:00,2014-01-08 17:00,2013-12-16 08:00,2014-01-08 17:00,2014-02-12 08:00,2014-03-06 17:00,,PT_Normal,,,,,vmgG6Z/wS/+GdhtuEoutHg,,,,N,0,0,,,2013-02-16 15:54,2013-02-16 15:56,admin,admin
503453,6359,125203,13662,0,N,N,N,CP_Drtn,TT_Task,DT_FixedDUR2,TK_NotStart,DUKHCONI2BZ2IRGL5265,Excavation for irrigation line,8177,224,0,200,0,178,178,200,100,0,100,,,,2014-03-17 08:00,2014-04-14 17:00,,2014-02-12 08:00,2014-03-12 17:00,2014-02-12 08:00,2014-03-12 17:00,2014-02-12 08:00,2014-03-12 17:00,2014-03-17 08:00,2014-04-14 17:00,,PT_Normal,,,,,2wCeYZCdQFSCj/Aa79tCfg,,,,N,0,0,,,2013-02-16 15:54,2013-02-16 15:56,admin,admin
503454,6359,125203,13662,0,N,N,N,CP_Drtn,TT_Task,DT_FixedDUR2,TK_NotStart,DUKHCONI2BZ2IRGL5270,Laying of irrigationline,8178,224,0,200,0,100.8,100.8,200,0,0,0,,,,2014-03-23 08:00,2014-04-20 17:00,,2014-02-18 08:00,2014-03-18 17:00,2014-02-18 08:00,2014-03-18 17:00,2014-02-18 08:00,2014-03-18 17:00,2014-03-23 08:00,2014-04-20 17:00,,PT_Normal,,,,,kF4HrU4lT6CcBCamJTijUw,,,,N,0,0,,,2013-02-16 15:54,2013-02-16 15:56,admin,admin
503455,6359,125203,13662,0,N,N,N,CP_Drtn,TT_Task,DT_FixedDUR2,TK_NotStart,DUKHCONI2BZ2IRGL5275,Testing of irrigation line,8178,224,0,200,0,84,84,200,0,0,0,,,,2014-03-29 08:00,2014-04-26 17:00,,2014-02-24 08:00,2014-03-24 17:00,2014-02-24 08:00,2014-03-24 17:00,2014-02-24 08:00,2014-03-24 17:00,2014-03-29 08:00,2014-04-26 17:00,,PT_Normal,,,,,vdPQUA5qQte33q7iNLW7wQ,,,,N,0,0,,,2013-02-16 15:54,2013-02-16 15:56,admin,admin
503456,6359,125203,13662,0,N,N,N,CP_Drtn,TT_Task,DT_FixedDUR2,TK_NotStart,DUKHCONI2BZ2IRGL5280,Backfilling irrigation line,8177,224,0,200,0,140,140,200,110,0,110,,,,2014-04-03 08:00,2014-05-01 17:00,,2014-03-02 08:00,2014-03-30 17:00,2014-03-02 08:00,2014-03-30 17:00,2014-03-02 08:00,2014-03-30 17:00,2014-04-03 08:00,2014-05-01 17:00,,PT_Normal,,,,,Ws9KrqYXQ5+69DGxLxGkHQ,,,,N,0,0,,,2013-02-16 15:54,2013-02-16 15:56,admin,admin
503457,6359,125203,13662,0,N,N,N,CP_Drtn,TT_Task,DT_FixedDUR2,TK_NotStart,DUKHCONI2BZ2IRGL5285,"Construction of Thrust Blocks,Pull boxes",8178,224,0,200,0,313.6,313.6,200,0,0,0,,,,2014-04-15 08:00,2014-05-13 17:00,,2014-03-13 08:00,2014-04-10 17:00,2014-03-13 08:00,2014-04-10 17:00,2014-03-13 08:00,2014-04-10 17:00,2014-04-15 08:00,2014-05-13 17:00,,PT_Normal,,,,,Ey1OZw1SQ5+noL7aSv1ARw,,,,N,0,0,,,2013-02-16 15:54,2013-02-16 15:56,admin,admin
503458,6359,125203,13662,0,N,N,N,CP_Drtn,TT_Task,DT_FixedDUR2,TK_NotStart,DUKHCONI2BZ2IRGL5290,"Irrigation Fittings (Nozzle,Values)",8178,224,8,200,0,100.8,100.8,200,0,0,0,,,,2014-04-23 08:00,2014-05-21 17:00,,2014-03-22 08:00,2014-04-19 17:00,2014-03-22 08:00,2014-04-19 17:00,2014-03-22 08:00,2014-04-19 17:00,2014-04-23 08:00,2014-05-21 17:00,,PT_Normal,,,,,AuRhEXH6SLaspbo2b4VqzA,,,,N,0,0,,,2013-02-16 15:54,2013-02-16 15:56,admin,admin
503459,6359,125204,13662,0,N,N,N,CP_Drtn,TT_Task,DT_FixedDUR2,TK_NotStart,DUKHCONI2BZ2DRGL5115,Excavation for Drainage line,8177,192,0,200,0,233,233,200,125,0,125,,,,2013-10-12 08:00,2013-11-11 17:00,,2013-09-14 08:00,2013-10-12 17:00,2013-09-14 08:00,2013-10-12 17:00,2013-09-14 08:00,2013-10-12 17:00,2013-10-12 08:00,2013-11-11 17:00,,PT_Normal,,,,,e50gGnGBREijoRNbpQrTbA,,,,N,0,0,,,2013-02-16 15:54,2013-02-16 15:56,admin,admin
503460,6359,125204,13662,0,N,N,N,CP_Drtn,TT_Task,DT_FixedDUR2,TK_NotStart,DUKHCONI2BZ2DRGL5120,Laying of Drainage line,8178,192,0,200,0,127.2,127.2,200,0,0,0,,,,2013-10-21 08:00,2013-11-18 17:00,,2013-09-21 08:00,2013-10-21 17:00,2013-09-21 08:00,2013-10-21 17:00,2013-09-21 08:00,2013-10-21 17:00,2013-10-21 08:00,2013-11-18 17:00,,PT_Normal,,,,,jR/KUVNdRfqifRQwyZ8otw,,,,N,0,0,,,2013-02-16 15:54,2013-02-16 15:56,admin,admin
503461,6359,125204,13662,0,N,N,N,CP_Drtn,TT_Task,DT_FixedDUR2,TK_NotStart,DUKHCONI2BZ2DRGL5125,Testing of Drainage line,8178,192,0,200,0,67.2,67.2,200,0,0,0,,,,2013-10-29 08:00,2013-11-26 17:00,,2013-09-29 08:00,2013-10-29 17:00,2013-09-29 08:00,2013-10-29 17:00,2013-09-29 08:00,2013-10-29 17:00,2013-10-29 08:00,2013-11-26 17:00,,PT_Normal,,,,,w8wb1PVrTxiMbRh6596BKQ,,,,N,0,0,,,2013-02-16 15:54,2013-02-16 15:56,admin,admin
503462,6359,125204,13662,0,N,N,N,CP_Drtn,TT_Task,DT_FixedDUR2,TK_NotStart,DUKHCONI2BZ2DRGL5130,Backfilling Drainage line,8177,192,0,120,0,207,207,120,165,0,165,,,,2013-11-16 08:00,2013-12-02 17:00,,2013-10-16 08:00,2013-11-04 17:00,2013-10-16 08:00,2013-11-04 17:00,2013-10-16 08:00,2013-11-04 17:00,2013-11-16 08:00,2013-12-02 17:00,,PT_Normal,,,,,/Hauef2HTVWDNEiUXeP6FA,,,,N,0,0,,,2013-02-16 15:54,2013-02-16 15:56,admin,admin
503463,6359,125205,13662,0,N,N,N,CP_Drtn,TT_Task,DT_FixedDUR2,TK_NotStart,DUKHCONI2BZ2FFGL5185,Excavation for firefighting line,8177,136,0,200,0,172,172,200,100,0,100,,,,2013-12-22 08:00,2014-01-19 17:00,,2013-12-01 08:00,2013-12-30 17:00,2013-12-01 08:00,2013-12-30 17:00,2013-12-01 08:00,2013-12-30 17:00,2013-12-22 08:00,2014-01-19 17:00,,PT_Normal,,,,,1RDk6G3/TVC/EhQEPoDHTQ,,,,N,0,0,,,2013-02-16 15:54,2013-02-16 15:56,admin,admin
503464,6359,125205,13662,0,N,N,N,CP_Drtn,TT_Task,DT_FixedDUR2,TK_NotStart,DUKHCONI2BZ2FFGL5190,Laying of firefighting line,8178,136,0,200,0,165.6,165.6,200,0,0,0,,,,2013-12-30 08:00,2014-01-27 17:00,,2013-12-09 08:00,2014-01-07 17:00,2013-12-09 08:00,2014-01-07 17:00,2013-12-09 08:00,2014-01-07 17:00,2013-12-30 08:00,2014-01-27 17:00,,PT_Normal,,,,,x1REMcnOSjq7YwtOhGdX0A,,,,N,0,0,,,2013-02-16 15:54,2013-02-16 15:56,admin,admin
503465,6359,125205,13662,0,N,N,N,CP_Drtn,TT_Task,DT_FixedDUR2,TK_NotStart,DUKHCONI2BZ2FFGL5195,Testing of firefighting line,8178,136,0,200,0,82.8,82.8,200,0,0,0,,,,2014-01-05 08:00,2014-02-02 17:00,,2013-12-15 08:00,2014-01-13 17:00,2013-12-15 08:00,2014-01-13 17:00,2013-12-15 08:00,2014-01-13 17:00,2014-01-05 08:00,2014-02-02 17:00,,PT_Normal,,,,,ccPZdKHuRtG0tXXn5LqooQ,,,,N,0,0,,,2013-02-16 15:54,2013-02-16 15:56,admin,admin
503466,6359,125205,13662,0,N,N,N,CP_Drtn,TT_Task,DT_FixedDUR2,TK_NotStart,DUKHCONI2BZ2FFGL5200,Backfilling firefighting line,8177,136,0,200,0,140,140,200,110,0,110,,,,2014-01-11 08:00,2014-02-08 17:00,,2013-12-22 08:00,2014-01-19 17:00,2013-12-22 08:00,2014-01-19 17:00,2013-12-22 08:00,2014-01-19 17:00,2014-01-11 08:00,2014-02-08 17:00,,PT_Normal,,,,,Mj9VTIwTQiueWlgksCx7NQ,,,,N,0,0,,,2013-02-16 15:54,2013-02-16 15:56,admin,admin
503467,6359,125205,13662,0,N,N,N,CP_Drtn,TT_Task,DT_FixedDUR2,TK_NotStart,DUKHCONI2BZ2FFGL5205,Construction of valve chambers & Thrust Blocks,8165,232,0,200,0,174,174,200,0,0,0,,,,2014-01-30 08:00,2014-03-01 17:00,,2013-12-28 08:00,2014-01-25 17:00,2013-12-28 08:00,2014-01-25 17:00,2013-12-28 08:00,2014-01-25 17:00,2014-01-30 08:00,2014-03-01 17:00,,PT_Normal,,,,,ErGFnNzcSb+NvoydQcXMKQ,,,,N,0,0,,,2013-02-16 15:54,2013-02-16 15:56,admin,admin
503468,6359,125205,13662,0,N,N,N,CP_Drtn,TT_Task,DT_FixedDUR2,TK_NotStart,DUKHCONI2BZ2FFGL5210,Connection with existing Firewater System,8165,232,96,200,0,174,174,200,0,0,0,,,,2014-02-05 08:00,2014-03-06 17:00,,2014-01-02 08:00,2014-01-30 17:00,2014-01-02 08:00,2014-01-30 17:00,2014-01-02 08:00,2014-01-30 17:00,2014-02-05 08:00,2014-03-06 17:00,,PT_Normal,,,,,Gx2cGH37Q6WG5T8cPl0K+g,,,,N,0,0,,,2013-02-16 15:54,2013-02-16 15:56,admin,admin
503469,6359,125206,13662,0,N,N,N,CP_Drtn,TT_Task,DT_FixedDUR2,TK_NotStart,DUKHCONI2BZ2ELGL5215,Excavation Cable  Trenches  & Duct Banks,8177,136,0,200,0,1593,1593,200,651,0,651,,,,2014-01-19 08:00,2014-02-17 17:00,,2013-12-30 08:00,2014-01-27 17:00,2013-12-30 08:00,2014-01-27 17:00,2013-12-30 08:00,2014-01-27 17:00,2014-01-19 08:00,2014-02-17 17:00,,PT_Normal,,,,,Hl6V4Q76Q7GpUwZgNiWvYg,,,,N,0,0,,,2013-02-16 15:54,2013-02-16 15:56,admin,admin
503470,6359,125206,13662,0,N,N,N,CP_Drtn,TT_Task,DT_FixedDUR2,TK_NotStart,DUKHCONI2BZ2ELGL5220,Laying of electrical cables,8178,160,0,200,0,2232.4,2232.4,200,0,0,0,,,,2014-01-28 08:00,2014-02-26 17:00,,2014-01-05 08:00,2014-02-02 17:00,2014-01-05 08:00,2014-02-02 17:00,2014-01-05 08:00,2014-02-02 17:00,2014-01-28 08:00,2014-02-26 17:00,,PT_Normal,,,,,Q0O8k1zKQuGadc5wlHok0Q,,,,N,0,0,,,2013-02-16 15:54,2013-02-16 15:56,admin,admin
503471,6359,125206,13662,0,N,N,N,CP_Drtn,TT_Task,DT_FixedDUR2,TK_NotStart,DUKHCONI2BZ2ELGL5225,Backfilling Electrical trench,8177,160,0,200,0,1203,1203,200,825,0,825,,,,2014-02-05 08:00,2014-03-06 17:00,,2014-01-13 08:00,2014-02-10 17:00,2014-01-13 08:00,2014-02-10 17:00,2014-01-13 08:00,2014-02-10 17:00,2014-02-05 08:00,2014-03-06 17:00,,PT_Normal,,,,,fumtTeC1TweeGkOnVGfW4Q,,,,N,0,0,,,2013-02-16 15:54,2013-02-16 15:56,admin,admin
503472,6359,125206,13662,0,N,N,N,CP_Drtn,TT_Task,DT_FixedDUR2,TK_NotStart,DUKHCONI2BZ2ELGL5230,Construction of Submain Board & Feeder Pillar,8165,360,0,200,0,520,520,200,0,0,0,,,,2014-03-19 08:00,2014-04-16 17:00,,2014-01-25 08:00,2014-02-23 17:00,2014-01-25 08:00,2014-02-23 17:00,2014-01-25 08:00,2014-02-23 17:00,2014-03-19 08:00,2014-04-16 17:00,,PT_Normal,,,,,hQs/eDlZSOanE7ESwgiQnA,,,,N,0,0,,,2013-02-16 15:54,2013-02-16 15:56,admin,admin
503473,6359,125207,13662,0,N,N,N,CP_Drtn,TT_Task,DT_FixedDUR2,TK_NotStart,DUKHCONI2BZ2STGL5235,Excavation for Street lighting,8177,136,0,200,0,247,247,200,151,0,151,,,,2014-01-19 08:00,2014-02-17 17:00,,2013-12-30 08:00,2014-01-27 17:00,2013-12-30 08:00,2014-01-27 17:00,2013-12-30 08:00,2014-01-27 17:00,2014-01-19 08:00,2014-02-17 17:00,,PT_Normal,,,,,aRQr2RV3TV6giU+uxZrzog,,,,N,0,0,,,2013-02-16 15:54,2013-02-16 15:56,admin,admin
503474,6359,125207,13662,0,N,N,N,CP_Drtn,TT_Task,DT_FixedDUR2,TK_NotStart,DUKHCONI2BZ2STGL5240,Construction of Duct Banks,8178,136,0,200,0,454.4,454.4,200,0,0,0,,,,2014-01-25 08:00,2014-02-23 17:00,,2014-01-05 08:00,2014-02-02 17:00,2014-01-05 08:00,2014-02-02 17:00,2014-01-05 08:00,2014-02-02 17:00,2014-01-25 08:00,2014-02-23 17:00,,PT_Normal,,,,,2j26iq6MS2i852F6nKGurw,,,,N,0,0,,,2013-02-16 15:54,2013-02-16 15:56,admin,admin
503475,6359,125207,13662,0,N,N,N,CP_Drtn,TT_Task,DT_FixedDUR2,TK_NotStart,DUKHCONI2BZ2STGL5245,Construction of Foundation,8172,136,0,200,0,674,674,200,0,0,0,,,,2014-01-25 08:00,2014-02-23 17:00,,2014-01-05 08:00,2014-02-02 17:00,2014-01-05 08:00,2014-02-02 17:00,2014-01-05 08:00,2014-02-02 17:00,2014-01-25 08:00,2014-02-23 17:00,,PT_Normal,,,,,9fbpJVDETi25TsiKTiXYQA,,,,N,0,0,,,2013-02-16 15:54,2013-02-16 15:56,admin,admin
503476,6359,125207,13662,0,N,N,N,CP_Drtn,TT_Task,DT_FixedDUR2,TK_NotStart,DUKHCONI2BZ2STGL5250,Backfilling Street Lighting,8177,136,0,200,0,152,152,200,110,0,110,,,,2014-01-30 08:00,2014-03-01 17:00,,2014-01-11 08:00,2014-02-08 17:00,2014-01-11 08:00,2014-02-08 17:00,2014-01-11 08:00,2014-02-08 17:00,2014-01-30 08:00,2014-03-01 17:00,,PT_Normal,,,,,+EEjljAYQLKVTRalqRfDIw,,,,N,0,0,,,2013-02-16 15:54,2013-02-16 15:56,admin,admin
503477,6359,125207,13662,0,N,N,N,CP_Drtn,TT_Task,DT_FixedDUR2,TK_NotStart,DUKHCONI2BZ2STGL5255,Installation of light Post,8178,520,160,200,0,227.2,227.2,200,0,0,0,,,,2014-04-09 08:00,2014-05-07 17:00,,2014-01-22 08:00,2014-02-20 17:00,2014-01-22 08:00,2014-02-20 17:00,2014-01-22 08:00,2014-02-20 17:00,2014-04-09 08:00,2014-05-07 17:00,,PT_Normal,,,,,uOKC91QQQ6Sj5Wv9KpiUqA,,,,N,0,0,,,2013-02-16 15:54,2013-02-16 15:56,admin,admin
503478,6359,125207,13662,0,N,N,N,CP_Drtn,TT_Task,DT_FixedDUR2,TK_NotStart,DUKHCONI2BZ2STGL5260,Electrical Works,8178,360,224,200,0,170.4,170.4,200,0,0,0,,,,2014-04-17 08:00,2014-05-15 17:00,,2014-02-24 08:00,2014-03-24 17:00,2014-02-24 08:00,2014-03-24 17:00,2014-02-24 08:00,2014-03-24 17:00,2014-04-17 08:00,2014-05-15 17:00,,PT_Normal,,,,,C1NbQUQEQ0q9LbOXA5epkw,,,,N,0,0,,,2013-02-16 15:54,2013-02-16 15:56,admin,admin
503479,6359,125208,13662,0,N,N,N,CP_Drtn,TT_Task,DT_FixedDUR2,TK_NotStart,DUKHCONI2BZ2BWGL5315,Construction of Boundary Wall (Ht-3m),8165,208,0,200,0,182,182,200,0,0,0,,,,2014-02-23 08:00,2014-03-23 17:00,,2014-01-22 08:00,2014-02-20 17:00,2014-01-22 08:00,2014-02-20 17:00,2014-01-22 08:00,2014-02-20 17:00,2014-02-23 08:00,2014-03-23 17:00,,PT_Normal,,,,,x4evw4SGRsqNdDc9b6Nn2g,,,,N,0,0,,,2013-02-16 15:54,2013-02-16 15:56,admin,admin
503480,6359,125208,13662,0,N,N,N,CP_Drtn,TT_Task,DT_FixedDUR2,TK_NotStart,DUKHCONI2BZ2BWGL5320,"Install.Steel Gate,Entance Barrier (3m Wall)",8178,208,0,200,0,14,14,200,0,0,0,,,,2014-03-11 08:00,2014-04-08 17:00,,2014-02-08 08:00,2014-03-09 17:00,2014-02-08 08:00,2014-03-09 17:00,2014-02-08 08:00,2014-03-09 17:00,2014-03-11 08:00,2014-04-08 17:00,,PT_Normal,,,,,eRyqE0/rQeWLzAz+DU5/LA,,,,N,0,0,,,2013-02-16 15:54,2013-02-16 15:56,admin,admin
503481,6359,125208,13662,0,N,N,N,CP_Drtn,TT_Task,DT_FixedDUR2,TK_NotStart,DUKHCONI2BZ2BWGL5325,Const. of Villa Front Boundary Wall (Ht-2m),8165,208,0,200,0,112,112,200,0,0,0,,,,2014-04-09 08:00,2014-05-07 17:00,,2014-03-10 08:00,2014-04-07 17:00,2014-03-10 08:00,2014-04-07 17:00,2014-03-10 08:00,2014-04-07 17:00,2014-04-09 08:00,2014-05-07 17:00,,PT_Normal,,,,,p71lBTOvSrGMtVk/NLAx1g,,,,N,0,0,,,2013-02-16 15:54,2013-02-16 15:56,admin,admin
503482,6359,125208,13662,0,N,N,N,CP_Drtn,TT_Task,DT_FixedDUR2,TK_NotStart,DUKHCONI2BZ2BWGL5330,Const. of Blockwork fence Wall (Ht-1.85m),8165,344,208,200,0,42,42,200,0,0,0,,,,2014-05-11 08:00,2014-06-08 17:00,,2014-03-22 08:00,2014-04-19 17:00,2014-03-22 08:00,2014-04-19 17:00,2014-03-22 08:00,2014-04-19 17:00,2014-05-11 08:00,2014-06-08 17:00,,PT_Normal,,,,,ZpOst41MRXWXQUeFhbpFAQ,,,,N,0,0,,,2013-02-16 15:54,2013-02-16 15:56,admin,admin
503483,6359,125211,13662,0,N,N,N,CP_Drtn,TT_Task,DT_FixedDUR2,TK_NotStart,DUKHCONI2BSBIWGL7400,Excavation,8177,152,0,120,0,444,444,120,300,0,300,,,,2013-12-25 08:00,2014-01-11 17:00,,2013-12-02 08:00,2013-12-19 17:00,2013-12-02 08:00,2013-12-19 17:00,2013-12-02 08:00,2013-12-19 17:00,2013-12-25 08:00,2014-01-11 17:00,,PT_Normal,,,,,fu7CppynRZSuUk6ha1oFEA,,,,N,0,0,,,2013-02-16 15:54,2013-02-16 15:56,admin,admin
503484,6359,125211,13662,0,N,N,N,CP_Drtn,TT_Task,DT_FixedDUR2,TK_NotStart,DUKHCONI2BSBIWGL7405,Blinding & base waterproofing,8163,152,0,80,0,200,200,80,0,0,0,,,,2014-01-12 08:00,2014-01-22 17:00,,2013-12-21 08:00,2013-12-31 17:00,2013-12-21 08:00,2013-12-31 17:00,2013-12-21 08:00,2013-12-31 17:00,2014-01-12 08:00,2014-01-22 17:00,,PT_Normal,,,,,J+pYEjeiTF+Whdr193CtjQ,,,,N,0,0,,,2013-02-16 15:54,2013-02-16 15:56,admin,admin
503485,6359,125211,13662,0,N,N,N,CP_Drtn,TT_Task,DT_FixedDUR2,TK_NotStart,DUKHCONI2BSBIWGL7410,Construction of Raft slab,8165,152,0,80,0,630,630,80,0,0,0,,,,2014-01-23 08:00,2014-02-03 17:00,,2014-01-01 08:00,2014-01-12 17:00,2014-01-01 08:00,2014-01-12 17:00,2014-01-01 08:00,2014-01-12 17:00,2014-01-23 08:00,2014-02-03 17:00,,PT_Normal,,,,,KpdBoDhMT1qAYDwbixfLWA,,,,N,0,0,,,2013-02-16 15:54,2013-02-16 15:56,admin,admin
503486,6359,125211,13662,0,N,N,N,CP_Drtn,TT_Task,DT_FixedDUR2,TK_NotStart,DUKHCONI2BSBIWGL7415,Construction of RCC Wall,8165,152,0,200,0,1708,1708,200,0,0,0,,,,2014-02-04 08:00,2014-03-05 17:00,,2014-01-13 08:00,2014-02-10 17:00,2014-01-13 08:00,2014-02-10 17:00,2014-01-13 08:00,2014-02-10 17:00,2014-02-04 08:00,2014-03-05 17:00,,PT_Normal,,,,,GqqkENYDQ/SxyXrxAJIUIw,,,,N,0,0,,,2013-02-16 15:54,2013-02-16 15:56,admin,admin
503487,6359,125211,13662,0,N,N,N,CP_Drtn,TT_Task,DT_FixedDUR2,TK_NotStart,DUKHCONI2BSBIWGL7420,Construction of  Roof Slab,8165,152,0,160,0,490,490,160,0,0,0,,,,2014-03-06 08:00,2014-03-29 17:00,,2014-02-12 08:00,2014-03-06 17:00,2014-02-12 08:00,2014-03-06 17:00,2014-02-12 08:00,2014-03-06 17:00,2014-03-06 08:00,2014-03-29 17:00,,PT_Normal,,,,,oDn5Gfa2SJyHl8g7CGUHtg,,,,N,0,0,,,2013-02-16 15:54,2013-02-16 15:56,admin,admin
503488,6359,125211,13662,0,N,N,N,CP_Drtn,TT_Task,DT_FixedDUR2,TK_NotStart,DUKHCONI2BSBIWGL7430,Floor screed,8164,152,0,40,0,66,66,40,0,0,0,,,,2014-04-23 08:00,2014-04-28 17:00,,2014-04-01 08:00,2014-04-06 17:00,2014-04-01 08:00,2014-04-06 17:00,2014-04-01 08:00,2014-04-06 17:00,2014-04-23 08:00,2014-04-28 17:00,,PT_Normal,,,,,N2aOWnBcSMuJDaEPwTIsvQ,,,,N,0,0,,,2013-02-16 15:54,2013-02-16 15:56,admin,admin
503489,6359,125211,13662,0,N,N,N,CP_Drtn,TT_Task,DT_FixedDUR2,TK_NotStart,DUKHCONI2BSBIWGL7455,Internal epoxy coating & Painting,8178,152,0,40,0,44,44,40,0,0,0,,,,2014-05-28 08:00,2014-06-02 17:00,,2014-05-06 08:00,2014-05-11 17:00,2014-05-06 08:00,2014-05-11 17:00,2014-05-06 08:00,2014-05-11 17:00,2014-05-28 08:00,2014-06-02 17:00,,PT_Normal,,,,,jo/SoOIeQ6eUbxQUstHMfw,,,,N,0,0,,,2013-02-16 15:54,2013-02-16 15:56,admin,admin
503490,6359,125211,13662,0,N,N,N,CP_Drtn,TT_Task,DT_FixedDUR2,TK_NotStart,DUKHCONI2BSBIWGL7460,Installation of Steel Ladder,8178,152,0,40,0,14,14,40,0,0,0,,,,2014-06-03 08:00,2014-06-08 17:00,,2014-05-12 08:00,2014-05-17 17:00,2014-05-12 08:00,2014-05-17 17:00,2014-05-12 08:00,2014-05-17 17:00,2014-06-03 08:00,2014-06-08 17:00,,PT_Normal,,,,,t4UNRRDvTLWBdRaVC9UkwQ,,,,N,0,0,,,2013-02-16 15:54,2013-02-16 15:56,admin,admin
503491,6359,125211,13662,0,N,N,N,CP_Drtn,TT_Task,DT_FixedDUR2,TK_NotStart,DUKHCONI2BSBIWGL7465,Installation of G.I Handrails,8178,152,152,40,0,164,164,40,0,0,0,,,,2014-06-09 08:00,2014-06-14 17:00,,2014-05-18 08:00,2014-05-22 17:00,2014-05-18 08:00,2014-05-22 17:00,2014-05-18 08:00,2014-05-22 17:00,2014-06-09 08:00,2014-06-14 17:00,,PT_Normal,,,,,+sMgP8I0TXmT3lLdrWf9Fw,,,,N,0,0,,,2013-02-16 15:54,2013-02-16 15:56,admin,admin
503492,6359,125211,13662,0,N,N,N,CP_Drtn,TT_Task,DT_FixedDUR2,TK_NotStart,DUKHCONI2BSBIWGL7440,"Plumbing , Drainage & Firefighting  works",8178,152,0,200,0,50.4,50.4,200,0,0,0,,,,2014-04-29 08:00,2014-05-27 17:00,,2014-04-07 08:00,2014-05-05 17:00,2014-04-07 08:00,2014-05-05 17:00,2014-04-07 08:00,2014-05-05 17:00,2014-04-29 08:00,2014-05-27 17:00,,PT_Normal,,,,,EVZ8lWGOTOuR2sNqPiqpKg,,,,N,0,0,,,2013-02-16 15:54,2013-02-16 15:56,admin,admin
503493,6359,125211,13662,0,N,N,N,CP_Drtn,TT_Task,DT_FixedDUR2,TK_NotStart,DUKHCONI2BSBIWGL7445,AC Works,8178,152,0,200,0,159.2,159.2,200,0,0,0,,,,2014-04-29 08:00,2014-05-27 17:00,,2014-04-07 08:00,2014-05-05 17:00,2014-04-07 08:00,2014-05-05 17:00,2014-04-07 08:00,2014-05-05 17:00,2014-04-29 08:00,2014-05-27 17:00,,PT_Normal,,,,,AP15KAqrR+aBr+VytIpXZw,,,,N,0,0,,,2013-02-16 15:54,2013-02-23 09:03,admin,admin
503494,6359,125211,13662,0,N,N,N,CP_Drtn,TT_Task,DT_FixedDUR2,TK_NotStart,DUKHCONI2BSBIWGL7450,Electrical Works,8178,152,0,200,0,325.2,325.2,200,0,0,0,,,,2014-04-29 08:00,2014-05-27 17:00,,2014-04-07 08:00,2014-05-05 17:00,2014-04-07 08:00,2014-05-05 17:00,2014-04-07 08:00,2014-05-05 17:00,2014-04-29 08:00,2014-05-27 17:00,,PT_Normal,,,,,SO5/KTFDTMKyICyCajLtcg,,,,N,0,0,,,2013-02-16 15:54,2013-02-23 09:03,admin,admin
503495,6359,125211,13662,0,N,N,N,CP_Drtn,TT_Task,DT_FixedDUR2,TK_NotStart,DUKHCONI2BSBIWGL7950,Laying of Interlock,8174,320,0,80,0,58,58,80,0,0,0,,,,2014-05-11 08:00,2014-05-21 17:00,,2014-03-25 08:00,2014-04-05 17:00,2014-03-25 08:00,2014-04-05 17:00,2014-03-25 08:00,2014-04-05 17:00,2014-05-11 08:00,2014-05-21 17:00,,PT_Normal,,,,,Hf3ih8gNQb+EE3VbNNHbWA,,,,N,0,0,,,2013-02-16 15:54,2013-02-16 15:56,admin,admin
503496,6359,125211,13662,0,N,N,N,CP_Drtn,TT_Task,DT_FixedDUR2,TK_NotStart,DUKHCONI2BSBIWGL7435,Installation of Boundary Fences,8165,320,168,120,0,42,42,120,0,0,0,,,,2014-05-22 08:00,2014-06-08 17:00,,2014-04-06 08:00,2014-04-22 17:00,2014-04-06 08:00,2014-04-22 17:00,2014-04-06 08:00,2014-04-22 17:00,2014-05-22 08:00,2014-06-08 17:00,,PT_Normal,,,,,tmYYXF32T0OGvaEWW6tADQ,,,,N,0,0,,,2013-02-16 15:54,2013-02-16 15:56,admin,admin
503497,6359,125211,13662,0,N,N,N,CP_Drtn,TT_Task,DT_FixedDUR2,TK_NotStart,DUKHCONI2BSBIWGL7425,Waterproofing & Backfilling,8177,200,0,120,0,207,207,120,99,0,99,,,,2014-04-06 08:00,2014-04-22 17:00,,2014-03-08 08:00,2014-03-24 17:00,2014-03-08 08:00,2014-03-24 17:00,2014-03-08 08:00,2014-03-24 17:00,2014-04-06 08:00,2014-04-22 17:00,,PT_Normal,,,,,BgjlLOjpRnCpI/Pchfd8rg,,,,N,0,0,,,2013-02-16 15:54,2013-02-16 15:56,admin,admin
503498,6359,125212,13662,0,N,N,N,CP_Drtn,TT_Task,DT_FixedDUR2,TK_NotStart,DUKHCONI2BSBGZGL7900,Construction of Concrete structure,8165,272,0,160,0,124,124,160,0,0,0,,,,2014-03-02 08:00,2014-03-24 17:00,,2014-01-20 08:00,2014-02-12 17:00,2014-01-20 08:00,2014-02-12 17:00,2014-01-20 08:00,2014-02-12 17:00,2014-03-02 08:00,2014-03-24 17:00,,PT_Normal,,,,,iu292lvBTrefUtv3DVmipQ,,,,N,0,0,,,2013-02-16 15:54,2013-02-16 15:56,admin,admin
503499,6359,125212,13662,0,N,N,N,CP_Drtn,TT_Task,DT_FixedDUR2,TK_NotStart,DUKHCONI2BSBGZGL7905,Installation of Wooden Works,8178,272,0,200,0,300,300,200,0,0,0,,,,2014-03-13 08:00,2014-04-10 17:00,,2014-02-01 08:00,2014-03-02 17:00,2014-02-01 08:00,2014-03-02 17:00,2014-02-01 08:00,2014-03-02 17:00,2014-03-13 08:00,2014-04-10 17:00,,PT_Normal,,,,,1asmIBN+QVaZXx6TfIaAVA,,,,N,0,0,,,2013-02-16 15:54,2013-02-16 15:56,admin,admin
503500,6359,125212,13662,0,N,N,N,CP_Drtn,TT_Task,DT_FixedDUR2,TK_NotStart,DUKHCONI2BSBGZGL7910,Electrical Works-Gazebo,8178,272,56,120,0,125.6,125.6,120,0,0,0,,,,2014-04-12 08:00,2014-04-28 17:00,,2014-03-03 08:00,2014-03-19 17:00,2014-03-03 08:00,2014-03-19 17:00,2014-03-03 08:00,2014-03-19 17:00,2014-04-12 08:00,2014-04-28 17:00,,PT_Normal,,,,,YakOwZKkQeuBz3pjnp1vag,,,,N,0,0,,,2013-02-16 15:54,2013-02-16 15:56,admin,admin
503501,6359,125212,13662,0,N,N,N,CP_Drtn,TT_Task,DT_FixedDUR2,TK_NotStart,DUKHCONI2BSBGZGL7915,Park Benches  Installation,8178,352,80,120,0,120,120,120,0,0,0,,,,2014-03-25 08:00,2014-04-10 17:00,,2014-02-01 08:00,2014-02-18 17:00,2014-02-01 08:00,2014-02-18 17:00,2014-02-01 08:00,2014-02-18 17:00,2014-03-25 08:00,2014-04-10 17:00,,PT_Normal,,,,,6NRncb39TbeWvBFJ3LHViQ,,,,N,0,0,,,2013-02-16 15:54,2013-02-16 15:56,admin,admin
503502,6359,125215,13662,0,N,N,N,CP_Drtn,TT_Task,DT_FixedDUR2,TK_NotStart,DUKHCONI2BZ1BWGL5315,Construction of Boundary Wall (Ht-3m),8165,344,0,200,0,182,182,200,0,0,0,,,,2014-01-23 08:00,2014-02-22 17:00,,2013-12-03 08:00,2014-01-01 17:00,2013-12-03 08:00,2014-01-01 17:00,2013-12-03 08:00,2014-01-01 17:00,2014-01-23 08:00,2014-02-22 17:00,,PT_Normal,,,,,7B0pD6ZPTQ+Ewm29Y9NNXw,,,,N,0,0,,,2013-02-16 15:54,2013-02-16 15:56,admin,admin
503503,6359,125215,13662,0,N,N,N,CP_Drtn,TT_Task,DT_FixedDUR2,TK_NotStart,DUKHCONI2BZ1BWGL5320,"Install.Steel Gate,Entance Barrier (3m Wall)",8178,344,0,200,0,14,14,200,0,0,0,,,,2014-02-09 08:00,2014-03-10 17:00,,2013-12-21 08:00,2014-01-18 17:00,2013-12-21 08:00,2014-01-18 17:00,2013-12-21 08:00,2014-01-18 17:00,2014-02-09 08:00,2014-03-10 17:00,,PT_Normal,,,,,nnmOjyHsRQOSXjgnvM5n9g,,,,N,0,0,,,2013-02-16 15:54,2013-02-16 15:56,admin,admin
503504,6359,125215,13662,0,N,N,N,CP_Drtn,TT_Task,DT_FixedDUR2,TK_NotStart,DUKHCONI2BZ1BWGL5325,Const. of Villa Front Boundary Wall (Ht-2m),8165,344,0,200,0,112,112,200,0,0,0,,,,2014-03-11 08:00,2014-04-08 17:00,,2014-01-19 08:00,2014-02-17 17:00,2014-01-19 08:00,2014-02-17 17:00,2014-01-19 08:00,2014-02-17 17:00,2014-03-11 08:00,2014-04-08 17:00,,PT_Normal,,,,,s5m1WefXSJWdce9Hb3MXxw,,,,N,0,0,,,2013-02-16 15:54,2013-02-16 15:56,admin,admin
503505,6359,125215,13662,0,N,N,N,CP_Drtn,TT_Task,DT_FixedDUR2,TK_NotStart,DUKHCONI2BZ1BWGL5330,Const. of Blockwork fence Wall (Ht-1.85m),8165,480,136,200,0,42,42,200,0,0,0,,,,2014-04-12 08:00,2014-05-10 17:00,,2014-01-30 08:00,2014-03-01 17:00,2014-01-30 08:00,2014-03-01 17:00,2014-01-30 08:00,2014-03-01 17:00,2014-04-12 08:00,2014-05-10 17:00,,PT_Normal,,,,,FwJ2wNhFTa6Zs2p3OBfZKQ,,,,N,0,0,,,2013-02-16 15:54,2013-02-16 15:56,admin,admin
503506,6359,125216,13662,0,N,N,N,CP_Drtn,TT_Task,DT_FixedDUR2,TK_NotStart,DUKHCONI2BZ1IRGL5265,Excavation for irrigation line,8177,240,0,200,0,178,178,200,100,0,100,,,,2014-01-28 08:00,2014-02-26 17:00,,2013-12-24 08:00,2014-01-21 17:00,2013-12-24 08:00,2014-01-21 17:00,2013-12-24 08:00,2014-01-21 17:00,2014-01-28 08:00,2014-02-26 17:00,,PT_Normal,,,,,B9KtI8NGS6+PRv9jgfHeQQ,,,,N,0,0,,,2013-02-16 15:54,2013-02-16 15:56,admin,admin
503507,6359,125216,13662,0,N,N,N,CP_Drtn,TT_Task,DT_FixedDUR2,TK_NotStart,DUKHCONI2BZ1IRGL5270,Laying of irrigationline,8178,240,0,200,0,100.8,100.8,200,0,0,0,,,,2014-02-03 08:00,2014-03-04 17:00,,2013-12-30 08:00,2014-01-27 17:00,2013-12-30 08:00,2014-01-27 17:00,2013-12-30 08:00,2014-01-27 17:00,2014-02-03 08:00,2014-03-04 17:00,,PT_Normal,,,,,CuO73shWQ8iPw2+2Lbpwqg,,,,N,0,0,,,2013-02-16 15:54,2013-02-16 15:56,admin,admin
503508,6359,125216,13662,0,N,N,N,CP_Drtn,TT_Task,DT_FixedDUR2,TK_NotStart,DUKHCONI2BZ1IRGL5275,Testing of irrigation line,8178,240,0,200,0,84,84,200,0,0,0,,,,2014-02-09 08:00,2014-03-10 17:00,,2014-01-05 08:00,2014-02-02 17:00,2014-01-05 08:00,2014-02-02 17:00,2014-01-05 08:00,2014-02-02 17:00,2014-02-09 08:00,2014-03-10 17:00,,PT_Normal,,,,,vFc05PWmQPy8hhb/MTPeJg,,,,N,0,0,,,2013-02-16 15:54,2013-02-16 15:56,admin,admin
503509,6359,125216,13662,0,N,N,N,CP_Drtn,TT_Task,DT_FixedDUR2,TK_NotStart,DUKHCONI2BZ1IRGL5280,Backfilling irrigation line,8177,240,0,200,0,140,140,200,110,0,110,,,,2014-02-16 08:00,2014-03-16 17:00,,2014-01-11 08:00,2014-02-08 17:00,2014-01-11 08:00,2014-02-08 17:00,2014-01-11 08:00,2014-02-08 17:00,2014-02-16 08:00,2014-03-16 17:00,,PT_Normal,,,,,GpcnMMD8TM6VBMK3QMqEIA,,,,N,0,0,,,2013-02-16 15:54,2013-02-16 15:56,admin,admin
503510,6359,125216,13662,0,N,N,N,CP_Drtn,TT_Task,DT_FixedDUR2,TK_NotStart,DUKHCONI2BZ1IRGL5285,"Construction of Thrust Blocks,Pull boxes",8178,280,0,200,0,313.6,313.6,200,0,0,0,,,,2014-03-05 08:00,2014-04-02 17:00,,2014-01-22 08:00,2014-02-20 17:00,2014-01-22 08:00,2014-02-20 17:00,2014-01-22 08:00,2014-02-20 17:00,2014-03-05 08:00,2014-04-02 17:00,,PT_Normal,,,,,0FhrOz8gSTGbpv/j6Wpr6w,,,,N,0,0,,,2013-02-16 15:54,2013-02-16 15:56,admin,admin
503511,6359,125216,13662,0,N,N,N,CP_Drtn,TT_Task,DT_FixedDUR2,TK_NotStart,DUKHCONI2BZ1IRGL5290,"Irrigation Fittings (Nozzle,Values)",8178,280,8,200,0,100.8,100.8,200,0,0,0,,,,2014-03-13 08:00,2014-04-10 17:00,,2014-01-30 08:00,2014-03-01 17:00,2014-01-30 08:00,2014-03-01 17:00,2014-01-30 08:00,2014-03-01 17:00,2014-03-13 08:00,2014-04-10 17:00,,PT_Normal,,,,,a2y8H8r3QbOPJH7NDsLHeg,,,,N,0,0,,,2013-02-16 15:54,2013-02-16 15:56,admin,admin
503512,6359,125217,13662,0,N,N,N,CP_Drtn,TT_Task,DT_FixedDUR2,TK_NotStart,DUKHCONI2BZ1ELGL5215,Excavation Cable  Trenches  & Duct Banks,8177,152,0,200,0,1593,1593,200,651,0,651,,,,2013-12-02 08:00,2013-12-31 17:00,,2013-11-10 08:00,2013-12-08 17:00,2013-11-10 08:00,2013-12-08 17:00,2013-11-10 08:00,2013-12-08 17:00,2013-12-02 08:00,2013-12-31 17:00,,PT_Normal,,,,,SqodzsVxRrWws0Wl3AXmzQ,,,,N,0,0,,,2013-02-16 15:54,2013-02-16 15:56,admin,admin
503513,6359,125217,13662,0,N,N,N,CP_Drtn,TT_Task,DT_FixedDUR2,TK_NotStart,DUKHCONI2BZ1ELGL5220,Laying of electrical cables,8178,176,0,200,0,2232.4,2232.4,200,0,0,0,,,,2013-12-11 08:00,2014-01-09 17:00,,2013-11-16 08:00,2013-12-14 17:00,2013-11-16 08:00,2013-12-14 17:00,2013-11-16 08:00,2013-12-14 17:00,2013-12-11 08:00,2014-01-09 17:00,,PT_Normal,,,,,bkZZ1fthTvSNeQhlw35ByA,,,,N,0,0,,,2013-02-16 15:54,2013-02-16 15:56,admin,admin
503514,6359,125217,13662,0,N,N,N,CP_Drtn,TT_Task,DT_FixedDUR2,TK_NotStart,DUKHCONI2BZ1ELGL5225,Backfilling Electrical trench,8177,176,0,200,0,1203,1203,200,825,0,825,,,,2013-12-21 08:00,2014-01-18 17:00,,2013-11-24 08:00,2013-12-23 17:00,2013-11-24 08:00,2013-12-23 17:00,2013-11-24 08:00,2013-12-23 17:00,2013-12-21 08:00,2014-01-18 17:00,,PT_Normal,,,,,+8VmMN4qTAavckk74m1qbw,,,,N,0,0,,,2013-02-16 15:54,2013-02-16 15:56,admin,admin
503515,6359,125217,13662,0,N,N,N,CP_Drtn,TT_Task,DT_FixedDUR2,TK_NotStart,DUKHCONI2BZ1ELGL5230,Construction of Submain Board & Feeder Pillar,8165,496,0,200,0,520,520,200,0,0,0,,,,2014-02-18 08:00,2014-03-18 17:00,,2013-12-05 08:00,2014-01-04 17:00,2013-12-05 08:00,2014-01-04 17:00,2013-12-05 08:00,2014-01-04 17:00,2014-02-18 08:00,2014-03-18 17:00,,PT_Normal,,,,,vZ6yMKMoRe6jutDJHgSHEQ,,,,N,0,0,,,2013-02-16 15:54,2013-02-16 15:56,admin,admin
503516,6359,125218,13662,0,N,N,N,CP_Drtn,TT_Task,DT_FixedDUR2,TK_NotStart,DUKHCONI2BZ1SLGL7200,Excavation,8177,272,0,200,0,2844,2844,200,1500,0,1500,,,,2014-03-13 08:00,2014-04-10 17:00,,2014-02-01 08:00,2014-03-02 17:00,2014-02-01 08:00,2014-03-02 17:00,2014-02-01 08:00,2014-03-02 17:00,2014-03-13 08:00,2014-04-10 17:00,,PT_Normal,,,,,U1fMl+YOS8GQKA5v6KAjNw,,,,N,0,0,,,2013-02-16 15:54,2013-02-16 15:56,admin,admin
503517,6359,125218,13662,0,N,N,N,CP_Drtn,TT_Task,DT_FixedDUR2,TK_NotStart,DUKHCONI2BZ1SLGL7205,Sweet Soil Laying,8178,272,0,200,0,630,630,200,0,0,0,,,,2014-03-25 08:00,2014-04-22 17:00,,2014-02-13 08:00,2014-03-13 17:00,2014-02-13 08:00,2014-03-13 17:00,2014-02-13 08:00,2014-03-13 17:00,2014-03-25 08:00,2014-04-22 17:00,,PT_Normal,,,,,IEKCowa9TWe/l4UIog6gSQ,,,,N,0,0,,,2013-02-16 15:54,2013-02-16 15:56,admin,admin
503518,6359,125218,13662,0,N,N,N,CP_Drtn,TT_Task,DT_FixedDUR2,TK_NotStart,DUKHCONI2BZ1SLGL7210,Plantation works,8178,352,136,200,0,574,574,200,0,0,0,,,,2014-04-17 08:00,2014-05-15 17:00,,2014-02-25 08:00,2014-03-25 17:00,2014-02-25 08:00,2014-03-25 17:00,2014-02-25 08:00,2014-03-25 17:00,2014-04-17 08:00,2014-05-15 17:00,,PT_Normal,,,,,/aOdIL9wSUGhPV6moA5iPA,,,,N,0,0,,,2013-02-16 15:54,2013-02-16 15:56,admin,admin
503519,6359,125219,13662,0,N,N,N,CP_Drtn,TT_Task,DT_FixedDUR2,TK_NotStart,DUKHCONI2BZ1PSGL7000,Excavation,8177,312,40,120,0,49,49,120,31.000038,0,31.000038,,,,2014-03-25 08:00,2014-04-10 17:00,,2014-02-06 08:00,2014-02-24 17:00,2014-02-06 08:00,2014-02-24 17:00,2014-02-06 08:00,2014-02-24 17:00,2014-03-25 08:00,2014-04-10 17:00,,PT_Normal,,,,,saYYD/WtSpW5abO+eM5sAw,,,,N,0,0,,,2013-02-16 15:54,2013-02-23 09:03,admin,admin
503520,6359,125219,13662,0,N,N,N,CP_Drtn,TT_Task,DT_FixedDUR2,TK_NotStart,DUKHCONI2BZ1PSGL7005,Foundation casting,8165,272,0,120,0,1912,1912,120,0,0,0,,,,2014-03-31 08:00,2014-04-16 17:00,,2014-02-19 08:00,2014-03-08 17:00,2014-02-19 08:00,2014-03-08 17:00,2014-02-19 08:00,2014-03-08 17:00,2014-03-31 08:00,2014-04-16 17:00,,PT_Normal,,,,,e60U/qc+R8y760zQauNdQg,,,,N,0,0,,,2013-02-16 15:54,2013-02-16 15:56,admin,admin
503521,6359,125219,13662,0,N,N,N,CP_Drtn,TT_Task,DT_FixedDUR2,TK_NotStart,DUKHCONI2BZ1PSGL7010,"Column, Frame&  Fabrics  Erection",8178,272,0,200,0,286,286,200,0,0,0,,,,2014-04-12 08:00,2014-05-10 17:00,,2014-03-03 08:00,2014-03-31 17:00,2014-03-03 08:00,2014-03-31 17:00,2014-03-03 08:00,2014-03-31 17:00,2014-04-12 08:00,2014-05-10 17:00,,PT_Normal,,,,,U5WikzNRSFeLOOPV3YRE4Q,,,,N,0,0,,,2013-02-16 15:54,2013-02-16 15:56,admin,admin
503522,6359,125219,13662,0,N,N,N,CP_Drtn,TT_Task,DT_FixedDUR2,TK_NotStart,DUKHCONI2BZ1PSGL7015,Electrical Works-Parking Shed,8178,272,136,200,0,51.6,51.6,200,0,0,0,,,,2014-04-17 08:00,2014-05-15 17:00,,2014-03-09 08:00,2014-04-06 17:00,2014-03-09 08:00,2014-04-06 17:00,2014-03-09 08:00,2014-04-06 17:00,2014-04-17 08:00,2014-05-15 17:00,,PT_Normal,,,,,V1VUaVFbRc6SPNccRi63iw,,,,N,0,0,,,2013-02-16 15:54,2013-02-16 15:56,admin,admin
503523,6359,125220,13662,0,N,N,N,CP_Drtn,TT_Task,DT_FixedDUR2,TK_NotStart,DUKHCONI2BZ1WSGL5180,"Installation of meter ,Accessories & Connection",8178,304,56,160,0,33.6,33.6,160,0,0,0,,,,2013-12-26 08:00,2014-01-18 17:00,,2013-11-11 08:00,2013-12-03 17:00,2013-11-11 08:00,2013-12-03 17:00,2013-11-11 08:00,2013-12-03 17:00,2013-12-26 08:00,2014-01-18 17:00,,PT_Normal,,,,,wIMKkPLiRNOE0wDeLqYdEg,,,,N,0,0,,,2013-02-16 15:54,2013-02-16 15:56,admin,admin
503524,6359,125220,13662,0,N,N,N,CP_Drtn,TT_Task,DT_FixedDUR2,TK_NotStart,DUKHCONI2BZ1WSGL5155,Excavation for water line,8177,136,0,200,0,455,455,200,251,0,251,,,,2013-10-07 08:00,2013-11-06 17:00,,2013-09-17 08:00,2013-10-15 17:00,2013-09-17 08:00,2013-10-15 17:00,2013-09-17 08:00,2013-10-15 17:00,2013-10-07 08:00,2013-11-06 17:00,,PT_Normal,,,,,Zwiu4MggS/qP5WHNUVENsw,,,,N,0,0,,,2013-02-16 15:54,2013-02-16 15:56,admin,admin
503525,6359,125220,13662,0,N,N,N,CP_Drtn,TT_Task,DT_FixedDUR2,TK_NotStart,DUKHCONI2BZ1WSGL5160,Laying of water line,8178,136,0,200,0,386.4,386.4,200,0,0,0,,,,2013-10-13 08:00,2013-11-12 17:00,,2013-09-23 08:00,2013-10-23 17:00,2013-09-23 08:00,2013-10-23 17:00,2013-09-23 08:00,2013-10-23 17:00,2013-10-13 08:00,2013-11-12 17:00,,PT_Normal,,,,,3NHDdSeYSbWpF29WcxvHAw,,,,N,0,0,,,2013-02-16 15:54,2013-02-23 09:03,admin,admin
503526,6359,125220,13662,0,N,N,N,CP_Drtn,TT_Task,DT_FixedDUR2,TK_NotStart,DUKHCONI2BZ1WSGL5165,Testing of potable water line,8178,136,0,200,0,117.6,117.6,200,0,0,0,,,,2013-10-21 08:00,2013-11-18 17:00,,2013-09-29 08:00,2013-10-29 17:00,2013-09-29 08:00,2013-10-29 17:00,2013-09-29 08:00,2013-10-29 17:00,2013-10-21 08:00,2013-11-18 17:00,,PT_Normal,,,,,NzsjmCVLSt+H5259mpjadw,,,,N,0,0,,,2013-02-16 15:54,2013-02-16 15:56,admin,admin
503527,6359,125220,13662,0,N,N,N,CP_Drtn,TT_Task,DT_FixedDUR2,TK_NotStart,DUKHCONI2BZ1WSGL5170,Backfilling potable water line,8177,136,0,200,0,359,359,200,275,0,275,,,,2013-10-27 08:00,2013-11-24 17:00,,2013-10-05 08:00,2013-11-04 17:00,2013-10-05 08:00,2013-11-04 17:00,2013-10-05 08:00,2013-11-04 17:00,2013-10-27 08:00,2013-11-24 17:00,,PT_Normal,,,,,050IGi4wQayA8rAn6tW4hg,,,,N,0,0,,,2013-02-16 15:54,2013-02-16 15:56,admin,admin
503528,6359,125220,13662,0,N,N,N,CP_Drtn,TT_Task,DT_FixedDUR2,TK_NotStart,DUKHCONI2BZ1WSGL5175,Construction of valve chambers & Thrust Blocks,8172,304,0,200,0,80,80,200,0,0,0,,,,2013-11-26 08:00,2013-12-25 17:00,,2013-10-10 08:00,2013-11-10 17:00,2013-10-10 08:00,2013-11-10 17:00,2013-10-10 08:00,2013-11-10 17:00,2013-11-26 08:00,2013-12-25 17:00,,PT_Normal,,,,,3ktly1/+SBmzKc6OaE1SpA,,,,N,0,0,,,2013-02-16 15:54,2013-02-16 15:56,admin,admin
503529,6359,125221,13662,0,N,N,N,CP_Drtn,TT_Task,DT_FixedDUR2,TK_NotStart,DUKHCONI2BZ1RWGL6000,Excavation & Earth Filling,8177,152,0,80,0,1190,1190,80,500,0,500,,,,2014-01-19 08:00,2014-01-29 17:00,,2013-12-28 08:00,2014-01-07 17:00,2013-12-28 08:00,2014-01-07 17:00,2013-12-28 08:00,2014-01-07 17:00,2014-01-19 08:00,2014-01-29 17:00,,PT_Normal,,,,,VB5d3qMsTpu285Kyu3HX8w,,,,N,0,0,,,2013-02-16 15:54,2013-02-16 15:56,admin,admin
503530,6359,125221,13662,0,N,N,N,CP_Drtn,TT_Task,DT_FixedDUR2,TK_NotStart,DUKHCONI2BZ1RWGL6005,Laying of Sub Grade,8178,152,0,200,0,24,24,200,0,0,0,,,,2014-01-30 08:00,2014-03-01 17:00,,2014-01-08 08:00,2014-02-05 17:00,2014-01-08 08:00,2014-02-05 17:00,2014-01-08 08:00,2014-02-05 17:00,2014-01-30 08:00,2014-03-01 17:00,,PT_Normal,,,,,M9JzWRgpRdW7OAkEPy3NNA,,,,N,0,0,,,2013-02-16 15:54,2013-02-16 15:56,admin,admin
503531,6359,125221,13662,0,N,N,N,CP_Drtn,TT_Task,DT_FixedDUR2,TK_NotStart,DUKHCONI2BZ1RWGL6010,Laying of Precast Kerbs,8178,152,0,200,0,24,24,200,0,0,0,,,,2014-02-12 08:00,2014-03-12 17:00,,2014-01-20 08:00,2014-02-18 17:00,2014-01-20 08:00,2014-02-18 17:00,2014-01-20 08:00,2014-02-18 17:00,2014-02-12 08:00,2014-03-12 17:00,,PT_Normal,,,,,eCh7x5IBQlmNi251MMKtSA,,,,N,0,0,,,2013-02-16 15:54,2013-02-16 15:56,admin,admin
503532,6359,125221,13662,0,N,N,N,CP_Drtn,TT_Task,DT_FixedDUR2,TK_NotStart,DUKHCONI2BZ1RWGL6015,Laying of Granular Sub Base Coarse,8173,152,0,160,0,1536,1536,160,600,0,600,,,,2014-02-24 08:00,2014-03-18 17:00,,2014-02-01 08:00,2014-02-24 17:00,2014-02-01 08:00,2014-02-24 17:00,2014-02-01 08:00,2014-02-24 17:00,2014-02-24 08:00,2014-03-18 17:00,,PT_Normal,,,,,CI2Bf/57RH6iCi/9Cztqzg,,,,N,0,0,,,2013-02-16 15:54,2013-02-16 15:56,admin,admin
503533,6359,125221,13662,0,N,N,N,CP_Drtn,TT_Task,DT_FixedDUR2,TK_NotStart,DUKHCONI2BZ1RWGL6020,Laying of Road Base Asphalt Concrete,8178,272,0,40,0,174,174,40,150,0,150,,,,2014-04-06 08:00,2014-04-10 17:00,,2014-02-25 08:00,2014-03-02 17:00,2014-02-25 08:00,2014-03-02 17:00,2014-02-25 08:00,2014-03-02 17:00,2014-04-06 08:00,2014-04-10 17:00,,PT_Normal,,,,,WR/xKy39R/u9IeiVeZfJ2Q,,,,N,0,0,,,2013-02-16 15:54,2013-02-16 15:56,admin,admin
503534,6359,125221,13662,0,N,N,N,CP_Drtn,TT_Task,DT_FixedDUR2,TK_NotStart,DUKHCONI2BZ1RWGL6025,Laying of Asphalt Wearing Coarse,8178,392,0,40,0,174,174,40,150,0,150,,,,2014-04-29 08:00,2014-05-04 17:00,,2014-03-03 08:00,2014-03-08 17:00,2014-03-03 08:00,2014-03-08 17:00,2014-03-03 08:00,2014-03-08 17:00,2014-04-29 08:00,2014-05-04 17:00,,PT_Normal,,,,,was9fgBxRpuQyshG7u+/6w,,,,N,0,0,,,2013-02-16 15:54,2013-02-16 15:56,admin,admin
503535,6359,125221,13662,0,N,N,N,CP_Drtn,TT_Task,DT_FixedDUR2,TK_NotStart,DUKHCONI2BZ1RWGL6030,Traffic Signage & Road Marking,8178,392,120,40,0,680,680,40,0,0,0,,,,2014-05-05 08:00,2014-05-10 17:00,,2014-03-09 08:00,2014-03-13 17:00,2014-03-09 08:00,2014-03-13 17:00,2014-03-09 08:00,2014-03-13 17:00,2014-05-05 08:00,2014-05-10 17:00,,PT_Normal,,,,,RpMrWOj9SsGngXC8xiTItg,,,,N,0,0,,,2013-02-16 15:54,2013-02-16 15:56,admin,admin
503536,6359,125222,13662,0,N,N,N,CP_Drtn,TT_Task,DT_FixedDUR2,TK_NotStart,DUKHCONI2BZ1TCGL5295,Excavation Telecommunication trenches,8177,152,0,160,0,362,362,160,200,0,200,,,,2013-12-26 08:00,2014-01-18 17:00,,2013-12-03 08:00,2013-12-26 17:00,2013-12-03 08:00,2013-12-26 17:00,2013-12-03 08:00,2013-12-26 17:00,2013-12-26 08:00,2014-01-18 17:00,,PT_Normal,,,,,rStTxg1nRSeSy7DlgQ0gYQ,,,,N,0,0,,,2013-02-16 15:54,2013-02-16 15:56,admin,admin
503537,6359,125222,13662,0,N,N,N,CP_Drtn,TT_Task,DT_FixedDUR2,TK_NotStart,DUKHCONI2BZ1TCGL5300,Laying of cables,8178,152,0,160,0,954.4,954.4,160,0,0,0,,,,2014-01-01 08:00,2014-01-23 17:00,,2013-12-09 08:00,2014-01-01 17:00,2013-12-09 08:00,2014-01-01 17:00,2013-12-09 08:00,2014-01-01 17:00,2014-01-01 08:00,2014-01-23 17:00,,PT_Normal,,,,,/Iy2gO9qQqik526qeGNAMA,,,,N,0,0,,,2013-02-16 15:54,2013-02-16 15:56,admin,admin
503538,6359,125222,13662,0,N,N,N,CP_Drtn,TT_Task,DT_FixedDUR2,TK_NotStart,DUKHCONI2BZ1TCGL5305,Backfilling telecommunication trench,8177,152,0,160,0,286,286,160,220,0,220,,,,2014-01-07 08:00,2014-01-29 17:00,,2013-12-15 08:00,2014-01-07 17:00,2013-12-15 08:00,2014-01-07 17:00,2013-12-15 08:00,2014-01-07 17:00,2014-01-07 08:00,2014-01-29 17:00,,PT_Normal,,,,,juKDGhf0T0eRXgDMjkgujA,,,,N,0,0,,,2013-02-16 15:54,2013-02-16 15:56,admin,admin
503539,6359,125222,13662,0,N,N,N,CP_Drtn,TT_Task,DT_FixedDUR2,TK_NotStart,DUKHCONI2BZ1TCGL5310,Connection & Installation,8178,480,144,160,0,79.2,79.2,160,0,0,0,,,,2014-03-13 08:00,2014-04-05 17:00,,2014-01-01 08:00,2014-01-23 17:00,2014-01-01 08:00,2014-01-23 17:00,2014-01-01 08:00,2014-01-23 17:00,2014-03-13 08:00,2014-04-05 17:00,,PT_Normal,,,,,OWXys9RPQuywdglGskm02A,,,,N,0,0,,,2013-02-16 15:54,2013-02-16 15:56,admin,admin
503540,6359,125223,13662,0,N,N,N,CP_Drtn,TT_Task,DT_FixedDUR2,TK_NotStart,DUKHCONI2BZ1DRGL5115,Excavation for Drainage line,8177,136,0,200,0,233,233,200,125,0,125,,,,2013-08-24 08:00,2013-09-21 17:00,,2013-07-31 08:00,2013-09-01 17:00,2013-07-31 08:00,2013-09-01 17:00,2013-07-31 08:00,2013-09-01 17:00,2013-08-24 08:00,2013-09-21 17:00,,PT_Normal,,,,,9pUFaDESRyS7ksQUs/8CNg,,,,N,0,0,,,2013-02-16 15:54,2013-02-16 15:56,admin,admin
503541,6359,125223,13662,0,N,N,N,CP_Drtn,TT_Task,DT_FixedDUR2,TK_NotStart,DUKHCONI2BZ1DRGL5125,Testing of Drainage line,8178,136,0,200,0,67.2,67.2,200,0,0,0,,,,2013-09-08 08:00,2013-10-06 17:00,,2013-08-19 08:00,2013-09-16 17:00,2013-08-19 08:00,2013-09-16 17:00,2013-08-19 08:00,2013-09-16 17:00,2013-09-08 08:00,2013-10-06 17:00,,PT_Normal,,,,,pA0dO3mlSNulW52rrn0YtQ,,,,N,0,0,,,2013-02-16 15:54,2013-02-16 15:56,admin,admin
503542,6359,125223,13662,0,N,N,N,CP_Drtn,TT_Task,DT_FixedDUR2,TK_NotStart,DUKHCONI2BZ1DRGL5130,Backfilling Drainage line,8177,136,0,120,0,207,207,120,165,0,165,,,,2013-09-25 08:00,2013-10-12 17:00,,2013-09-05 08:00,2013-09-22 17:00,2013-09-05 08:00,2013-09-22 17:00,2013-09-05 08:00,2013-09-22 17:00,2013-09-25 08:00,2013-10-12 17:00,,PT_Normal,,,,,8rJd7Hh4TPyiIVtHDIXvjg,,,,N,0,0,,,2013-02-16 15:54,2013-02-16 15:56,admin,admin
503543,6359,125223,13662,0,N,N,N,CP_Drtn,TT_Task,DT_FixedDUR2,TK_NotStart,DUKHCONI2BZ1DRGL5120,Laying of Drainage line,8178,136,0,200,0,127.2,127.2,200,0,0,0,,,,2013-08-31 08:00,2013-09-28 17:00,,2013-08-07 08:00,2013-09-08 17:00,2013-08-07 08:00,2013-09-08 17:00,2013-08-07 08:00,2013-09-08 17:00,2013-08-31 08:00,2013-09-28 17:00,,PT_Normal,,,,,7hVefdf5QeGRYvdv0v6H4g,,,,N,0,0,,,2013-02-16 15:54,2013-02-16 15:56,admin,admin
503544,6359,125224,13662,0,N,N,N,CP_Drtn,TT_Task,DT_FixedDUR2,TK_NotStart,DUKHCONI2BZ1STGL5235,Excavation for Street lighting,8177,152,0,200,0,247,247,200,151,0,151,,,,2013-12-02 08:00,2013-12-31 17:00,,2013-11-10 08:00,2013-12-08 17:00,2013-11-10 08:00,2013-12-08 17:00,2013-11-10 08:00,2013-12-08 17:00,2013-12-02 08:00,2013-12-31 17:00,,PT_Normal,,,,,XBXVF0aGR5ejbKF5x2XyVg,,,,N,0,0,,,2013-02-16 15:54,2013-02-16 15:56,admin,admin
503545,6359,125224,13662,0,N,N,N,CP_Drtn,TT_Task,DT_FixedDUR2,TK_NotStart,DUKHCONI2BZ1STGL5240,Construction of Duct Banks,8178,152,0,200,0,454.4,454.4,200,0,0,0,,,,2013-12-08 08:00,2014-01-06 17:00,,2013-11-16 08:00,2013-12-14 17:00,2013-11-16 08:00,2013-12-14 17:00,2013-11-16 08:00,2013-12-14 17:00,2013-12-08 08:00,2014-01-06 17:00,,PT_Normal,,,,,Uoq/zUlEQMC4sQ5QRjiopA,,,,N,0,0,,,2013-02-16 15:54,2013-02-16 15:56,admin,admin
503546,6359,125224,13662,0,N,N,N,CP_Drtn,TT_Task,DT_FixedDUR2,TK_NotStart,DUKHCONI2BZ1STGL5245,Construction of Foundation,8172,152,0,200,0,674,674,200,0,0,0,,,,2013-12-08 08:00,2014-01-06 17:00,,2013-11-16 08:00,2013-12-14 17:00,2013-11-16 08:00,2013-12-14 17:00,2013-11-16 08:00,2013-12-14 17:00,2013-12-08 08:00,2014-01-06 17:00,,PT_Normal,,,,,TVDTmatkRsyTJ2m44EFd0Q,,,,N,0,0,,,2013-02-16 15:54,2013-02-16 15:56,admin,admin
503547,6359,125224,13662,0,N,N,N,CP_Drtn,TT_Task,DT_FixedDUR2,TK_NotStart,DUKHCONI2BZ1STGL5250,Backfilling Street Lighting,8177,152,0,200,0,152,152,200,110,0,110,,,,2013-12-14 08:00,2014-01-12 17:00,,2013-11-21 08:00,2013-12-21 17:00,2013-11-21 08:00,2013-12-21 17:00,2013-11-21 08:00,2013-12-21 17:00,2013-12-14 08:00,2014-01-12 17:00,,PT_Normal,,,,,mr5/9F5RRDeO3XVAyDwDng,,,,N,0,0,,,2013-02-16 15:54,2013-02-16 15:56,admin,admin
503548,6359,125224,13662,0,N,N,N,CP_Drtn,TT_Task,DT_FixedDUR2,TK_NotStart,DUKHCONI2BZ1STGL5255,Installation of light Post,8178,656,136,200,0,227.2,227.2,200,0,0,0,,,,2014-03-11 08:00,2014-04-08 17:00,,2013-12-03 08:00,2014-01-01 17:00,2013-12-03 08:00,2014-01-01 17:00,2013-12-03 08:00,2014-01-01 17:00,2014-03-11 08:00,2014-04-08 17:00,,PT_Normal,,,,,sM5WD/QqSfabVPOAke3Xhw,,,,N,0,0,,,2013-02-16 15:54,2013-02-16 15:56,admin,admin
503549,6359,125224,13662,0,N,N,N,CP_Drtn,TT_Task,DT_FixedDUR2,TK_NotStart,DUKHCONI2BZ1STGL5260,Electrical Works,8178,496,136,200,0,170.4,170.4,200,0,0,0,,,,2014-03-19 08:00,2014-04-16 17:00,,2014-01-05 08:00,2014-02-02 17:00,2014-01-05 08:00,2014-02-02 17:00,2014-01-05 08:00,2014-02-02 17:00,2014-03-19 08:00,2014-04-16 17:00,,PT_Normal,,,,,RX97uvoiSparTC4bqTEvIQ,,,,N,0,0,,,2013-02-16 15:54,2013-02-16 15:56,admin,admin
503550,6359,125225,13662,0,N,N,N,CP_Drtn,TT_Task,DT_FixedDUR2,TK_NotStart,DUKHCONI2BZ1FFGL5185,Excavation for firefighting line,8177,136,0,200,0,172,172,200,100,0,100,,,,2013-11-02 08:00,2013-11-30 17:00,,2013-10-10 08:00,2013-11-10 17:00,2013-10-10 08:00,2013-11-10 17:00,2013-10-10 08:00,2013-11-10 17:00,2013-11-02 08:00,2013-11-30 17:00,,PT_Normal,,,,,wWg99JSjT22VSeblgARcuw,,,,N,0,0,,,2013-02-16 15:54,2013-02-16 15:56,admin,admin
503551,6359,125225,13662,0,N,N,N,CP_Drtn,TT_Task,DT_FixedDUR2,TK_NotStart,DUKHCONI2BZ1FFGL5190,Laying of firefighting line,8178,136,0,200,0,165.6,165.6,200,0,0,0,,,,2013-11-10 08:00,2013-12-08 17:00,,2013-10-21 08:00,2013-11-18 17:00,2013-10-21 08:00,2013-11-18 17:00,2013-10-21 08:00,2013-11-18 17:00,2013-11-10 08:00,2013-12-08 17:00,,PT_Normal,,,,,axeqYxuBSQ+BwbIcgcSxyQ,,,,N,0,0,,,2013-02-16 15:54,2013-02-16 15:56,admin,admin
503552,6359,125225,13662,0,N,N,N,CP_Drtn,TT_Task,DT_FixedDUR2,TK_NotStart,DUKHCONI2BZ1FFGL5195,Testing of firefighting line,8178,136,0,200,0,82.8,82.8,200,0,0,0,,,,2013-11-16 08:00,2013-12-14 17:00,,2013-10-27 08:00,2013-11-24 17:00,2013-10-27 08:00,2013-11-24 17:00,2013-10-27 08:00,2013-11-24 17:00,2013-11-16 08:00,2013-12-14 17:00,,PT_Normal,,,,,zuHd9d/2Q6ivmfXC/Si6mQ,,,,N,0,0,,,2013-02-16 15:54,2013-02-16 15:56,admin,admin
503553,6359,125225,13662,0,N,N,N,CP_Drtn,TT_Task,DT_FixedDUR2,TK_NotStart,DUKHCONI2BZ1FFGL5200,Backfilling firefighting line,8177,136,0,200,0,140,140,200,110,0,110,,,,2013-11-21 08:00,2013-12-21 17:00,,2013-11-02 08:00,2013-11-30 17:00,2013-11-02 08:00,2013-11-30 17:00,2013-11-02 08:00,2013-11-30 17:00,2013-11-21 08:00,2013-12-21 17:00,,PT_Normal,,,,,PqMG6K4cTvaHeDFs2FjY5w,,,,N,0,0,,,2013-02-16 15:54,2013-02-16 15:56,admin,admin
503554,6359,125225,13662,0,N,N,N,CP_Drtn,TT_Task,DT_FixedDUR2,TK_NotStart,DUKHCONI2BZ1FFGL5205,Construction of valve chambers & Thrust Blocks,8165,248,0,200,0,174,174,200,0,0,0,,,,2013-12-14 08:00,2014-01-12 17:00,,2013-11-07 08:00,2013-12-05 17:00,2013-11-07 08:00,2013-12-05 17:00,2013-11-07 08:00,2013-12-05 17:00,2013-12-14 08:00,2014-01-12 17:00,,PT_Normal,,,,,ASzlXPcJRD+8alwkqi+gzQ,,,,N,0,0,,,2013-02-16 15:54,2013-02-16 15:56,admin,admin
503555,6359,125225,13662,0,N,N,N,CP_Drtn,TT_Task,DT_FixedDUR2,TK_NotStart,DUKHCONI2BZ1FFGL5210,Connection with existing Firewater System,8165,248,96,200,0,174,174,200,0,0,0,,,,2013-12-21 08:00,2014-01-18 17:00,,2013-11-13 08:00,2013-12-11 17:00,2013-11-13 08:00,2013-12-11 17:00,2013-11-13 08:00,2013-12-11 17:00,2013-12-21 08:00,2014-01-18 17:00,,PT_Normal,,,,,grFLW/rtTm261R1+cCQiVg,,,,N,0,0,,,2013-02-16 15:54,2013-02-16 15:56,admin,admin
503556,6359,125226,13662,0,N,N,N,CP_Drtn,TT_Task,DT_FixedDUR2,TK_NotStart,DUKHCONI2BZ1SAGL5135,Construction of manholes Drainage,8172,544,80,200,0,44,44,200,0,0,0,,,,2013-11-26 08:00,2013-12-25 17:00,,2013-09-05 08:00,2013-10-03 17:00,2013-09-05 08:00,2013-10-03 17:00,2013-09-05 08:00,2013-10-03 17:00,2013-11-26 08:00,2013-12-25 17:00,,PT_Normal,,,,,CS31OlImQLqfUujUjBQO7Q,,,,N,0,0,,,2013-02-16 15:54,2013-02-16 15:56,admin,admin
503557,6359,125226,13662,0,N,N,N,CP_Drtn,TT_Task,DT_FixedDUR2,TK_NotStart,DUKHCONI2BZ1SAGL5140,Construction of soakaways,8172,136,0,200,0,190,190,200,0,0,0,,,,2013-09-25 08:00,2013-10-26 17:00,,2013-09-05 08:00,2013-10-03 17:00,2013-09-05 08:00,2013-10-03 17:00,2013-09-05 08:00,2013-10-03 17:00,2013-09-25 08:00,2013-10-26 17:00,,PT_Normal,,,,,jmSqvxonTT6eWIMt2gz9XQ,,,,N,0,0,,,2013-02-16 15:54,2013-02-16 15:56,admin,admin
503558,6359,125226,13662,0,N,N,N,CP_Drtn,TT_Task,DT_FixedDUR2,TK_NotStart,DUKHCONI2BZ1SAGL5145,Construction of Road gullies,8172,136,0,200,0,190,190,200,0,0,0,,,,2013-10-27 08:00,2013-11-24 17:00,,2013-10-05 08:00,2013-11-04 17:00,2013-10-05 08:00,2013-11-04 17:00,2013-10-05 08:00,2013-11-04 17:00,2013-10-27 08:00,2013-11-24 17:00,,PT_Normal,,,,,3P0NQiYXSB6Ev137oBddJg,,,,N,0,0,,,2013-02-16 15:54,2013-02-16 15:56,admin,admin
503559,6359,125226,13662,0,N,N,N,CP_Drtn,TT_Task,DT_FixedDUR2,TK_NotStart,DUKHCONI2BZ1SAGL5150,Connection with existing sewer manhole,8172,344,192,160,0,44,44,160,0,0,0,,,,2013-12-26 08:00,2014-01-18 17:00,,2013-11-05 08:00,2013-11-27 17:00,2013-11-05 08:00,2013-11-27 17:00,2013-11-05 08:00,2013-11-27 17:00,2013-12-26 08:00,2014-01-18 17:00,,PT_Normal,,,,,g/+LTrRWSDGGzsfFkI8cLA,,,,N,0,0,,,2013-02-16 15:54,2013-02-16 15:56,admin,admin
503560,6359,125227,13662,0,N,N,N,CP_Drtn,TT_Task,DT_FixedDUR2,TK_NotStart,DUKHCONI2BZ1HDGL7020,Precast Concrete Kerbs works,8173,272,0,160,0,650,650,160,0,0,0,,,,2014-02-05 08:00,2014-03-01 17:00,,2013-12-28 08:00,2014-01-19 17:00,2013-12-28 08:00,2014-01-19 17:00,2013-12-28 08:00,2014-01-19 17:00,2014-02-05 08:00,2014-03-01 17:00,,PT_Normal,,,,,u7TYoL60R9uWyFOQ3UVy4g,,,,N,0,0,,,2013-02-16 15:54,2013-02-16 15:56,admin,admin
503561,6359,125227,13662,0,N,N,N,CP_Drtn,TT_Task,DT_FixedDUR2,TK_NotStart,DUKHCONI2BZ1HDGL7025,Interlocking for Walkways,8174,272,0,200,0,762,762,200,0,0,0,,,,2014-02-18 08:00,2014-03-18 17:00,,2014-01-08 08:00,2014-02-05 17:00,2014-01-08 08:00,2014-02-05 17:00,2014-01-08 08:00,2014-02-05 17:00,2014-02-18 08:00,2014-03-18 17:00,,PT_Normal,,,,,E77eIe4/ScicM8DsQS5sKg,,,,N,0,0,,,2013-02-16 15:54,2013-02-16 15:56,admin,admin
503562,6359,125227,13662,0,N,N,N,CP_Drtn,TT_Task,DT_FixedDUR2,TK_NotStart,DUKHCONI2BZ1HDGL7030,Construction of Retaining wall,8165,272,0,200,0,216,216,200,0,0,0,,,,2014-03-02 08:00,2014-03-30 17:00,,2014-01-20 08:00,2014-02-18 17:00,2014-01-20 08:00,2014-02-18 17:00,2014-01-20 08:00,2014-02-18 17:00,2014-03-02 08:00,2014-03-30 17:00,,PT_Normal,,,,,AD2lcptZQVqEJ+i/S/KJyQ,,,,N,0,0,,,2013-02-16 15:54,2013-02-16 15:56,admin,admin
503563,6359,125227,13662,0,N,N,N,CP_Drtn,TT_Task,DT_FixedDUR2,TK_NotStart,DUKHCONI2BZ1HDGL7035,Construction of Wash Stone Boulders,8170,272,0,200,0,396,396,200,0,0,0,,,,2014-03-02 08:00,2014-03-30 17:00,,2014-01-20 08:00,2014-02-18 17:00,2014-01-20 08:00,2014-02-18 17:00,2014-01-20 08:00,2014-02-18 17:00,2014-03-02 08:00,2014-03-30 17:00,,PT_Normal,,,,,NT0I0uWZR1uJfyYGfi4qBw,,,,N,0,0,,,2013-02-16 15:54,2013-02-16 15:56,admin,admin
503564,6359,125227,13662,0,N,N,N,CP_Drtn,TT_Task,DT_FixedDUR2,TK_NotStart,DUKHCONI2BZ1HDGL7040,Construction of Speed Humps,8167,512,256,80,0,14,14,80,0,0,0,,,,2014-05-22 08:00,2014-06-02 17:00,,2014-03-09 08:00,2014-03-19 17:00,2014-03-09 08:00,2014-03-19 17:00,2014-03-09 08:00,2014-03-19 17:00,2014-05-22 08:00,2014-06-02 17:00,,PT_Normal,,,,,Mw2IibyBRuesW5Y1YB0+Xg,,,,N,0,0,,,2013-02-16 15:54,2013-02-16 15:56,admin,admin
503565,6359,125229,13662,0,N,N,N,CP_Drtn,TT_Task,DT_FixedDUR2,TK_NotStart,DUKHCONP1AGNSP001000,"Survey works,",8175,0,0,160,0,87.5,87.5,160,0,0,0,,,,2012-12-01 08:00,2012-12-24 17:00,,2012-12-01 08:00,2012-12-24 17:00,2012-12-01 08:00,2012-12-24 17:00,2012-12-01 08:00,2012-12-24 17:00,2012-12-01 08:00,2012-12-24 17:00,,PT_Normal,,,,,3TLtxQ92SeODIHP2snQwkQ,,,,Y,0,0,,,2013-02-16 15:54,2013-02-16 15:56,admin,admin
503566,6359,125229,13662,0,N,N,N,CP_Drtn,TT_Task,DT_FixedDUR2,TK_NotStart,DUKHCONP1AGNSP002000,Scanning for Existing Services for rerouting,8180,0,0,128,0,325,325,128,0,0,0,,,,2012-11-10 08:00,2012-11-27 17:00,,2012-11-10 08:00,2012-11-27 17:00,2012-11-10 08:00,2012-11-27 17:00,2012-11-10 08:00,2012-11-27 17:00,2012-11-10 08:00,2012-11-27 17:00,,PT_Normal,,,,,Go3Ub3jGQviIDTDidsXIPQ,,,,Y,0,0,,,2013-02-16 15:54,2013-02-16 15:56,admin,admin
503567,6359,125229,13662,0,N,N,N,CP_Drtn,TT_Task,DT_FixedDUR2,TK_NotStart,DUKHCONP1AGNSP003000,Site stripping,8177,480,0,160,0,675,675,160,300,0,300,,,,2013-01-27 08:00,2013-02-19 17:00,,2012-11-17 08:00,2012-12-09 17:00,2012-11-17 08:00,2012-12-09 17:00,2012-11-17 08:00,2012-12-09 17:00,2013-01-27 08:00,2013-02-19 17:00,,PT_Normal,,,,,vebATI3uS2m7VHeFxaPp8Q,,,,N,0,0,,,2013-02-16 15:54,2013-02-16 15:56,admin,admin
503568,6359,125229,13662,0,N,N,N,CP_Drtn,TT_Task,DT_FixedDUR2,TK_NotStart,DUKHCONP1AGNSP004000,Demolition of Existing building & landscaping,8177,480,0,160,0,2687.5,2687.5,160,1750,0,1750,,,,2013-02-02 08:00,2013-02-25 17:00,,2012-11-22 08:00,2012-12-15 17:00,2012-11-22 08:00,2012-12-15 17:00,2012-11-22 08:00,2012-12-15 17:00,2013-02-02 08:00,2013-02-25 17:00,,PT_Normal,,,,,qRRZI4jRT+C07auqWmBr8w,,,,N,0,0,,,2013-02-16 15:54,2013-02-16 15:56,admin,admin
503569,6359,125229,13662,0,N,N,N,CP_Drtn,TT_Task,DT_FixedDUR2,TK_NotStart,DUKHCONP1AGNSP005000,Demolition of existing services works,8177,480,480,160,0,775,775,160,400,0,400,,,,2013-02-07 08:00,2013-03-03 17:00,,2012-11-28 08:00,2012-12-22 17:00,2012-11-28 08:00,2012-12-22 17:00,2012-11-28 08:00,2012-12-22 17:00,2013-02-07 08:00,2013-03-03 17:00,,PT_Normal,,,,,7Jdt7KdMQ9GJgxBKaGNZSg,,,,N,0,0,,,2013-02-16 15:54,2013-02-16 15:56,admin,admin
503570,6359,125229,13662,0,N,N,N,CP_Drtn,TT_Task,DT_FixedDUR2,TK_NotStart,DUKHCONP1AGNSP002100,Submission of Scanning Reports,12515,0,0,40,0,40,40,40,0,0,0,,,,2012-11-28 08:00,2012-12-03 17:00,,2012-11-28 08:00,2012-12-03 17:00,2012-11-28 08:00,2012-12-03 17:00,2012-11-28 08:00,2012-12-03 17:00,2012-11-28 08:00,2012-12-03 17:00,,PT_Normal,,,,,kXHzANrFSEa8s0EAYaPGaQ,mUa/mwVkL06WZ2VwS6c03g,,,Y,0,0,,,2013-02-16 15:54,2013-02-16 15:56,admin,admin
503571,6359,125229,13662,0,N,N,N,CP_Drtn,TT_Task,DT_FixedDUR2,TK_NotStart,DUKHCONP1AGNSP002200,Information Required for  Rerouting,,0,0,112,0,0,0,112,0,0,0,,,,2012-12-04 08:00,2012-12-20 17:00,,2012-12-04 08:00,2012-12-20 17:00,2012-12-04 08:00,2012-12-20 17:00,2012-12-04 08:00,2012-12-20 17:00,2012-12-04 08:00,2012-12-20 17:00,,PT_Normal,,,,,F9F8dl4gQFOKF8dZutdsMg,1bxI7mBXcUGHOwncrhw4Ig,,,Y,0,0,,,2013-02-16 15:54,2013-02-16 15:56,admin,admin
503572,6359,125229,13662,0,N,N,N,CP_Drtn,TT_Task,DT_FixedDUR2,TK_NotStart,DUKHCONP1AGNSP002300,Preparation & Submission for new Layout for rerouting,12515,0,0,56,0,40,40,56,0,0,0,,,,2012-12-22 08:00,2012-12-29 17:00,,2012-12-22 08:00,2012-12-29 17:00,2012-12-22 08:00,2012-12-29 17:00,2012-12-22 08:00,2012-12-29 17:00,2012-12-22 08:00,2012-12-29 17:00,,PT_Normal,,,,,rFCEaIEeQGqiIu/8FyYXXQ,NdEYf1DMFUuZ6s1akbRJ+A,,,Y,0,0,,,2013-02-16 15:54,2013-02-16 15:56,admin,admin
503573,6359,125229,13662,0,N,N,N,CP_Drtn,TT_Task,DT_FixedDUR2,TK_NotStart,DUKHCONP1AGNSP002400,Approval for new Layout for rerouting,,0,0,112,0,0,0,112,0,0,0,,,,2012-12-30 08:00,2013-01-14 17:00,,2012-12-30 08:00,2013-01-14 17:00,2012-12-30 08:00,2013-01-14 17:00,2012-12-30 08:00,2013-01-14 17:00,2012-12-30 08:00,2013-01-14 17:00,,PT_Normal,,,,,cPtXmCoETe+jPzkLbQtPcg,CeTNX/h3PkyHhgVT4OipZw,,,Y,0,0,,,2013-02-16 15:54,2013-02-16 15:56,admin,admin
503574,6359,125229,13662,0,N,N,N,CP_Drtn,TT_Task,DT_FixedDUR2,TK_NotStart,DUKHCONP1AGNSP002500,Rerouting Works,8180,0,0,200,0,326,326,200,0,0,0,,,,2013-01-15 08:00,2013-02-13 17:00,,2013-01-15 08:00,2013-02-13 17:00,2013-01-15 08:00,2013-02-13 17:00,2013-01-15 08:00,2013-02-13 17:00,2013-01-15 08:00,2013-02-13 17:00,,PT_Normal,,,,,p6WLTUMaRBCgpjtgEEhB1Q,GenXSjxaLke8f4XSY6yRnQ,,,Y,0,0,,,2013-02-16 15:54,2013-02-16 15:56,admin,admin
503575,6359,125232,13662,0,N,N,N,CP_Drtn,TT_Task,DT_FixedDUR2,TK_NotStart,DUKHCONP1AZ2WEEX5040,Block works & Plastering,8168,104,0,200,0,512,512,200,0,0,0,,,,2014-02-17 08:00,2014-03-17 17:00,,2014-02-01 08:00,2014-03-02 17:00,2014-02-01 08:00,2014-03-02 17:00,2014-02-01 08:00,2014-03-02 17:00,2014-02-17 08:00,2014-03-17 17:00,,PT_Normal,,,,,H1SOYp2JQc6I+u/0TRfpAw,,,,N,0,0,,,2013-02-16 15:54,2013-02-16 15:56,admin,admin
503576,6359,125232,13662,0,N,N,N,CP_Drtn,TT_Task,DT_FixedDUR2,TK_NotStart,DUKHCONP1AZ2WEEX5045,Flooring & Painting,8178,104,0,200,0,232,232,200,0,0,0,,,,2014-02-24 08:00,2014-03-24 17:00,,2014-02-08 08:00,2014-03-09 17:00,2014-02-08 08:00,2014-03-09 17:00,2014-02-08 08:00,2014-03-09 17:00,2014-02-24 08:00,2014-03-24 17:00,,PT_Normal,,,,,acwSLkwXQEK8uuRpaLyV3A,,,,N,0,0,,,2013-02-16 15:54,2013-02-16 15:56,admin,admin
503577,6359,125232,13662,0,N,N,N,CP_Drtn,TT_Task,DT_FixedDUR2,TK_NotStart,DUKHCONP1AZ2WEEX5050,Installation of Steel Gate,8178,104,24,160,0,56,56,160,0,0,0,,,,2014-03-09 08:00,2014-03-31 17:00,,2014-02-22 08:00,2014-03-16 17:00,2014-02-22 08:00,2014-03-16 17:00,2014-02-22 08:00,2014-03-16 17:00,2014-03-09 08:00,2014-03-31 17:00,,PT_Normal,,,,,5N+wKHoCTYeLg4eEVprqBA,,,,N,0,0,,,2013-02-16 15:54,2013-02-16 15:56,admin,admin
503578,6359,125232,13662,0,N,N,N,CP_Drtn,TT_Task,DT_FixedDUR2,TK_NotStart,DUKHCONP1AZ2WEEX5060,Structural steel &  SS Shed cover installation,8178,80,0,200,0,336,336,200,0,0,0,,,,2014-03-15 08:00,2014-04-12 17:00,,2014-03-03 08:00,2014-03-31 17:00,2014-03-03 08:00,2014-03-31 17:00,2014-03-03 08:00,2014-03-31 17:00,2014-03-15 08:00,2014-04-12 17:00,,PT_Normal,,,,,rBhsyAIwSQO0Z9Ztz1nRFw,,,,N,0,0,,,2013-02-16 15:54,2013-02-16 15:56,admin,admin
503579,6359,125232,13662,0,N,N,N,CP_Drtn,TT_Task,DT_FixedDUR2,TK_NotStart,DUKHCONP1AZ2WEEX5065,"Install. of Water Tank,Chiller,Pump & Meter",8178,72,0,200,0,203.2,203.2,200,0,0,0,,,,2014-03-22 08:00,2014-04-19 17:00,,2014-03-11 08:00,2014-04-08 17:00,2014-03-11 08:00,2014-04-08 17:00,2014-03-11 08:00,2014-04-08 17:00,2014-03-22 08:00,2014-04-19 17:00,,PT_Normal,,,,,tGwa5kuHTW6LsNGovuEb/w,,,,N,0,0,,,2013-02-16 15:54,2013-02-16 15:56,admin,admin
503580,6359,125232,13662,0,N,N,N,CP_Drtn,TT_Task,DT_FixedDUR2,TK_NotStart,DUKHCONP1AZ2WEEX5030,Excavation,8177,104,0,160,0,64,64,160,40,0,40,,,,2014-02-01 08:00,2014-02-24 17:00,,2014-01-16 08:00,2014-02-08 17:00,2014-01-16 08:00,2014-02-08 17:00,2014-01-16 08:00,2014-02-08 17:00,2014-02-01 08:00,2014-02-24 17:00,,PT_Normal,,,,,oht2MC1kQK6/E2uob3IBtg,,,,N,0,0,,,2013-02-16 15:54,2013-02-16 15:56,admin,admin
503581,6359,125232,13662,0,N,N,N,CP_Drtn,TT_Task,DT_FixedDUR2,TK_NotStart,DUKHCONP1AZ2WEEX5035,Construction of Raft,8165,104,0,200,0,840,840,200,0,0,0,,,,2014-02-06 08:00,2014-03-08 17:00,,2014-01-22 08:00,2014-02-20 17:00,2014-01-22 08:00,2014-02-20 17:00,2014-01-22 08:00,2014-02-20 17:00,2014-02-06 08:00,2014-03-08 17:00,,PT_Normal,,,,,/elU3VzRQW2G3peWiZ2Ivw,,,,N,0,0,,,2013-02-16 15:54,2013-02-16 15:56,admin,admin
503582,6359,125233,13662,0,N,N,N,CP_Drtn,TT_Task,DT_FixedDUR2,TK_NotStart,DUKHCONP1AZ2HDEX5090,kerb works,8173,128,0,160,0,344,344,160,0,0,0,,,,2014-02-18 08:00,2014-03-12 17:00,,2014-01-29 08:00,2014-02-22 17:00,2014-01-29 08:00,2014-02-22 17:00,2014-01-29 08:00,2014-02-22 17:00,2014-02-18 08:00,2014-03-12 17:00,,PT_Normal,,,,,0e3UdiivRi2N5tOnotrVSQ,,,,N,0,0,,,2013-02-16 15:54,2013-02-16 15:56,admin,admin
503583,6359,125233,13662,0,N,N,N,CP_Drtn,TT_Task,DT_FixedDUR2,TK_NotStart,DUKHCONP1AZ2HDEX5095,Cobble Stone Works,8170,128,0,160,0,200,200,160,0,0,0,,,,2014-03-02 08:00,2014-03-24 17:00,,2014-02-10 08:00,2014-03-05 17:00,2014-02-10 08:00,2014-03-05 17:00,2014-02-10 08:00,2014-03-05 17:00,2014-03-02 08:00,2014-03-24 17:00,,PT_Normal,,,,,SB6tHQVQQf+K2SD4u2TkEA,,,,N,0,0,,,2013-02-16 15:54,2013-02-16 15:56,admin,admin
503584,6359,125233,13662,0,N,N,N,CP_Drtn,TT_Task,DT_FixedDUR2,TK_NotStart,DUKHCONP1AZ2HDEX5100,Interlock works,8174,128,0,160,0,232,232,160,0,0,0,,,,2014-03-09 08:00,2014-03-31 17:00,,2014-02-18 08:00,2014-03-12 17:00,2014-02-18 08:00,2014-03-12 17:00,2014-02-18 08:00,2014-03-12 17:00,2014-03-09 08:00,2014-03-31 17:00,,PT_Normal,,,,,GSIyAxXoRbW3KmT0BbxENw,,,,N,0,0,,,2013-02-16 15:54,2013-02-16 15:56,admin,admin
503585,6359,125234,13662,0,N,N,N,CP_Drtn,TT_Task,DT_FixedDUR2,TK_NotStart,DUKHCONP1AZ2SLEX5105,Laying of Grass/ green area,8178,128,0,200,0,2744,2744,200,0,0,0,,,,2014-03-15 08:00,2014-04-12 17:00,,2014-02-24 08:00,2014-03-24 17:00,2014-02-24 08:00,2014-03-24 17:00,2014-02-24 08:00,2014-03-24 17:00,2014-03-15 08:00,2014-04-12 17:00,,PT_Normal,,,,,Vef9KdX1SDy/kggmxcn8Yg,,,,N,0,0,,,2013-02-16 15:54,2013-02-16 15:56,admin,admin
503586,6359,125234,13662,0,N,N,N,CP_Drtn,TT_Task,DT_FixedDUR2,TK_NotStart,DUKHCONP1AZ2SLEX5110,Laying of Palm tree,8178,128,128,200,0,168,168,200,0,0,0,,,,2014-03-22 08:00,2014-04-19 17:00,,2014-03-03 08:00,2014-03-31 17:00,2014-03-03 08:00,2014-03-31 17:00,2014-03-03 08:00,2014-03-31 17:00,2014-03-22 08:00,2014-04-19 17:00,,PT_Normal,,,,,SGIPnsycRhellwmkCk7RIQ,,,,N,0,0,,,2013-02-16 15:54,2013-02-16 15:56,admin,admin
503587,6359,125235,13662,0,N,N,N,CP_Drtn,TT_Task,DT_FixedDUR2,TK_NotStart,DUKHCONP1AZ2MSEX5015,Construction of grease Trap,8178,264,0,160,0,56,56,160,0,0,0,,,,2014-02-05 08:00,2014-03-01 17:00,,2013-12-29 08:00,2014-01-20 17:00,2013-12-29 08:00,2014-01-20 17:00,2013-12-29 08:00,2014-01-20 17:00,2014-02-05 08:00,2014-03-01 17:00,,PT_Normal,,,,,z8v5T11UQhy+/VEP3WVsjg,,,,N,0,0,,,2013-02-16 15:54,2013-02-16 15:56,admin,admin
503588,6359,125235,13662,0,N,N,N,CP_Drtn,TT_Task,DT_FixedDUR2,TK_NotStart,DUKHCONP1AZ2MSEX5000,Construction of Manholes,8172,264,0,200,0,528,528,200,0,0,0,,,,2014-01-02 08:00,2014-01-30 17:00,,2013-11-24 08:00,2013-12-23 17:00,2013-11-24 08:00,2013-12-23 17:00,2013-11-24 08:00,2013-12-23 17:00,2014-01-02 08:00,2014-01-30 17:00,,PT_Normal,,,,,wEQQtZ+LS4uIkDy6IbmRGw,,,,N,0,0,,,2013-02-16 15:54,2013-02-16 15:56,admin,admin
503589,6359,125235,13662,0,N,N,N,CP_Drtn,TT_Task,DT_FixedDUR2,TK_NotStart,DUKHCONP1AZ2MSEX5005,"Construction  of Soak pit, Chambers",8172,264,0,200,0,176,176,200,0,0,0,,,,2014-01-16 08:00,2014-02-15 17:00,,2013-12-08 08:00,2014-01-06 17:00,2013-12-08 08:00,2014-01-06 17:00,2013-12-08 08:00,2014-01-06 17:00,2014-01-16 08:00,2014-02-15 17:00,,PT_Normal,,,,,+uDyELzWS2aUgvZkeiRuwQ,,,,N,0,0,,,2013-02-16 15:54,2013-02-16 15:56,admin,admin
503590,6359,125235,13662,0,N,N,N,CP_Drtn,TT_Task,DT_FixedDUR2,TK_NotStart,DUKHCONP1AZ2MSEX5010,Telephone cable laying,8177,264,176,200,0,500,500,200,0,0,0,,,,2014-03-02 08:00,2014-03-30 17:00,,2014-01-21 08:00,2014-02-19 17:00,2014-01-21 08:00,2014-02-19 17:00,2014-01-21 08:00,2014-02-19 17:00,2014-03-02 08:00,2014-03-30 17:00,,PT_Normal,,,,,zZNU2q3uT5KPiI8rcn6ajg,,,,N,0,0,,,2013-02-16 15:54,2013-02-16 15:56,admin,admin
503591,6359,125235,13662,0,N,N,N,CP_Drtn,TT_Task,DT_FixedDUR2,TK_NotStart,DUKHCONP1AZ2MSEX5335,Aluminum Roll-up Shutter with 2m Wall,8178,824,0,200,0,400,400,200,0,0,0,,,,2014-08-06 08:00,2014-09-03 17:00,,2014-04-05 08:00,2014-05-03 17:00,2014-04-05 08:00,2014-05-03 17:00,2014-04-05 08:00,2014-05-03 17:00,2014-08-06 08:00,2014-09-03 17:00,,PT_Normal,,,,,UvtO1ZuXS/mu8f5pyDPeug,,,,N,0,0,,,2013-02-16 15:54,2013-02-16 16:44,admin,admin
503592,6359,125235,13662,0,N,N,N,CP_Drtn,TT_Task,DT_FixedDUR2,TK_NotStart,DUKHCONP1AZ2MSEX5020,Construction Entrance Ramp,8164,128,0,200,0,656,656,200,0,0,0,,,,2014-02-03 08:00,2014-03-04 17:00,,2014-01-15 08:00,2014-02-13 17:00,2014-01-15 08:00,2014-02-13 17:00,2014-01-15 08:00,2014-02-13 17:00,2014-02-03 08:00,2014-03-04 17:00,,PT_Normal,,,,,pGtVjLEDQFK7z/8OC8/M9A,,,,N,0,0,,,2013-02-16 15:54,2013-02-16 15:56,admin,admin
503593,6359,125235,13662,0,N,N,N,CP_Drtn,TT_Task,DT_FixedDUR2,TK_NotStart,DUKHCONP1AZ2MSEX5025,SS.Handrails and Balustrades,8178,152,48,160,0,56,56,160,0,0,0,,,,2014-02-25 08:00,2014-03-19 17:00,,2014-02-02 08:00,2014-02-25 17:00,2014-02-02 08:00,2014-02-25 17:00,2014-02-02 08:00,2014-02-25 17:00,2014-02-25 08:00,2014-03-19 17:00,,PT_Normal,,,,,SjU4tqbTTO2ieHR5bg0+bw,,,,N,0,0,,,2013-02-16 15:54,2013-02-16 15:56,admin,admin
503594,6359,125238,13662,0,N,N,N,CP_Drtn,TT_Task,DT_FixedDUR2,TK_NotStart,DUKHCONP1AZ2ARRF3600,Block work,8168,416,0,160,0,700,700,160,0,0,0,,,,2014-02-06 08:00,2014-03-02 17:00,,2013-12-07 08:00,2013-12-30 17:00,2013-12-07 08:00,2013-12-30 17:00,2013-12-07 08:00,2013-12-30 17:00,2014-02-06 08:00,2014-03-02 17:00,,PT_Normal,,,,,cLs70s6sSBWj8URE0qVgtw,,,,N,0,0,,,2013-02-16 15:54,2013-02-16 15:56,admin,admin
503595,6359,125238,13662,0,N,N,N,CP_Drtn,TT_Task,DT_FixedDUR2,TK_NotStart,DUKHCONP1AZ2ARRF3605,Plastering work,8169,416,0,160,0,1786.5,1786.5,160,0,0,0,,,,2014-02-16 08:00,2014-03-10 17:00,,2013-12-15 08:00,2014-01-07 17:00,2013-12-15 08:00,2014-01-07 17:00,2013-12-15 08:00,2014-01-07 17:00,2014-02-16 08:00,2014-03-10 17:00,,PT_Normal,,,,,KcqxzGIYS5W6FR1Ata9Jcg,,,,N,0,0,,,2013-02-16 15:54,2013-02-16 15:56,admin,admin
503596,6359,125238,13662,0,N,N,N,CP_Drtn,TT_Task,DT_FixedDUR2,TK_NotStart,DUKHCONP1AZ2ARRF3610,Flooring screed,8164,456,0,120,0,136.5,136.5,120,0,0,0,,,,2014-03-08 08:00,2014-03-24 17:00,,2013-12-30 08:00,2014-01-15 17:00,2013-12-30 08:00,2014-01-15 17:00,2013-12-30 08:00,2014-01-15 17:00,2014-03-08 08:00,2014-03-24 17:00,,PT_Normal,,,,,Po+6rInCTtyB8ovQ3Tn14w,,,,N,0,0,,,2013-02-16 15:54,2013-02-16 15:56,admin,admin
503597,6359,125238,13662,0,N,N,N,CP_Drtn,TT_Task,DT_FixedDUR2,TK_NotStart,DUKHCONP1AZ2ARRF3695,Painting -Storage area,8178,456,0,160,0,1640,1640,160,0,0,0,,,,2014-03-16 08:00,2014-04-07 17:00,,2014-01-07 08:00,2014-01-29 17:00,2014-01-07 08:00,2014-01-29 17:00,2014-01-07 08:00,2014-01-29 17:00,2014-03-16 08:00,2014-04-07 17:00,,PT_Normal,,,,,qPaelL5GTDOPu9JFzcHRaA,,,,N,0,0,,,2013-02-16 15:54,2013-02-16 15:56,admin,admin
503598,6359,125238,13662,0,N,N,N,CP_Drtn,TT_Task,DT_FixedDUR2,TK_NotStart,DUKHCONP1AZ2ARRF3620,Epoxy Painting -Storage area,8178,456,456,120,0,48.5,48.5,120,0,0,0,,,,2014-04-02 08:00,2014-04-19 17:00,,2014-01-25 08:00,2014-02-10 17:00,2014-01-25 08:00,2014-02-10 17:00,2014-01-25 08:00,2014-02-10 17:00,2014-04-02 08:00,2014-04-19 17:00,,PT_Normal,,,,,1AGLDYyRQv2PAIxLKWefAA,,,,N,0,0,,,2013-02-16 15:54,2013-02-16 15:56,admin,admin
503599,6359,125239,13662,0,N,N,N,CP_Drtn,TT_Task,DT_FixedDUR2,TK_NotStart,DUKHCONP1AZ2ARFF3380,Aluminum windows,8178,32,32,160,0,162.25,162.25,160,0,0,0,,,,2014-03-10 08:00,2014-04-01 17:00,,2014-03-05 08:00,2014-03-27 17:00,2014-03-05 08:00,2014-03-27 17:00,2014-03-05 08:00,2014-03-27 17:00,2014-03-10 08:00,2014-04-01 17:00,,PT_Normal,,,,,Rsvk7PV8TAWl4auMsk5qdQ,,,,N,0,0,,,2013-02-16 15:54,2013-02-16 15:56,admin,admin
503600,6359,125239,13662,0,N,N,N,CP_Drtn,TT_Task,DT_FixedDUR2,TK_NotStart,DUKHCONP1AZ2ARFF3375,Carpentry & Joinery Works,8178,0,0,200,0,1100,1100,200,0,0,0,,,,2014-03-04 08:00,2014-04-01 17:00,,2014-03-04 08:00,2014-04-01 17:00,2014-03-04 08:00,2014-04-01 17:00,2014-03-04 08:00,2014-04-01 17:00,2014-03-04 08:00,2014-04-01 17:00,,PT_Normal,,,,,urDnAFouTFi9fgxOL+09/w,,,,Y,0,0,,,2013-02-16 15:54,2013-02-16 15:56,admin,admin
503601,6359,125239,13662,0,N,N,N,CP_Drtn,TT_Task,DT_FixedDUR2,TK_NotStart,DUKHCONP1AZ2ARFF3390,Installation of Granite Counter Top,8171,8,8,160,0,88,88,160,0,0,0,,,,2014-03-17 08:00,2014-04-08 17:00,,2014-03-16 08:00,2014-04-07 17:00,2014-03-16 08:00,2014-04-07 17:00,2014-03-16 08:00,2014-04-07 17:00,2014-03-17 08:00,2014-04-08 17:00,,PT_Normal,,,,,eBO+ybJ7Tq+eFRbtDS4lig,,,,N,0,0,,,2013-02-16 15:54,2013-02-16 15:56,admin,admin
503602,6359,125239,13662,0,N,N,N,CP_Drtn,TT_Task,DT_FixedDUR2,TK_NotStart,DUKHCONP1AZ2ARFF3385,Handrail &  Balustrade,8178,0,0,160,0,787.5,787.5,160,0,0,0,,,,2014-03-16 08:00,2014-04-07 17:00,,2014-03-16 08:00,2014-04-07 17:00,2014-03-16 08:00,2014-04-07 17:00,2014-03-16 08:00,2014-04-07 17:00,2014-03-16 08:00,2014-04-07 17:00,,PT_Normal,,,,,42pfzH0uRkC79rjypJmp+w,,,,Y,0,0,,,2013-02-16 15:54,2013-02-16 15:56,admin,admin
503603,6359,125239,13662,0,N,N,N,CP_Drtn,TT_Task,DT_FixedDUR2,TK_NotStart,DUKHCONP1AZ2ARFF3395,Final Painting,8178,0,0,200,0,4742.75,4742.75,200,0,0,0,,,,2014-03-22 08:00,2014-04-19 17:00,,2014-03-22 08:00,2014-04-19 17:00,2014-03-22 08:00,2014-04-19 17:00,2014-03-22 08:00,2014-04-19 17:00,2014-03-22 08:00,2014-04-19 17:00,,PT_Normal,,,,,+jcjT/HjSKatC+y3gU/AUw,,,,Y,0,0,,,2013-02-16 15:54,2013-02-16 15:56,admin,admin
503604,6359,125239,13662,0,N,N,N,CP_Drtn,TT_Task,DT_FixedDUR2,TK_NotStart,DUKHCONP1AZ2ARFF3300,Block work,8168,0,0,200,0,6387.5,6387.5,200,0,0,0,,,,2013-11-23 08:00,2013-12-22 17:00,,2013-11-23 08:00,2013-12-22 17:00,2013-11-23 08:00,2013-12-22 17:00,2013-11-23 08:00,2013-12-22 17:00,2013-11-23 08:00,2013-12-22 17:00,,PT_Normal,,,,,9gqFSYTlQZ2uJPiu+boXsw,,,,Y,0,0,,,2013-02-16 15:54,2013-02-16 15:56,admin,admin
503605,6359,125239,13662,0,N,N,N,CP_Drtn,TT_Task,DT_FixedDUR2,TK_NotStart,DUKHCONP1AZ2ARFF3305,Plastering work,8169,0,0,200,0,8899,8899,200,0,0,0,,,,2013-12-17 08:00,2014-01-15 17:00,,2013-12-17 08:00,2014-01-15 17:00,2013-12-17 08:00,2014-01-15 17:00,2013-12-17 08:00,2014-01-15 17:00,2013-12-17 08:00,2014-01-15 17:00,,PT_Normal,,,,,2v/Tgy8PTgi5DgLPmFSaPw,,,,Y,0,0,,,2013-02-16 15:54,2013-02-16 15:56,admin,admin
503606,6359,125239,13662,0,N,N,N,CP_Drtn,TT_Task,DT_FixedDUR2,TK_NotStart,DUKHCONP1AZ2ARFF3310,Flooring screed,8164,96,96,168,0,1215.5,1215.5,168,0,0,0,,,,2014-01-09 08:00,2014-02-02 17:00,,2013-12-26 08:00,2014-01-19 17:00,2013-12-26 08:00,2014-01-19 17:00,2013-12-26 08:00,2014-01-19 17:00,2014-01-09 08:00,2014-02-02 17:00,,PT_Normal,,,,,dvj4OLHkR8O2YKVfppyz1w,,,,N,0,0,,,2013-02-16 15:54,2013-02-16 15:56,admin,admin
503607,6359,125239,13662,0,N,N,N,CP_Drtn,TT_Task,DT_FixedDUR2,TK_NotStart,DUKHCONP1AZ2ARFF3315,Wet area waterproofing,8178,0,0,120,0,1215.5,1215.5,120,0,0,0,,,,2014-01-07 08:00,2014-01-23 17:00,,2014-01-07 08:00,2014-01-23 17:00,2014-01-07 08:00,2014-01-23 17:00,2014-01-07 08:00,2014-01-23 17:00,2014-01-07 08:00,2014-01-23 17:00,,PT_Normal,,,,,8xVJuBOiRZGVcrCq5u8hJw,,,,Y,0,0,,,2013-02-16 15:54,2013-02-16 15:56,admin,admin
503608,6359,125239,13662,0,N,N,N,CP_Drtn,TT_Task,DT_FixedDUR2,TK_NotStart,DUKHCONP1AZ2ARFF3330,Paint First coat,8178,112,112,200,0,4742.75,4742.75,200,0,0,0,,,,2014-01-20 08:00,2014-02-18 17:00,,2014-01-04 08:00,2014-02-01 17:00,2014-01-04 08:00,2014-02-01 17:00,2014-01-04 08:00,2014-02-01 17:00,2014-01-20 08:00,2014-02-18 17:00,,PT_Normal,,,,,J5V0OW4lQy2k8Bz93BDHhA,,,,N,0,0,,,2013-02-16 15:54,2013-02-16 15:56,admin,admin
503609,6359,125239,13662,0,N,N,N,CP_Drtn,TT_Task,DT_FixedDUR2,TK_NotStart,DUKHCONP1AZ2ARFF3320,Ceramic Wall Tiling,8170,0,0,200,0,1897.25,1897.25,200,0,0,0,,,,2014-01-14 08:00,2014-02-12 17:00,,2014-01-14 08:00,2014-02-12 17:00,2014-01-14 08:00,2014-02-12 17:00,2014-01-14 08:00,2014-02-12 17:00,2014-01-14 08:00,2014-02-12 17:00,,PT_Normal,,,,,RNQ2WEUGRaGOjPJXzsMcuw,,,,Y,0,0,,,2013-02-16 15:54,2013-02-16 15:56,admin,admin
503610,6359,125239,13662,0,N,N,N,CP_Drtn,TT_Task,DT_FixedDUR2,TK_NotStart,DUKHCONP1AZ2ARFF3325,Porcelain Tile flooring,8170,0,0,200,0,1743.75,1743.75,200,0,0,0,,,,2014-01-21 08:00,2014-02-19 17:00,,2014-01-21 08:00,2014-02-19 17:00,2014-01-21 08:00,2014-02-19 17:00,2014-01-21 08:00,2014-02-19 17:00,2014-01-21 08:00,2014-02-19 17:00,,PT_Normal,,,,,8GjI9lq2QKuWYUE/E7egfQ,,,,Y,0,0,,,2013-02-16 15:54,2013-02-16 15:56,admin,admin
503611,6359,125239,13662,0,N,N,N,CP_Drtn,TT_Task,DT_FixedDUR2,TK_NotStart,DUKHCONP1AZ2ARFF3335,Slate Tile Flooring & Skirting,8170,64,64,120,0,261.5,261.5,120,0,0,0,,,,2014-02-18 08:00,2014-03-06 17:00,,2014-02-08 08:00,2014-02-25 17:00,2014-02-08 08:00,2014-02-25 17:00,2014-02-08 08:00,2014-02-25 17:00,2014-02-18 08:00,2014-03-06 17:00,,PT_Normal,,,,,6aYUOz36SmyGZf0jbw3H3g,,,,N,0,0,,,2013-02-16 15:54,2013-02-16 15:56,admin,admin
503612,6359,125239,13662,0,N,N,N,CP_Drtn,TT_Task,DT_FixedDUR2,TK_NotStart,DUKHCONP1AZ2ARFF3350,Granite - Stair case flooring & Skirting,8171,16,16,160,0,875,875,160,0,0,0,,,,2014-02-15 08:00,2014-03-09 17:00,,2014-02-12 08:00,2014-03-06 17:00,2014-02-12 08:00,2014-03-06 17:00,2014-02-12 08:00,2014-03-06 17:00,2014-02-15 08:00,2014-03-09 17:00,,PT_Normal,,,,,zLP+nmqCSqCbIthTn6KNMg,,,,N,0,0,,,2013-02-16 15:54,2013-02-16 15:56,admin,admin
503613,6359,125239,13662,0,N,N,N,CP_Drtn,TT_Task,DT_FixedDUR2,TK_NotStart,DUKHCONP1AZ2ARFF3345,Fixing of Suspension systems,8178,0,0,160,0,1305,1305,160,0,0,0,,,,2014-02-03 08:00,2014-02-26 17:00,,2014-02-03 08:00,2014-02-26 17:00,2014-02-03 08:00,2014-02-26 17:00,2014-02-03 08:00,2014-02-26 17:00,2014-02-03 08:00,2014-02-26 17:00,,PT_Normal,,,,,3/y9fiI2Tx6U0tt5dvlPtA,,,,Y,0,0,,,2013-02-16 15:54,2013-02-16 15:56,admin,admin
503614,6359,125239,13662,0,N,N,N,CP_Drtn,TT_Task,DT_FixedDUR2,TK_NotStart,DUKHCONP1AZ2ARFF3360,Gypsum board false ceiling,8178,0,0,200,0,1305,1305,200,0,0,0,,,,2014-02-10 08:00,2014-03-11 17:00,,2014-02-10 08:00,2014-03-11 17:00,2014-02-10 08:00,2014-03-11 17:00,2014-02-10 08:00,2014-03-11 17:00,2014-02-10 08:00,2014-03-11 17:00,,PT_Normal,,,,,GzUKK9fPSZW7ai8D6nKS4g,,,,Y,0,0,,,2013-02-16 15:54,2013-02-16 15:56,admin,admin
503615,6359,125239,13662,0,N,N,N,CP_Drtn,TT_Task,DT_FixedDUR2,TK_NotStart,DUKHCONP1AZ2ARFF3365,Wooden door,8178,0,0,120,0,308,308,120,0,0,0,,,,2014-02-26 08:00,2014-03-15 17:00,,2014-02-26 08:00,2014-03-15 17:00,2014-02-26 08:00,2014-03-15 17:00,2014-02-26 08:00,2014-03-15 17:00,2014-02-26 08:00,2014-03-15 17:00,,PT_Normal,,,,,10bYMOb9TLaEiTCvZn7VvQ,,,,Y,0,0,,,2013-02-16 15:54,2013-02-16 15:56,admin,admin
503616,6359,125239,13662,0,N,N,N,CP_Drtn,TT_Task,DT_FixedDUR2,TK_NotStart,DUKHCONP1AZ2ARFF3370,Aluminum Door,8178,0,0,160,0,220,220,160,0,0,0,,,,2014-02-26 08:00,2014-03-20 17:00,,2014-02-26 08:00,2014-03-20 17:00,2014-02-26 08:00,2014-03-20 17:00,2014-02-26 08:00,2014-03-20 17:00,2014-02-26 08:00,2014-03-20 17:00,,PT_Normal,,,,,h9v6WdX7SxKxQRuU5OLU7w,,,,Y,0,0,,,2013-02-16 15:54,2013-02-16 15:56,admin,admin
503617,6359,125240,13662,0,N,N,N,CP_Drtn,TT_Task,DT_FixedDUR2,TK_NotStart,DUKHCONP1AZ2ARGF3090,Installation of Granite Counter Top,8171,168,0,120,0,176,176,120,0,0,0,,,,2014-03-12 08:00,2014-03-29 17:00,,2014-02-16 08:00,2014-03-04 17:00,2014-02-16 08:00,2014-03-04 17:00,2014-02-16 08:00,2014-03-04 17:00,2014-03-12 08:00,2014-03-29 17:00,,PT_Normal,,,,,m9bqGruYThijurFnYPguGA,,,,N,0,0,,,2013-02-16 15:54,2013-02-16 15:56,admin,admin
503618,6359,125240,13662,0,N,N,N,CP_Drtn,TT_Task,DT_FixedDUR2,TK_NotStart,DUKHCONP1AZ2ARGF3085,S.S.Balustrade,8178,208,40,160,0,262.5,262.5,160,0,0,0,,,,2014-03-13 08:00,2014-04-05 17:00,,2014-02-10 08:00,2014-03-05 17:00,2014-02-10 08:00,2014-03-05 17:00,2014-02-10 08:00,2014-03-05 17:00,2014-03-13 08:00,2014-04-05 17:00,,PT_Normal,,,,,2pDM//H3S9qrDwvdvR87FA,,,,N,0,0,,,2013-02-16 15:54,2013-02-16 15:56,admin,admin
503619,6359,125240,13662,0,N,N,N,CP_Drtn,TT_Task,DT_FixedDUR2,TK_NotStart,DUKHCONP1AZ2ARGF3095,Final Painting,8178,168,0,200,0,5425.75,5425.75,200,0,0,0,,,,2014-03-22 08:00,2014-04-19 17:00,,2014-02-25 08:00,2014-03-25 17:00,2014-02-25 08:00,2014-03-25 17:00,2014-02-25 08:00,2014-03-25 17:00,2014-03-22 08:00,2014-04-19 17:00,,PT_Normal,,,,,TLH7XdPwR3ODSOr+lyPeYg,,,,N,0,0,,,2013-02-16 15:54,2013-02-16 15:56,admin,admin
503620,6359,125240,13662,0,N,N,N,CP_Drtn,TT_Task,DT_FixedDUR2,TK_NotStart,DUKHCONP1AZ2ARGF3000,Block work,8168,144,0,200,0,9737.5,9737.5,200,0,0,0,,,,2013-11-02 08:00,2013-11-30 17:00,,2013-10-09 08:00,2013-11-09 17:00,2013-10-09 08:00,2013-11-09 17:00,2013-10-09 08:00,2013-11-09 17:00,2013-11-02 08:00,2013-11-30 17:00,,PT_Normal,,,,,IKhkuWgUSb60M1S8c5zocQ,,,,N,0,0,,,2013-02-16 15:54,2013-02-16 15:56,admin,admin
503621,6359,125240,13662,0,N,N,N,CP_Drtn,TT_Task,DT_FixedDUR2,TK_NotStart,DUKHCONP1AZ2ARGF3005,Plastering work,8169,144,0,200,0,13637.5,13637.5,200,0,0,0,,,,2013-11-24 08:00,2013-12-23 17:00,,2013-11-03 08:00,2013-12-01 17:00,2013-11-03 08:00,2013-12-01 17:00,2013-11-03 08:00,2013-12-01 17:00,2013-11-24 08:00,2013-12-23 17:00,,PT_Normal,,,,,GSqJRMTATHCZC32TF5ZS8A,,,,N,0,0,,,2013-02-16 15:54,2013-02-16 15:56,admin,admin
503622,6359,125240,13662,0,N,N,N,CP_Drtn,TT_Task,DT_FixedDUR2,TK_NotStart,DUKHCONP1AZ2ARGF3010,Flooring screed,8164,208,64,168,0,1580.25,1580.25,168,0,0,0,,,,2013-12-11 08:00,2014-01-05 17:00,,2013-11-11 08:00,2013-12-04 17:00,2013-11-11 08:00,2013-12-04 17:00,2013-11-11 08:00,2013-12-04 17:00,2013-12-11 08:00,2014-01-05 17:00,,PT_Normal,,,,,BeytolVaRM2wuaMqS0ccTw,,,,N,0,0,,,2013-02-16 15:54,2013-02-16 15:56,admin,admin
503623,6359,125240,13662,0,N,N,N,CP_Drtn,TT_Task,DT_FixedDUR2,TK_NotStart,DUKHCONP1AZ2ARGF3015,Wet area waterproofing & Protection Screed,8178,144,0,120,0,247.5,247.5,120,0,0,0,,,,2013-12-11 08:00,2013-12-29 17:00,,2013-11-20 08:00,2013-12-07 17:00,2013-11-20 08:00,2013-12-07 17:00,2013-11-20 08:00,2013-12-07 17:00,2013-12-11 08:00,2013-12-29 17:00,,PT_Normal,,,,,viYclvvfQUCBPAqt3+Ppzw,,,,N,0,0,,,2013-02-16 15:54,2013-02-16 15:56,admin,admin
503624,6359,125240,13662,0,N,N,N,CP_Drtn,TT_Task,DT_FixedDUR2,TK_NotStart,DUKHCONP1AZ2ARGF3030,Paint First coat,8178,256,0,200,0,5425.75,5425.75,200,0,0,0,,,,2013-12-28 08:00,2014-01-25 17:00,,2013-11-19 08:00,2013-12-17 17:00,2013-11-19 08:00,2013-12-17 17:00,2013-11-19 08:00,2013-12-17 17:00,2013-12-28 08:00,2014-01-25 17:00,,PT_Normal,,,,,bTwcJpkuQEqxYs07QQCrnA,,,,N,0,0,,,2013-02-16 15:54,2013-02-16 15:56,admin,admin
503625,6359,125240,13662,0,N,N,N,CP_Drtn,TT_Task,DT_FixedDUR2,TK_NotStart,DUKHCONP1AZ2ARGF3020,Ceramic Wall Tiling,8170,144,0,200,0,4428.5,4428.5,200,0,0,0,,,,2013-12-17 08:00,2014-01-15 17:00,,2013-11-26 08:00,2013-12-25 17:00,2013-11-26 08:00,2013-12-25 17:00,2013-11-26 08:00,2013-12-25 17:00,2013-12-17 08:00,2014-01-15 17:00,,PT_Normal,,,,,vW/wjGCNRl2kj+WCMWRkfw,,,,N,0,0,,,2013-02-16 15:54,2013-02-16 15:56,admin,admin
503626,6359,125240,13662,0,N,N,N,CP_Drtn,TT_Task,DT_FixedDUR2,TK_NotStart,DUKHCONP1AZ2ARGF3025,Porcelain Tile flooring,8170,144,0,200,0,1743.75,1743.75,200,0,0,0,,,,2013-12-24 08:00,2014-01-21 17:00,,2013-12-02 08:00,2013-12-31 17:00,2013-12-02 08:00,2013-12-31 17:00,2013-12-02 08:00,2013-12-31 17:00,2013-12-24 08:00,2014-01-21 17:00,,PT_Normal,,,,,TfsA/5dLRmatoCC9UpyCgg,,,,N,0,0,,,2013-02-16 15:54,2013-02-16 15:56,admin,admin
503627,6359,125240,13662,0,N,N,N,CP_Drtn,TT_Task,DT_FixedDUR2,TK_NotStart,DUKHCONP1AZ2ARGF3040,Cobble Tile flooring,8170,168,0,120,0,741,741,120,0,0,0,,,,2014-01-23 08:00,2014-02-09 17:00,,2013-12-30 08:00,2014-01-15 17:00,2013-12-30 08:00,2014-01-15 17:00,2013-12-30 08:00,2014-01-15 17:00,2014-01-23 08:00,2014-02-09 17:00,,PT_Normal,,,,,DAwayWuaQO6j+kq9acdNyA,,,,N,0,0,,,2013-02-16 15:54,2013-02-16 15:56,admin,admin
503628,6359,125240,13662,0,N,N,N,CP_Drtn,TT_Task,DT_FixedDUR2,TK_NotStart,DUKHCONP1AZ2ARGF3035,Slate Tile Flooring & Skirting,8170,184,16,120,0,761.5,761.5,120,0,0,0,,,,2014-01-19 08:00,2014-02-04 17:00,,2013-12-23 08:00,2014-01-08 17:00,2013-12-23 08:00,2014-01-08 17:00,2013-12-23 08:00,2014-01-08 17:00,2014-01-19 08:00,2014-02-04 17:00,,PT_Normal,,,,,JZRn+d+yS6yFcvc9kFRJHA,,,,N,0,0,,,2013-02-16 15:54,2013-02-16 15:56,admin,admin
503629,6359,125240,13662,0,N,N,N,CP_Drtn,TT_Task,DT_FixedDUR2,TK_NotStart,DUKHCONP1AZ2ARGF3050,Granite - Stair case flooring & Skirting,8171,168,0,160,0,875,875,160,0,0,0,,,,2014-02-01 08:00,2014-02-24 17:00,,2014-01-07 08:00,2014-01-29 17:00,2014-01-07 08:00,2014-01-29 17:00,2014-01-07 08:00,2014-01-29 17:00,2014-02-01 08:00,2014-02-24 17:00,,PT_Normal,,,,,OnGzn8n3TIK6c3Wxe/epSA,,,,N,0,0,,,2013-02-16 15:54,2013-02-16 15:56,admin,admin
503630,6359,125240,13662,0,N,N,N,CP_Drtn,TT_Task,DT_FixedDUR2,TK_NotStart,DUKHCONP1AZ2ARGF3045,Fixing of Suspension systems,8178,144,0,160,0,1455.05,1455.05,160,0,0,0,,,,2014-01-11 08:00,2014-02-02 17:00,,2013-12-21 08:00,2014-01-12 17:00,2013-12-21 08:00,2014-01-12 17:00,2013-12-21 08:00,2014-01-12 17:00,2014-01-11 08:00,2014-02-02 17:00,,PT_Normal,,,,,MOa5x9dLTuGEeG237k9qXQ,,,,N,0,0,,,2013-02-16 15:54,2013-02-23 09:03,admin,admin
503631,6359,125240,13662,0,N,N,N,CP_Drtn,TT_Task,DT_FixedDUR2,TK_NotStart,DUKHCONP1AZ2ARGF3055,Aluminum tile false ceiling,8178,168,24,200,0,150,150,200,0,0,0,,,,2014-01-22 08:00,2014-02-20 17:00,,2013-12-29 08:00,2014-01-26 17:00,2013-12-29 08:00,2014-01-26 17:00,2013-12-29 08:00,2014-01-26 17:00,2014-01-22 08:00,2014-02-20 17:00,,PT_Normal,,,,,Cbnnqu3aTGaDc18S+xRWZg,,,,N,0,0,,,2013-02-16 15:54,2013-02-16 15:56,admin,admin
503632,6359,125240,13662,0,N,N,N,CP_Drtn,TT_Task,DT_FixedDUR2,TK_NotStart,DUKHCONP1AZ2ARGF3060,Gypsum board false ceiling,8178,144,0,200,0,1335.15,1335.15,200,0,0,0,,,,2014-01-22 08:00,2014-02-20 17:00,,2014-01-01 08:00,2014-01-29 17:00,2014-01-01 08:00,2014-01-29 17:00,2014-01-01 08:00,2014-01-29 17:00,2014-01-22 08:00,2014-02-20 17:00,,PT_Normal,,,,,pB6Kwq8RQKWODqZEk0m6sQ,,,,N,0,0,,,2013-02-16 15:54,2013-02-16 15:56,admin,admin
503633,6359,125240,13662,0,N,N,N,CP_Drtn,TT_Task,DT_FixedDUR2,TK_NotStart,DUKHCONP1AZ2ARGF3065,Wooden door & PVC Door,8178,168,0,120,0,308,308,120,0,0,0,,,,2014-02-16 08:00,2014-03-04 17:00,,2014-01-21 08:00,2014-02-06 17:00,2014-01-21 08:00,2014-02-06 17:00,2014-01-21 08:00,2014-02-06 17:00,2014-02-16 08:00,2014-03-04 17:00,,PT_Normal,,,,,942ij9h2R1ihdK4Xrm8xBw,,,,N,0,0,,,2013-02-16 15:54,2013-02-16 15:56,admin,admin
503634,6359,125240,13662,0,N,N,N,CP_Drtn,TT_Task,DT_FixedDUR2,TK_NotStart,DUKHCONP1AZ2ARGF3070,Aluminum doors,8178,168,0,120,0,176,176,120,0,0,0,,,,2014-02-22 08:00,2014-03-10 17:00,,2014-01-27 08:00,2014-02-13 17:00,2014-01-27 08:00,2014-02-13 17:00,2014-01-27 08:00,2014-02-13 17:00,2014-02-22 08:00,2014-03-10 17:00,,PT_Normal,,,,,ST9I8ln6R52yAkceeZcaEA,,,,N,0,0,,,2013-02-16 15:54,2013-02-16 15:56,admin,admin
503635,6359,125240,13662,0,N,N,N,CP_Drtn,TT_Task,DT_FixedDUR2,TK_NotStart,DUKHCONP1AZ2ARGF3080,Aluminum windows,8178,248,40,160,0,162.25,162.25,160,0,0,0,,,,2014-03-12 08:00,2014-04-03 17:00,,2014-02-03 08:00,2014-02-26 17:00,2014-02-03 08:00,2014-02-26 17:00,2014-02-03 08:00,2014-02-26 17:00,2014-03-12 08:00,2014-04-03 17:00,,PT_Normal,,,,,pxdFkGo9RW+2NcOhe2WAiQ,,,,N,0,0,,,2013-02-16 15:54,2013-02-16 15:56,admin,admin
503636,6359,125240,13662,0,N,N,N,CP_Drtn,TT_Task,DT_FixedDUR2,TK_NotStart,DUKHCONP1AZ2ARGF3075,Carpentry & Joinery Works,8178,168,0,160,0,572,572,160,0,0,0,,,,2014-02-27 08:00,2014-03-22 17:00,,2014-02-02 08:00,2014-02-25 17:00,2014-02-02 08:00,2014-02-25 17:00,2014-02-02 08:00,2014-02-25 17:00,2014-02-27 08:00,2014-03-22 17:00,,PT_Normal,,,,,AZD7outmQCuULcsxZvaCPg,,,,N,0,0,,,2013-02-16 15:54,2013-02-16 15:56,admin,admin
503637,6359,125242,13662,0,N,N,N,CP_Drtn,TT_Task,DT_FixedDUR2,TK_NotStart,DUKHCONP1AZ2AREL3665,External Plastering,8169,376,0,200,0,14275,14275,200,0,0,0,,,,2014-02-24 08:00,2014-03-24 17:00,,2013-12-30 08:00,2014-01-27 17:00,2013-12-30 08:00,2014-01-27 17:00,2013-12-30 08:00,2014-01-27 17:00,2014-02-24 08:00,2014-03-24 17:00,,PT_Normal,,,,,fUPz3flCT2egmIHYcozj0g,,,,N,0,0,,,2013-02-16 15:54,2013-02-16 15:56,admin,admin
503638,6359,125242,13662,0,N,N,N,CP_Drtn,TT_Task,DT_FixedDUR2,TK_NotStart,DUKHCONP1AZ2AREL3670,External stone cladding works,8170,392,0,160,0,990,990,160,0,0,0,,,,2014-03-16 08:00,2014-04-07 17:00,,2014-01-16 08:00,2014-02-08 17:00,2014-01-16 08:00,2014-02-08 17:00,2014-01-16 08:00,2014-02-08 17:00,2014-03-16 08:00,2014-04-07 17:00,,PT_Normal,,,,,vyHtos3BQiWqK85ldAj0Pg,,,,N,0,0,,,2013-02-16 15:54,2013-02-16 15:56,admin,admin
503639,6359,125242,13662,0,N,N,N,CP_Drtn,TT_Task,DT_FixedDUR2,TK_NotStart,DUKHCONP1AZ2AREL3680,External Painting,8178,392,40,160,0,3784,3784,160,0,0,0,,,,2014-03-27 08:00,2014-04-19 17:00,,2014-01-28 08:00,2014-02-20 17:00,2014-01-28 08:00,2014-02-20 17:00,2014-01-28 08:00,2014-02-20 17:00,2014-03-27 08:00,2014-04-19 17:00,,PT_Normal,,,,,VTkX/f/+RMG/zb+Vq68mCA,,,,N,0,0,,,2013-02-16 15:54,2013-02-16 15:56,admin,admin
503640,6359,125243,13662,0,N,N,N,CP_Drtn,TT_Task,DT_FixedDUR2,TK_NotStart,DUKHCONP1AZ2ARRF3630,Leveling Screed for Waterproofing,8164,168,0,200,0,800,800,200,0,0,0,,,,2014-02-06 08:00,2014-03-08 17:00,,2014-01-13 08:00,2014-02-10 17:00,2014-01-13 08:00,2014-02-10 17:00,2014-01-13 08:00,2014-02-10 17:00,2014-02-06 08:00,2014-03-08 17:00,,PT_Normal,,,,,NB1i5z3RSR+SeBTkC2a1gw,,,,N,0,0,,,2013-02-16 15:54,2013-02-16 15:56,admin,admin
503641,6359,125243,13662,0,N,N,N,CP_Drtn,TT_Task,DT_FixedDUR2,TK_NotStart,DUKHCONP1AZ2ARRF3635,Laying of Waterproofing Membrane,8178,168,0,200,0,1138.5,1138.5,200,0,0,0,,,,2014-02-10 08:00,2014-03-11 17:00,,2014-01-16 08:00,2014-02-15 17:00,2014-01-16 08:00,2014-02-15 17:00,2014-01-16 08:00,2014-02-15 17:00,2014-02-10 08:00,2014-03-11 17:00,,PT_Normal,,,,,VNeMy90rRB29NUd4rI8BqQ,,,,N,0,0,,,2013-02-16 15:54,2013-02-16 15:56,admin,admin
503642,6359,125243,13662,0,N,N,N,CP_Drtn,TT_Task,DT_FixedDUR2,TK_NotStart,DUKHCONP1AZ2ARRF3640,Installation of Insulation & Protection,8178,168,0,200,0,1408,1408,200,0,0,0,,,,2014-02-16 08:00,2014-03-16 17:00,,2014-01-21 08:00,2014-02-19 17:00,2014-01-21 08:00,2014-02-19 17:00,2014-01-21 08:00,2014-02-19 17:00,2014-02-16 08:00,2014-03-16 17:00,,PT_Normal,,,,,p57AidToR7GSjwbmX4wewQ,,,,N,0,0,,,2013-02-16 15:54,2013-02-16 15:56,admin,admin
503643,6359,125243,13662,0,N,N,N,CP_Drtn,TT_Task,DT_FixedDUR2,TK_NotStart,DUKHCONP1AZ2ARRF3645,Lime Stone Chips & Paving slab Installation,8170,168,0,200,0,688.25,688.25,200,0,0,0,,,,2014-02-20 08:00,2014-03-20 17:00,,2014-01-26 08:00,2014-02-24 17:00,2014-01-26 08:00,2014-02-24 17:00,2014-01-26 08:00,2014-02-24 17:00,2014-02-20 08:00,2014-03-20 17:00,,PT_Normal,,,,,TlQRPhasRl6WcGd2j0hD0w,,,,N,0,0,,,2013-02-16 15:54,2013-02-16 15:56,admin,admin
503644,6359,125243,13662,0,N,N,N,CP_Drtn,TT_Task,DT_FixedDUR2,TK_NotStart,DUKHCONP1AZ2ARRF3655,Installation of Pumps Protection cabinets,8178,168,0,160,0,616,616,160,0,0,0,,,,2014-03-16 08:00,2014-04-07 17:00,,2014-02-19 08:00,2014-03-13 17:00,2014-02-19 08:00,2014-03-13 17:00,2014-02-19 08:00,2014-03-13 17:00,2014-03-16 08:00,2014-04-07 17:00,,PT_Normal,,,,,dfcFugLqSrKEZvND4aqTGQ,,,,N,0,0,,,2013-02-16 15:54,2013-02-16 15:56,admin,admin
503645,6359,125243,13662,0,N,N,N,CP_Drtn,TT_Task,DT_FixedDUR2,TK_NotStart,DUKHCONP1AZ2ARRF3650,Install. of Gal. Frame & Aluminum Slat Screen,8178,168,0,200,0,1046.5,1046.5,200,0,0,0,,,,2014-03-01 08:00,2014-03-29 17:00,,2014-02-03 08:00,2014-03-04 17:00,2014-02-03 08:00,2014-03-04 17:00,2014-02-03 08:00,2014-03-04 17:00,2014-03-01 08:00,2014-03-29 17:00,,PT_Normal,,,,,VrthGYTxSIOgCbadQT1WGw,,,,N,0,0,,,2013-02-16 15:54,2013-02-16 15:56,admin,admin
503646,6359,125243,13662,0,N,N,N,CP_Drtn,TT_Task,DT_FixedDUR2,TK_NotStart,DUKHCONP1AZ2ARRF3660,Installation of Access Ladder,8178,208,208,120,0,176,176,120,0,0,0,,,,2014-04-02 08:00,2014-04-19 17:00,,2014-03-03 08:00,2014-03-19 17:00,2014-03-03 08:00,2014-03-19 17:00,2014-03-03 08:00,2014-03-19 17:00,2014-04-02 08:00,2014-04-19 17:00,,PT_Normal,,,,,VrI2O60FReCXXg7RZO7LZQ,,,,N,0,0,,,2013-02-16 15:54,2013-02-16 15:56,admin,admin
503647,6359,125244,13662,0,N,N,N,CP_Drtn,TT_Task,DT_FixedDUR2,TK_NotStart,DUKHCONP1AZ2ACTC8000,Pre-Commissioning & Testing of AC Works,8178,0,0,200,0,1500,1500,200,0,0,0,,,,2014-04-20 08:00,2014-05-18 17:00,,2014-04-20 08:00,2014-05-18 17:00,2014-04-20 08:00,2014-05-18 17:00,2014-04-20 08:00,2014-05-18 17:00,2014-04-20 08:00,2014-05-18 17:00,,PT_Normal,,,,,nPIZyY+TS3aag8pfT5NUfw,,,,Y,0,0,,,2013-02-16 15:54,2013-02-16 15:56,admin,admin
503648,6359,125244,13662,0,N,N,N,CP_Drtn,TT_Task,DT_FixedDUR2,TK_NotStart,DUKHCONP1AZ2ELTC8010,Pre-Commissioning & Testing of Electrical Works,8178,0,0,200,0,3000,3000,200,0,0,0,,,,2014-04-20 08:00,2014-05-18 17:00,,2014-04-20 08:00,2014-05-18 17:00,2014-04-20 08:00,2014-05-18 17:00,2014-04-20 08:00,2014-05-18 17:00,2014-04-20 08:00,2014-05-18 17:00,,PT_Normal,,,,,r5u4fjV9QOatei0Z0RHUkQ,,,,Y,0,0,,,2013-02-16 15:54,2013-02-16 15:56,admin,admin
503649,6359,125244,13662,0,N,N,N,CP_Drtn,TT_Task,DT_FixedDUR2,TK_NotStart,DUKHCONP1AZ2PLTC8005,Pre-Commissioning & Testing of Plumbing Works,8178,0,0,200,0,3000,3000,200,0,0,0,,,,2014-04-20 08:00,2014-05-18 17:00,,2014-04-20 08:00,2014-05-18 17:00,2014-04-20 08:00,2014-05-18 17:00,2014-04-20 08:00,2014-05-18 17:00,2014-04-20 08:00,2014-05-18 17:00,,PT_Normal,,,,,oH2dcHNgRKWpJQrZFDORww,,,,Y,0,0,,,2013-02-16 15:54,2013-02-16 15:56,admin,admin
503650,6359,125247,13662,0,N,N,N,CP_Drtn,TT_Task,DT_FixedDUR2,TK_NotStart,DUKHCONP1AZ2ELRF4070,Installation of Isolator,8178,8,0,144,0,412.8,412.8,144,0,0,0,,,,2014-03-18 08:00,2014-04-07 17:00,,2014-03-17 08:00,2014-04-06 17:00,2014-03-17 08:00,2014-04-06 17:00,2014-03-17 08:00,2014-04-06 17:00,2014-03-18 08:00,2014-04-07 17:00,,PT_Normal,,,,,SaW8iPwIQ2Kd0b/ThOUFyw,,,,N,0,0,,,2013-02-16 15:54,2013-02-16 15:56,admin,admin
503651,6359,125247,13662,0,N,N,N,CP_Drtn,TT_Task,DT_FixedDUR2,TK_NotStart,DUKHCONP1AZ2ELRF4075,Installation of TV Dish Antenna,8178,8,8,184,0,732.8,732.8,184,0,0,0,,,,2014-03-24 08:00,2014-04-19 17:00,,2014-03-23 08:00,2014-04-17 17:00,2014-03-23 08:00,2014-04-17 17:00,2014-03-23 08:00,2014-04-17 17:00,2014-03-24 08:00,2014-04-19 17:00,,PT_Normal,,,,,X1utrzVdSPqFDoZ4S5OdPw,,,,N,0,0,,,2013-02-16 15:54,2013-02-23 09:03,admin,admin
503652,6359,125248,13662,0,N,N,N,CP_Drtn,TT_Task,DT_FixedDUR2,TK_NotStart,DUKHCONP1AZ2ELFF4035,Fixing of wall conduits & switch socket boxes,8178,88,0,200,0,1222.4,1222.4,200,0,0,0,,,,2013-12-11 08:00,2014-01-09 17:00,,2013-11-28 08:00,2013-12-28 17:00,2013-11-28 08:00,2013-12-28 17:00,2013-11-28 08:00,2013-12-28 17:00,2013-12-11 08:00,2014-01-09 17:00,,PT_Normal,,,,,oxiiNPJbQRSa2inTIQwO6g,,,,N,0,0,,,2013-02-16 15:54,2013-02-16 15:56,admin,admin
503653,6359,125248,13662,0,N,N,N,CP_Drtn,TT_Task,DT_FixedDUR2,TK_NotStart,DUKHCONP1AZ2ELFF4040,Cable tray & trunking installation,8178,232,16,160,0,1318.4,1318.4,160,0,0,0,,,,2014-01-14 08:00,2014-02-05 17:00,,2013-12-10 08:00,2014-01-02 17:00,2013-12-10 08:00,2014-01-02 17:00,2013-12-10 08:00,2014-01-02 17:00,2014-01-14 08:00,2014-02-05 17:00,,PT_Normal,,,,,tv6FwpIuQDSbEfJ5A+brVA,,,,N,0,0,,,2013-02-16 15:54,2013-02-16 15:56,admin,admin
503654,6359,125248,13662,0,N,N,N,CP_Drtn,TT_Task,DT_FixedDUR2,TK_NotStart,DUKHCONP1AZ2ELFF4045,Installation of wiring & Main Cabling,8178,216,0,200,0,296,296,200,0,0,0,,,,2014-01-22 08:00,2014-02-20 17:00,,2013-12-22 08:00,2014-01-19 17:00,2013-12-22 08:00,2014-01-19 17:00,2013-12-22 08:00,2014-01-19 17:00,2014-01-22 08:00,2014-02-20 17:00,,PT_Normal,,,,,cgT7XPp/RzS0Me82R8mACQ,,,,N,0,0,,,2013-02-16 15:54,2013-02-16 15:56,admin,admin
503655,6359,125248,13662,0,N,N,N,CP_Drtn,TT_Task,DT_FixedDUR2,TK_NotStart,DUKHCONP1AZ2ELFF4060,"Installation  of DBS,MCCB Accessories.",8178,24,16,160,0,227.2,227.2,160,0,0,0,,,,2014-02-26 08:00,2014-03-20 17:00,,2014-02-23 08:00,2014-03-17 17:00,2014-02-23 08:00,2014-03-17 17:00,2014-02-23 08:00,2014-03-17 17:00,2014-02-26 08:00,2014-03-20 17:00,,PT_Normal,,,,,rF8U28eEQEaxgG/37B8KzQ,,,,N,0,0,,,2013-02-16 15:54,2013-02-16 15:56,admin,admin
503656,6359,125248,13662,0,N,N,N,CP_Drtn,TT_Task,DT_FixedDUR2,TK_NotStart,DUKHCONP1AZ2ELFF4065,Installation of Lighting fixtures & Accessories,8178,8,0,200,0,1651.2,1651.2,200,0,0,0,,,,2014-03-04 08:00,2014-04-01 17:00,,2014-03-03 08:00,2014-03-31 17:00,2014-03-03 08:00,2014-03-31 17:00,2014-03-03 08:00,2014-03-31 17:00,2014-03-04 08:00,2014-04-01 17:00,,PT_Normal,,,,,OVnRcxjgSkKtxXALuH37yg,,,,N,0,0,,,2013-02-16 15:54,2013-02-16 15:56,admin,admin
503657,6359,125248,13662,0,N,N,N,CP_Drtn,TT_Task,DT_FixedDUR2,TK_NotStart,DUKHCONP1AZ2ELFF4055,Install. of CAMS & Fire Fighting Accessories,8178,8,0,200,0,1008,1008,200,0,0,0,,,,2014-02-20 08:00,2014-03-20 17:00,,2014-02-19 08:00,2014-03-19 17:00,2014-02-19 08:00,2014-03-19 17:00,2014-02-19 08:00,2014-03-19 17:00,2014-02-20 08:00,2014-03-20 17:00,,PT_Normal,,,,,Ld6zt53XTmWou2jhyy1cMA,,,,N,0,0,,,2013-02-16 15:54,2013-02-16 15:56,admin,admin
503658,6359,125248,13662,0,N,N,N,CP_Drtn,TT_Task,DT_FixedDUR2,TK_NotStart,DUKHCONP1AZ2ELFF4050,Installation of Telephone System,8178,88,80,200,0,451.2,451.2,200,0,0,0,,,,2014-03-02 08:00,2014-03-30 17:00,,2014-02-17 08:00,2014-03-17 17:00,2014-02-17 08:00,2014-03-17 17:00,2014-02-17 08:00,2014-03-17 17:00,2014-03-02 08:00,2014-03-30 17:00,,PT_Normal,,,,,ou2L75v+SfSfylfBQ4gHXg,,,,N,0,0,,,2013-02-16 15:54,2013-02-16 15:56,admin,admin
503659,6359,125249,13662,0,N,N,N,CP_Drtn,TT_Task,DT_FixedDUR2,TK_NotStart,DUKHCONP1AZ2ELGF4000,Fixing of wall conduits & switch socket boxes,8178,216,0,200,0,1222.4,1222.4,200,0,0,0,,,,2013-11-18 08:00,2013-12-16 17:00,,2013-10-15 08:00,2013-11-14 17:00,2013-10-15 08:00,2013-11-14 17:00,2013-10-15 08:00,2013-11-14 17:00,2013-11-18 08:00,2013-12-16 17:00,,PT_Normal,,,,,NZOlQmYfSuSH+H7Ss0+2Yg,,,,N,0,0,,,2013-02-16 15:54,2013-02-16 15:56,admin,admin
503660,6359,125249,13662,0,N,N,N,CP_Drtn,TT_Task,DT_FixedDUR2,TK_NotStart,DUKHCONP1AZ2ELGF4005,Cable tray & trunking installation,8178,360,0,160,0,1318.4,1318.4,160,0,0,0,,,,2013-12-22 08:00,2014-01-13 17:00,,2013-10-29 08:00,2013-11-20 17:00,2013-10-29 08:00,2013-11-20 17:00,2013-10-29 08:00,2013-11-20 17:00,2013-12-22 08:00,2014-01-13 17:00,,PT_Normal,,,,,/PRMZINsQzu+99hi9PndHQ,,,,N,0,0,,,2013-02-16 15:54,2013-02-16 15:56,admin,admin
503661,6359,125249,13662,0,N,N,N,CP_Drtn,TT_Task,DT_FixedDUR2,TK_NotStart,DUKHCONP1AZ2ELGF4010,Installation of wiring & Main Cabling,8178,360,216,200,0,296,296,200,0,0,0,,,,2013-12-30 08:00,2014-01-27 17:00,,2013-11-06 08:00,2013-12-04 17:00,2013-11-06 08:00,2013-12-04 17:00,2013-11-06 08:00,2013-12-04 17:00,2013-12-30 08:00,2014-01-27 17:00,,PT_Normal,,,,,3Ysmt6UdRTWAUbvFJnu++g,,,,N,0,0,,,2013-02-16 15:54,2013-02-16 15:56,admin,admin
503662,6359,125249,13662,0,N,N,N,CP_Drtn,TT_Task,DT_FixedDUR2,TK_NotStart,DUKHCONP1AZ2ELGF4020,"Installation  of DBS,MCCB Accessories.",8178,144,0,160,0,227.2,227.2,160,0,0,0,,,,2014-02-05 08:00,2014-03-01 17:00,,2014-01-15 08:00,2014-02-06 17:00,2014-01-15 08:00,2014-02-06 17:00,2014-01-15 08:00,2014-02-06 17:00,2014-02-05 08:00,2014-03-01 17:00,,PT_Normal,,,,,tH7rtiecQRySBcgfKmL9PA,,,,N,0,0,,,2013-02-16 15:54,2013-02-16 15:56,admin,admin
503663,6359,125249,13662,0,N,N,N,CP_Drtn,TT_Task,DT_FixedDUR2,TK_NotStart,DUKHCONP1AZ2ELGF4025,Installation of Lighting fixtures & Accessories,8178,200,0,200,0,1651.2,1651.2,200,0,0,0,,,,2014-02-26 08:00,2014-03-26 17:00,,2014-01-27 08:00,2014-02-25 17:00,2014-01-27 08:00,2014-02-25 17:00,2014-01-27 08:00,2014-02-25 17:00,2014-02-26 08:00,2014-03-26 17:00,,PT_Normal,,,,,Dpt10zMdRGC1xVoBkMm35w,,,,N,0,0,,,2013-02-16 15:54,2013-02-16 15:56,admin,admin
503664,6359,125249,13662,0,N,N,N,CP_Drtn,TT_Task,DT_FixedDUR2,TK_NotStart,DUKHCONP1AZ2ELGF4015,Install. of CAMS & Fire Fighting Accessories,8178,240,0,200,0,1075.2,1075.2,200,0,0,0,,,,2014-02-15 08:00,2014-03-15 17:00,,2014-01-09 08:00,2014-02-06 17:00,2014-01-09 08:00,2014-02-06 17:00,2014-01-09 08:00,2014-02-06 17:00,2014-02-15 08:00,2014-03-15 17:00,,PT_Normal,,,,,JCmeigPnRbqDSrJFzxiYmA,,,,N,0,0,,,2013-02-16 15:54,2013-02-16 15:56,admin,admin
503665,6359,125249,13662,0,N,N,N,CP_Drtn,TT_Task,DT_FixedDUR2,TK_NotStart,DUKHCONP1AZ2ELGF4030,Installation of Telephone System,8178,144,40,160,0,520,520,160,0,0,0,,,,2014-02-18 08:00,2014-03-12 17:00,,2014-01-27 08:00,2014-02-19 17:00,2014-01-27 08:00,2014-02-19 17:00,2014-01-27 08:00,2014-02-19 17:00,2014-02-18 08:00,2014-03-12 17:00,,PT_Normal,,,,,FRHf6aTcSEmE8FVzSsm9EQ,,,,N,0,0,,,2013-02-16 15:54,2013-02-16 15:56,admin,admin
503666,6359,125251,13662,0,N,N,N,CP_Drtn,TT_Task,DT_FixedDUR2,TK_NotStart,DUKHCONP1AZ2ACRF4630,Installation of Refrigerant Pipes,8178,272,0,200,0,409.6,409.6,200,0,0,0,,,,2014-03-16 08:00,2014-04-13 17:00,,2014-02-03 08:00,2014-03-04 17:00,2014-02-03 08:00,2014-03-04 17:00,2014-02-03 08:00,2014-03-04 17:00,2014-03-16 08:00,2014-04-13 17:00,,PT_Normal,,,,,zZcXvnzLQOOHaCeqtG26gA,,,,N,0,0,,,2013-02-16 15:54,2013-02-16 15:56,admin,admin
503667,6359,125251,13662,0,N,N,N,CP_Drtn,TT_Task,DT_FixedDUR2,TK_NotStart,DUKHCONP1AZ2ACRF4635,Installation of Condensing Unit,8178,24,0,200,0,568,568,200,0,0,0,,,,2014-03-22 08:00,2014-04-19 17:00,,2014-03-18 08:00,2014-04-15 17:00,2014-03-18 08:00,2014-04-15 17:00,2014-03-18 08:00,2014-04-15 17:00,2014-03-22 08:00,2014-04-19 17:00,,PT_Normal,,,,,XtlR67hEQP+Gsk48o0C+mg,,,,N,0,0,,,2013-02-16 15:54,2013-02-16 15:56,admin,admin
503668,6359,125252,13662,0,N,N,N,CP_Drtn,TT_Task,DT_FixedDUR2,TK_NotStart,DUKHCONP1AZ2ACGF4600,Installation AC Pipes,8178,392,40,160,0,977.6,977.6,160,0,0,0,,,,2014-01-14 08:00,2014-02-05 17:00,,2013-11-17 08:00,2013-12-09 17:00,2013-11-17 08:00,2013-12-09 17:00,2013-11-17 08:00,2013-12-09 17:00,2014-01-14 08:00,2014-02-05 17:00,,PT_Normal,,,,,3NaLkpl9Re+6V6vwyAjVYA,,,,N,0,0,,,2013-02-16 15:54,2013-02-16 15:56,admin,admin
503669,6359,125252,13662,0,N,N,N,CP_Drtn,TT_Task,DT_FixedDUR2,TK_NotStart,DUKHCONP1AZ2ACGF4605,Fixing of Ventilation Equipments,8178,256,0,200,0,182.4,182.4,200,0,0,0,,,,2014-02-17 08:00,2014-03-17 17:00,,2014-01-09 08:00,2014-02-06 17:00,2014-01-09 08:00,2014-02-06 17:00,2014-01-09 08:00,2014-02-06 17:00,2014-02-17 08:00,2014-03-17 17:00,,PT_Normal,,,,,FRRxGbIWQiOZeu8T66os9A,,,,N,0,0,,,2013-02-16 15:54,2013-02-16 15:56,admin,admin
503670,6359,125252,13662,0,N,N,N,CP_Drtn,TT_Task,DT_FixedDUR2,TK_NotStart,DUKHCONP1AZ2ACGF4610,Fixing of Split AC,8178,256,40,160,0,296,296,160,0,0,0,,,,2014-03-10 08:00,2014-04-01 17:00,,2014-01-30 08:00,2014-02-23 17:00,2014-01-30 08:00,2014-02-23 17:00,2014-01-30 08:00,2014-02-23 17:00,2014-03-10 08:00,2014-04-01 17:00,,PT_Normal,,,,,HqvZUQF6QgOa8lHjoqgOiQ,,,,N,0,0,,,2013-02-16 15:54,2013-02-16 15:56,admin,admin
503671,6359,125253,13662,0,N,N,N,CP_Drtn,TT_Task,DT_FixedDUR2,TK_NotStart,DUKHCONP1AZ2ACFF4615,Installation AC Pipes,8178,216,40,160,0,977.6,977.6,160,0,0,0,,,,2014-02-02 08:00,2014-02-25 17:00,,2014-01-01 08:00,2014-01-23 17:00,2014-01-01 08:00,2014-01-23 17:00,2014-01-01 08:00,2014-01-23 17:00,2014-02-02 08:00,2014-02-25 17:00,,PT_Normal,,,,,NNZbcqFDQk2HPg2PKYWRtQ,,,,N,0,0,,,2013-02-16 15:54,2013-02-16 15:56,admin,admin
503672,6359,125253,13662,0,N,N,N,CP_Drtn,TT_Task,DT_FixedDUR2,TK_NotStart,DUKHCONP1AZ2ACFF4620,Fixing of Ventilation Equipments,8178,16,0,200,0,113.6,113.6,200,0,0,0,,,,2014-02-22 08:00,2014-03-22 17:00,,2014-02-19 08:00,2014-03-19 17:00,2014-02-19 08:00,2014-03-19 17:00,2014-02-19 08:00,2014-03-19 17:00,2014-02-22 08:00,2014-03-22 17:00,,PT_Normal,,,,,0oTl4muJSXWhei+wnb14rg,,,,N,0,0,,,2013-02-16 15:54,2013-02-16 15:56,admin,admin
503673,6359,125253,13662,0,N,N,N,CP_Drtn,TT_Task,DT_FixedDUR2,TK_NotStart,DUKHCONP1AZ2ACFF4625,Fixing of Split AC,8178,16,0,160,0,296,296,160,0,0,0,,,,2014-03-15 08:00,2014-04-06 17:00,,2014-03-12 08:00,2014-04-03 17:00,2014-03-12 08:00,2014-04-03 17:00,2014-03-12 08:00,2014-04-03 17:00,2014-03-15 08:00,2014-04-06 17:00,,PT_Normal,,,,,igXnBNrlQZKeV730snaQdg,,,,N,0,0,,,2013-02-16 15:54,2013-02-16 15:56,admin,admin
503674,6359,125255,13662,0,N,N,N,CP_Drtn,TT_Task,DT_FixedDUR2,TK_NotStart,DUKHCONP1AZ2PLRF4345,Installation of Plumbing pipes & fittings,8178,448,240,120,0,110.4,110.4,120,0,0,0,,,,2014-03-06 08:00,2014-03-23 17:00,,2013-12-30 08:00,2014-01-15 17:00,2013-12-30 08:00,2014-01-15 17:00,2013-12-30 08:00,2014-01-15 17:00,2014-03-06 08:00,2014-03-23 17:00,,PT_Normal,,,,,cUl5dueMS9KmJ0YJhedgWw,,,,N,0,0,,,2013-02-16 15:54,2013-02-16 15:56,admin,admin
503675,6359,125255,13662,0,N,N,N,CP_Drtn,TT_Task,DT_FixedDUR2,TK_NotStart,DUKHCONP1AZ2PLRF4350,Installation of Rain water Pipes,8178,208,80,120,0,67.2,67.2,120,0,0,0,,,,2014-03-16 08:00,2014-04-01 17:00,,2014-02-13 08:00,2014-03-02 17:00,2014-02-13 08:00,2014-03-02 17:00,2014-02-13 08:00,2014-03-02 17:00,2014-03-16 08:00,2014-04-01 17:00,,PT_Normal,,,,,ovVqQAOXRHmog/P1c/2X8Q,,,,N,0,0,,,2013-02-16 15:54,2013-02-16 15:56,admin,admin
503676,6359,125255,13662,0,N,N,N,CP_Drtn,TT_Task,DT_FixedDUR2,TK_NotStart,DUKHCONP1AZ2PLRF4355,Roof  Water Tank Installation & Connections,8178,8,0,200,0,336,336,200,0,0,0,,,,2014-03-22 08:00,2014-04-19 17:00,,2014-03-20 08:00,2014-04-17 17:00,2014-03-20 08:00,2014-04-17 17:00,2014-03-20 08:00,2014-04-17 17:00,2014-03-22 08:00,2014-04-19 17:00,,PT_Normal,,,,,btm3CoM2RFOS8vc4dZgSFA,,,,N,0,0,,,2013-02-16 15:54,2013-02-16 15:56,admin,admin
503677,6359,125256,13662,0,N,N,N,CP_Drtn,TT_Task,DT_FixedDUR2,TK_NotStart,DUKHCONP1AZ2PLFF4325,Installation of Plumbing pipes & testing,8178,0,0,144,0,441.6,441.6,144,0,0,0,,,,2013-12-10 08:00,2013-12-31 17:00,,2013-12-10 08:00,2013-12-31 17:00,2013-12-10 08:00,2013-12-31 17:00,2013-12-10 08:00,2013-12-31 17:00,2013-12-10 08:00,2013-12-31 17:00,,PT_Normal,,,,,qcZkDzVoTXqck0BCkyK1OA,,,,Y,0,0,,,2013-02-16 15:54,2013-02-16 15:56,admin,admin
503678,6359,125256,13662,0,N,N,N,CP_Drtn,TT_Task,DT_FixedDUR2,TK_NotStart,DUKHCONP1AZ2PLFF4330,Installation of Drainage pipes & testing,8178,176,56,144,0,177.6,177.6,144,0,0,0,,,,2014-01-06 08:00,2014-01-26 17:00,,2013-12-10 08:00,2013-12-31 17:00,2013-12-10 08:00,2013-12-31 17:00,2013-12-10 08:00,2013-12-31 17:00,2014-01-06 08:00,2014-01-26 17:00,,PT_Normal,,,,,A9gz26L7TG2MokYWFT+mqw,,,,N,0,0,,,2013-02-16 15:54,2013-02-16 15:56,admin,admin
503679,6359,125256,13662,0,N,N,N,CP_Drtn,TT_Task,DT_FixedDUR2,TK_NotStart,DUKHCONP1AZ2PLFF4335,Sanitary Fittings & Accessories,8178,40,0,160,0,67.2,67.2,160,0,0,0,,,,2014-03-04 08:00,2014-03-26 17:00,,2014-02-26 08:00,2014-03-20 17:00,2014-02-26 08:00,2014-03-20 17:00,2014-02-26 08:00,2014-03-20 17:00,2014-03-04 08:00,2014-03-26 17:00,,PT_Normal,,,,,uuQw/8PkSQq2ZbSqjMkavQ,,,,N,0,0,,,2013-02-16 15:54,2013-02-16 15:56,admin,admin
503680,6359,125256,13662,0,N,N,N,CP_Drtn,TT_Task,DT_FixedDUR2,TK_NotStart,DUKHCONP1AZ2PLFF4340,Installation of Water Heater,8178,40,32,120,0,67.2,67.2,120,0,0,0,,,,2014-03-16 08:00,2014-04-01 17:00,,2014-03-10 08:00,2014-03-26 17:00,2014-03-10 08:00,2014-03-26 17:00,2014-03-10 08:00,2014-03-26 17:00,2014-03-16 08:00,2014-04-01 17:00,,PT_Normal,,,,,iY+6vJ3dT06k8n1OBTvgcw,,,,N,0,0,,,2013-02-16 15:54,2013-02-16 15:56,admin,admin
503681,6359,125257,13662,0,N,N,N,CP_Drtn,TT_Task,DT_FixedDUR2,TK_NotStart,DUKHCONP1AZ2PLGF4305,Installation of Plumbing pipes & testing,8178,144,0,144,0,441.6,441.6,144,0,0,0,,,,2013-11-18 08:00,2013-12-08 17:00,,2013-10-28 08:00,2013-11-17 17:00,2013-10-28 08:00,2013-11-17 17:00,2013-10-28 08:00,2013-11-17 17:00,2013-11-18 08:00,2013-12-08 17:00,,PT_Normal,,,,,2dXBipqES42Zw06srBkxZw,,,,N,0,0,,,2013-02-16 15:54,2013-02-16 15:56,admin,admin
503682,6359,125257,13662,0,N,N,N,CP_Drtn,TT_Task,DT_FixedDUR2,TK_NotStart,DUKHCONP1AZ2PLGF4310,Installation of Drainage pipes &testing,8178,312,104,144,0,177.6,177.6,144,0,0,0,,,,2013-12-12 08:00,2014-01-02 17:00,,2013-10-28 08:00,2013-11-17 17:00,2013-10-28 08:00,2013-11-17 17:00,2013-10-28 08:00,2013-11-17 17:00,2013-12-12 08:00,2014-01-02 17:00,,PT_Normal,,,,,4NnnGOz2REWQJqIoeJFt6A,,,,N,0,0,,,2013-02-16 15:54,2013-02-16 15:56,admin,admin
503683,6359,125257,13662,0,N,N,N,CP_Drtn,TT_Task,DT_FixedDUR2,TK_NotStart,DUKHCONP1AZ2PLGF4315,Sanitary Fittings & Accessories,8178,360,0,160,0,134.4,134.4,160,0,0,0,,,,2014-03-22 08:00,2014-04-13 17:00,,2014-01-27 08:00,2014-02-19 17:00,2014-01-27 08:00,2014-02-19 17:00,2014-01-27 08:00,2014-02-19 17:00,2014-03-22 08:00,2014-04-13 17:00,,PT_Normal,,,,,5BLJgGreTf6HLSSlPZXRyg,,,,N,0,0,,,2013-02-16 15:54,2013-02-16 15:56,admin,admin
503684,6359,125257,13662,0,N,N,N,CP_Drtn,TT_Task,DT_FixedDUR2,TK_NotStart,DUKHCONP1AZ2PLGF4320,Installation of Water Heater,8178,360,80,120,0,134.4,134.4,120,0,0,0,,,,2014-04-02 08:00,2014-04-19 17:00,,2014-02-08 08:00,2014-02-25 17:00,2014-02-08 08:00,2014-02-25 17:00,2014-02-08 08:00,2014-02-25 17:00,2014-04-02 08:00,2014-04-19 17:00,,PT_Normal,,,,,oMXxLn+6QhuuUKnpSbko+w,,,,N,0,0,,,2013-02-16 15:54,2013-02-16 15:56,admin,admin
503685,6359,125257,13662,0,N,N,N,CP_Drtn,TT_Task,DT_FixedDUR2,TK_NotStart,DUKHCONP1AZ2PLUG4300,Drainage / Storm Pipes in Grade Slab,8178,0,0,128,0,67.2,67.2,128,0,0,0,,,,2013-07-02 08:00,2013-07-20 17:00,,2013-07-02 08:00,2013-07-20 17:00,2013-07-02 08:00,2013-07-20 17:00,2013-07-02 08:00,2013-07-20 17:00,2013-07-02 08:00,2013-07-20 17:00,,PT_Normal,,,,,c8loucv9QIyor15fNLCswg,,,,Y,0,0,,,2013-02-16 15:54,2013-02-16 15:56,admin,admin
503686,6359,125260,13662,0,N,N,N,CP_Drtn,TT_Task,DT_FixedDUR2,TK_NotStart,DUKHCONP1AZ2STRF2040,Column-Rebar & Formwork,8165,176,0,144,0,1205.75,1205.75,144,0,0,0,,,,2013-11-21 08:00,2013-12-11 17:00,,2013-10-27 08:00,2013-11-16 17:00,2013-10-27 08:00,2013-11-16 17:00,2013-10-27 08:00,2013-11-16 17:00,2013-11-21 08:00,2013-12-11 17:00,,PT_Normal,,,,,eAzBLATiRs28TEbM+Jc+0A,,,,N,0,0,,,2013-02-16 15:54,2013-02-16 15:56,admin,admin
503687,6359,125260,13662,0,N,N,N,CP_Drtn,TT_Task,DT_FixedDUR2,TK_NotStart,DUKHCONP1AZ2STRF2045,Column-Concrete,8167,256,0,136,0,52.5,52.5,136,0,0,0,,,,2013-12-07 08:00,2013-12-26 17:00,,2013-10-30 08:00,2013-11-18 17:00,2013-10-30 08:00,2013-11-18 17:00,2013-10-30 08:00,2013-11-18 17:00,2013-12-07 08:00,2013-12-26 17:00,,PT_Normal,,,,,ap3J+vtWSoS2G1IS20o2Cw,,,,N,0,0,,,2013-02-16 15:54,2013-02-16 15:56,admin,admin
503688,6359,125260,13662,0,N,N,N,CP_Drtn,TT_Task,DT_FixedDUR2,TK_NotStart,DUKHCONP1AZ2STRF2050,Slab-Rebar & Formwork - Head Room,8165,256,0,160,0,2735.25,2735.25,160,0,0,0,,,,2013-12-09 08:00,2014-01-01 17:00,,2013-11-02 08:00,2013-11-24 17:00,2013-11-02 08:00,2013-11-24 17:00,2013-11-02 08:00,2013-11-24 17:00,2013-12-09 08:00,2014-01-01 17:00,,PT_Normal,,,,,oor9vev+QRymCDpRR5bRfA,,,,N,0,0,,,2013-02-16 15:54,2013-02-16 15:56,admin,admin
503689,6359,125260,13662,0,N,N,N,CP_Drtn,TT_Task,DT_FixedDUR2,TK_NotStart,DUKHCONP1AZ2STRF2055,Slab-Concrete-Head room,8167,256,0,104,0,252,252,104,0,0,0,,,,2013-12-21 08:00,2014-01-04 17:00,,2013-11-12 08:00,2013-11-26 17:00,2013-11-12 08:00,2013-11-26 17:00,2013-11-12 08:00,2013-11-26 17:00,2013-12-21 08:00,2014-01-04 17:00,,PT_Normal,,,,,GQ+7QZmhQV6bl3CnS6YkTA,,,,N,0,0,,,2013-02-16 15:54,2013-02-16 15:56,admin,admin
503690,6359,125260,13662,0,N,N,N,CP_Drtn,TT_Task,DT_FixedDUR2,TK_NotStart,DUKHCONP1AZ2STRF2060,Construction of Parapets,8168,448,32,200,0,2200,2200,200,0,0,0,,,,2014-01-20 08:00,2014-02-18 17:00,,2013-11-14 08:00,2013-12-12 17:00,2013-11-14 08:00,2013-12-12 17:00,2013-11-14 08:00,2013-12-12 17:00,2014-01-20 08:00,2014-02-18 17:00,,PT_Normal,,,,,nV30GpiNTau8LRgh73QMBQ,,,,N,0,0,,,2013-02-16 15:54,2013-02-16 15:56,admin,admin
503691,6359,125260,13662,0,N,N,N,CP_Drtn,TT_Task,DT_FixedDUR2,TK_NotStart,DUKHCONP1AZ2STRF2065,Construction of up stands/Plinth,8165,416,0,200,0,554.75,554.75,200,0,0,0,,,,2014-01-26 08:00,2014-02-24 17:00,,2013-11-25 08:00,2013-12-24 17:00,2013-11-25 08:00,2013-12-24 17:00,2013-11-25 08:00,2013-12-24 17:00,2014-01-26 08:00,2014-02-24 17:00,,PT_Normal,,,,,MVhyihdWRbWisNKDn5t/rA,,,,N,0,0,,,2013-02-16 15:54,2013-02-16 15:56,admin,admin
503692,6359,125261,13662,0,N,N,N,CP_Drtn,TT_Task,DT_FixedDUR2,TK_NotStart,DUKHCONP1AZ2STFF2020,Column-Rebar & Formwork,8165,16,0,200,0,3580.5,3580.5,200,0,0,0,,,,2013-09-14 08:00,2013-10-12 17:00,,2013-09-11 08:00,2013-10-09 17:00,2013-09-11 08:00,2013-10-09 17:00,2013-09-11 08:00,2013-10-09 17:00,2013-09-14 08:00,2013-10-12 17:00,,PT_Normal,,,,,jLGBmmBuQGOXnMxIxTDISw,,,,N,0,0,,,2013-02-16 15:54,2013-02-16 15:56,admin,admin
503693,6359,125261,13662,0,N,N,N,CP_Drtn,TT_Task,DT_FixedDUR2,TK_NotStart,DUKHCONP1AZ2STFF2025,Column-Concrete,8167,32,0,192,0,224,224,192,0,0,0,,,,2013-09-25 08:00,2013-10-24 17:00,,2013-09-21 08:00,2013-10-20 17:00,2013-09-21 08:00,2013-10-20 17:00,2013-09-21 08:00,2013-10-20 17:00,2013-09-25 08:00,2013-10-24 17:00,,PT_Normal,,,,,gbM3x+M/Q5WWC691+1g72A,,,,N,0,0,,,2013-02-16 15:54,2013-02-16 15:56,admin,admin
503694,6359,125261,13662,0,N,N,N,CP_Drtn,TT_Task,DT_FixedDUR2,TK_NotStart,DUKHCONP1AZ2STFF2030,"Beam, Stairs ,Slab-Rebar & Formwork",8165,32,0,200,0,16119.25,16119.25,200,0,0,0,,,,2013-10-10 08:00,2013-11-10 17:00,,2013-10-06 08:00,2013-11-05 17:00,2013-10-06 08:00,2013-11-05 17:00,2013-10-06 08:00,2013-11-05 17:00,2013-10-10 08:00,2013-11-10 17:00,,PT_Normal,,,,,q0X3TZBFTYmd0k9j0Z7zqA,,,,N,0,0,,,2013-02-16 15:54,2013-02-16 15:56,admin,admin
503695,6359,125261,13662,0,N,N,N,CP_Drtn,TT_Task,DT_FixedDUR2,TK_NotStart,DUKHCONP1AZ2STFF2035,"Beam, Stairs ,Slab-Concrete",8167,32,0,112,0,1141,1141,112,0,0,0,,,,2013-10-29 08:00,2013-11-13 17:00,,2013-10-24 08:00,2013-11-09 17:00,2013-10-24 08:00,2013-11-09 17:00,2013-10-24 08:00,2013-11-09 17:00,2013-10-29 08:00,2013-11-13 17:00,,PT_Normal,,,,,cZD5uBOyQv26Nx0XewUAYw,,,,N,0,0,,,2013-02-16 15:54,2013-02-16 15:56,admin,admin
503696,6359,125262,13662,0,N,N,N,CP_Drtn,TT_Task,DT_FixedDUR2,TK_NotStart,DUKHCONP1AZ2STGF2000,Column-Rebar & Formwork,8165,0,0,200,0,4046,4046,200,0,0,0,,,,2013-07-28 08:00,2013-08-28 17:00,,2013-07-28 08:00,2013-08-28 17:00,2013-07-28 08:00,2013-08-28 17:00,2013-07-28 08:00,2013-08-28 17:00,2013-07-28 08:00,2013-08-28 17:00,,PT_Normal,,,,,UZC+nqzDTQaSPHoZ30Db3w,,,,Y,0,0,,,2013-02-16 15:54,2013-02-16 15:56,admin,admin
503697,6359,125262,13662,0,N,N,N,CP_Drtn,TT_Task,DT_FixedDUR2,TK_NotStart,DUKHCONP1AZ2STGF2005,Column-Concrete,8167,16,0,192,0,255.5,255.5,192,0,0,0,,,,2013-08-07 08:00,2013-09-07 17:00,,2013-08-05 08:00,2013-09-04 17:00,2013-08-05 08:00,2013-09-04 17:00,2013-08-05 08:00,2013-09-04 17:00,2013-08-07 08:00,2013-09-07 17:00,,PT_Normal,,,,,THsUvl2mR8KZv/jddwG1UQ,,,,N,0,0,,,2013-02-16 15:54,2013-02-16 15:56,admin,admin
503698,6359,125262,13662,0,N,N,N,CP_Drtn,TT_Task,DT_FixedDUR2,TK_NotStart,DUKHCONP1AZ2STGF2010,"Beam, Stairs ,Slab-Rebar & Formwork",8165,16,0,200,0,16829.75,16829.75,200,0,0,0,,,,2013-08-26 08:00,2013-09-23 17:00,,2013-08-24 08:00,2013-09-21 17:00,2013-08-24 08:00,2013-09-21 17:00,2013-08-24 08:00,2013-09-21 17:00,2013-08-26 08:00,2013-09-23 17:00,,PT_Normal,,,,,6E7rL7HGS7u3waXqu4KXvg,,,,N,0,0,,,2013-02-16 15:54,2013-02-16 15:56,admin,admin
503699,6359,125262,13662,0,N,N,N,CP_Drtn,TT_Task,DT_FixedDUR2,TK_NotStart,DUKHCONP1AZ2STGF2015,"Beam, Stairs ,Slab-Concrete",8167,16,0,112,0,1295,1295,112,0,0,0,,,,2013-09-11 08:00,2013-09-26 17:00,,2013-09-09 08:00,2013-09-24 17:00,2013-09-09 08:00,2013-09-24 17:00,2013-09-09 08:00,2013-09-24 17:00,2013-09-11 08:00,2013-09-26 17:00,,PT_Normal,,,,,pDK90rPcSJKzyfSwfCHnEw,,,,N,0,0,,,2013-02-16 15:54,2013-02-16 15:56,admin,admin
503700,6359,125264,13662,0,N,N,N,CP_Drtn,TT_Task,DT_FixedDUR2,TK_NotStart,DUKHCONP1AZ2STUG1015,Footing Waterproofing & Screed,8164,0,0,200,0,574.75,574.75,200,0,0,0,,,,2013-04-06 08:00,2013-05-04 17:00,,2013-04-06 08:00,2013-05-04 17:00,2013-04-06 08:00,2013-05-04 17:00,2013-04-06 08:00,2013-05-04 17:00,2013-04-06 08:00,2013-05-04 17:00,,PT_Normal,,,,,vSq2WQ58QEGJDJxDH92axg,,,,Y,0,0,,,2013-02-16 15:54,2013-02-16 15:56,admin,admin
503701,6359,125264,13662,0,N,N,N,CP_Drtn,TT_Task,DT_FixedDUR2,TK_NotStart,DUKHCONP1AZ2STUG1020,Construction of foundations,8165,0,0,160,0,7778.75,7778.75,160,0,0,0,,,,2013-04-21 08:00,2013-05-13 17:00,,2013-04-21 08:00,2013-05-13 17:00,2013-04-21 08:00,2013-05-13 17:00,2013-04-21 08:00,2013-05-13 17:00,2013-04-21 08:00,2013-05-13 17:00,,PT_Normal,,,,,GbavQCDSTyeDRDJWIRR2lg,,,,Y,0,0,,,2013-02-16 15:54,2013-02-16 15:56,admin,admin
503702,6359,125264,13662,0,N,N,N,CP_Drtn,TT_Task,DT_FixedDUR2,TK_NotStart,DUKHCONP1AZ2STUG1025,Construction of neck of columns,8165,0,0,200,0,1606.5,1606.5,200,0,0,0,,,,2013-04-30 08:00,2013-05-28 17:00,,2013-04-30 08:00,2013-05-28 17:00,2013-04-30 08:00,2013-05-28 17:00,2013-04-30 08:00,2013-05-28 17:00,2013-04-30 08:00,2013-05-28 17:00,,PT_Normal,,,,,K+ra7NupT3ac/YpUiQKdXA,,,,Y,0,0,,,2013-02-16 15:54,2013-02-16 15:56,admin,admin
503703,6359,125264,13662,0,N,N,N,CP_Drtn,TT_Task,DT_FixedDUR2,TK_NotStart,DUKHCONP1AZ2STUG1030,Waterproofing Footing & Neck Column,8178,0,0,200,0,516,516,200,0,0,0,,,,2013-05-09 08:00,2013-06-06 17:00,,2013-05-09 08:00,2013-06-06 17:00,2013-05-09 08:00,2013-06-06 17:00,2013-05-09 08:00,2013-06-06 17:00,2013-05-09 08:00,2013-06-06 17:00,,PT_Normal,,,,,BAKRg0w2Toi23lHqAJh/Yg,,,,Y,0,0,,,2013-02-16 15:54,2013-02-16 15:56,admin,admin
503704,6359,125264,13662,0,N,N,N,CP_Drtn,TT_Task,DT_FixedDUR2,TK_NotStart,DUKHCONP1AZ2STUG1035,Backfilling Upto Grade Beam Bottom,8177,0,0,200,0,1041,1041,200,825,0,825,,,,2013-05-23 08:00,2013-06-20 17:00,,2013-05-23 08:00,2013-06-20 17:00,2013-05-23 08:00,2013-06-20 17:00,2013-05-23 08:00,2013-06-20 17:00,2013-05-23 08:00,2013-06-20 17:00,,PT_Normal,,,,,jeM5CRGZR2SIRXXlN+Fyug,,,,Y,0,0,,,2013-02-16 15:54,2013-02-16 15:56,admin,admin
503705,6359,125264,13662,0,N,N,N,CP_Drtn,TT_Task,DT_FixedDUR2,TK_NotStart,DUKHCONP1AZ2STUG1040,Construction of Grade Beams,8163,0,0,200,0,7568.75,7568.75,200,0,0,0,,,,2013-06-09 08:00,2013-07-07 17:00,,2013-06-09 08:00,2013-07-07 17:00,2013-06-09 08:00,2013-07-07 17:00,2013-06-09 08:00,2013-07-07 17:00,2013-06-09 08:00,2013-07-07 17:00,,PT_Normal,,,,,vSDBJenRSvOEHEEd+1Kgng,,,,Y,0,0,,,2013-02-16 15:54,2013-02-16 15:56,admin,admin
503706,6359,125264,13662,0,N,N,N,CP_Drtn,TT_Task,DT_FixedDUR2,TK_NotStart,DUKHCONP1AZ2STUG1045,Construction of slab on grade,8163,0,0,200,0,4422,4422,200,0,0,0,,,,2013-07-11 08:00,2013-08-08 17:00,,2013-07-11 08:00,2013-08-08 17:00,2013-07-11 08:00,2013-08-08 17:00,2013-07-11 08:00,2013-08-08 17:00,2013-07-11 08:00,2013-08-08 17:00,,PT_Normal,,,,,Df2gypEbSPaSGIN+VyvY5g,,,,Y,0,0,,,2013-02-16 15:54,2013-02-16 15:56,admin,admin
503707,6359,125264,13662,0,N,N,N,CP_Drtn,TT_Task,DT_FixedDUR2,TK_NotStart,DUKHCONP1AZ2STUG1010,Footing Blinding,8163,0,0,184,0,794.5,794.5,184,0,0,0,,,,2013-03-31 08:00,2013-04-25 17:00,,2013-03-31 08:00,2013-04-25 17:00,2013-03-31 08:00,2013-04-25 17:00,2013-03-31 08:00,2013-04-25 17:00,2013-03-31 08:00,2013-04-25 17:00,,PT_Normal,,,,,66ynmllSQS2Fr7V1QVeg9A,,,,Y,0,0,,,2013-02-16 15:54,2013-02-16 15:56,admin,admin
503708,6359,125264,13662,0,N,N,N,CP_Drtn,TT_Task,DT_FixedDUR2,TK_NotStart,DUKHCONP1AZ2STUG1000,Footing Excavation,8177,0,0,200,0,1114,1114,200,524,0,524,,,,2013-03-16 08:00,2013-04-13 17:00,,2013-03-16 08:00,2013-04-13 17:00,2013-03-16 08:00,2013-04-13 17:00,2013-03-16 08:00,2013-04-13 17:00,2013-03-16 08:00,2013-04-13 17:00,,PT_Normal,,,,,eYZK1Aa6Ro+aFt3z6Iayeg,,,,Y,0,0,,,2013-02-16 15:54,2013-02-16 15:56,admin,admin
503709,6359,125264,13662,0,N,N,N,CP_Drtn,TT_Task,DT_FixedDUR2,TK_NotStart,DUKHCONP1AZ2STUG1005,Footing Antitermite,8178,0,0,184,0,1584,1584,184,0,0,0,,,,2013-03-27 08:00,2013-04-22 17:00,,2013-03-27 08:00,2013-04-22 17:00,2013-03-27 08:00,2013-04-22 17:00,2013-03-27 08:00,2013-04-22 17:00,2013-03-27 08:00,2013-04-22 17:00,,PT_Normal,,,,,JyX6O4RITMeGXG9QQt7gsg,,,,Y,0,0,,,2013-02-16 15:54,2013-02-16 15:56,admin,admin
503710,6359,125268,13662,0,N,N,N,CP_Drtn,TT_Task,DT_FixedDUR2,TK_NotStart,DUKHCONP1AZ3STUG1000,Footing Excavation,8177,0,0,200,0,1114,1114,200,524,0,524,,,,2013-04-14 08:00,2013-05-12 17:00,,2013-04-14 08:00,2013-05-12 17:00,2013-04-14 08:00,2013-05-12 17:00,2013-04-14 08:00,2013-05-12 17:00,2013-04-14 08:00,2013-05-12 17:00,,PT_Normal,,,,,f0GndhlhQUmJy3on4ISgjQ,,,,Y,0,0,,,2013-02-16 15:54,2013-02-16 15:56,admin,admin
503711,6359,125268,13662,0,N,N,N,CP_Drtn,TT_Task,DT_FixedDUR2,TK_NotStart,DUKHCONP1AZ3STUG1005,Footing Antitermite,8178,0,0,184,0,1584,1584,184,0,0,0,,,,2013-04-25 08:00,2013-05-21 17:00,,2013-04-25 08:00,2013-05-21 17:00,2013-04-25 08:00,2013-05-21 17:00,2013-04-25 08:00,2013-05-21 17:00,2013-04-25 08:00,2013-05-21 17:00,,PT_Normal,,,,,PSvMdeGvSnCp5A5Y7vN0AQ,,,,Y,0,0,,,2013-02-16 15:54,2013-02-16 15:56,admin,admin
503712,6359,125268,13662,0,N,N,N,CP_Drtn,TT_Task,DT_FixedDUR2,TK_NotStart,DUKHCONP1AZ3STUG1010,Footing Blinding,8163,0,0,184,0,794.5,794.5,184,0,0,0,,,,2013-04-29 08:00,2013-05-25 17:00,,2013-04-29 08:00,2013-05-25 17:00,2013-04-29 08:00,2013-05-25 17:00,2013-04-29 08:00,2013-05-25 17:00,2013-04-29 08:00,2013-05-25 17:00,,PT_Normal,,,,,3dZ/XnOgRnyJ5w2YppqxtQ,,,,Y,0,0,,,2013-02-16 15:54,2013-02-16 15:56,admin,admin
503713,6359,125268,13662,0,N,N,N,CP_Drtn,TT_Task,DT_FixedDUR2,TK_NotStart,DUKHCONP1AZ3STUG1015,Footing Waterproofing & Screed,8164,0,0,200,0,574.75,574.75,200,0,0,0,,,,2013-05-05 08:00,2013-06-02 17:00,,2013-05-05 08:00,2013-06-02 17:00,2013-05-05 08:00,2013-06-02 17:00,2013-05-05 08:00,2013-06-02 17:00,2013-05-05 08:00,2013-06-02 17:00,,PT_Normal,,,,,legGpvCWTx6IeN4FKvFJpw,,,,Y,0,0,,,2013-02-16 15:54,2013-02-16 15:56,admin,admin
503714,6359,125268,13662,0,N,N,N,CP_Drtn,TT_Task,DT_FixedDUR2,TK_NotStart,DUKHCONP1AZ3STUG1020,Construction of foundations,8165,0,0,160,0,7778.75,7778.75,160,0,0,0,,,,2013-05-20 08:00,2013-06-11 17:00,,2013-05-20 08:00,2013-06-11 17:00,2013-05-20 08:00,2013-06-11 17:00,2013-05-20 08:00,2013-06-11 17:00,2013-05-20 08:00,2013-06-11 17:00,,PT_Normal,,,,,jUJz4uehQPaWtK/d0a+z8g,,,,Y,0,0,,,2013-02-16 15:54,2013-02-16 15:56,admin,admin
503715,6359,125268,13662,0,N,N,N,CP_Drtn,TT_Task,DT_FixedDUR2,TK_NotStart,DUKHCONP1AZ3STUG1025,Construction of neck of columns,8165,0,0,200,0,1606.5,1606.5,200,0,0,0,,,,2013-05-29 08:00,2013-06-26 17:00,,2013-05-29 08:00,2013-06-26 17:00,2013-05-29 08:00,2013-06-26 17:00,2013-05-29 08:00,2013-06-26 17:00,2013-05-29 08:00,2013-06-26 17:00,,PT_Normal,,,,,P2/1/MmmTqS19Z0RQjTZ8Q,,,,Y,0,0,,,2013-02-16 15:54,2013-02-16 15:56,admin,admin
503716,6359,125268,13662,0,N,N,N,CP_Drtn,TT_Task,DT_FixedDUR2,TK_NotStart,DUKHCONP1AZ3STUG1030,Waterproofing Footing & Neck Column,8178,0,0,200,0,516,516,200,0,0,0,,,,2013-06-08 08:00,2013-07-06 17:00,,2013-06-08 08:00,2013-07-06 17:00,2013-06-08 08:00,2013-07-06 17:00,2013-06-08 08:00,2013-07-06 17:00,2013-06-08 08:00,2013-07-06 17:00,,PT_Normal,,,,,fK2HChL4SdeUYbp2JPNqIw,,,,Y,0,0,,,2013-02-16 15:54,2013-02-16 15:56,admin,admin
503717,6359,125268,13662,0,N,N,N,CP_Drtn,TT_Task,DT_FixedDUR2,TK_NotStart,DUKHCONP1AZ3STUG1035,Backfilling Upto Grade Beam Bottom,8177,0,0,200,0,1041,1041,200,825,0,825,,,,2013-06-22 08:00,2013-07-20 17:00,,2013-06-22 08:00,2013-07-20 17:00,2013-06-22 08:00,2013-07-20 17:00,2013-06-22 08:00,2013-07-20 17:00,2013-06-22 08:00,2013-07-20 17:00,,PT_Normal,,,,,4zz7e9/fTyuWv46EpxPf1g,,,,Y,0,0,,,2013-02-16 15:54,2013-02-16 15:56,admin,admin
503718,6359,125268,13662,0,N,N,N,CP_Drtn,TT_Task,DT_FixedDUR2,TK_NotStart,DUKHCONP1AZ3STUG1040,Construction of Grade Beams,8163,0,0,200,0,7568.75,7568.75,200,0,0,0,,,,2013-07-08 08:00,2013-08-05 17:00,,2013-07-08 08:00,2013-08-05 17:00,2013-07-08 08:00,2013-08-05 17:00,2013-07-08 08:00,2013-08-05 17:00,2013-07-08 08:00,2013-08-05 17:00,,PT_Normal,,,,,bVaS04BjRFmgit2DP7S0dA,,,,Y,0,0,,,2013-02-16 15:54,2013-02-16 15:56,admin,admin
503719,6359,125268,13662,0,N,N,N,CP_Drtn,TT_Task,DT_FixedDUR2,TK_NotStart,DUKHCONP1AZ3STUG1045,Construction of slab on grade,8163,0,0,200,0,4422,4422,200,0,0,0,,,,2013-08-13 08:00,2013-09-10 17:00,,2013-08-13 08:00,2013-09-10 17:00,2013-08-13 08:00,2013-09-10 17:00,2013-08-13 08:00,2013-09-10 17:00,2013-08-13 08:00,2013-09-10 17:00,,PT_Normal,,,,,zS8nUAaiQLmrwJ5B3a1kfA,,,,Y,0,0,,,2013-02-16 15:54,2013-02-16 15:56,admin,admin
503720,6359,125270,13662,0,N,N,N,CP_Drtn,TT_Task,DT_FixedDUR2,TK_NotStart,DUKHCONP1AZ3STRF2040,Column-Rebar & Formwork,8165,120,0,144,0,1205.75,1205.75,144,0,0,0,,,,2013-12-12 08:00,2014-01-02 17:00,,2013-11-25 08:00,2013-12-15 17:00,2013-11-25 08:00,2013-12-15 17:00,2013-11-25 08:00,2013-12-15 17:00,2013-12-12 08:00,2014-01-02 17:00,,PT_Normal,,,,,7S0qxzI6SRShCBTA8BwG4Q,,,,N,0,0,,,2013-02-16 15:54,2013-02-16 15:56,admin,admin
503721,6359,125270,13662,0,N,N,N,CP_Drtn,TT_Task,DT_FixedDUR2,TK_NotStart,DUKHCONP1AZ3STRF2045,Column-Concrete,8167,160,0,136,0,52.5,52.5,136,0,0,0,,,,2013-12-23 08:00,2014-01-11 17:00,,2013-11-28 08:00,2013-12-17 17:00,2013-11-28 08:00,2013-12-17 17:00,2013-11-28 08:00,2013-12-17 17:00,2013-12-23 08:00,2014-01-11 17:00,,PT_Normal,,,,,WbDdnzxJQP6nSTUVHWwNLQ,,,,N,0,0,,,2013-02-16 15:54,2013-02-16 15:56,admin,admin
503722,6359,125270,13662,0,N,N,N,CP_Drtn,TT_Task,DT_FixedDUR2,TK_NotStart,DUKHCONP1AZ3STRF2050,Slab-Rebar & Formwork - Head Room,8165,160,0,160,0,2735.25,2735.25,160,0,0,0,,,,2013-12-25 08:00,2014-01-16 17:00,,2013-12-01 08:00,2013-12-24 17:00,2013-12-01 08:00,2013-12-24 17:00,2013-12-01 08:00,2013-12-24 17:00,2013-12-25 08:00,2014-01-16 17:00,,PT_Normal,,,,,ibAqghLPSRClBZDfSFIR7Q,,,,N,0,0,,,2013-02-16 15:54,2013-02-16 15:56,admin,admin
503723,6359,125270,13662,0,N,N,N,CP_Drtn,TT_Task,DT_FixedDUR2,TK_NotStart,DUKHCONP1AZ3STRF2055,Slab-Concrete-Head room,8167,160,0,104,0,252,252,104,0,0,0,,,,2014-01-05 08:00,2014-01-19 17:00,,2013-12-11 08:00,2013-12-26 17:00,2013-12-11 08:00,2013-12-26 17:00,2013-12-11 08:00,2013-12-26 17:00,2014-01-05 08:00,2014-01-19 17:00,,PT_Normal,,,,,CicNjThQSQi6hdP7n04Xag,,,,N,0,0,,,2013-02-16 15:54,2013-02-16 15:56,admin,admin
503724,6359,125270,13662,0,N,N,N,CP_Drtn,TT_Task,DT_FixedDUR2,TK_NotStart,DUKHCONP1AZ3STRF2060,Construction of Parapets,8168,448,32,200,0,2200,2200,200,0,0,0,,,,2014-02-19 08:00,2014-03-19 17:00,,2013-12-14 08:00,2014-01-12 17:00,2013-12-14 08:00,2014-01-12 17:00,2013-12-14 08:00,2014-01-12 17:00,2014-02-19 08:00,2014-03-19 17:00,,PT_Normal,,,,,D3XTaNI+T9KeihM5s4lC1A,,,,N,0,0,,,2013-02-16 15:54,2013-02-16 15:56,admin,admin
503725,6359,125270,13662,0,N,N,N,CP_Drtn,TT_Task,DT_FixedDUR2,TK_NotStart,DUKHCONP1AZ3STRF2065,Construction of up stands/Plinth,8165,416,0,200,0,554.75,554.75,200,0,0,0,,,,2014-02-25 08:00,2014-03-25 17:00,,2013-12-25 08:00,2014-01-22 17:00,2013-12-25 08:00,2014-01-22 17:00,2013-12-25 08:00,2014-01-22 17:00,2014-02-25 08:00,2014-03-25 17:00,,PT_Normal,,,,,clIKHav5TLaOBiteWgbxjQ,,,,N,0,0,,,2013-02-16 15:54,2013-02-16 15:56,admin,admin
503726,6359,125271,13662,0,N,N,N,CP_Drtn,TT_Task,DT_FixedDUR2,TK_NotStart,DUKHCONP1AZ3STGF2000,Column-Rebar & Formwork,8165,0,0,200,0,4046,4046,200,0,0,0,,,,2013-08-29 08:00,2013-09-26 17:00,,2013-08-29 08:00,2013-09-26 17:00,2013-08-29 08:00,2013-09-26 17:00,2013-08-29 08:00,2013-09-26 17:00,2013-08-29 08:00,2013-09-26 17:00,,PT_Normal,,,,,MwqncgrZSXGb01zqODyV5w,,,,Y,0,0,,,2013-02-16 15:54,2013-02-16 15:56,admin,admin
503727,6359,125271,13662,0,N,N,N,CP_Drtn,TT_Task,DT_FixedDUR2,TK_NotStart,DUKHCONP1AZ3STGF2005,Column-Concrete,8167,16,0,192,0,255.5,255.5,192,0,0,0,,,,2013-09-09 08:00,2013-10-06 17:00,,2013-09-07 08:00,2013-10-03 17:00,2013-09-07 08:00,2013-10-03 17:00,2013-09-07 08:00,2013-10-03 17:00,2013-09-09 08:00,2013-10-06 17:00,,PT_Normal,,,,,HZXVw5YpT4CeogpjBdqj2g,,,,N,0,0,,,2013-02-16 15:54,2013-02-16 15:56,admin,admin
503728,6359,125271,13662,0,N,N,N,CP_Drtn,TT_Task,DT_FixedDUR2,TK_NotStart,DUKHCONP1AZ3STGF2010,"Beam, Stairs ,Slab-Rebar & Formwork",8165,16,0,200,0,16829.75,16829.75,200,0,0,0,,,,2013-09-24 08:00,2013-10-24 17:00,,2013-09-22 08:00,2013-10-22 17:00,2013-09-22 08:00,2013-10-22 17:00,2013-09-22 08:00,2013-10-22 17:00,2013-09-24 08:00,2013-10-24 17:00,,PT_Normal,,,,,6jjumV9NSRqiC+GtZWIhYQ,,,,N,0,0,,,2013-02-16 15:54,2013-02-16 15:56,admin,admin
503729,6359,125271,13662,0,N,N,N,CP_Drtn,TT_Task,DT_FixedDUR2,TK_NotStart,DUKHCONP1AZ3STGF2015,"Beam, Stairs ,Slab-Concrete",8167,16,0,112,0,1295,1295,112,0,0,0,,,,2013-10-10 08:00,2013-10-28 17:00,,2013-10-08 08:00,2013-10-26 17:00,2013-10-08 08:00,2013-10-26 17:00,2013-10-08 08:00,2013-10-26 17:00,2013-10-10 08:00,2013-10-28 17:00,,PT_Normal,,,,,+aKiiNSCQz+GVADk/dlteQ,,,,N,0,0,,,2013-02-16 15:54,2013-02-16 15:56,admin,admin
503730,6359,125272,13662,0,N,N,N,CP_Drtn,TT_Task,DT_FixedDUR2,TK_NotStart,DUKHCONP1AZ3STFF2020,Column-Rebar & Formwork,8165,16,0,200,0,3580.5,3580.5,200,0,0,0,,,,2013-10-13 08:00,2013-11-12 17:00,,2013-10-10 08:00,2013-11-10 17:00,2013-10-10 08:00,2013-11-10 17:00,2013-10-10 08:00,2013-11-10 17:00,2013-10-13 08:00,2013-11-12 17:00,,PT_Normal,,,,,RPkq4U0tRsyQhYZ5aFjtlw,,,,N,0,0,,,2013-02-16 15:54,2013-02-16 15:56,admin,admin
503731,6359,125272,13662,0,N,N,N,CP_Drtn,TT_Task,DT_FixedDUR2,TK_NotStart,DUKHCONP1AZ3STFF2025,Column-Concrete,8167,32,0,192,0,224,224,192,0,0,0,,,,2013-10-27 08:00,2013-11-23 17:00,,2013-10-22 08:00,2013-11-18 17:00,2013-10-22 08:00,2013-11-18 17:00,2013-10-22 08:00,2013-11-18 17:00,2013-10-27 08:00,2013-11-23 17:00,,PT_Normal,,,,,vo5RZvEqSQaUHXhwht0X5A,,,,N,0,0,,,2013-02-16 15:54,2013-02-16 15:56,admin,admin
503732,6359,125272,13662,0,N,N,N,CP_Drtn,TT_Task,DT_FixedDUR2,TK_NotStart,DUKHCONP1AZ3STFF2030,"Beam, Stairs ,Slab-Rebar & Formwork",8165,32,0,200,0,16119.25,16119.25,200,0,0,0,,,,2013-11-11 08:00,2013-12-09 17:00,,2013-11-06 08:00,2013-12-04 17:00,2013-11-06 08:00,2013-12-04 17:00,2013-11-06 08:00,2013-12-04 17:00,2013-11-11 08:00,2013-12-09 17:00,,PT_Normal,,,,,lBjLcWYAR82aQI/o0NUGAw,,,,N,0,0,,,2013-02-16 15:54,2013-02-16 15:56,admin,admin
503733,6359,125272,13662,0,N,N,N,CP_Drtn,TT_Task,DT_FixedDUR2,TK_NotStart,DUKHCONP1AZ3STFF2035,"Beam, Stairs ,Slab-Concrete",8167,32,0,112,0,1141,1141,112,0,0,0,,,,2013-11-27 08:00,2013-12-12 17:00,,2013-11-23 08:00,2013-12-08 17:00,2013-11-23 08:00,2013-12-08 17:00,2013-11-23 08:00,2013-12-08 17:00,2013-11-27 08:00,2013-12-12 17:00,,PT_Normal,,,,,LIA/6jECQ1Wc+GMzX+c+2g,,,,N,0,0,,,2013-02-16 15:54,2013-02-16 15:56,admin,admin
503734,6359,125275,13662,0,N,N,N,CP_Drtn,TT_Task,DT_FixedDUR2,TK_NotStart,DUKHCONP1AZ3AREL3665,External Plastering,8169,376,0,200,0,14275,14275,200,0,0,0,,,,2014-03-25 08:00,2014-04-22 17:00,,2014-01-28 08:00,2014-02-26 17:00,2014-01-28 08:00,2014-02-26 17:00,2014-01-28 08:00,2014-02-26 17:00,2014-03-25 08:00,2014-04-22 17:00,,PT_Normal,,,,,t0/46MMQSUOAZDJnXB03Mg,,,,N,0,0,,,2013-02-16 15:54,2013-02-16 15:56,admin,admin
503735,6359,125275,13662,0,N,N,N,CP_Drtn,TT_Task,DT_FixedDUR2,TK_NotStart,DUKHCONP1AZ3AREL3670,External stone cladding works,8170,392,0,160,0,990,990,160,0,0,0,,,,2014-04-14 08:00,2014-05-06 17:00,,2014-02-16 08:00,2014-03-10 17:00,2014-02-16 08:00,2014-03-10 17:00,2014-02-16 08:00,2014-03-10 17:00,2014-04-14 08:00,2014-05-06 17:00,,PT_Normal,,,,,6A2JbepeRZG8ZWDMDOvJWw,,,,N,0,0,,,2013-02-16 15:54,2013-02-16 15:56,admin,admin
503736,6359,125275,13662,0,N,N,N,CP_Drtn,TT_Task,DT_FixedDUR2,TK_NotStart,DUKHCONP1AZ3AREL3680,External Painting,8178,392,40,160,0,3784,3784,160,0,0,0,,,,2014-04-26 08:00,2014-05-18 17:00,,2014-02-27 08:00,2014-03-22 17:00,2014-02-27 08:00,2014-03-22 17:00,2014-02-27 08:00,2014-03-22 17:00,2014-04-26 08:00,2014-05-18 17:00,,PT_Normal,,,,,cL63jDpMS+yOZ++27nC6mw,,,,N,0,0,,,2013-02-16 15:54,2013-02-16 15:56,admin,admin
503737,6359,125276,13662,0,N,N,N,CP_Drtn,TT_Task,DT_FixedDUR2,TK_NotStart,DUKHCONP1AZ3ARRF3630,Leveling Screed for Waterproofing,8164,168,0,200,0,800,800,200,0,0,0,,,,2014-03-09 08:00,2014-04-06 17:00,,2014-02-12 08:00,2014-03-12 17:00,2014-02-12 08:00,2014-03-12 17:00,2014-02-12 08:00,2014-03-12 17:00,2014-03-09 08:00,2014-04-06 17:00,,PT_Normal,,,,,njWCYo4wRc+wvDE1PgRhnw,,,,N,0,0,,,2013-02-16 15:54,2013-02-16 15:56,admin,admin
503738,6359,125276,13662,0,N,N,N,CP_Drtn,TT_Task,DT_FixedDUR2,TK_NotStart,DUKHCONP1AZ3ARRF3635,Laying of Waterproofing Membrane,8178,168,0,200,0,1138.5,1138.5,200,0,0,0,,,,2014-03-12 08:00,2014-04-09 17:00,,2014-02-16 08:00,2014-03-16 17:00,2014-02-16 08:00,2014-03-16 17:00,2014-02-16 08:00,2014-03-16 17:00,2014-03-12 08:00,2014-04-09 17:00,,PT_Normal,,,,,1kHXv0d7TQqfK9V4an+vLA,,,,N,0,0,,,2013-02-16 15:54,2013-02-16 15:56,admin,admin
503739,6359,125276,13662,0,N,N,N,CP_Drtn,TT_Task,DT_FixedDUR2,TK_NotStart,DUKHCONP1AZ3ARRF3640,Installation of Insulation & Protection,8178,168,0,200,0,1408,1408,200,0,0,0,,,,2014-03-17 08:00,2014-04-14 17:00,,2014-02-20 08:00,2014-03-20 17:00,2014-02-20 08:00,2014-03-20 17:00,2014-02-20 08:00,2014-03-20 17:00,2014-03-17 08:00,2014-04-14 17:00,,PT_Normal,,,,,46rc+s2fQk6a5krJ8V6GuA,,,,N,0,0,,,2013-02-16 15:54,2013-02-16 15:56,admin,admin
503740,6359,125276,13662,0,N,N,N,CP_Drtn,TT_Task,DT_FixedDUR2,TK_NotStart,DUKHCONP1AZ3ARRF3645,Lime Stone Chips & Paving slab Installation,8170,168,0,200,0,688.25,688.25,200,0,0,0,,,,2014-03-22 08:00,2014-04-19 17:00,,2014-02-25 08:00,2014-03-25 17:00,2014-02-25 08:00,2014-03-25 17:00,2014-02-25 08:00,2014-03-25 17:00,2014-03-22 08:00,2014-04-19 17:00,,PT_Normal,,,,,9p79RJzLQ0GKcafbYX/t+g,,,,N,0,0,,,2013-02-16 15:54,2013-02-16 15:56,admin,admin
503741,6359,125276,13662,0,N,N,N,CP_Drtn,TT_Task,DT_FixedDUR2,TK_NotStart,DUKHCONP1AZ3ARRF3655,Installation of Pumps Protection cabinets,8178,168,0,160,0,616,616,160,0,0,0,,,,2014-04-14 08:00,2014-05-06 17:00,,2014-03-20 08:00,2014-04-12 17:00,2014-03-20 08:00,2014-04-12 17:00,2014-03-20 08:00,2014-04-12 17:00,2014-04-14 08:00,2014-05-06 17:00,,PT_Normal,,,,,VweBzl+tRceH9f0RTIOyxQ,,,,N,0,0,,,2013-02-16 15:54,2013-02-16 15:56,admin,admin
503742,6359,125276,13662,0,N,N,N,CP_Drtn,TT_Task,DT_FixedDUR2,TK_NotStart,DUKHCONP1AZ3ARRF3650,Install. of Gal. Frame & Aluminum Slat Screen,8178,168,0,200,0,1046.5,1046.5,200,0,0,0,,,,2014-03-30 08:00,2014-04-27 17:00,,2014-03-05 08:00,2014-04-02 17:00,2014-03-05 08:00,2014-04-02 17:00,2014-03-05 08:00,2014-04-02 17:00,2014-03-30 08:00,2014-04-27 17:00,,PT_Normal,,,,,QxzVevPqSD+uxgVBiSvMgw,,,,N,0,0,,,2013-02-16 15:54,2013-02-16 15:56,admin,admin
503743,6359,125276,13662,0,N,N,N,CP_Drtn,TT_Task,DT_FixedDUR2,TK_NotStart,DUKHCONP1AZ3ARRF3660,Installation of Access Ladder,8178,208,208,120,0,176,176,120,0,0,0,,,,2014-05-01 08:00,2014-05-18 17:00,,2014-04-01 08:00,2014-04-17 17:00,2014-04-01 08:00,2014-04-17 17:00,2014-04-01 08:00,2014-04-17 17:00,2014-05-01 08:00,2014-05-18 17:00,,PT_Normal,,,,,7C6RGnuwTb6ML6DM5LgVkQ,,,,N,0,0,,,2013-02-16 15:54,2013-02-16 15:56,admin,admin
503744,6359,125278,13662,0,N,N,N,CP_Drtn,TT_Task,DT_FixedDUR2,TK_NotStart,DUKHCONP1AZ3ARGF3025,Porcelain Tile flooring,8170,144,0,200,0,1743.75,1743.75,200,0,0,0,,,,2014-01-22 08:00,2014-02-20 17:00,,2014-01-01 08:00,2014-01-29 17:00,2014-01-01 08:00,2014-01-29 17:00,2014-01-01 08:00,2014-01-29 17:00,2014-01-22 08:00,2014-02-20 17:00,,PT_Normal,,,,,LSwdlxKeRWS7Aau7cefQPA,,,,N,0,0,,,2013-02-16 15:54,2013-02-16 15:56,admin,admin
503745,6359,125278,13662,0,N,N,N,CP_Drtn,TT_Task,DT_FixedDUR2,TK_NotStart,DUKHCONP1AZ3ARGF3040,Cobble Tile flooring,8170,168,0,120,0,741,741,120,0,0,0,,,,2014-02-23 08:00,2014-03-11 17:00,,2014-01-28 08:00,2014-02-15 17:00,2014-01-28 08:00,2014-02-15 17:00,2014-01-28 08:00,2014-02-15 17:00,2014-02-23 08:00,2014-03-11 17:00,,PT_Normal,,,,,ceL1HmuzRnCVoFJ6tfAkIg,,,,N,0,0,,,2013-02-16 15:54,2013-02-16 15:56,admin,admin
503746,6359,125278,13662,0,N,N,N,CP_Drtn,TT_Task,DT_FixedDUR2,TK_NotStart,DUKHCONP1AZ3ARGF3035,Slate Tile Flooring & Skirting,8170,184,16,120,0,761.5,761.5,120,0,0,0,,,,2014-02-18 08:00,2014-03-06 17:00,,2014-01-21 08:00,2014-02-06 17:00,2014-01-21 08:00,2014-02-06 17:00,2014-01-21 08:00,2014-02-06 17:00,2014-02-18 08:00,2014-03-06 17:00,,PT_Normal,,,,,f27O1Ig9TtCPVEGexGkDhQ,,,,N,0,0,,,2013-02-16 15:54,2013-02-16 15:56,admin,admin
503747,6359,125278,13662,0,N,N,N,CP_Drtn,TT_Task,DT_FixedDUR2,TK_NotStart,DUKHCONP1AZ3ARGF3050,Granite - Stair case flooring & Skirting,8171,168,0,160,0,875,875,160,0,0,0,,,,2014-03-03 08:00,2014-03-25 17:00,,2014-02-05 08:00,2014-03-01 17:00,2014-02-05 08:00,2014-03-01 17:00,2014-02-05 08:00,2014-03-01 17:00,2014-03-03 08:00,2014-03-25 17:00,,PT_Normal,,,,,Z6ruhnmfQm6Ki1iIPBmafQ,,,,N,0,0,,,2013-02-16 15:54,2013-02-16 15:56,admin,admin
503748,6359,125278,13662,0,N,N,N,CP_Drtn,TT_Task,DT_FixedDUR2,TK_NotStart,DUKHCONP1AZ3ARGF3045,Fixing of Suspension systems,8178,144,0,160,0,1455.05,1455.05,160,0,0,0,,,,2014-02-09 08:00,2014-03-04 17:00,,2014-01-19 08:00,2014-02-10 17:00,2014-01-19 08:00,2014-02-10 17:00,2014-01-19 08:00,2014-02-10 17:00,2014-02-09 08:00,2014-03-04 17:00,,PT_Normal,,,,,m9Mbm6oSTiiBl7kCFS5dVQ,,,,N,0,0,,,2013-02-16 15:54,2013-02-23 09:03,admin,admin
503749,6359,125278,13662,0,N,N,N,CP_Drtn,TT_Task,DT_FixedDUR2,TK_NotStart,DUKHCONP1AZ3ARGF3055,Aluminum tile false ceiling,8178,168,24,200,0,150,150,200,0,0,0,,,,2014-02-22 08:00,2014-03-22 17:00,,2014-01-27 08:00,2014-02-25 17:00,2014-01-27 08:00,2014-02-25 17:00,2014-01-27 08:00,2014-02-25 17:00,2014-02-22 08:00,2014-03-22 17:00,,PT_Normal,,,,,YPbzuWxjQFCZ0Mvz06QAqQ,,,,N,0,0,,,2013-02-16 15:54,2013-02-16 15:56,admin,admin
503750,6359,125278,13662,0,N,N,N,CP_Drtn,TT_Task,DT_FixedDUR2,TK_NotStart,DUKHCONP1AZ3ARGF3060,Gypsum board false ceiling,8178,144,0,200,0,1335.15,1335.15,200,0,0,0,,,,2014-02-22 08:00,2014-03-22 17:00,,2014-01-30 08:00,2014-03-01 17:00,2014-01-30 08:00,2014-03-01 17:00,2014-01-30 08:00,2014-03-01 17:00,2014-02-22 08:00,2014-03-22 17:00,,PT_Normal,,,,,i0Cdh7OGR0ucF1d4zKljaw,,,,N,0,0,,,2013-02-16 15:54,2013-02-16 15:56,admin,admin
503751,6359,125278,13662,0,N,N,N,CP_Drtn,TT_Task,DT_FixedDUR2,TK_NotStart,DUKHCONP1AZ3ARGF3065,Wooden door & PVC Door,8178,168,0,120,0,308,308,120,0,0,0,,,,2014-03-17 08:00,2014-04-02 17:00,,2014-02-20 08:00,2014-03-09 17:00,2014-02-20 08:00,2014-03-09 17:00,2014-02-20 08:00,2014-03-09 17:00,2014-03-17 08:00,2014-04-02 17:00,,PT_Normal,,,,,t8Xgxqu6TTKfVyXOJf82cQ,,,,N,0,0,,,2013-02-16 15:54,2013-02-16 15:56,admin,admin
503752,6359,125278,13662,0,N,N,N,CP_Drtn,TT_Task,DT_FixedDUR2,TK_NotStart,DUKHCONP1AZ3ARGF3070,Aluminum doors,8178,168,0,120,0,176,176,120,0,0,0,,,,2014-03-23 08:00,2014-04-08 17:00,,2014-02-26 08:00,2014-03-15 17:00,2014-02-26 08:00,2014-03-15 17:00,2014-02-26 08:00,2014-03-15 17:00,2014-03-23 08:00,2014-04-08 17:00,,PT_Normal,,,,,ljGjp+SuTBmAz9JTRT/gVw,,,,N,0,0,,,2013-02-16 15:54,2013-02-16 15:56,admin,admin
503753,6359,125278,13662,0,N,N,N,CP_Drtn,TT_Task,DT_FixedDUR2,TK_NotStart,DUKHCONP1AZ3ARGF3080,Aluminum windows,8178,248,40,160,0,162.25,162.25,160,0,0,0,,,,2014-04-10 08:00,2014-05-03 17:00,,2014-03-05 08:00,2014-03-27 17:00,2014-03-05 08:00,2014-03-27 17:00,2014-03-05 08:00,2014-03-27 17:00,2014-04-10 08:00,2014-05-03 17:00,,PT_Normal,,,,,1rvKAiAyRsi6Y1VjiZ9M3A,,,,N,0,0,,,2013-02-16 15:54,2013-02-16 15:56,admin,admin
503754,6359,125278,13662,0,N,N,N,CP_Drtn,TT_Task,DT_FixedDUR2,TK_NotStart,DUKHCONP1AZ3ARGF3075,Carpentry & Joinery Works,8178,168,0,160,0,572,572,160,0,0,0,,,,2014-03-29 08:00,2014-04-20 17:00,,2014-03-04 08:00,2014-03-26 17:00,2014-03-04 08:00,2014-03-26 17:00,2014-03-04 08:00,2014-03-26 17:00,2014-03-29 08:00,2014-04-20 17:00,,PT_Normal,,,,,Lb/FxKVPRQuDgJSqBC9UXA,,,,N,0,0,,,2013-02-16 15:54,2013-02-16 15:56,admin,admin
503755,6359,125278,13662,0,N,N,N,CP_Drtn,TT_Task,DT_FixedDUR2,TK_NotStart,DUKHCONP1AZ3ARGF3090,Installation of Granite Counter Top,8171,168,0,120,0,176,176,120,0,0,0,,,,2014-04-10 08:00,2014-04-27 17:00,,2014-03-17 08:00,2014-04-02 17:00,2014-03-17 08:00,2014-04-02 17:00,2014-03-17 08:00,2014-04-02 17:00,2014-04-10 08:00,2014-04-27 17:00,,PT_Normal,,,,,pmcfdz52Sk+oHVUIn9DqeQ,,,,N,0,0,,,2013-02-16 15:54,2013-02-16 15:56,admin,admin
503756,6359,125278,13662,0,N,N,N,CP_Drtn,TT_Task,DT_FixedDUR2,TK_NotStart,DUKHCONP1AZ3ARGF3085,S.S.Balustrade,8178,208,40,160,0,262.5,262.5,160,0,0,0,,,,2014-04-12 08:00,2014-05-04 17:00,,2014-03-12 08:00,2014-04-03 17:00,2014-03-12 08:00,2014-04-03 17:00,2014-03-12 08:00,2014-04-03 17:00,2014-04-12 08:00,2014-05-04 17:00,,PT_Normal,,,,,iHipci0vR6uCsSTum8ixfg,,,,N,0,0,,,2013-02-16 15:54,2013-02-16 15:56,admin,admin
503757,6359,125278,13662,0,N,N,N,CP_Drtn,TT_Task,DT_FixedDUR2,TK_NotStart,DUKHCONP1AZ3ARGF3095,Final Painting,8178,168,0,200,0,5425.75,5425.75,200,0,0,0,,,,2014-04-20 08:00,2014-05-18 17:00,,2014-03-26 08:00,2014-04-23 17:00,2014-03-26 08:00,2014-04-23 17:00,2014-03-26 08:00,2014-04-23 17:00,2014-04-20 08:00,2014-05-18 17:00,,PT_Normal,,,,,lgP+2xXCTF2HNIF6yYNuuQ,,,,N,0,0,,,2013-02-16 15:54,2013-02-16 15:56,admin,admin
503758,6359,125278,13662,0,N,N,N,CP_Drtn,TT_Task,DT_FixedDUR2,TK_NotStart,DUKHCONP1AZ3ARGF3000,Block work,8168,144,0,200,0,9737.5,9737.5,200,0,0,0,,,,2013-12-01 08:00,2013-12-30 17:00,,2013-11-10 08:00,2013-12-08 17:00,2013-11-10 08:00,2013-12-08 17:00,2013-11-10 08:00,2013-12-08 17:00,2013-12-01 08:00,2013-12-30 17:00,,PT_Normal,,,,,h2nFfkEHSfGNbLi3FzDFeg,,,,N,0,0,,,2013-02-16 15:54,2013-02-16 15:56,admin,admin
503759,6359,125278,13662,0,N,N,N,CP_Drtn,TT_Task,DT_FixedDUR2,TK_NotStart,DUKHCONP1AZ3ARGF3005,Plastering work,8169,144,0,200,0,13637.5,13637.5,200,0,0,0,,,,2013-12-24 08:00,2014-01-21 17:00,,2013-12-02 08:00,2013-12-31 17:00,2013-12-02 08:00,2013-12-31 17:00,2013-12-02 08:00,2013-12-31 17:00,2013-12-24 08:00,2014-01-21 17:00,,PT_Normal,,,,,woqe1MgSSkGD9OoLvztaTw,,,,N,0,0,,,2013-02-16 15:54,2013-02-16 15:56,admin,admin
503760,6359,125278,13662,0,N,N,N,CP_Drtn,TT_Task,DT_FixedDUR2,TK_NotStart,DUKHCONP1AZ3ARGF3010,Flooring screed,8164,208,64,168,0,1580.25,1580.25,168,0,0,0,,,,2014-01-11 08:00,2014-02-03 17:00,,2013-12-10 08:00,2014-01-04 17:00,2013-12-10 08:00,2014-01-04 17:00,2013-12-10 08:00,2014-01-04 17:00,2014-01-11 08:00,2014-02-03 17:00,,PT_Normal,,,,,UcypIqBVTg+YNjS9uN81yQ,,,,N,0,0,,,2013-02-16 15:54,2013-02-16 15:56,admin,admin
503761,6359,125278,13662,0,N,N,N,CP_Drtn,TT_Task,DT_FixedDUR2,TK_NotStart,DUKHCONP1AZ3ARGF3015,Wet area waterproofing & Protection Screed,8178,144,0,120,0,247.5,247.5,120,0,0,0,,,,2014-01-11 08:00,2014-01-27 17:00,,2013-12-21 08:00,2014-01-06 17:00,2013-12-21 08:00,2014-01-06 17:00,2013-12-21 08:00,2014-01-06 17:00,2014-01-11 08:00,2014-01-27 17:00,,PT_Normal,,,,,HQ9aqwobSqa77otqCdt2Hw,,,,N,0,0,,,2013-02-16 15:54,2013-02-16 15:56,admin,admin
503762,6359,125278,13662,0,N,N,N,CP_Drtn,TT_Task,DT_FixedDUR2,TK_NotStart,DUKHCONP1AZ3ARGF3030,Paint First coat,8178,256,0,200,0,5425.75,5425.75,200,0,0,0,,,,2014-01-26 08:00,2014-02-24 17:00,,2013-12-19 08:00,2014-01-16 17:00,2013-12-19 08:00,2014-01-16 17:00,2013-12-19 08:00,2014-01-16 17:00,2014-01-26 08:00,2014-02-24 17:00,,PT_Normal,,,,,5iySJ/6bQJe0utRB9mg7Qw,,,,N,0,0,,,2013-02-16 15:54,2013-02-16 15:56,admin,admin
503763,6359,125278,13662,0,N,N,N,CP_Drtn,TT_Task,DT_FixedDUR2,TK_NotStart,DUKHCONP1AZ3ARGF3020,Ceramic Wall Tiling,8170,144,0,200,0,4428.5,4428.5,200,0,0,0,,,,2014-01-16 08:00,2014-02-15 17:00,,2013-12-26 08:00,2014-01-23 17:00,2013-12-26 08:00,2014-01-23 17:00,2013-12-26 08:00,2014-01-23 17:00,2014-01-16 08:00,2014-02-15 17:00,,PT_Normal,,,,,5Hu98b8bS6K/YrS4Doa4yQ,,,,N,0,0,,,2013-02-16 15:54,2013-02-16 15:56,admin,admin
503764,6359,125279,13662,0,N,N,N,CP_Drtn,TT_Task,DT_FixedDUR2,TK_NotStart,DUKHCONP1AZ3ARFF3300,Block work,8168,0,0,200,0,6387.5,6387.5,200,0,0,0,,,,2013-12-23 08:00,2014-01-20 17:00,,2013-12-23 08:00,2014-01-20 17:00,2013-12-23 08:00,2014-01-20 17:00,2013-12-23 08:00,2014-01-20 17:00,2013-12-23 08:00,2014-01-20 17:00,,PT_Normal,,,,,MGLJ8G1MQYmQNbMCpYJXTg,,,,Y,0,0,,,2013-02-16 15:54,2013-02-16 15:56,admin,admin
503765,6359,125279,13662,0,N,N,N,CP_Drtn,TT_Task,DT_FixedDUR2,TK_NotStart,DUKHCONP1AZ3ARFF3305,Plastering work,8169,0,0,200,0,8899,8899,200,0,0,0,,,,2014-01-16 08:00,2014-02-15 17:00,,2014-01-16 08:00,2014-02-15 17:00,2014-01-16 08:00,2014-02-15 17:00,2014-01-16 08:00,2014-02-15 17:00,2014-01-16 08:00,2014-02-15 17:00,,PT_Normal,,,,,bnCoacqRSQmiPSiiCxXj8Q,,,,Y,0,0,,,2013-02-16 15:54,2013-02-16 15:56,admin,admin
503766,6359,125279,13662,0,N,N,N,CP_Drtn,TT_Task,DT_FixedDUR2,TK_NotStart,DUKHCONP1AZ3ARFF3310,Flooring screed,8164,96,96,168,0,1215.5,1215.5,168,0,0,0,,,,2014-02-08 08:00,2014-03-04 17:00,,2014-01-25 08:00,2014-02-18 17:00,2014-01-25 08:00,2014-02-18 17:00,2014-01-25 08:00,2014-02-18 17:00,2014-02-08 08:00,2014-03-04 17:00,,PT_Normal,,,,,3O6vLtO6SYSACY9/Na45qw,,,,N,0,0,,,2013-02-16 15:54,2013-02-16 15:56,admin,admin
503767,6359,125279,13662,0,N,N,N,CP_Drtn,TT_Task,DT_FixedDUR2,TK_NotStart,DUKHCONP1AZ3ARFF3315,Wet area waterproofing,8178,0,0,120,0,1215.5,1215.5,120,0,0,0,,,,2014-02-05 08:00,2014-02-23 17:00,,2014-02-05 08:00,2014-02-23 17:00,2014-02-05 08:00,2014-02-23 17:00,2014-02-05 08:00,2014-02-23 17:00,2014-02-05 08:00,2014-02-23 17:00,,PT_Normal,,,,,WUO/qhzpTNKgclKCoF6iqg,,,,Y,0,0,,,2013-02-16 15:54,2013-02-16 15:56,admin,admin
503768,6359,125279,13662,0,N,N,N,CP_Drtn,TT_Task,DT_FixedDUR2,TK_NotStart,DUKHCONP1AZ3ARFF3330,Paint First coat,8178,112,112,200,0,4742.75,4742.75,200,0,0,0,,,,2014-02-19 08:00,2014-03-19 17:00,,2014-02-02 08:00,2014-03-03 17:00,2014-02-02 08:00,2014-03-03 17:00,2014-02-02 08:00,2014-03-03 17:00,2014-02-19 08:00,2014-03-19 17:00,,PT_Normal,,,,,7Ap1GIN1SJqPYb1xjb5CHQ,,,,N,0,0,,,2013-02-16 15:54,2013-02-16 15:56,admin,admin
503769,6359,125279,13662,0,N,N,N,CP_Drtn,TT_Task,DT_FixedDUR2,TK_NotStart,DUKHCONP1AZ3ARFF3320,Ceramic Wall Tiling,8170,0,0,200,0,1897.25,1897.25,200,0,0,0,,,,2014-02-13 08:00,2014-03-13 17:00,,2014-02-13 08:00,2014-03-13 17:00,2014-02-13 08:00,2014-03-13 17:00,2014-02-13 08:00,2014-03-13 17:00,2014-02-13 08:00,2014-03-13 17:00,,PT_Normal,,,,,pGyiWFq1TpGYGll2CGUDwQ,,,,Y,0,0,,,2013-02-16 15:54,2013-02-16 15:56,admin,admin
503770,6359,125279,13662,0,N,N,N,CP_Drtn,TT_Task,DT_FixedDUR2,TK_NotStart,DUKHCONP1AZ3ARFF3325,Porcelain Tile flooring,8170,0,0,200,0,1743.75,1743.75,200,0,0,0,,,,2014-02-20 08:00,2014-03-20 17:00,,2014-02-20 08:00,2014-03-20 17:00,2014-02-20 08:00,2014-03-20 17:00,2014-02-20 08:00,2014-03-20 17:00,2014-02-20 08:00,2014-03-20 17:00,,PT_Normal,,,,,yOjvNohqT2CHlp2RC3T1Kg,,,,Y,0,0,,,2013-02-16 15:54,2013-02-16 15:56,admin,admin
503771,6359,125279,13662,0,N,N,N,CP_Drtn,TT_Task,DT_FixedDUR2,TK_NotStart,DUKHCONP1AZ3ARFF3335,Slate Tile Flooring & Skirting,8170,64,64,120,0,261.5,261.5,120,0,0,0,,,,2014-03-19 08:00,2014-04-05 17:00,,2014-03-10 08:00,2014-03-26 17:00,2014-03-10 08:00,2014-03-26 17:00,2014-03-10 08:00,2014-03-26 17:00,2014-03-19 08:00,2014-04-05 17:00,,PT_Normal,,,,,OGKsMg5ZQJO9mp7JBFR1qA,,,,N,0,0,,,2013-02-16 15:54,2013-02-16 15:56,admin,admin
503772,6359,125279,13662,0,N,N,N,CP_Drtn,TT_Task,DT_FixedDUR2,TK_NotStart,DUKHCONP1AZ3ARFF3350,Granite - Stair case flooring & Skirting,8171,16,16,160,0,875,875,160,0,0,0,,,,2014-03-16 08:00,2014-04-07 17:00,,2014-03-13 08:00,2014-04-05 17:00,2014-03-13 08:00,2014-04-05 17:00,2014-03-13 08:00,2014-04-05 17:00,2014-03-16 08:00,2014-04-07 17:00,,PT_Normal,,,,,eFEJUjwZSO25gEw9TDcOfQ,,,,N,0,0,,,2013-02-16 15:54,2013-02-16 15:56,admin,admin
503773,6359,125279,13662,0,N,N,N,CP_Drtn,TT_Task,DT_FixedDUR2,TK_NotStart,DUKHCONP1AZ3ARFF3345,Fixing of Suspension systems,8178,0,0,160,0,1305,1305,160,0,0,0,,,,2014-03-05 08:00,2014-03-27 17:00,,2014-03-05 08:00,2014-03-27 17:00,2014-03-05 08:00,2014-03-27 17:00,2014-03-05 08:00,2014-03-27 17:00,2014-03-05 08:00,2014-03-27 17:00,,PT_Normal,,,,,Uu+Tc88iRVyZTlcxBUGXJA,,,,Y,0,0,,,2013-02-16 15:54,2013-02-16 15:56,admin,admin
503774,6359,125279,13662,0,N,N,N,CP_Drtn,TT_Task,DT_FixedDUR2,TK_NotStart,DUKHCONP1AZ3ARFF3365,Wooden door,8178,0,0,120,0,308,308,120,0,0,0,,,,2014-03-27 08:00,2014-04-13 17:00,,2014-03-27 08:00,2014-04-13 17:00,2014-03-27 08:00,2014-04-13 17:00,2014-03-27 08:00,2014-04-13 17:00,2014-03-27 08:00,2014-04-13 17:00,,PT_Normal,,,,,53dHMIFgQaubFtKHbddjQw,,,,Y,0,0,,,2013-02-16 15:54,2013-02-16 15:56,admin,admin
503775,6359,125279,13662,0,N,N,N,CP_Drtn,TT_Task,DT_FixedDUR2,TK_NotStart,DUKHCONP1AZ3ARFF3370,Aluminum Door,8178,0,0,160,0,220,220,160,0,0,0,,,,2014-03-27 08:00,2014-04-19 17:00,,2014-03-27 08:00,2014-04-19 17:00,2014-03-27 08:00,2014-04-19 17:00,2014-03-27 08:00,2014-04-19 17:00,2014-03-27 08:00,2014-04-19 17:00,,PT_Normal,,,,,E7LBu9//RH6/SMqsTOiUiw,,,,Y,0,0,,,2013-02-16 15:54,2013-02-16 15:56,admin,admin
503776,6359,125279,13662,0,N,N,N,CP_Drtn,TT_Task,DT_FixedDUR2,TK_NotStart,DUKHCONP1AZ3ARFF3380,Aluminum windows,8178,32,32,160,0,162.25,162.25,160,0,0,0,,,,2014-04-08 08:00,2014-04-30 17:00,,2014-04-03 08:00,2014-04-26 17:00,2014-04-03 08:00,2014-04-26 17:00,2014-04-03 08:00,2014-04-26 17:00,2014-04-08 08:00,2014-04-30 17:00,,PT_Normal,,,,,RtBeVJLgS3CHJEvTsf6+AA,,,,N,0,0,,,2013-02-16 15:54,2013-02-16 15:56,admin,admin
503777,6359,125279,13662,0,N,N,N,CP_Drtn,TT_Task,DT_FixedDUR2,TK_NotStart,DUKHCONP1AZ3ARFF3375,Carpentry & Joinery Works,8178,0,0,200,0,1100,1100,200,0,0,0,,,,2014-04-02 08:00,2014-04-30 17:00,,2014-04-02 08:00,2014-04-30 17:00,2014-04-02 08:00,2014-04-30 17:00,2014-04-02 08:00,2014-04-30 17:00,2014-04-02 08:00,2014-04-30 17:00,,PT_Normal,,,,,Xp2js+XMTfuI8zuObJ/sWg,,,,Y,0,0,,,2013-02-16 15:54,2013-02-16 15:56,admin,admin
503778,6359,125279,13662,0,N,N,N,CP_Drtn,TT_Task,DT_FixedDUR2,TK_NotStart,DUKHCONP1AZ3ARFF3390,Installation of Granite Counter Top,8171,8,8,160,0,88,88,160,0,0,0,,,,2014-04-15 08:00,2014-05-07 17:00,,2014-04-14 08:00,2014-05-06 17:00,2014-04-14 08:00,2014-05-06 17:00,2014-04-14 08:00,2014-05-06 17:00,2014-04-15 08:00,2014-05-07 17:00,,PT_Normal,,,,,NG0uVCuHTgyQFMHx0tSicg,,,,N,0,0,,,2013-02-16 15:54,2013-02-16 15:56,admin,admin
503779,6359,125279,13662,0,N,N,N,CP_Drtn,TT_Task,DT_FixedDUR2,TK_NotStart,DUKHCONP1AZ3ARFF3385,Handrail &  Balustrade,8178,0,0,160,0,787.5,787.5,160,0,0,0,,,,2014-04-14 08:00,2014-05-06 17:00,,2014-04-14 08:00,2014-05-06 17:00,2014-04-14 08:00,2014-05-06 17:00,2014-04-14 08:00,2014-05-06 17:00,2014-04-14 08:00,2014-05-06 17:00,,PT_Normal,,,,,oH+uY2d0SjuVGceoTyompQ,,,,Y,0,0,,,2013-02-16 15:54,2013-02-16 15:56,admin,admin
503780,6359,125279,13662,0,N,N,N,CP_Drtn,TT_Task,DT_FixedDUR2,TK_NotStart,DUKHCONP1AZ3ARFF3395,Final Painting,8178,0,0,200,0,4742.75,4742.75,200,0,0,0,,,,2014-04-20 08:00,2014-05-18 17:00,,2014-04-20 08:00,2014-05-18 17:00,2014-04-20 08:00,2014-05-18 17:00,2014-04-20 08:00,2014-05-18 17:00,2014-04-20 08:00,2014-05-18 17:00,,PT_Normal,,,,,RkRQitmNRsSl0JfIMIYBXg,,,,Y,0,0,,,2013-02-16 15:54,2013-02-16 15:56,admin,admin
503781,6359,125279,13662,0,N,N,N,CP_Drtn,TT_Task,DT_FixedDUR2,TK_NotStart,DUKHCONP1AZ3ARFF3360,Gypsum board false ceiling,8178,0,0,200,0,1305,1305,200,0,0,0,,,,2014-03-12 08:00,2014-04-09 17:00,,2014-03-12 08:00,2014-04-09 17:00,2014-03-12 08:00,2014-04-09 17:00,2014-03-12 08:00,2014-04-09 17:00,2014-03-12 08:00,2014-04-09 17:00,,PT_Normal,,,,,qzFthlonSb+yesugDJ5viA,,,,Y,0,0,,,2013-02-16 15:54,2013-02-16 15:56,admin,admin
503782,6359,125280,13662,0,N,N,N,CP_Drtn,TT_Task,DT_FixedDUR2,TK_NotStart,DUKHCONP1AZ3ARRF3600,Block work,8168,416,0,160,0,700,700,160,0,0,0,,,,2014-03-09 08:00,2014-03-31 17:00,,2014-01-06 08:00,2014-01-28 17:00,2014-01-06 08:00,2014-01-28 17:00,2014-01-06 08:00,2014-01-28 17:00,2014-03-09 08:00,2014-03-31 17:00,,PT_Normal,,,,,sQv+DtkMTu2UytwQTvF79w,,,,N,0,0,,,2013-02-16 15:54,2013-02-16 15:56,admin,admin
503783,6359,125280,13662,0,N,N,N,CP_Drtn,TT_Task,DT_FixedDUR2,TK_NotStart,DUKHCONP1AZ3ARRF3605,Plastering work,8169,416,0,160,0,1786.5,1786.5,160,0,0,0,,,,2014-03-17 08:00,2014-04-08 17:00,,2014-01-14 08:00,2014-02-05 17:00,2014-01-14 08:00,2014-02-05 17:00,2014-01-14 08:00,2014-02-05 17:00,2014-03-17 08:00,2014-04-08 17:00,,PT_Normal,,,,,efUO77kQSLWffrEOl7x2MQ,,,,N,0,0,,,2013-02-16 15:54,2013-02-16 15:56,admin,admin
503784,6359,125280,13662,0,N,N,N,CP_Drtn,TT_Task,DT_FixedDUR2,TK_NotStart,DUKHCONP1AZ3ARRF3610,Flooring screed,8164,456,0,120,0,136.5,136.5,120,0,0,0,,,,2014-04-06 08:00,2014-04-22 17:00,,2014-01-28 08:00,2014-02-15 17:00,2014-01-28 08:00,2014-02-15 17:00,2014-01-28 08:00,2014-02-15 17:00,2014-04-06 08:00,2014-04-22 17:00,,PT_Normal,,,,,aGZpKQmmQj2sVgmzj69NkA,,,,N,0,0,,,2013-02-16 15:54,2013-02-16 15:56,admin,admin
503785,6359,125280,13662,0,N,N,N,CP_Drtn,TT_Task,DT_FixedDUR2,TK_NotStart,DUKHCONP1AZ3ARRF3695,Painting -Storage area,8178,456,0,160,0,1640,1640,160,0,0,0,,,,2014-04-14 08:00,2014-05-06 17:00,,2014-02-05 08:00,2014-03-01 17:00,2014-02-05 08:00,2014-03-01 17:00,2014-02-05 08:00,2014-03-01 17:00,2014-04-14 08:00,2014-05-06 17:00,,PT_Normal,,,,,yBOaFlKdRwSbzlCRkBvNew,,,,N,0,0,,,2013-02-16 15:54,2013-02-16 15:56,admin,admin
503786,6359,125280,13662,0,N,N,N,CP_Drtn,TT_Task,DT_FixedDUR2,TK_NotStart,DUKHCONP1AZ3ARRF3620,Epoxy Painting -Storage area,8178,456,456,120,0,48.5,48.5,120,0,0,0,,,,2014-05-01 08:00,2014-05-18 17:00,,2014-02-24 08:00,2014-03-12 17:00,2014-02-24 08:00,2014-03-12 17:00,2014-02-24 08:00,2014-03-12 17:00,2014-05-01 08:00,2014-05-18 17:00,,PT_Normal,,,,,5NstjftlS0Gs1SDQOaNKQA,,,,N,0,0,,,2013-02-16 15:54,2013-02-16 15:56,admin,admin
503787,6359,125281,13662,0,N,N,N,CP_Drtn,TT_Task,DT_FixedDUR2,TK_NotStart,DUKHCONP1AZ3PLTC8005,Pre-Commissioning & Testing of Plumbing Works,8178,0,0,200,0,3000,3000,200,0,0,0,,,,2014-05-19 08:00,2014-06-16 17:00,,2014-05-19 08:00,2014-06-16 17:00,2014-05-19 08:00,2014-06-16 17:00,2014-05-19 08:00,2014-06-16 17:00,2014-05-19 08:00,2014-06-16 17:00,,PT_Normal,,,,,l5+sKqnVS+G5xeWjIsIiiA,,,,Y,0,0,,,2013-02-16 15:54,2013-02-16 15:56,admin,admin
503788,6359,125281,13662,0,N,N,N,CP_Drtn,TT_Task,DT_FixedDUR2,TK_NotStart,DUKHCONP1AZ3ACTC8000,Pre-Commissioning & Testing of AC Works,8178,0,0,200,0,1500,1500,200,0,0,0,,,,2014-05-19 08:00,2014-06-16 17:00,,2014-05-19 08:00,2014-06-16 17:00,2014-05-19 08:00,2014-06-16 17:00,2014-05-19 08:00,2014-06-16 17:00,2014-05-19 08:00,2014-06-16 17:00,,PT_Normal,,,,,s7yRviuOTHWlu+SnCTSdpw,,,,Y,0,0,,,2013-02-16 15:54,2013-02-16 15:56,admin,admin
503789,6359,125281,13662,0,N,N,N,CP_Drtn,TT_Task,DT_FixedDUR2,TK_NotStart,DUKHCONP1AZ3ELTC8010,Pre-Commissioning & Testing of Electrical Works,8178,0,0,200,0,3000,3000,200,0,0,0,,,,2014-05-19 08:00,2014-06-16 17:00,,2014-05-19 08:00,2014-06-16 17:00,2014-05-19 08:00,2014-06-16 17:00,2014-05-19 08:00,2014-06-16 17:00,2014-05-19 08:00,2014-06-16 17:00,,PT_Normal,,,,,MVQWrZ4qQQCgzp3x5s9DMg,,,,Y,0,0,,,2013-02-16 15:54,2013-02-16 15:56,admin,admin
503790,6359,125283,13662,0,N,N,N,CP_Drtn,TT_Task,DT_FixedDUR2,TK_NotStart,DUKHCONP1AZ3SLEX5105,Laying of Grass/ green area,8178,128,0,200,0,2744,2744,200,0,0,0,,,,2014-04-13 08:00,2014-05-11 17:00,,2014-03-25 08:00,2014-04-22 17:00,2014-03-25 08:00,2014-04-22 17:00,2014-03-25 08:00,2014-04-22 17:00,2014-04-13 08:00,2014-05-11 17:00,,PT_Normal,,,,,ogTYJUkTR8yH75F8YvVXoQ,,,,N,0,0,,,2013-02-16 15:54,2013-02-16 15:56,admin,admin
503791,6359,125283,13662,0,N,N,N,CP_Drtn,TT_Task,DT_FixedDUR2,TK_NotStart,DUKHCONP1AZ3SLEX5110,Laying of Palm tree,8178,128,128,200,0,168,168,200,0,0,0,,,,2014-04-20 08:00,2014-05-18 17:00,,2014-04-01 08:00,2014-04-29 17:00,2014-04-01 08:00,2014-04-29 17:00,2014-04-01 08:00,2014-04-29 17:00,2014-04-20 08:00,2014-05-18 17:00,,PT_Normal,,,,,LorwdEcMS5unO01IC6thdA,,,,N,0,0,,,2013-02-16 15:54,2013-02-16 15:56,admin,admin
503792,6359,125284,13662,0,N,N,N,CP_Drtn,TT_Task,DT_FixedDUR2,TK_NotStart,DUKHCONP1AZ3WEEX5030,Excavation,8177,144,0,160,0,64,64,160,40,0,40,,,,2014-03-03 08:00,2014-03-25 17:00,,2014-02-09 08:00,2014-03-04 17:00,2014-02-09 08:00,2014-03-04 17:00,2014-02-09 08:00,2014-03-04 17:00,2014-03-03 08:00,2014-03-25 17:00,,PT_Normal,,,,,1f/DUqUSQ9y3x9Uo1WnpOA,,,,N,0,0,,,2013-02-16 15:54,2013-02-16 15:56,admin,admin
503793,6359,125284,13662,0,N,N,N,CP_Drtn,TT_Task,DT_FixedDUR2,TK_NotStart,DUKHCONP1AZ3WEEX5035,Construction of Raft,8165,144,0,200,0,840,840,200,0,0,0,,,,2014-03-09 08:00,2014-04-06 17:00,,2014-02-16 08:00,2014-03-16 17:00,2014-02-16 08:00,2014-03-16 17:00,2014-02-16 08:00,2014-03-16 17:00,2014-03-09 08:00,2014-04-06 17:00,,PT_Normal,,,,,oK0jd3sDRuKwhcXawswCAA,,,,N,0,0,,,2013-02-16 15:54,2013-02-16 15:56,admin,admin
503794,6359,125284,13662,0,N,N,N,CP_Drtn,TT_Task,DT_FixedDUR2,TK_NotStart,DUKHCONP1AZ3WEEX5040,Block works & Plastering,8168,144,0,200,0,512,512,200,0,0,0,,,,2014-03-18 08:00,2014-04-15 17:00,,2014-02-25 08:00,2014-03-25 17:00,2014-02-25 08:00,2014-03-25 17:00,2014-02-25 08:00,2014-03-25 17:00,2014-03-18 08:00,2014-04-15 17:00,,PT_Normal,,,,,dzzVsmnZQPCiGfMEDx7RPg,,,,N,0,0,,,2013-02-16 15:54,2013-02-16 15:56,admin,admin
503795,6359,125284,13662,0,N,N,N,CP_Drtn,TT_Task,DT_FixedDUR2,TK_NotStart,DUKHCONP1AZ3WEEX5045,Flooring & Painting,8178,144,0,200,0,232,232,200,0,0,0,,,,2014-03-25 08:00,2014-04-22 17:00,,2014-03-04 08:00,2014-04-01 17:00,2014-03-04 08:00,2014-04-01 17:00,2014-03-04 08:00,2014-04-01 17:00,2014-03-25 08:00,2014-04-22 17:00,,PT_Normal,,,,,KxGDgC5eRTO1mVeyKiO0vw,,,,N,0,0,,,2013-02-16 15:54,2013-02-16 15:56,admin,admin
503796,6359,125284,13662,0,N,N,N,CP_Drtn,TT_Task,DT_FixedDUR2,TK_NotStart,DUKHCONP1AZ3WEEX5050,Installation of Steel Gate,8178,144,64,160,0,56,56,160,0,0,0,,,,2014-04-07 08:00,2014-04-29 17:00,,2014-03-17 08:00,2014-04-08 17:00,2014-03-17 08:00,2014-04-08 17:00,2014-03-17 08:00,2014-04-08 17:00,2014-04-07 08:00,2014-04-29 17:00,,PT_Normal,,,,,cKba5tfLQtWokqbPVcfS4g,,,,N,0,0,,,2013-02-16 15:54,2013-02-16 15:56,admin,admin
503797,6359,125284,13662,0,N,N,N,CP_Drtn,TT_Task,DT_FixedDUR2,TK_NotStart,DUKHCONP1AZ3WEEX5060,Structural steel &  SS Shed cover installation,8178,80,0,200,0,336,336,200,0,0,0,,,,2014-04-13 08:00,2014-05-11 17:00,,2014-04-01 08:00,2014-04-29 17:00,2014-04-01 08:00,2014-04-29 17:00,2014-04-01 08:00,2014-04-29 17:00,2014-04-13 08:00,2014-05-11 17:00,,PT_Normal,,,,,eUynIquCSz6ExsYasJI20g,,,,N,0,0,,,2013-02-16 15:54,2013-02-16 15:56,admin,admin
503798,6359,125284,13662,0,N,N,N,CP_Drtn,TT_Task,DT_FixedDUR2,TK_NotStart,DUKHCONP1AZ3WEEX5065,"Install. of Water Tank,Chiller,Pump & Meter",8178,72,0,200,0,203.2,203.2,200,0,0,0,,,,2014-04-20 08:00,2014-05-18 17:00,,2014-04-09 08:00,2014-05-07 17:00,2014-04-09 08:00,2014-05-07 17:00,2014-04-09 08:00,2014-05-07 17:00,2014-04-20 08:00,2014-05-18 17:00,,PT_Normal,,,,,3fcBlnxwSruAbVIZ9uBByw,,,,N,0,0,,,2013-02-16 15:54,2013-02-16 15:56,admin,admin
503799,6359,125285,13662,0,N,N,N,CP_Drtn,TT_Task,DT_FixedDUR2,TK_NotStart,DUKHCONP1AZ3MSEX5020,Construction Entrance Ramp,8164,128,0,200,0,656,656,200,0,0,0,,,,2014-03-05 08:00,2014-04-02 17:00,,2014-02-15 08:00,2014-03-15 17:00,2014-02-15 08:00,2014-03-15 17:00,2014-02-15 08:00,2014-03-15 17:00,2014-03-05 08:00,2014-04-02 17:00,,PT_Normal,,,,,6OMaTgPvTzCWoOJVsNjaiA,,,,N,0,0,,,2013-02-16 15:54,2013-02-16 15:56,admin,admin
503800,6359,125285,13662,0,N,N,N,CP_Drtn,TT_Task,DT_FixedDUR2,TK_NotStart,DUKHCONP1AZ3MSEX5025,SS.Handrails and Balustrades,8178,152,8,160,0,56,56,160,0,0,0,,,,2014-03-26 08:00,2014-04-17 17:00,,2014-03-04 08:00,2014-03-26 17:00,2014-03-04 08:00,2014-03-26 17:00,2014-03-04 08:00,2014-03-26 17:00,2014-03-26 08:00,2014-04-17 17:00,,PT_Normal,,,,,FugNNy7tRjKAPssIfwdf8g,,,,N,0,0,,,2013-02-16 15:54,2013-02-16 15:56,admin,admin
503801,6359,125285,13662,0,N,N,N,CP_Drtn,TT_Task,DT_FixedDUR2,TK_NotStart,DUKHCONP1AZ3MSEX5015,Construction of grease Trap,8178,264,0,160,0,56,56,160,0,0,0,,,,2014-03-08 08:00,2014-03-30 17:00,,2014-01-27 08:00,2014-02-19 17:00,2014-01-27 08:00,2014-02-19 17:00,2014-01-27 08:00,2014-02-19 17:00,2014-03-08 08:00,2014-03-30 17:00,,PT_Normal,,,,,ETD+S7lsRiuNMdq/JYGU5Q,,,,N,0,0,,,2013-02-16 15:54,2013-02-16 15:56,admin,admin
503802,6359,125285,13662,0,N,N,N,CP_Drtn,TT_Task,DT_FixedDUR2,TK_NotStart,DUKHCONP1AZ3MSEX5000,Construction of Manholes,8172,264,0,200,0,528,528,200,0,0,0,,,,2014-02-01 08:00,2014-03-02 17:00,,2013-12-24 08:00,2014-01-21 17:00,2013-12-24 08:00,2014-01-21 17:00,2013-12-24 08:00,2014-01-21 17:00,2014-02-01 08:00,2014-03-02 17:00,,PT_Normal,,,,,ZsCMijFRTtCOywS7/H6FEQ,,,,N,0,0,,,2013-02-16 15:54,2013-02-16 15:56,admin,admin
503803,6359,125285,13662,0,N,N,N,CP_Drtn,TT_Task,DT_FixedDUR2,TK_NotStart,DUKHCONP1AZ3MSEX5005,"Construction  of Soak pit, Chambers",8172,264,0,200,0,176,176,200,0,0,0,,,,2014-02-16 08:00,2014-03-16 17:00,,2014-01-07 08:00,2014-02-04 17:00,2014-01-07 08:00,2014-02-04 17:00,2014-01-07 08:00,2014-02-04 17:00,2014-02-16 08:00,2014-03-16 17:00,,PT_Normal,,,,,nV4/EnvdRpOUwXL/2iZj1A,,,,N,0,0,,,2013-02-16 15:54,2013-02-16 15:56,admin,admin
503804,6359,125285,13662,0,N,N,N,CP_Drtn,TT_Task,DT_FixedDUR2,TK_NotStart,DUKHCONP1AZ3MSEX5010,Telephone cable laying,8177,264,176,200,0,500,500,200,0,0,0,,,,2014-03-31 08:00,2014-04-28 17:00,,2014-02-20 08:00,2014-03-20 17:00,2014-02-20 08:00,2014-03-20 17:00,2014-02-20 08:00,2014-03-20 17:00,2014-03-31 08:00,2014-04-28 17:00,,PT_Normal,,,,,okd075t9TASPK9283Gw/IA,,,,N,0,0,,,2013-02-16 15:54,2013-02-16 15:56,admin,admin
503805,6359,125285,13662,0,N,N,N,CP_Drtn,TT_Task,DT_FixedDUR2,TK_NotStart,DUKHCONP1AZ3MSEX5335,Aluminum Roll-up Shutter with 2m Wall,8178,824,64,200,0,400,400,200,0,0,0,,,,2014-09-04 08:00,2014-10-02 17:00,,2014-05-04 08:00,2014-06-01 17:00,2014-05-04 08:00,2014-06-01 17:00,2014-05-04 08:00,2014-06-01 17:00,2014-09-04 08:00,2014-10-02 17:00,,PT_Normal,,,,,b5Cv+Y7JSRy0ZEOrt/viqQ,,,,N,0,0,,,2013-02-16 15:54,2013-02-16 16:44,admin,admin
503806,6359,125286,13662,0,N,N,N,CP_Drtn,TT_Task,DT_FixedDUR2,TK_NotStart,DUKHCONP1AZ3HDEX5090,kerb works,8173,128,0,160,0,344,344,160,0,0,0,,,,2014-03-19 08:00,2014-04-10 17:00,,2014-03-01 08:00,2014-03-23 17:00,2014-03-01 08:00,2014-03-23 17:00,2014-03-01 08:00,2014-03-23 17:00,2014-03-19 08:00,2014-04-10 17:00,,PT_Normal,,,,,cwX7FAnATn2pcTCpA0PnLg,,,,N,0,0,,,2013-02-16 15:54,2013-02-16 15:56,admin,admin
503807,6359,125286,13662,0,N,N,N,CP_Drtn,TT_Task,DT_FixedDUR2,TK_NotStart,DUKHCONP1AZ3HDEX5095,Cobble Stone Works,8170,128,0,160,0,200,200,160,0,0,0,,,,2014-03-31 08:00,2014-04-22 17:00,,2014-03-12 08:00,2014-04-03 17:00,2014-03-12 08:00,2014-04-03 17:00,2014-03-12 08:00,2014-04-03 17:00,2014-03-31 08:00,2014-04-22 17:00,,PT_Normal,,,,,K8azIyIVRGyU/PNL7TD8ew,,,,N,0,0,,,2013-02-16 15:54,2013-02-16 15:56,admin,admin
503808,6359,125286,13662,0,N,N,N,CP_Drtn,TT_Task,DT_FixedDUR2,TK_NotStart,DUKHCONP1AZ3HDEX5100,Interlock works,8174,128,0,160,0,232,232,160,0,0,0,,,,2014-04-07 08:00,2014-04-29 17:00,,2014-03-19 08:00,2014-04-10 17:00,2014-03-19 08:00,2014-04-10 17:00,2014-03-19 08:00,2014-04-10 17:00,2014-04-07 08:00,2014-04-29 17:00,,PT_Normal,,,,,V7Z1pmvkQ56Urj5ti3YKvw,,,,N,0,0,,,2013-02-16 15:54,2013-02-16 15:56,admin,admin
503809,6359,125289,13662,0,N,N,N,CP_Drtn,TT_Task,DT_FixedDUR2,TK_NotStart,DUKHCONP1AZ3ELGF4010,Installation of wiring & Main Cabling,8178,360,216,200,0,296,296,200,0,0,0,,,,2014-01-28 08:00,2014-02-26 17:00,,2013-12-05 08:00,2014-01-04 17:00,2013-12-05 08:00,2014-01-04 17:00,2013-12-05 08:00,2014-01-04 17:00,2014-01-28 08:00,2014-02-26 17:00,,PT_Normal,,,,,oyyOkLFORJWj4/LYw7mrjg,,,,N,0,0,,,2013-02-16 15:54,2013-02-16 15:56,admin,admin
503810,6359,125289,13662,0,N,N,N,CP_Drtn,TT_Task,DT_FixedDUR2,TK_NotStart,DUKHCONP1AZ3ELGF4020,"Installation  of DBS,MCCB Accessories.",8178,144,0,160,0,227.2,227.2,160,0,0,0,,,,2014-03-08 08:00,2014-03-30 17:00,,2014-02-15 08:00,2014-03-09 17:00,2014-02-15 08:00,2014-03-09 17:00,2014-02-15 08:00,2014-03-09 17:00,2014-03-08 08:00,2014-03-30 17:00,,PT_Normal,,,,,msG97MdyQNWG2+6d4KWmYg,,,,N,0,0,,,2013-02-16 15:54,2013-02-16 15:56,admin,admin
503811,6359,125289,13662,0,N,N,N,CP_Drtn,TT_Task,DT_FixedDUR2,TK_NotStart,DUKHCONP1AZ3ELGF4025,Installation of Lighting fixtures & Accessories,8178,200,0,200,0,1651.2,1651.2,200,0,0,0,,,,2014-03-27 08:00,2014-04-24 17:00,,2014-02-26 08:00,2014-03-26 17:00,2014-02-26 08:00,2014-03-26 17:00,2014-02-26 08:00,2014-03-26 17:00,2014-03-27 08:00,2014-04-24 17:00,,PT_Normal,,,,,8Tvuece+TdiXy0T42xJIsQ,,,,N,0,0,,,2013-02-16 15:54,2013-02-16 15:56,admin,admin
503812,6359,125289,13662,0,N,N,N,CP_Drtn,TT_Task,DT_FixedDUR2,TK_NotStart,DUKHCONP1AZ3ELGF4015,Install. of CAMS & Fire Fighting Accessories,8178,240,0,200,0,1075.2,1075.2,200,0,0,0,,,,2014-03-16 08:00,2014-04-13 17:00,,2014-02-08 08:00,2014-03-09 17:00,2014-02-08 08:00,2014-03-09 17:00,2014-02-08 08:00,2014-03-09 17:00,2014-03-16 08:00,2014-04-13 17:00,,PT_Normal,,,,,hzKZGuIwQW+4f8xIAU9+YA,,,,N,0,0,,,2013-02-16 15:54,2013-02-16 15:56,admin,admin
503813,6359,125289,13662,0,N,N,N,CP_Drtn,TT_Task,DT_FixedDUR2,TK_NotStart,DUKHCONP1AZ3ELGF4030,Installation of Telephone System,8178,144,40,160,0,520,520,160,0,0,0,,,,2014-03-19 08:00,2014-04-10 17:00,,2014-02-26 08:00,2014-03-20 17:00,2014-02-26 08:00,2014-03-20 17:00,2014-02-26 08:00,2014-03-20 17:00,2014-03-19 08:00,2014-04-10 17:00,,PT_Normal,,,,,dx9NQ/d2TQeIJqvA0krb1Q,,,,N,0,0,,,2013-02-16 15:54,2013-02-16 15:56,admin,admin
503814,6359,125289,13662,0,N,N,N,CP_Drtn,TT_Task,DT_FixedDUR2,TK_NotStart,DUKHCONP1AZ3ELGF4000,Fixing of wall conduits & switch socket boxes,8178,216,0,200,0,1222.4,1222.4,200,0,0,0,,,,2013-12-17 08:00,2014-01-15 17:00,,2013-11-16 08:00,2013-12-14 17:00,2013-11-16 08:00,2013-12-14 17:00,2013-11-16 08:00,2013-12-14 17:00,2013-12-17 08:00,2014-01-15 17:00,,PT_Normal,,,,,QxHIJ5esSSyAbimiDVg+yg,,,,N,0,0,,,2013-02-16 15:54,2013-02-16 15:56,admin,admin
503815,6359,125289,13662,0,N,N,N,CP_Drtn,TT_Task,DT_FixedDUR2,TK_NotStart,DUKHCONP1AZ3ELGF4005,Cable tray & trunking installation,8178,360,0,160,0,1318.4,1318.4,160,0,0,0,,,,2014-01-20 08:00,2014-02-12 17:00,,2013-11-27 08:00,2013-12-21 17:00,2013-11-27 08:00,2013-12-21 17:00,2013-11-27 08:00,2013-12-21 17:00,2014-01-20 08:00,2014-02-12 17:00,,PT_Normal,,,,,9kWcmaUKR5KNMXNFReeyIw,,,,N,0,0,,,2013-02-16 15:54,2013-02-16 15:56,admin,admin
503816,6359,125290,13662,0,N,N,N,CP_Drtn,TT_Task,DT_FixedDUR2,TK_NotStart,DUKHCONP1AZ3ELRF4070,Installation of Isolator,8178,8,0,144,0,412.8,412.8,144,0,0,0,,,,2014-04-16 08:00,2014-05-06 17:00,,2014-04-15 08:00,2014-05-05 17:00,2014-04-15 08:00,2014-05-05 17:00,2014-04-15 08:00,2014-05-05 17:00,2014-04-16 08:00,2014-05-06 17:00,,PT_Normal,,,,,IlmxXDN3Qv+f/lsi946a4A,,,,N,0,0,,,2013-02-16 15:54,2013-02-16 15:56,admin,admin
503817,6359,125290,13662,0,N,N,N,CP_Drtn,TT_Task,DT_FixedDUR2,TK_NotStart,DUKHCONP1AZ3ELRF4075,Installation of TV Dish Antenna,8178,8,8,184,0,732.8,732.8,184,0,0,0,,,,2014-04-22 08:00,2014-05-18 17:00,,2014-04-21 08:00,2014-05-17 17:00,2014-04-21 08:00,2014-05-17 17:00,2014-04-21 08:00,2014-05-17 17:00,2014-04-22 08:00,2014-05-18 17:00,,PT_Normal,,,,,+EBdy5x8TjSkWU/tiFvnXA,,,,N,0,0,,,2013-02-16 15:54,2013-02-23 09:03,admin,admin
503818,6359,125291,13662,0,N,N,N,CP_Drtn,TT_Task,DT_FixedDUR2,TK_NotStart,DUKHCONP1AZ3ELFF4040,Cable tray & trunking installation,8178,232,16,160,0,1318.4,1318.4,160,0,0,0,,,,2014-02-13 08:00,2014-03-08 17:00,,2014-01-09 08:00,2014-02-01 17:00,2014-01-09 08:00,2014-02-01 17:00,2014-01-09 08:00,2014-02-01 17:00,2014-02-13 08:00,2014-03-08 17:00,,PT_Normal,,,,,Rf3A7PTkQp6NpjiWbqmIig,,,,N,0,0,,,2013-02-16 15:54,2013-02-16 15:56,admin,admin
503819,6359,125291,13662,0,N,N,N,CP_Drtn,TT_Task,DT_FixedDUR2,TK_NotStart,DUKHCONP1AZ3ELFF4045,Installation of wiring & Main Cabling,8178,216,0,200,0,296,296,200,0,0,0,,,,2014-02-22 08:00,2014-03-22 17:00,,2014-01-20 08:00,2014-02-18 17:00,2014-01-20 08:00,2014-02-18 17:00,2014-01-20 08:00,2014-02-18 17:00,2014-02-22 08:00,2014-03-22 17:00,,PT_Normal,,,,,IAJVrwVmTyy6W+cQHVBclQ,,,,N,0,0,,,2013-02-16 15:54,2013-02-16 15:56,admin,admin
503820,6359,125291,13662,0,N,N,N,CP_Drtn,TT_Task,DT_FixedDUR2,TK_NotStart,DUKHCONP1AZ3ELFF4060,"Installation  of DBS,MCCB Accessories.",8178,24,16,160,0,227.2,227.2,160,0,0,0,,,,2014-03-27 08:00,2014-04-19 17:00,,2014-03-24 08:00,2014-04-15 17:00,2014-03-24 08:00,2014-04-15 17:00,2014-03-24 08:00,2014-04-15 17:00,2014-03-27 08:00,2014-04-19 17:00,,PT_Normal,,,,,wxSXO2W4SfWIQqVb/jSqUg,,,,N,0,0,,,2013-02-16 15:54,2013-02-16 15:56,admin,admin
503821,6359,125291,13662,0,N,N,N,CP_Drtn,TT_Task,DT_FixedDUR2,TK_NotStart,DUKHCONP1AZ3ELFF4065,Installation of Lighting fixtures & Accessories,8178,8,0,200,0,1651.2,1651.2,200,0,0,0,,,,2014-04-02 08:00,2014-04-30 17:00,,2014-04-01 08:00,2014-04-29 17:00,2014-04-01 08:00,2014-04-29 17:00,2014-04-01 08:00,2014-04-29 17:00,2014-04-02 08:00,2014-04-30 17:00,,PT_Normal,,,,,6cKOjNteRGWv4IfPrAMeWg,,,,N,0,0,,,2013-02-16 15:54,2013-02-16 15:56,admin,admin
503822,6359,125291,13662,0,N,N,N,CP_Drtn,TT_Task,DT_FixedDUR2,TK_NotStart,DUKHCONP1AZ3ELFF4055,Install. of CAMS & Fire Fighting Accessories,8178,8,0,200,0,1008,1008,200,0,0,0,,,,2014-03-22 08:00,2014-04-19 17:00,,2014-03-20 08:00,2014-04-17 17:00,2014-03-20 08:00,2014-04-17 17:00,2014-03-20 08:00,2014-04-17 17:00,2014-03-22 08:00,2014-04-19 17:00,,PT_Normal,,,,,fN38jdZaR9utm8ooePe/hA,,,,N,0,0,,,2013-02-16 15:54,2013-02-16 15:56,admin,admin
503823,6359,125291,13662,0,N,N,N,CP_Drtn,TT_Task,DT_FixedDUR2,TK_NotStart,DUKHCONP1AZ3ELFF4050,Installation of Telephone System,8178,88,80,200,0,451.2,451.2,200,0,0,0,,,,2014-03-31 08:00,2014-04-28 17:00,,2014-03-18 08:00,2014-04-15 17:00,2014-03-18 08:00,2014-04-15 17:00,2014-03-18 08:00,2014-04-15 17:00,2014-03-31 08:00,2014-04-28 17:00,,PT_Normal,,,,,Ksba++FARTyem7k77DKFag,,,,N,0,0,,,2013-02-16 15:54,2013-02-16 15:56,admin,admin
503824,6359,125291,13662,0,N,N,N,CP_Drtn,TT_Task,DT_FixedDUR2,TK_NotStart,DUKHCONP1AZ3ELFF4035,Fixing of wall conduits & switch socket boxes,8178,88,0,200,0,1222.4,1222.4,200,0,0,0,,,,2014-01-11 08:00,2014-02-08 17:00,,2013-12-29 08:00,2014-01-26 17:00,2013-12-29 08:00,2014-01-26 17:00,2013-12-29 08:00,2014-01-26 17:00,2014-01-11 08:00,2014-02-08 17:00,,PT_Normal,,,,,vcsgK46IRaGsX2cqZkvkRQ,,,,N,0,0,,,2013-02-16 15:54,2013-02-16 15:56,admin,admin
503825,6359,125293,13662,0,N,N,N,CP_Drtn,TT_Task,DT_FixedDUR2,TK_NotStart,DUKHCONP1AZ3PLRF4345,Installation of Plumbing pipes & fittings,8178,448,240,120,0,110.4,110.4,120,0,0,0,,,,2014-04-05 08:00,2014-04-21 17:00,,2014-01-28 08:00,2014-02-15 17:00,2014-01-28 08:00,2014-02-15 17:00,2014-01-28 08:00,2014-02-15 17:00,2014-04-05 08:00,2014-04-21 17:00,,PT_Normal,,,,,5/MlgPqBSuWjno2sWjrcJA,,,,N,0,0,,,2013-02-16 15:54,2013-02-16 15:56,admin,admin
503826,6359,125293,13662,0,N,N,N,CP_Drtn,TT_Task,DT_FixedDUR2,TK_NotStart,DUKHCONP1AZ3PLRF4350,Installation of Rain water Pipes,8178,208,80,120,0,67.2,67.2,120,0,0,0,,,,2014-04-14 08:00,2014-04-30 17:00,,2014-03-15 08:00,2014-03-31 17:00,2014-03-15 08:00,2014-03-31 17:00,2014-03-15 08:00,2014-03-31 17:00,2014-04-14 08:00,2014-04-30 17:00,,PT_Normal,,,,,/Ri15V0pR/iuUsbQB6MWZw,,,,N,0,0,,,2013-02-16 15:54,2013-02-16 15:56,admin,admin
503827,6359,125293,13662,0,N,N,N,CP_Drtn,TT_Task,DT_FixedDUR2,TK_NotStart,DUKHCONP1AZ3PLRF4355,Roof  Water Tank Installation & Connections,8178,8,0,200,0,336,336,200,0,0,0,,,,2014-04-20 08:00,2014-05-18 17:00,,2014-04-19 08:00,2014-05-17 17:00,2014-04-19 08:00,2014-05-17 17:00,2014-04-19 08:00,2014-05-17 17:00,2014-04-20 08:00,2014-05-18 17:00,,PT_Normal,,,,,337PuEDjRUePgcoO6JIhNA,,,,N,0,0,,,2013-02-16 15:54,2013-02-16 15:56,admin,admin
503828,6359,125294,13662,0,N,N,N,CP_Drtn,TT_Task,DT_FixedDUR2,TK_NotStart,DUKHCONP1AZ3PLFF4325,Installation of Plumbing pipes & testing,8178,0,0,144,0,441.6,441.6,144,0,0,0,,,,2014-01-09 08:00,2014-01-29 17:00,,2014-01-09 08:00,2014-01-29 17:00,2014-01-09 08:00,2014-01-29 17:00,2014-01-09 08:00,2014-01-29 17:00,2014-01-09 08:00,2014-01-29 17:00,,PT_Normal,,,,,BIkFv0sKQaSxDku6p9B5Ew,,,,Y,0,0,,,2013-02-16 15:54,2013-02-16 15:56,admin,admin
503829,6359,125294,13662,0,N,N,N,CP_Drtn,TT_Task,DT_FixedDUR2,TK_NotStart,DUKHCONP1AZ3PLFF4330,Installation of Drainage pipes & testing,8178,176,48,144,0,177.6,177.6,144,0,0,0,,,,2014-02-04 08:00,2014-02-25 17:00,,2014-01-09 08:00,2014-01-29 17:00,2014-01-09 08:00,2014-01-29 17:00,2014-01-09 08:00,2014-01-29 17:00,2014-02-04 08:00,2014-02-25 17:00,,PT_Normal,,,,,RzxJkot7SJSEt8rZykIr9w,,,,N,0,0,,,2013-02-16 15:54,2013-02-16 15:56,admin,admin
503830,6359,125294,13662,0,N,N,N,CP_Drtn,TT_Task,DT_FixedDUR2,TK_NotStart,DUKHCONP1AZ3PLFF4335,Sanitary Fittings & Accessories,8178,40,0,160,0,67.2,67.2,160,0,0,0,,,,2014-04-02 08:00,2014-04-24 17:00,,2014-03-27 08:00,2014-04-19 17:00,2014-03-27 08:00,2014-04-19 17:00,2014-03-27 08:00,2014-04-19 17:00,2014-04-02 08:00,2014-04-24 17:00,,PT_Normal,,,,,MpJHcsjxQUGmjw3LPf5B2g,,,,N,0,0,,,2013-02-16 15:54,2013-02-16 15:56,admin,admin
503831,6359,125294,13662,0,N,N,N,CP_Drtn,TT_Task,DT_FixedDUR2,TK_NotStart,DUKHCONP1AZ3PLFF4340,Installation of Water Heater,8178,40,32,120,0,67.2,67.2,120,0,0,0,,,,2014-04-14 08:00,2014-04-30 17:00,,2014-04-08 08:00,2014-04-24 17:00,2014-04-08 08:00,2014-04-24 17:00,2014-04-08 08:00,2014-04-24 17:00,2014-04-14 08:00,2014-04-30 17:00,,PT_Normal,,,,,lLMJYWbITSiFTHJM9PJnOQ,,,,N,0,0,,,2013-02-16 15:54,2013-02-16 15:56,admin,admin
503832,6359,125295,13662,0,N,N,N,CP_Drtn,TT_Task,DT_FixedDUR2,TK_NotStart,DUKHCONP1AZ3PLGF4305,Installation of Plumbing pipes & testing,8178,144,0,144,0,441.6,441.6,144,0,0,0,,,,2013-12-17 08:00,2014-01-07 17:00,,2013-11-26 08:00,2013-12-16 17:00,2013-11-26 08:00,2013-12-16 17:00,2013-11-26 08:00,2013-12-16 17:00,2013-12-17 08:00,2014-01-07 17:00,,PT_Normal,,,,,Z40noL4KTM21HEdG6cmbDQ,,,,N,0,0,,,2013-02-16 15:54,2013-02-16 15:56,admin,admin
503833,6359,125295,13662,0,N,N,N,CP_Drtn,TT_Task,DT_FixedDUR2,TK_NotStart,DUKHCONP1AZ3PLGF4310,Installation of Drainage pipes &testing,8178,312,104,144,0,177.6,177.6,144,0,0,0,,,,2014-01-12 08:00,2014-02-01 17:00,,2013-11-26 08:00,2013-12-16 17:00,2013-11-26 08:00,2013-12-16 17:00,2013-11-26 08:00,2013-12-16 17:00,2014-01-12 08:00,2014-02-01 17:00,,PT_Normal,,,,,W7/qFGf/S+2J34zywrXhYw,,,,N,0,0,,,2013-02-16 15:54,2013-02-16 15:56,admin,admin
503834,6359,125295,13662,0,N,N,N,CP_Drtn,TT_Task,DT_FixedDUR2,TK_NotStart,DUKHCONP1AZ3PLGF4315,Sanitary Fittings & Accessories,8178,360,0,160,0,134.4,134.4,160,0,0,0,,,,2014-04-20 08:00,2014-05-12 17:00,,2014-02-26 08:00,2014-03-20 17:00,2014-02-26 08:00,2014-03-20 17:00,2014-02-26 08:00,2014-03-20 17:00,2014-04-20 08:00,2014-05-12 17:00,,PT_Normal,,,,,UkSD2bhASqi71Igj1S2kDQ,,,,N,0,0,,,2013-02-16 15:54,2013-02-16 15:56,admin,admin
503835,6359,125295,13662,0,N,N,N,CP_Drtn,TT_Task,DT_FixedDUR2,TK_NotStart,DUKHCONP1AZ3PLGF4320,Installation of Water Heater,8178,360,80,120,0,134.4,134.4,120,0,0,0,,,,2014-05-01 08:00,2014-05-18 17:00,,2014-03-10 08:00,2014-03-26 17:00,2014-03-10 08:00,2014-03-26 17:00,2014-03-10 08:00,2014-03-26 17:00,2014-05-01 08:00,2014-05-18 17:00,,PT_Normal,,,,,dXKApJAxSdK6ip++Nk4N3g,,,,N,0,0,,,2013-02-16 15:54,2013-02-16 15:56,admin,admin
503836,6359,125295,13662,0,N,N,N,CP_Drtn,TT_Task,DT_FixedDUR2,TK_NotStart,DUKHCONP1AZ3PLUG4300,Drainage / Storm Pipes in Grade Slab,8178,0,0,128,0,67.2,67.2,128,0,0,0,,,,2013-07-31 08:00,2013-08-21 17:00,,2013-07-31 08:00,2013-08-21 17:00,2013-07-31 08:00,2013-08-21 17:00,2013-07-31 08:00,2013-08-21 17:00,2013-07-31 08:00,2013-08-21 17:00,,PT_Normal,,,,,8F9AXm9hTAi/3Cusoj3j6w,,,,Y,0,0,,,2013-02-16 15:54,2013-02-16 15:56,admin,admin
503837,6359,125297,13662,0,N,N,N,CP_Drtn,TT_Task,DT_FixedDUR2,TK_NotStart,DUKHCONP1AZ3ACFF4620,Fixing of Ventilation Equipments,8178,16,0,200,0,113.6,113.6,200,0,0,0,,,,2014-03-23 08:00,2014-04-20 17:00,,2014-03-20 08:00,2014-04-17 17:00,2014-03-20 08:00,2014-04-17 17:00,2014-03-20 08:00,2014-04-17 17:00,2014-03-23 08:00,2014-04-20 17:00,,PT_Normal,,,,,kCXPPv9USD+T/I8YepcxmA,,,,N,0,0,,,2013-02-16 15:54,2013-02-16 15:56,admin,admin
503838,6359,125297,13662,0,N,N,N,CP_Drtn,TT_Task,DT_FixedDUR2,TK_NotStart,DUKHCONP1AZ3ACFF4625,Fixing of Split AC,8178,16,0,160,0,296,296,160,0,0,0,,,,2014-04-13 08:00,2014-05-05 17:00,,2014-04-10 08:00,2014-05-03 17:00,2014-04-10 08:00,2014-05-03 17:00,2014-04-10 08:00,2014-05-03 17:00,2014-04-13 08:00,2014-05-05 17:00,,PT_Normal,,,,,y234jTZVSRGoGzIZBjjxyQ,,,,N,0,0,,,2013-02-16 15:54,2013-02-16 15:56,admin,admin
503839,6359,125297,13662,0,N,N,N,CP_Drtn,TT_Task,DT_FixedDUR2,TK_NotStart,DUKHCONP1AZ3ACFF4615,Installation AC Pipes,8178,216,40,160,0,977.6,977.6,160,0,0,0,,,,2014-03-04 08:00,2014-03-26 17:00,,2014-01-30 08:00,2014-02-23 17:00,2014-01-30 08:00,2014-02-23 17:00,2014-01-30 08:00,2014-02-23 17:00,2014-03-04 08:00,2014-03-26 17:00,,PT_Normal,,,,,kbDAFAolSlOnXBHDSABpHw,,,,N,0,0,,,2013-02-16 15:54,2013-02-16 15:56,admin,admin
503840,6359,125298,13662,0,N,N,N,CP_Drtn,TT_Task,DT_FixedDUR2,TK_NotStart,DUKHCONP1AZ3ACGF4600,Installation AC Pipes,8178,392,40,160,0,977.6,977.6,160,0,0,0,,,,2014-02-13 08:00,2014-03-08 17:00,,2013-12-16 08:00,2014-01-08 17:00,2013-12-16 08:00,2014-01-08 17:00,2013-12-16 08:00,2014-01-08 17:00,2014-02-13 08:00,2014-03-08 17:00,,PT_Normal,,,,,zkXQlwtrTBiSRoyDbk6bsQ,,,,N,0,0,,,2013-02-16 15:54,2013-02-16 15:56,admin,admin
503841,6359,125298,13662,0,N,N,N,CP_Drtn,TT_Task,DT_FixedDUR2,TK_NotStart,DUKHCONP1AZ3ACGF4605,Fixing of Ventilation Equipments,8178,256,0,200,0,182.4,182.4,200,0,0,0,,,,2014-03-18 08:00,2014-04-15 17:00,,2014-02-08 08:00,2014-03-09 17:00,2014-02-08 08:00,2014-03-09 17:00,2014-02-08 08:00,2014-03-09 17:00,2014-03-18 08:00,2014-04-15 17:00,,PT_Normal,,,,,GSldAfMFSlysqzZ+ucIJLA,,,,N,0,0,,,2013-02-16 15:54,2013-02-16 15:56,admin,admin
503842,6359,125298,13662,0,N,N,N,CP_Drtn,TT_Task,DT_FixedDUR2,TK_NotStart,DUKHCONP1AZ3ACGF4610,Fixing of Split AC,8178,256,40,160,0,296,296,160,0,0,0,,,,2014-04-08 08:00,2014-04-30 17:00,,2014-03-02 08:00,2014-03-24 17:00,2014-03-02 08:00,2014-03-24 17:00,2014-03-02 08:00,2014-03-24 17:00,2014-04-08 08:00,2014-04-30 17:00,,PT_Normal,,,,,veMJtz9XRw+EShgd7Kwmqw,,,,N,0,0,,,2013-02-16 15:54,2013-02-16 15:56,admin,admin
503843,6359,125299,13662,0,N,N,N,CP_Drtn,TT_Task,DT_FixedDUR2,TK_NotStart,DUKHCONP1AZ3ACRF4630,Installation of Refrigerant Pipes,8178,272,0,200,0,409.6,409.6,200,0,0,0,,,,2014-04-14 08:00,2014-05-12 17:00,,2014-03-05 08:00,2014-04-02 17:00,2014-03-05 08:00,2014-04-02 17:00,2014-03-05 08:00,2014-04-02 17:00,2014-04-14 08:00,2014-05-12 17:00,,PT_Normal,,,,,TmNd697VSHGNwMoC88TEMQ,,,,N,0,0,,,2013-02-16 15:54,2013-02-16 15:56,admin,admin
503844,6359,125299,13662,0,N,N,N,CP_Drtn,TT_Task,DT_FixedDUR2,TK_NotStart,DUKHCONP1AZ3ACRF4635,Installation of Condensing Unit,8178,24,0,200,0,568,568,200,0,0,0,,,,2014-04-20 08:00,2014-05-18 17:00,,2014-04-16 08:00,2014-05-14 17:00,2014-04-16 08:00,2014-05-14 17:00,2014-04-16 08:00,2014-05-14 17:00,2014-04-20 08:00,2014-05-18 17:00,,PT_Normal,,,,,g+vnwV8uQayuce1w2DwK5A,,,,N,0,0,,,2013-02-16 15:54,2013-02-16 15:56,admin,admin
503845,6359,125302,13662,0,N,N,N,CP_Drtn,TT_Task,DT_FixedDUR2,TK_NotStart,DUKHCONP1AZ5SLEX5105,Laying of Grass/ green area,8178,128,0,200,0,2744,2744,200,0,0,0,,,,2014-06-10 08:00,2014-07-08 17:00,,2014-05-22 08:00,2014-06-19 17:00,2014-05-22 08:00,2014-06-19 17:00,2014-05-22 08:00,2014-06-19 17:00,2014-06-10 08:00,2014-07-08 17:00,,PT_Normal,,,,,BaxbPgDtTx+gXGYJovuDKQ,,,,N,0,0,,,2013-02-16 15:54,2013-02-16 15:56,admin,admin
503846,6359,125302,13662,0,N,N,N,CP_Drtn,TT_Task,DT_FixedDUR2,TK_NotStart,DUKHCONP1AZ5SLEX5110,Laying of Palm tree,8178,128,128,200,0,168,168,200,0,0,0,,,,2014-06-17 08:00,2014-07-15 17:00,,2014-05-29 08:00,2014-06-26 17:00,2014-05-29 08:00,2014-06-26 17:00,2014-05-29 08:00,2014-06-26 17:00,2014-06-17 08:00,2014-07-15 17:00,,PT_Normal,,,,,ETlST7MMTQi8wrkJUxAC4w,,,,N,0,0,,,2013-02-16 15:54,2013-02-16 15:56,admin,admin
503847,6359,125303,13662,0,N,N,N,CP_Drtn,TT_Task,DT_FixedDUR2,TK_NotStart,DUKHCONP1AZ5WEEX5030,Excavation,8177,224,0,160,0,64,64,160,40,0,40,,,,2014-04-30 08:00,2014-05-22 17:00,,2014-03-29 08:00,2014-04-20 17:00,2014-03-29 08:00,2014-04-20 17:00,2014-03-29 08:00,2014-04-20 17:00,2014-04-30 08:00,2014-05-22 17:00,,PT_Normal,,,,,84vRq5OSRCCP+W+rajcBfA,,,,N,0,0,,,2013-02-16 15:54,2013-02-16 15:56,admin,admin
503848,6359,125303,13662,0,N,N,N,CP_Drtn,TT_Task,DT_FixedDUR2,TK_NotStart,DUKHCONP1AZ5WEEX5035,Construction of Raft,8165,224,0,200,0,840,840,200,0,0,0,,,,2014-05-06 08:00,2014-06-03 17:00,,2014-04-03 08:00,2014-05-01 17:00,2014-04-03 08:00,2014-05-01 17:00,2014-04-03 08:00,2014-05-01 17:00,2014-05-06 08:00,2014-06-03 17:00,,PT_Normal,,,,,CX7TlEzvQGqnYzx3P0fKYg,,,,N,0,0,,,2013-02-16 15:54,2013-02-16 15:56,admin,admin
503849,6359,125303,13662,0,N,N,N,CP_Drtn,TT_Task,DT_FixedDUR2,TK_NotStart,DUKHCONP1AZ5WEEX5040,Block works & Plastering,8168,224,0,200,0,512,512,200,0,0,0,,,,2014-05-15 08:00,2014-06-12 17:00,,2014-04-13 08:00,2014-05-11 17:00,2014-04-13 08:00,2014-05-11 17:00,2014-04-13 08:00,2014-05-11 17:00,2014-05-15 08:00,2014-06-12 17:00,,PT_Normal,,,,,ab1iSuJSRIO0wFsDoeZN1g,,,,N,0,0,,,2013-02-16 15:54,2013-02-16 15:56,admin,admin
503850,6359,125303,13662,0,N,N,N,CP_Drtn,TT_Task,DT_FixedDUR2,TK_NotStart,DUKHCONP1AZ5WEEX5045,Flooring & Painting,8178,224,72,200,0,232,232,200,0,0,0,,,,2014-05-22 08:00,2014-06-19 17:00,,2014-04-20 08:00,2014-05-18 17:00,2014-04-20 08:00,2014-05-18 17:00,2014-04-20 08:00,2014-05-18 17:00,2014-05-22 08:00,2014-06-19 17:00,,PT_Normal,,,,,rn2CUvVCQmymC31gfKiOgA,,,,N,0,0,,,2013-02-16 15:54,2013-02-16 15:56,admin,admin
503851,6359,125303,13662,0,N,N,N,CP_Drtn,TT_Task,DT_FixedDUR2,TK_NotStart,DUKHCONP1AZ5WEEX5050,Installation of Steel Gate,8178,152,72,160,0,56,56,160,0,0,0,,,,2014-06-04 08:00,2014-06-26 17:00,,2014-05-13 08:00,2014-06-04 17:00,2014-05-13 08:00,2014-06-04 17:00,2014-05-13 08:00,2014-06-04 17:00,2014-06-04 08:00,2014-06-26 17:00,,PT_Normal,,,,,AQ/DJPleSZiBEsmToSTAGQ,,,,N,0,0,,,2013-02-16 15:54,2013-02-16 15:56,admin,admin
503852,6359,125303,13662,0,N,N,N,CP_Drtn,TT_Task,DT_FixedDUR2,TK_NotStart,DUKHCONP1AZ5WEEX5060,Structural steel &  SS Shed cover installation,8178,80,0,200,0,336,336,200,0,0,0,,,,2014-06-10 08:00,2014-07-08 17:00,,2014-05-29 08:00,2014-06-26 17:00,2014-05-29 08:00,2014-06-26 17:00,2014-05-29 08:00,2014-06-26 17:00,2014-06-10 08:00,2014-07-08 17:00,,PT_Normal,,,,,LZVEX/sjTKy+R0mUNhB7lw,,,,N,0,0,,,2013-02-16 15:54,2013-02-16 15:56,admin,admin
503853,6359,125303,13662,0,N,N,N,CP_Drtn,TT_Task,DT_FixedDUR2,TK_NotStart,DUKHCONP1AZ5WEEX5065,"Install. of Water Tank,Chiller,Pump & Meter",8178,72,0,200,0,203.2,203.2,200,0,0,0,,,,2014-06-17 08:00,2014-07-15 17:00,,2014-06-07 08:00,2014-07-05 17:00,2014-06-07 08:00,2014-07-05 17:00,2014-06-07 08:00,2014-07-05 17:00,2014-06-17 08:00,2014-07-15 17:00,,PT_Normal,,,,,pu3mJn8mTj2oGnxiGj0eMg,,,,N,0,0,,,2013-02-16 15:54,2013-02-16 15:56,admin,admin
503854,6359,125304,13662,0,N,N,N,CP_Drtn,TT_Task,DT_FixedDUR2,TK_NotStart,DUKHCONP1AZ5MSEX5020,Construction Entrance Ramp,8164,128,0,200,0,656,656,200,0,0,0,,,,2014-05-03 08:00,2014-05-31 17:00,,2014-04-14 08:00,2014-05-12 17:00,2014-04-14 08:00,2014-05-12 17:00,2014-04-14 08:00,2014-05-12 17:00,2014-05-03 08:00,2014-05-31 17:00,,PT_Normal,,,,,GdTC8aqqTDy9ppiHqxEKpg,,,,N,0,0,,,2013-02-16 15:54,2013-02-16 15:56,admin,admin
503855,6359,125304,13662,0,N,N,N,CP_Drtn,TT_Task,DT_FixedDUR2,TK_NotStart,DUKHCONP1AZ5MSEX5025,SS.Handrails and Balustrades,8178,152,0,160,0,56,56,160,0,0,0,,,,2014-05-24 08:00,2014-06-15 17:00,,2014-05-01 08:00,2014-05-24 17:00,2014-05-01 08:00,2014-05-24 17:00,2014-05-01 08:00,2014-05-24 17:00,2014-05-24 08:00,2014-06-15 17:00,,PT_Normal,,,,,P2OQDPxgQ/6aanZ2BAuLIg,,,,N,0,0,,,2013-02-16 15:54,2013-02-16 15:56,admin,admin
503856,6359,125304,13662,0,N,N,N,CP_Drtn,TT_Task,DT_FixedDUR2,TK_NotStart,DUKHCONP1AZ5MSEX5015,Construction of grease Trap,8178,64,0,160,0,56,56,160,0,0,0,,,,2014-04-06 08:00,2014-04-28 17:00,,2014-03-27 08:00,2014-04-19 17:00,2014-03-27 08:00,2014-04-19 17:00,2014-03-27 08:00,2014-04-19 17:00,2014-04-06 08:00,2014-04-28 17:00,,PT_Normal,,,,,d43R3spNS9+MmGW6QtkFCQ,,,,N,0,0,,,2013-02-16 15:54,2013-02-16 15:56,admin,admin
503857,6359,125304,13662,0,N,N,N,CP_Drtn,TT_Task,DT_FixedDUR2,TK_NotStart,DUKHCONP1AZ5MSEX5000,Construction of Manholes,8172,64,0,200,0,528,528,200,0,0,0,,,,2014-03-03 08:00,2014-03-31 17:00,,2014-02-22 08:00,2014-03-22 17:00,2014-02-22 08:00,2014-03-22 17:00,2014-02-22 08:00,2014-03-22 17:00,2014-03-03 08:00,2014-03-31 17:00,,PT_Normal,,,,,O9xqvp7oQg2oJvEZI3ac2g,,,,N,0,0,,,2013-02-16 15:54,2013-02-16 15:56,admin,admin
503858,6359,125304,13662,0,N,N,N,CP_Drtn,TT_Task,DT_FixedDUR2,TK_NotStart,DUKHCONP1AZ5MSEX5005,"Construction  of Soak pit, Chambers",8172,64,0,200,0,176,176,200,0,0,0,,,,2014-03-17 08:00,2014-04-14 17:00,,2014-03-08 08:00,2014-04-05 17:00,2014-03-08 08:00,2014-04-05 17:00,2014-03-08 08:00,2014-04-05 17:00,2014-03-17 08:00,2014-04-14 17:00,,PT_Normal,,,,,ggWggXKBTIKRZID+izIuWA,,,,N,0,0,,,2013-02-16 15:54,2013-02-16 15:56,admin,admin
503859,6359,125304,13662,0,N,N,N,CP_Drtn,TT_Task,DT_FixedDUR2,TK_NotStart,DUKHCONP1AZ5MSEX5010,Telephone cable laying,8177,64,0,200,0,500,500,200,0,0,0,,,,2014-04-29 08:00,2014-05-27 17:00,,2014-04-20 08:00,2014-05-18 17:00,2014-04-20 08:00,2014-05-18 17:00,2014-04-20 08:00,2014-05-18 17:00,2014-04-29 08:00,2014-05-27 17:00,,PT_Normal,,,,,H4yiK8bqRoGOjYVTwbmlKw,,,,N,0,0,,,2013-02-16 15:54,2013-02-16 15:56,admin,admin
503860,6359,125304,13662,0,N,N,N,CP_Drtn,TT_Task,DT_FixedDUR2,TK_NotStart,DUKHCONP1AZ5MSEX5335,Aluminum Roll-up Shutter with 2m Wall,8178,736,64,200,0,400,400,200,0,0,0,,,,2014-10-14 08:00,2014-11-11 17:00,,2014-06-23 08:00,2014-07-21 17:00,2014-06-23 08:00,2014-07-21 17:00,2014-06-23 08:00,2014-07-21 17:00,2014-10-14 08:00,2014-11-11 17:00,,PT_Normal,,,,,PLtkaqTsTGisiUgCLABIUA,,,,N,0,0,,,2013-02-16 15:54,2013-02-16 16:44,admin,admin
503861,6359,125305,13662,0,N,N,N,CP_Drtn,TT_Task,DT_FixedDUR2,TK_NotStart,DUKHCONP1AZ5HDEX5090,kerb works,8173,128,0,160,0,344,344,160,0,0,0,,,,2014-05-17 08:00,2014-06-08 17:00,,2014-04-28 08:00,2014-05-20 17:00,2014-04-28 08:00,2014-05-20 17:00,2014-04-28 08:00,2014-05-20 17:00,2014-05-17 08:00,2014-06-08 17:00,,PT_Normal,,,,,FO+QQCk1TZqX5u+kIiCyQA,,,,N,0,0,,,2013-02-16 15:54,2013-02-16 15:56,admin,admin
503862,6359,125305,13662,0,N,N,N,CP_Drtn,TT_Task,DT_FixedDUR2,TK_NotStart,DUKHCONP1AZ5HDEX5095,Cobble Stone Works,8170,128,0,160,0,200,200,160,0,0,0,,,,2014-05-28 08:00,2014-06-19 17:00,,2014-05-10 08:00,2014-06-01 17:00,2014-05-10 08:00,2014-06-01 17:00,2014-05-10 08:00,2014-06-01 17:00,2014-05-28 08:00,2014-06-19 17:00,,PT_Normal,,,,,+J+CViXnQeOULYE3eOrdbw,,,,N,0,0,,,2013-02-16 15:54,2013-02-16 15:56,admin,admin
503863,6359,125305,13662,0,N,N,N,CP_Drtn,TT_Task,DT_FixedDUR2,TK_NotStart,DUKHCONP1AZ5HDEX5100,Interlock works,8174,128,0,160,0,232,232,160,0,0,0,,,,2014-06-04 08:00,2014-06-26 17:00,,2014-05-17 08:00,2014-06-08 17:00,2014-05-17 08:00,2014-06-08 17:00,2014-05-17 08:00,2014-06-08 17:00,2014-06-04 08:00,2014-06-26 17:00,,PT_Normal,,,,,HMynhg7bSJWYzvzJzE+WkA,,,,N,0,0,,,2013-02-16 15:54,2013-02-16 15:56,admin,admin
503864,6359,125306,13662,0,N,N,N,CP_Drtn,TT_Task,DT_FixedDUR2,TK_NotStart,DUKHCONP1AZ5PLTC8005,Pre-Commissioning & Testing of Plumbing Works,8178,0,0,200,0,3000,3000,200,0,0,0,,,,2014-07-16 08:00,2014-08-17 17:00,,2014-07-16 08:00,2014-08-17 17:00,2014-07-16 08:00,2014-08-17 17:00,2014-07-16 08:00,2014-08-17 17:00,2014-07-16 08:00,2014-08-17 17:00,,PT_Normal,,,,,dpGcRzphSf6tYhMqCHTmfw,,,,Y,0,0,,,2013-02-16 15:54,2013-02-16 15:56,admin,admin
503865,6359,125306,13662,0,N,N,N,CP_Drtn,TT_Task,DT_FixedDUR2,TK_NotStart,DUKHCONP1AZ5ACTC8000,Pre-Commissioning & Testing of AC Works,8178,0,0,200,0,1500,1500,200,0,0,0,,,,2014-07-16 08:00,2014-08-17 17:00,,2014-07-16 08:00,2014-08-17 17:00,2014-07-16 08:00,2014-08-17 17:00,2014-07-16 08:00,2014-08-17 17:00,2014-07-16 08:00,2014-08-17 17:00,,PT_Normal,,,,,9GBFuBzuTGKxLQfqlYNj+w,,,,Y,0,0,,,2013-02-16 15:54,2013-02-16 15:56,admin,admin
503866,6359,125306,13662,0,N,N,N,CP_Drtn,TT_Task,DT_FixedDUR2,TK_NotStart,DUKHCONP1AZ5ELTC8010,Pre-Commissioning & Testing of Electrical Works,8178,0,0,200,0,3000,3000,200,0,0,0,,,,2014-07-16 08:00,2014-08-17 17:00,,2014-07-16 08:00,2014-08-17 17:00,2014-07-16 08:00,2014-08-17 17:00,2014-07-16 08:00,2014-08-17 17:00,2014-07-16 08:00,2014-08-17 17:00,,PT_Normal,,,,,r3ZkyYijSvqnrcC1atlm4g,,,,Y,0,0,,,2013-02-16 15:54,2013-02-16 15:56,admin,admin
503867,6359,125309,13662,0,N,N,N,CP_Drtn,TT_Task,DT_FixedDUR2,TK_NotStart,DUKHCONP1AZ5ELGF4030,Installation of Telephone System,8178,144,40,160,0,520,520,160,0,0,0,,,,2014-05-17 08:00,2014-06-08 17:00,,2014-04-26 08:00,2014-05-18 17:00,2014-04-26 08:00,2014-05-18 17:00,2014-04-26 08:00,2014-05-18 17:00,2014-05-17 08:00,2014-06-08 17:00,,PT_Normal,,,,,vXI4wPK+S/KMxyUJbzkJuw,,,,N,0,0,,,2013-02-16 15:54,2013-02-16 15:56,admin,admin
503868,6359,125309,13662,0,N,N,N,CP_Drtn,TT_Task,DT_FixedDUR2,TK_NotStart,DUKHCONP1AZ5ELGF4000,Fixing of wall conduits & switch socket boxes,8178,216,0,200,0,1222.4,1222.4,200,0,0,0,,,,2014-02-16 08:00,2014-03-16 17:00,,2014-01-14 08:00,2014-02-12 17:00,2014-01-14 08:00,2014-02-12 17:00,2014-01-14 08:00,2014-02-12 17:00,2014-02-16 08:00,2014-03-16 17:00,,PT_Normal,,,,,ZsVnsLCJTsavwR5C6vSLbQ,,,,N,0,0,,,2013-02-16 15:54,2013-02-16 15:56,admin,admin
503869,6359,125309,13662,0,N,N,N,CP_Drtn,TT_Task,DT_FixedDUR2,TK_NotStart,DUKHCONP1AZ5ELGF4005,Cable tray & trunking installation,8178,360,0,160,0,1318.4,1318.4,160,0,0,0,,,,2014-03-20 08:00,2014-04-12 17:00,,2014-01-26 08:00,2014-02-18 17:00,2014-01-26 08:00,2014-02-18 17:00,2014-01-26 08:00,2014-02-18 17:00,2014-03-20 08:00,2014-04-12 17:00,,PT_Normal,,,,,PSaMnZgPQZuz0gz7xc1eDA,,,,N,0,0,,,2013-02-16 15:54,2013-02-16 15:56,admin,admin
503870,6359,125309,13662,0,N,N,N,CP_Drtn,TT_Task,DT_FixedDUR2,TK_NotStart,DUKHCONP1AZ5ELGF4010,Installation of wiring & Main Cabling,8178,360,216,200,0,296,296,200,0,0,0,,,,2014-03-29 08:00,2014-04-26 17:00,,2014-02-03 08:00,2014-03-04 17:00,2014-02-03 08:00,2014-03-04 17:00,2014-02-03 08:00,2014-03-04 17:00,2014-03-29 08:00,2014-04-26 17:00,,PT_Normal,,,,,XiKcvGSdSSGEJ+enq6MGFA,,,,N,0,0,,,2013-02-16 15:54,2013-02-16 15:56,admin,admin
503871,6359,125309,13662,0,N,N,N,CP_Drtn,TT_Task,DT_FixedDUR2,TK_NotStart,DUKHCONP1AZ5ELGF4020,"Installation  of DBS,MCCB Accessories.",8178,144,0,160,0,227.2,227.2,160,0,0,0,,,,2014-05-05 08:00,2014-05-27 17:00,,2014-04-14 08:00,2014-05-06 17:00,2014-04-14 08:00,2014-05-06 17:00,2014-04-14 08:00,2014-05-06 17:00,2014-05-05 08:00,2014-05-27 17:00,,PT_Normal,,,,,tt8IQu6bQEGfcptT8qH3Ww,,,,N,0,0,,,2013-02-16 15:54,2013-02-16 15:56,admin,admin
503872,6359,125309,13662,0,N,N,N,CP_Drtn,TT_Task,DT_FixedDUR2,TK_NotStart,DUKHCONP1AZ5ELGF4025,Installation of Lighting fixtures & Accessories,8178,200,0,200,0,1651.2,1651.2,200,0,0,0,,,,2014-05-25 08:00,2014-06-22 17:00,,2014-04-26 08:00,2014-05-24 17:00,2014-04-26 08:00,2014-05-24 17:00,2014-04-26 08:00,2014-05-24 17:00,2014-05-25 08:00,2014-06-22 17:00,,PT_Normal,,,,,/DmqOFfiQMibS3EeSMinZA,,,,N,0,0,,,2013-02-16 15:54,2013-02-16 15:56,admin,admin
503873,6359,125309,13662,0,N,N,N,CP_Drtn,TT_Task,DT_FixedDUR2,TK_NotStart,DUKHCONP1AZ5ELGF4015,Install. of CAMS & Fire Fighting Accessories,8178,240,0,200,0,1075.2,1075.2,200,0,0,0,,,,2014-05-13 08:00,2014-06-10 17:00,,2014-04-08 08:00,2014-05-06 17:00,2014-04-08 08:00,2014-05-06 17:00,2014-04-08 08:00,2014-05-06 17:00,2014-05-13 08:00,2014-06-10 17:00,,PT_Normal,,,,,ri/Z7+HbSkiUql5Vuxmb6A,,,,N,0,0,,,2013-02-16 15:54,2013-02-16 15:56,admin,admin
503874,6359,125310,13662,0,N,N,N,CP_Drtn,TT_Task,DT_FixedDUR2,TK_NotStart,DUKHCONP1AZ5ELRF4070,Installation of Isolator,8178,8,0,144,0,412.8,412.8,144,0,0,0,,,,2014-06-14 08:00,2014-07-03 17:00,,2014-06-12 08:00,2014-07-02 17:00,2014-06-12 08:00,2014-07-02 17:00,2014-06-12 08:00,2014-07-02 17:00,2014-06-14 08:00,2014-07-03 17:00,,PT_Normal,,,,,fxQXCvqHQqusZqgMpGB1gA,,,,N,0,0,,,2013-02-16 15:54,2013-02-16 15:56,admin,admin
503875,6359,125310,13662,0,N,N,N,CP_Drtn,TT_Task,DT_FixedDUR2,TK_NotStart,DUKHCONP1AZ5ELRF4075,Installation of TV Dish Antenna,8178,8,8,184,0,732.8,732.8,184,0,0,0,,,,2014-06-19 08:00,2014-07-15 17:00,,2014-06-18 08:00,2014-07-14 17:00,2014-06-18 08:00,2014-07-14 17:00,2014-06-18 08:00,2014-07-14 17:00,2014-06-19 08:00,2014-07-15 17:00,,PT_Normal,,,,,vIQgvQZkQ2alDUXu24tQIg,,,,N,0,0,,,2013-02-16 15:54,2013-02-23 09:03,admin,admin
503876,6359,125311,13662,0,N,N,N,CP_Drtn,TT_Task,DT_FixedDUR2,TK_NotStart,DUKHCONP1AZ5ELFF4035,Fixing of wall conduits & switch socket boxes,8178,88,0,200,0,1222.4,1222.4,200,0,0,0,,,,2014-03-11 08:00,2014-04-08 17:00,,2014-02-26 08:00,2014-03-26 17:00,2014-02-26 08:00,2014-03-26 17:00,2014-02-26 08:00,2014-03-26 17:00,2014-03-11 08:00,2014-04-08 17:00,,PT_Normal,,,,,1GkQ6ql0QOyiSnji5SGa1g,,,,N,0,0,,,2013-02-16 15:54,2013-02-16 15:56,admin,admin
503877,6359,125311,13662,0,N,N,N,CP_Drtn,TT_Task,DT_FixedDUR2,TK_NotStart,DUKHCONP1AZ5ELFF4040,Cable tray & trunking installation,8178,232,16,160,0,1318.4,1318.4,160,0,0,0,,,,2014-04-13 08:00,2014-05-05 17:00,,2014-03-10 08:00,2014-04-01 17:00,2014-03-10 08:00,2014-04-01 17:00,2014-03-10 08:00,2014-04-01 17:00,2014-04-13 08:00,2014-05-05 17:00,,PT_Normal,,,,,aE3hPSQjRfiQ2NbbwZtrqA,,,,N,0,0,,,2013-02-16 15:54,2013-02-16 15:56,admin,admin
503878,6359,125311,13662,0,N,N,N,CP_Drtn,TT_Task,DT_FixedDUR2,TK_NotStart,DUKHCONP1AZ5ELFF4045,Installation of wiring & Main Cabling,8178,216,0,200,0,296,296,200,0,0,0,,,,2014-04-21 08:00,2014-05-19 17:00,,2014-03-20 08:00,2014-04-17 17:00,2014-03-20 08:00,2014-04-17 17:00,2014-03-20 08:00,2014-04-17 17:00,2014-04-21 08:00,2014-05-19 17:00,,PT_Normal,,,,,cCVR33lRSDWn1p0lL5trjQ,,,,N,0,0,,,2013-02-16 15:54,2013-02-16 15:56,admin,admin
503879,6359,125311,13662,0,N,N,N,CP_Drtn,TT_Task,DT_FixedDUR2,TK_NotStart,DUKHCONP1AZ5ELFF4060,"Installation  of DBS,MCCB Accessories.",8178,24,16,160,0,227.2,227.2,160,0,0,0,,,,2014-05-25 08:00,2014-06-16 17:00,,2014-05-21 08:00,2014-06-12 17:00,2014-05-21 08:00,2014-06-12 17:00,2014-05-21 08:00,2014-06-12 17:00,2014-05-25 08:00,2014-06-16 17:00,,PT_Normal,,,,,1vurQqu8R/e0VkKRRZEDBA,,,,N,0,0,,,2013-02-16 15:54,2013-02-16 15:56,admin,admin
503880,6359,125311,13662,0,N,N,N,CP_Drtn,TT_Task,DT_FixedDUR2,TK_NotStart,DUKHCONP1AZ5ELFF4065,Installation of Lighting fixtures & Accessories,8178,8,0,200,0,1651.2,1651.2,200,0,0,0,,,,2014-05-31 08:00,2014-06-28 17:00,,2014-05-29 08:00,2014-06-26 17:00,2014-05-29 08:00,2014-06-26 17:00,2014-05-29 08:00,2014-06-26 17:00,2014-05-31 08:00,2014-06-28 17:00,,PT_Normal,,,,,EWeuwciKQai9CzVNZDPyTg,,,,N,0,0,,,2013-02-16 15:54,2013-02-16 15:56,admin,admin
503881,6359,125311,13662,0,N,N,N,CP_Drtn,TT_Task,DT_FixedDUR2,TK_NotStart,DUKHCONP1AZ5ELFF4055,Install. of CAMS & Fire Fighting Accessories,8178,8,0,200,0,1008,1008,200,0,0,0,,,,2014-05-19 08:00,2014-06-16 17:00,,2014-05-18 08:00,2014-06-15 17:00,2014-05-18 08:00,2014-06-15 17:00,2014-05-18 08:00,2014-06-15 17:00,2014-05-19 08:00,2014-06-16 17:00,,PT_Normal,,,,,gTNLhKU/R6Sh6gY0+r0t1g,,,,N,0,0,,,2013-02-16 15:54,2013-02-16 15:56,admin,admin
503882,6359,125311,13662,0,N,N,N,CP_Drtn,TT_Task,DT_FixedDUR2,TK_NotStart,DUKHCONP1AZ5ELFF4050,Installation of Telephone System,8178,64,56,200,0,451.2,451.2,200,0,0,0,,,,2014-05-28 08:00,2014-06-25 17:00,,2014-05-19 08:00,2014-06-16 17:00,2014-05-19 08:00,2014-06-16 17:00,2014-05-19 08:00,2014-06-16 17:00,2014-05-28 08:00,2014-06-25 17:00,,PT_Normal,,,,,a0zZ8tM1SeaLjKcHWCqf0w,,,,N,0,0,,,2013-02-16 15:54,2013-02-16 15:56,admin,admin
503883,6359,125313,13662,0,N,N,N,CP_Drtn,TT_Task,DT_FixedDUR2,TK_NotStart,DUKHCONP1AZ5PLFF4325,Installation of Plumbing pipes & testing,8178,0,0,144,0,441.6,441.6,144,0,0,0,,,,2014-03-10 08:00,2014-03-30 17:00,,2014-03-10 08:00,2014-03-30 17:00,2014-03-10 08:00,2014-03-30 17:00,2014-03-10 08:00,2014-03-30 17:00,2014-03-10 08:00,2014-03-30 17:00,,PT_Normal,,,,,oZiSLR3JQ6e4x62Mtdn4SQ,,,,Y,0,0,,,2013-02-16 15:54,2013-02-16 15:56,admin,admin
503884,6359,125313,13662,0,N,N,N,CP_Drtn,TT_Task,DT_FixedDUR2,TK_NotStart,DUKHCONP1AZ5PLFF4330,Installation of Drainage pipes & testing,8178,176,56,144,0,177.6,177.6,144,0,0,0,,,,2014-04-05 08:00,2014-04-24 17:00,,2014-03-10 08:00,2014-03-30 17:00,2014-03-10 08:00,2014-03-30 17:00,2014-03-10 08:00,2014-03-30 17:00,2014-04-05 08:00,2014-04-24 17:00,,PT_Normal,,,,,eBcoWufVSK+tivFMHZ9QRg,,,,N,0,0,,,2013-02-16 15:54,2013-02-16 15:56,admin,admin
503885,6359,125313,13662,0,N,N,N,CP_Drtn,TT_Task,DT_FixedDUR2,TK_NotStart,DUKHCONP1AZ5PLFF4335,Sanitary Fittings & Accessories,8178,40,0,160,0,67.2,67.2,160,0,0,0,,,,2014-05-31 08:00,2014-06-22 17:00,,2014-05-25 08:00,2014-06-16 17:00,2014-05-25 08:00,2014-06-16 17:00,2014-05-25 08:00,2014-06-16 17:00,2014-05-31 08:00,2014-06-22 17:00,,PT_Normal,,,,,ZqRxtiX6Q+2xERALHcga6Q,,,,N,0,0,,,2013-02-16 15:54,2013-02-16 15:56,admin,admin
503886,6359,125313,13662,0,N,N,N,CP_Drtn,TT_Task,DT_FixedDUR2,TK_NotStart,DUKHCONP1AZ5PLFF4340,Installation of Water Heater,8178,40,32,120,0,67.2,67.2,120,0,0,0,,,,2014-06-11 08:00,2014-06-28 17:00,,2014-06-05 08:00,2014-06-22 17:00,2014-06-05 08:00,2014-06-22 17:00,2014-06-05 08:00,2014-06-22 17:00,2014-06-11 08:00,2014-06-28 17:00,,PT_Normal,,,,,tTNZb7FmQ76+v/zCjmXSiQ,,,,N,0,0,,,2013-02-16 15:54,2013-02-16 15:56,admin,admin
503887,6359,125314,13662,0,N,N,N,CP_Drtn,TT_Task,DT_FixedDUR2,TK_NotStart,DUKHCONP1AZ5PLRF4345,Installation of Plumbing pipes & fittings,8178,448,240,120,0,110.4,110.4,120,0,0,0,,,,2014-06-02 08:00,2014-06-18 17:00,,2014-03-29 08:00,2014-04-14 17:00,2014-03-29 08:00,2014-04-14 17:00,2014-03-29 08:00,2014-04-14 17:00,2014-06-02 08:00,2014-06-18 17:00,,PT_Normal,,,,,XqWaPZK3QS6X9RKCS845ew,,,,N,0,0,,,2013-02-16 15:54,2013-02-16 15:56,admin,admin
503888,6359,125314,13662,0,N,N,N,CP_Drtn,TT_Task,DT_FixedDUR2,TK_NotStart,DUKHCONP1AZ5PLRF4350,Installation of Rain water Pipes,8178,208,80,120,0,67.2,67.2,120,0,0,0,,,,2014-06-11 08:00,2014-06-28 17:00,,2014-05-12 08:00,2014-05-28 17:00,2014-05-12 08:00,2014-05-28 17:00,2014-05-12 08:00,2014-05-28 17:00,2014-06-11 08:00,2014-06-28 17:00,,PT_Normal,,,,,xbC2J0AORdeaaSAOZbHaLQ,,,,N,0,0,,,2013-02-16 15:54,2013-02-16 15:56,admin,admin
503889,6359,125314,13662,0,N,N,N,CP_Drtn,TT_Task,DT_FixedDUR2,TK_NotStart,DUKHCONP1AZ5PLRF4355,Roof  Water Tank Installation & Connections,8178,8,0,200,0,336,336,200,0,0,0,,,,2014-06-17 08:00,2014-07-15 17:00,,2014-06-16 08:00,2014-07-14 17:00,2014-06-16 08:00,2014-07-14 17:00,2014-06-16 08:00,2014-07-14 17:00,2014-06-17 08:00,2014-07-15 17:00,,PT_Normal,,,,,fOzzMreURx6WnFimj1Qdtg,,,,N,0,0,,,2013-02-16 15:54,2013-02-16 15:56,admin,admin
503890,6359,125315,13662,0,N,N,N,CP_Drtn,TT_Task,DT_FixedDUR2,TK_NotStart,DUKHCONP1AZ5PLGF4305,Installation of Plumbing pipes & testing,8178,144,0,144,0,441.6,441.6,144,0,0,0,,,,2014-02-16 08:00,2014-03-08 17:00,,2014-01-25 08:00,2014-02-15 17:00,2014-01-25 08:00,2014-02-15 17:00,2014-01-25 08:00,2014-02-15 17:00,2014-02-16 08:00,2014-03-08 17:00,,PT_Normal,,,,,mAgG7YRqTKyA73fjlZA7mg,,,,N,0,0,,,2013-02-16 15:54,2013-02-16 15:56,admin,admin
503891,6359,125315,13662,0,N,N,N,CP_Drtn,TT_Task,DT_FixedDUR2,TK_NotStart,DUKHCONP1AZ5PLGF4310,Installation of Drainage pipes &testing,8178,168,104,144,0,177.6,177.6,144,0,0,0,,,,2014-02-19 08:00,2014-03-11 17:00,,2014-01-25 08:00,2014-02-15 17:00,2014-01-25 08:00,2014-02-15 17:00,2014-01-25 08:00,2014-02-15 17:00,2014-02-19 08:00,2014-03-11 17:00,,PT_Normal,,,,,2+4kaR1vRBmc5wjyzocmdA,,,,N,0,0,,,2013-02-16 15:54,2013-02-16 15:56,admin,admin
503892,6359,125315,13662,0,N,N,N,CP_Drtn,TT_Task,DT_FixedDUR2,TK_NotStart,DUKHCONP1AZ5PLGF4315,Sanitary Fittings & Accessories,8178,360,0,160,0,134.4,134.4,160,0,0,0,,,,2014-06-17 08:00,2014-07-09 17:00,,2014-04-26 08:00,2014-05-18 17:00,2014-04-26 08:00,2014-05-18 17:00,2014-04-26 08:00,2014-05-18 17:00,2014-06-17 08:00,2014-07-09 17:00,,PT_Normal,,,,,z1opUDO4T1mU3BlRgqGq4w,,,,N,0,0,,,2013-02-16 15:54,2013-02-16 15:56,admin,admin
503893,6359,125315,13662,0,N,N,N,CP_Drtn,TT_Task,DT_FixedDUR2,TK_NotStart,DUKHCONP1AZ5PLGF4320,Installation of Water Heater,8178,360,80,120,0,134.4,134.4,120,0,0,0,,,,2014-06-29 08:00,2014-07-15 17:00,,2014-05-07 08:00,2014-05-24 17:00,2014-05-07 08:00,2014-05-24 17:00,2014-05-07 08:00,2014-05-24 17:00,2014-06-29 08:00,2014-07-15 17:00,,PT_Normal,,,,,LjauT7fgQ0a5xmR/K64OSw,,,,N,0,0,,,2013-02-16 15:54,2013-02-16 15:56,admin,admin
503894,6359,125315,13662,0,N,N,N,CP_Drtn,TT_Task,DT_FixedDUR2,TK_NotStart,DUKHCONP1AZ5PLUG4300,Drainage / Storm Pipes in Grade Slab,8178,0,0,128,0,67.2,67.2,128,0,0,0,,,,2013-10-01 08:00,2013-10-21 17:00,,2013-10-01 08:00,2013-10-21 17:00,2013-10-01 08:00,2013-10-21 17:00,2013-10-01 08:00,2013-10-21 17:00,2013-10-01 08:00,2013-10-21 17:00,,PT_Normal,,,,,n2RV86MhRXqyQCscWpPHLQ,,,,Y,0,0,,,2013-02-16 15:54,2013-02-16 15:56,admin,admin
503895,6359,125317,13662,0,N,N,N,CP_Drtn,TT_Task,DT_FixedDUR2,TK_NotStart,DUKHCONP1AZ5ACRF4630,Installation of Refrigerant Pipes,8178,272,0,200,0,409.6,409.6,200,0,0,0,,,,2014-06-11 08:00,2014-07-09 17:00,,2014-05-03 08:00,2014-05-31 17:00,2014-05-03 08:00,2014-05-31 17:00,2014-05-03 08:00,2014-05-31 17:00,2014-06-11 08:00,2014-07-09 17:00,,PT_Normal,,,,,XFeHwb5jSP+cBMWutDfxiw,,,,N,0,0,,,2013-02-16 15:54,2013-02-16 15:56,admin,admin
503896,6359,125317,13662,0,N,N,N,CP_Drtn,TT_Task,DT_FixedDUR2,TK_NotStart,DUKHCONP1AZ5ACRF4635,Installation of Condensing Unit,8178,24,0,200,0,568,568,200,0,0,0,,,,2014-06-17 08:00,2014-07-15 17:00,,2014-06-14 08:00,2014-07-12 17:00,2014-06-14 08:00,2014-07-12 17:00,2014-06-14 08:00,2014-07-12 17:00,2014-06-17 08:00,2014-07-15 17:00,,PT_Normal,,,,,M4ei5OdHQHSMqnkC4v6EFg,,,,N,0,0,,,2013-02-16 15:54,2013-02-16 15:56,admin,admin
503897,6359,125318,13662,0,N,N,N,CP_Drtn,TT_Task,DT_FixedDUR2,TK_NotStart,DUKHCONP1AZ5ACFF4615,Installation AC Pipes,8178,216,40,160,0,977.6,977.6,160,0,0,0,,,,2014-05-01 08:00,2014-05-24 17:00,,2014-03-31 08:00,2014-04-22 17:00,2014-03-31 08:00,2014-04-22 17:00,2014-03-31 08:00,2014-04-22 17:00,2014-05-01 08:00,2014-05-24 17:00,,PT_Normal,,,,,dFqxfMLgQ4G80d31zke3HQ,,,,N,0,0,,,2013-02-16 15:54,2013-02-16 15:56,admin,admin
503898,6359,125318,13662,0,N,N,N,CP_Drtn,TT_Task,DT_FixedDUR2,TK_NotStart,DUKHCONP1AZ5ACFF4620,Fixing of Ventilation Equipments,8178,16,0,200,0,113.6,113.6,200,0,0,0,,,,2014-05-20 08:00,2014-06-17 17:00,,2014-05-18 08:00,2014-06-15 17:00,2014-05-18 08:00,2014-06-15 17:00,2014-05-18 08:00,2014-06-15 17:00,2014-05-20 08:00,2014-06-17 17:00,,PT_Normal,,,,,0MaaR37xRw+qsPXcQgMKEg,,,,N,0,0,,,2013-02-16 15:54,2013-02-16 15:56,admin,admin
503899,6359,125318,13662,0,N,N,N,CP_Drtn,TT_Task,DT_FixedDUR2,TK_NotStart,DUKHCONP1AZ5ACFF4625,Fixing of Split AC,8178,16,0,160,0,296,296,160,0,0,0,,,,2014-06-10 08:00,2014-07-02 17:00,,2014-06-08 08:00,2014-06-30 17:00,2014-06-08 08:00,2014-06-30 17:00,2014-06-08 08:00,2014-06-30 17:00,2014-06-10 08:00,2014-07-02 17:00,,PT_Normal,,,,,Y5e4ecBBTLu4zfN8Sub4Tg,,,,N,0,0,,,2013-02-16 15:54,2013-02-16 15:56,admin,admin
503900,6359,125319,13662,0,N,N,N,CP_Drtn,TT_Task,DT_FixedDUR2,TK_NotStart,DUKHCONP1AZ5ACGF4600,Installation AC Pipes,8178,392,40,160,0,977.6,977.6,160,0,0,0,,,,2014-04-13 08:00,2014-05-05 17:00,,2014-02-15 08:00,2014-03-09 17:00,2014-02-15 08:00,2014-03-09 17:00,2014-02-15 08:00,2014-03-09 17:00,2014-04-13 08:00,2014-05-05 17:00,,PT_Normal,,,,,RlLq8SIWQfq+Mdqah0wwcQ,,,,N,0,0,,,2013-02-16 15:54,2013-02-16 15:56,admin,admin
503901,6359,125319,13662,0,N,N,N,CP_Drtn,TT_Task,DT_FixedDUR2,TK_NotStart,DUKHCONP1AZ5ACGF4605,Fixing of Ventilation Equipments,8178,256,0,200,0,182.4,182.4,200,0,0,0,,,,2014-05-15 08:00,2014-06-12 17:00,,2014-04-08 08:00,2014-05-06 17:00,2014-04-08 08:00,2014-05-06 17:00,2014-04-08 08:00,2014-05-06 17:00,2014-05-15 08:00,2014-06-12 17:00,,PT_Normal,,,,,01f8oBusTnSN5c7PzUWBAQ,,,,N,0,0,,,2013-02-16 15:54,2013-02-16 15:56,admin,admin
503902,6359,125319,13662,0,N,N,N,CP_Drtn,TT_Task,DT_FixedDUR2,TK_NotStart,DUKHCONP1AZ5ACGF4610,Fixing of Split AC,8178,256,40,160,0,296,296,160,0,0,0,,,,2014-06-05 08:00,2014-06-28 17:00,,2014-04-29 08:00,2014-05-21 17:00,2014-04-29 08:00,2014-05-21 17:00,2014-04-29 08:00,2014-05-21 17:00,2014-06-05 08:00,2014-06-28 17:00,,PT_Normal,,,,,jEmyVHAiQSSPzun08vIGXw,,,,N,0,0,,,2013-02-16 15:54,2013-02-16 15:56,admin,admin
503903,6359,125322,13662,0,N,N,N,CP_Drtn,TT_Task,DT_FixedDUR2,TK_NotStart,DUKHCONP1AZ5STFF2020,Column-Rebar & Formwork,8165,16,0,200,0,3580.5,3580.5,200,0,0,0,,,,2013-12-12 08:00,2014-01-11 17:00,,2013-12-10 08:00,2014-01-08 17:00,2013-12-10 08:00,2014-01-08 17:00,2013-12-10 08:00,2014-01-08 17:00,2013-12-12 08:00,2014-01-11 17:00,,PT_Normal,,,,,Nhv10ApQTPaWsirXMjNiwA,,,,N,0,0,,,2013-02-16 15:54,2013-02-16 15:56,admin,admin
503904,6359,125322,13662,0,N,N,N,CP_Drtn,TT_Task,DT_FixedDUR2,TK_NotStart,DUKHCONP1AZ5STFF2025,Column-Concrete,8167,32,0,192,0,224,224,192,0,0,0,,,,2013-12-25 08:00,2014-01-21 17:00,,2013-12-21 08:00,2014-01-16 17:00,2013-12-21 08:00,2014-01-16 17:00,2013-12-21 08:00,2014-01-16 17:00,2013-12-25 08:00,2014-01-21 17:00,,PT_Normal,,,,,WKae8j2ESWSAcp0+uW9pLA,,,,N,0,0,,,2013-02-16 15:54,2013-02-16 15:56,admin,admin
503905,6359,125322,13662,0,N,N,N,CP_Drtn,TT_Task,DT_FixedDUR2,TK_NotStart,DUKHCONP1AZ5STFF2030,"Beam, Stairs ,Slab-Rebar & Formwork",8165,32,0,200,0,16119.25,16119.25,200,0,0,0,,,,2014-01-09 08:00,2014-02-06 17:00,,2014-01-05 08:00,2014-02-02 17:00,2014-01-05 08:00,2014-02-02 17:00,2014-01-05 08:00,2014-02-02 17:00,2014-01-09 08:00,2014-02-06 17:00,,PT_Normal,,,,,FvdlaGvDT62fifdEsWcf0w,,,,N,0,0,,,2013-02-16 15:54,2013-02-16 15:56,admin,admin
503906,6359,125322,13662,0,N,N,N,CP_Drtn,TT_Task,DT_FixedDUR2,TK_NotStart,DUKHCONP1AZ5STFF2035,"Beam, Stairs ,Slab-Concrete",8167,32,0,112,0,1141,1141,112,0,0,0,,,,2014-01-26 08:00,2014-02-10 17:00,,2014-01-21 08:00,2014-02-05 17:00,2014-01-21 08:00,2014-02-05 17:00,2014-01-21 08:00,2014-02-05 17:00,2014-01-26 08:00,2014-02-10 17:00,,PT_Normal,,,,,siu9Sd61SbSQ5Gn/rbTXgQ,,,,N,0,0,,,2013-02-16 15:54,2013-02-16 15:56,admin,admin
503907,6359,125323,13662,0,N,N,N,CP_Drtn,TT_Task,DT_FixedDUR2,TK_NotStart,DUKHCONP1AZ5STGF2000,Column-Rebar & Formwork,8165,0,0,200,0,4046,4046,200,0,0,0,,,,2013-10-29 08:00,2013-11-26 17:00,,2013-10-29 08:00,2013-11-26 17:00,2013-10-29 08:00,2013-11-26 17:00,2013-10-29 08:00,2013-11-26 17:00,2013-10-29 08:00,2013-11-26 17:00,,PT_Normal,,,,,Oa2a3BHWQfC/u5jQgABCvw,,,,Y,0,0,,,2013-02-16 15:54,2013-02-16 15:56,admin,admin
503908,6359,125323,13662,0,N,N,N,CP_Drtn,TT_Task,DT_FixedDUR2,TK_NotStart,DUKHCONP1AZ5STGF2005,Column-Concrete,8167,16,0,192,0,255.5,255.5,192,0,0,0,,,,2013-11-09 08:00,2013-12-05 17:00,,2013-11-06 08:00,2013-12-03 17:00,2013-11-06 08:00,2013-12-03 17:00,2013-11-06 08:00,2013-12-03 17:00,2013-11-09 08:00,2013-12-05 17:00,,PT_Normal,,,,,DeiiRbxxTe26EYjbIPSpbg,,,,N,0,0,,,2013-02-16 15:54,2013-02-16 15:56,admin,admin
503909,6359,125323,13662,0,N,N,N,CP_Drtn,TT_Task,DT_FixedDUR2,TK_NotStart,DUKHCONP1AZ5STGF2010,"Beam, Stairs ,Slab-Rebar & Formwork",8165,16,0,200,0,16829.75,16829.75,200,0,0,0,,,,2013-11-24 08:00,2013-12-23 17:00,,2013-11-21 08:00,2013-12-21 17:00,2013-11-21 08:00,2013-12-21 17:00,2013-11-21 08:00,2013-12-21 17:00,2013-11-24 08:00,2013-12-23 17:00,,PT_Normal,,,,,ukpLHp5BQJaY+/rGdYMkjg,,,,N,0,0,,,2013-02-16 15:54,2013-02-16 15:56,admin,admin
503910,6359,125323,13662,0,N,N,N,CP_Drtn,TT_Task,DT_FixedDUR2,TK_NotStart,DUKHCONP1AZ5STGF2015,"Beam, Stairs ,Slab-Concrete",8167,16,0,112,0,1295,1295,112,0,0,0,,,,2013-12-10 08:00,2013-12-26 17:00,,2013-12-08 08:00,2013-12-24 17:00,2013-12-08 08:00,2013-12-24 17:00,2013-12-08 08:00,2013-12-24 17:00,2013-12-10 08:00,2013-12-26 17:00,,PT_Normal,,,,,4oKI9cBESn6Qp0+KFCh4FA,,,,N,0,0,,,2013-02-16 15:54,2013-02-16 15:56,admin,admin
503911,6359,125324,13662,0,N,N,N,CP_Drtn,TT_Task,DT_FixedDUR2,TK_NotStart,DUKHCONP1AZ5STRF2040,Column-Rebar & Formwork,8165,64,0,144,0,1205.75,1205.75,144,0,0,0,,,,2014-02-02 08:00,2014-02-23 17:00,,2014-01-23 08:00,2014-02-13 17:00,2014-01-23 08:00,2014-02-13 17:00,2014-01-23 08:00,2014-02-13 17:00,2014-02-02 08:00,2014-02-23 17:00,,PT_Normal,,,,,VHKmaX+JTDKWpahaOP7jcg,,,,N,0,0,,,2013-02-16 15:54,2013-02-16 15:56,admin,admin
503912,6359,125324,13662,0,N,N,N,CP_Drtn,TT_Task,DT_FixedDUR2,TK_NotStart,DUKHCONP1AZ5STRF2045,Column-Concrete,8167,64,0,136,0,52.5,52.5,136,0,0,0,,,,2014-02-05 08:00,2014-02-25 17:00,,2014-01-27 08:00,2014-02-16 17:00,2014-01-27 08:00,2014-02-16 17:00,2014-01-27 08:00,2014-02-16 17:00,2014-02-05 08:00,2014-02-25 17:00,,PT_Normal,,,,,aUIpbwTZRw+sQ/fCPUX5ng,,,,N,0,0,,,2013-02-16 15:54,2013-02-16 15:56,admin,admin
503913,6359,125324,13662,0,N,N,N,CP_Drtn,TT_Task,DT_FixedDUR2,TK_NotStart,DUKHCONP1AZ5STRF2050,Slab-Rebar & Formwork - Head Room,8165,64,0,160,0,2735.25,2735.25,160,0,0,0,,,,2014-02-08 08:00,2014-03-03 17:00,,2014-01-29 08:00,2014-02-22 17:00,2014-01-29 08:00,2014-02-22 17:00,2014-01-29 08:00,2014-02-22 17:00,2014-02-08 08:00,2014-03-03 17:00,,PT_Normal,,,,,fUXafp9IQaOB3uoBuUXkOQ,,,,N,0,0,,,2013-02-16 15:54,2013-02-16 15:56,admin,admin
503914,6359,125324,13662,0,N,N,N,CP_Drtn,TT_Task,DT_FixedDUR2,TK_NotStart,DUKHCONP1AZ5STRF2055,Slab-Concrete-Head room,8167,64,0,104,0,252,252,104,0,0,0,,,,2014-02-19 08:00,2014-03-05 17:00,,2014-02-09 08:00,2014-02-24 17:00,2014-02-09 08:00,2014-02-24 17:00,2014-02-09 08:00,2014-02-24 17:00,2014-02-19 08:00,2014-03-05 17:00,,PT_Normal,,,,,us27c54xSECtzY3r5QGWWA,,,,N,0,0,,,2013-02-16 15:54,2013-02-16 15:56,admin,admin
503915,6359,125324,13662,0,N,N,N,CP_Drtn,TT_Task,DT_FixedDUR2,TK_NotStart,DUKHCONP1AZ5STRF2060,Construction of Parapets,8168,448,32,200,0,2200,2200,200,0,0,0,,,,2014-04-19 08:00,2014-05-17 17:00,,2014-02-12 08:00,2014-03-12 17:00,2014-02-12 08:00,2014-03-12 17:00,2014-02-12 08:00,2014-03-12 17:00,2014-04-19 08:00,2014-05-17 17:00,,PT_Normal,,,,,XX49zBtxSQKoafRpzwvv7Q,,,,N,0,0,,,2013-02-16 15:54,2013-02-16 15:56,admin,admin
503916,6359,125324,13662,0,N,N,N,CP_Drtn,TT_Task,DT_FixedDUR2,TK_NotStart,DUKHCONP1AZ5STRF2065,Construction of up stands/Plinth,8165,416,0,200,0,554.75,554.75,200,0,0,0,,,,2014-04-24 08:00,2014-05-22 17:00,,2014-02-23 08:00,2014-03-23 17:00,2014-02-23 08:00,2014-03-23 17:00,2014-02-23 08:00,2014-03-23 17:00,2014-04-24 08:00,2014-05-22 17:00,,PT_Normal,,,,,ywK0dtnLTDyBA4O/0pQVww,,,,N,0,0,,,2013-02-16 15:54,2013-02-16 15:56,admin,admin
503917,6359,125326,13662,0,N,N,N,CP_Drtn,TT_Task,DT_FixedDUR2,TK_NotStart,DUKHCONP1AZ5STUG1035,Backfilling Upto Grade Beam Bottom,8177,0,0,200,0,1041,1041,200,825,0,825,,,,2013-08-22 08:00,2013-09-19 17:00,,2013-08-22 08:00,2013-09-19 17:00,2013-08-22 08:00,2013-09-19 17:00,2013-08-22 08:00,2013-09-19 17:00,2013-08-22 08:00,2013-09-19 17:00,,PT_Normal,,,,,iTohvNiZR9qDscgEBGurdw,,,,Y,0,0,,,2013-02-16 15:54,2013-02-16 15:56,admin,admin
503918,6359,125326,13662,0,N,N,N,CP_Drtn,TT_Task,DT_FixedDUR2,TK_NotStart,DUKHCONP1AZ5STUG1040,Construction of Grade Beams,8163,0,0,200,0,7568.75,7568.75,200,0,0,0,,,,2013-09-08 08:00,2013-10-06 17:00,,2013-09-08 08:00,2013-10-06 17:00,2013-09-08 08:00,2013-10-06 17:00,2013-09-08 08:00,2013-10-06 17:00,2013-09-08 08:00,2013-10-06 17:00,,PT_Normal,,,,,QUb58SxDTBmneCCX/dtiDA,,,,Y,0,0,,,2013-02-16 15:54,2013-02-16 15:56,admin,admin
503919,6359,125326,13662,0,N,N,N,CP_Drtn,TT_Task,DT_FixedDUR2,TK_NotStart,DUKHCONP1AZ5STUG1045,Construction of slab on grade,8163,0,0,200,0,4422,4422,200,0,0,0,,,,2013-10-10 08:00,2013-11-10 17:00,,2013-10-10 08:00,2013-11-10 17:00,2013-10-10 08:00,2013-11-10 17:00,2013-10-10 08:00,2013-11-10 17:00,2013-10-10 08:00,2013-11-10 17:00,,PT_Normal,,,,,vpsApO+uQ3aOYdZt4Rq3DA,,,,Y,0,0,,,2013-02-16 15:54,2013-02-16 15:56,admin,admin
503920,6359,125326,13662,0,N,N,N,CP_Drtn,TT_Task,DT_FixedDUR2,TK_NotStart,DUKHCONP1AZ5STUG1000,Footing Excavation,8177,0,0,200,0,1114,1114,200,524,0,524,,,,2013-06-11 08:00,2013-07-09 17:00,,2013-06-11 08:00,2013-07-09 17:00,2013-06-11 08:00,2013-07-09 17:00,2013-06-11 08:00,2013-07-09 17:00,2013-06-11 08:00,2013-07-09 17:00,,PT_Normal,,,,,r+m+5W+eRxypUQpNqswjoQ,,,,Y,0,0,,,2013-02-16 15:54,2013-02-16 15:56,admin,admin
503921,6359,125326,13662,0,N,N,N,CP_Drtn,TT_Task,DT_FixedDUR2,TK_NotStart,DUKHCONP1AZ5STUG1005,Footing Antitermite,8178,0,0,184,0,1584,1584,184,0,0,0,,,,2013-06-23 08:00,2013-07-18 17:00,,2013-06-23 08:00,2013-07-18 17:00,2013-06-23 08:00,2013-07-18 17:00,2013-06-23 08:00,2013-07-18 17:00,2013-06-23 08:00,2013-07-18 17:00,,PT_Normal,,,,,aPcRuf+5TqOY7Wcm/IOZ9Q,,,,Y,0,0,,,2013-02-16 15:54,2013-02-16 15:56,admin,admin
503922,6359,125326,13662,0,N,N,N,CP_Drtn,TT_Task,DT_FixedDUR2,TK_NotStart,DUKHCONP1AZ5STUG1010,Footing Blinding,8163,0,0,184,0,794.5,794.5,184,0,0,0,,,,2013-06-26 08:00,2013-07-22 17:00,,2013-06-26 08:00,2013-07-22 17:00,2013-06-26 08:00,2013-07-22 17:00,2013-06-26 08:00,2013-07-22 17:00,2013-06-26 08:00,2013-07-22 17:00,,PT_Normal,,,,,oziymU5oRw2AlglK+OWq8g,,,,Y,0,0,,,2013-02-16 15:54,2013-02-16 15:56,admin,admin
503923,6359,125326,13662,0,N,N,N,CP_Drtn,TT_Task,DT_FixedDUR2,TK_NotStart,DUKHCONP1AZ5STUG1015,Footing Waterproofing & Screed,8164,0,0,200,0,574.75,574.75,200,0,0,0,,,,2013-07-02 08:00,2013-07-30 17:00,,2013-07-02 08:00,2013-07-30 17:00,2013-07-02 08:00,2013-07-30 17:00,2013-07-02 08:00,2013-07-30 17:00,2013-07-02 08:00,2013-07-30 17:00,,PT_Normal,,,,,IEgJ7HeCQWiLVwvLaQHXIw,,,,Y,0,0,,,2013-02-16 15:54,2013-02-16 15:56,admin,admin
503924,6359,125326,13662,0,N,N,N,CP_Drtn,TT_Task,DT_FixedDUR2,TK_NotStart,DUKHCONP1AZ5STUG1020,Construction of foundations,8165,0,0,160,0,7778.75,7778.75,160,0,0,0,,,,2013-07-17 08:00,2013-08-08 17:00,,2013-07-17 08:00,2013-08-08 17:00,2013-07-17 08:00,2013-08-08 17:00,2013-07-17 08:00,2013-08-08 17:00,2013-07-17 08:00,2013-08-08 17:00,,PT_Normal,,,,,oDzRdASFTPKbjL8J9M9xjA,,,,Y,0,0,,,2013-02-16 15:54,2013-02-16 15:56,admin,admin
503925,6359,125326,13662,0,N,N,N,CP_Drtn,TT_Task,DT_FixedDUR2,TK_NotStart,DUKHCONP1AZ5STUG1025,Construction of neck of columns,8165,0,0,200,0,1606.5,1606.5,200,0,0,0,,,,2013-07-27 08:00,2013-08-27 17:00,,2013-07-27 08:00,2013-08-27 17:00,2013-07-27 08:00,2013-08-27 17:00,2013-07-27 08:00,2013-08-27 17:00,2013-07-27 08:00,2013-08-27 17:00,,PT_Normal,,,,,ENDJbHIlTE27Mq2C6+60lA,,,,Y,0,0,,,2013-02-16 15:54,2013-02-16 15:56,admin,admin
503926,6359,125326,13662,0,N,N,N,CP_Drtn,TT_Task,DT_FixedDUR2,TK_NotStart,DUKHCONP1AZ5STUG1030,Waterproofing Footing & Neck Column,8178,0,0,200,0,516,516,200,0,0,0,,,,2013-08-05 08:00,2013-09-05 17:00,,2013-08-05 08:00,2013-09-05 17:00,2013-08-05 08:00,2013-09-05 17:00,2013-08-05 08:00,2013-09-05 17:00,2013-08-05 08:00,2013-09-05 17:00,,PT_Normal,,,,,C9Nv8D0FTjmxs9bE/uJl7A,,,,Y,0,0,,,2013-02-16 15:54,2013-02-16 15:56,admin,admin
503927,6359,125329,13662,0,N,N,N,CP_Drtn,TT_Task,DT_FixedDUR2,TK_NotStart,DUKHCONP1AZ5AREL3665,External Plastering,8169,376,0,200,0,14275,14275,200,0,0,0,,,,2014-05-22 08:00,2014-06-19 17:00,,2014-03-29 08:00,2014-04-26 17:00,2014-03-29 08:00,2014-04-26 17:00,2014-03-29 08:00,2014-04-26 17:00,2014-05-22 08:00,2014-06-19 17:00,,PT_Normal,,,,,zZbkRXiVTj6a9QH8phlhUQ,,,,N,0,0,,,2013-02-16 15:54,2013-02-16 15:56,admin,admin
503928,6359,125329,13662,0,N,N,N,CP_Drtn,TT_Task,DT_FixedDUR2,TK_NotStart,DUKHCONP1AZ5AREL3670,External stone cladding works,8170,392,0,160,0,990,990,160,0,0,0,,,,2014-06-11 08:00,2014-07-03 17:00,,2014-04-15 08:00,2014-05-07 17:00,2014-04-15 08:00,2014-05-07 17:00,2014-04-15 08:00,2014-05-07 17:00,2014-06-11 08:00,2014-07-03 17:00,,PT_Normal,,,,,TornF2ORTwOl513vZ9hf2g,,,,N,0,0,,,2013-02-16 15:54,2013-02-16 15:56,admin,admin
503929,6359,125329,13662,0,N,N,N,CP_Drtn,TT_Task,DT_FixedDUR2,TK_NotStart,DUKHCONP1AZ5AREL3680,External Painting,8178,392,40,160,0,3784,3784,160,0,0,0,,,,2014-06-23 08:00,2014-07-15 17:00,,2014-04-27 08:00,2014-05-19 17:00,2014-04-27 08:00,2014-05-19 17:00,2014-04-27 08:00,2014-05-19 17:00,2014-06-23 08:00,2014-07-15 17:00,,PT_Normal,,,,,8Ro/5IU1Q9KbLIAptI2LrQ,,,,N,0,0,,,2013-02-16 15:54,2013-02-16 15:56,admin,admin
503930,6359,125330,13662,0,N,N,N,CP_Drtn,TT_Task,DT_FixedDUR2,TK_NotStart,DUKHCONP1AZ5ARRF3630,Leveling Screed for Waterproofing,8164,168,0,200,0,800,800,200,0,0,0,,,,2014-05-06 08:00,2014-06-03 17:00,,2014-04-12 08:00,2014-05-10 17:00,2014-04-12 08:00,2014-05-10 17:00,2014-04-12 08:00,2014-05-10 17:00,2014-05-06 08:00,2014-06-03 17:00,,PT_Normal,,,,,a7dLVe4DQCaC3bMLa9+Lyg,,,,N,0,0,,,2013-02-16 15:54,2013-02-16 15:56,admin,admin
503931,6359,125330,13662,0,N,N,N,CP_Drtn,TT_Task,DT_FixedDUR2,TK_NotStart,DUKHCONP1AZ5ARRF3635,Laying of Waterproofing Membrane,8178,168,0,200,0,1138.5,1138.5,200,0,0,0,,,,2014-05-10 08:00,2014-06-07 17:00,,2014-04-15 08:00,2014-05-13 17:00,2014-04-15 08:00,2014-05-13 17:00,2014-04-15 08:00,2014-05-13 17:00,2014-05-10 08:00,2014-06-07 17:00,,PT_Normal,,,,,+jspZd9LREejtvfpt3PhGg,,,,N,0,0,,,2013-02-16 15:54,2013-02-16 15:56,admin,admin
503932,6359,125330,13662,0,N,N,N,CP_Drtn,TT_Task,DT_FixedDUR2,TK_NotStart,DUKHCONP1AZ5ARRF3640,Installation of Insulation & Protection,8178,168,0,200,0,1408,1408,200,0,0,0,,,,2014-05-14 08:00,2014-06-11 17:00,,2014-04-20 08:00,2014-05-18 17:00,2014-04-20 08:00,2014-05-18 17:00,2014-04-20 08:00,2014-05-18 17:00,2014-05-14 08:00,2014-06-11 17:00,,PT_Normal,,,,,vE59bd0+Tkah4ZnWPsovrQ,,,,N,0,0,,,2013-02-16 15:54,2013-02-16 15:56,admin,admin
503933,6359,125330,13662,0,N,N,N,CP_Drtn,TT_Task,DT_FixedDUR2,TK_NotStart,DUKHCONP1AZ5ARRF3645,Lime Stone Chips & Paving slab Installation,8170,168,0,200,0,688.25,688.25,200,0,0,0,,,,2014-05-19 08:00,2014-06-16 17:00,,2014-04-24 08:00,2014-05-22 17:00,2014-04-24 08:00,2014-05-22 17:00,2014-04-24 08:00,2014-05-22 17:00,2014-05-19 08:00,2014-06-16 17:00,,PT_Normal,,,,,ACjb0seVSNGer+N7MRG11Q,,,,N,0,0,,,2013-02-16 15:54,2013-02-16 15:56,admin,admin
503934,6359,125330,13662,0,N,N,N,CP_Drtn,TT_Task,DT_FixedDUR2,TK_NotStart,DUKHCONP1AZ5ARRF3655,Installation of Pumps Protection cabinets,8178,168,0,160,0,616,616,160,0,0,0,,,,2014-06-11 08:00,2014-07-03 17:00,,2014-05-18 08:00,2014-06-09 17:00,2014-05-18 08:00,2014-06-09 17:00,2014-05-18 08:00,2014-06-09 17:00,2014-06-11 08:00,2014-07-03 17:00,,PT_Normal,,,,,MxxV3qITRWiiTRjIw/OnaQ,,,,N,0,0,,,2013-02-16 15:54,2013-02-16 15:56,admin,admin
503935,6359,125330,13662,0,N,N,N,CP_Drtn,TT_Task,DT_FixedDUR2,TK_NotStart,DUKHCONP1AZ5ARRF3650,Install. of Gal. Frame & Aluminum Slat Screen,8178,168,0,200,0,1046.5,1046.5,200,0,0,0,,,,2014-05-27 08:00,2014-06-24 17:00,,2014-05-03 08:00,2014-05-31 17:00,2014-05-03 08:00,2014-05-31 17:00,2014-05-03 08:00,2014-05-31 17:00,2014-05-27 08:00,2014-06-24 17:00,,PT_Normal,,,,,fvffPyC/RRCL++kM8ashPA,,,,N,0,0,,,2013-02-16 15:54,2013-02-16 15:56,admin,admin
503936,6359,125330,13662,0,N,N,N,CP_Drtn,TT_Task,DT_FixedDUR2,TK_NotStart,DUKHCONP1AZ5ARRF3660,Installation of Access Ladder,8178,208,208,120,0,176,176,120,0,0,0,,,,2014-06-29 08:00,2014-07-15 17:00,,2014-05-29 08:00,2014-06-15 17:00,2014-05-29 08:00,2014-06-15 17:00,2014-05-29 08:00,2014-06-15 17:00,2014-06-29 08:00,2014-07-15 17:00,,PT_Normal,,,,,UtcnL+CbQkyRDYMhrCjKUQ,,,,N,0,0,,,2013-02-16 15:54,2013-02-16 15:56,admin,admin
503937,6359,125332,13662,0,N,N,N,CP_Drtn,TT_Task,DT_FixedDUR2,TK_NotStart,DUKHCONP1AZ5ARGF3000,Block work,8168,144,0,200,0,9737.5,9737.5,200,0,0,0,,,,2014-01-29 08:00,2014-02-27 17:00,,2014-01-08 08:00,2014-02-05 17:00,2014-01-08 08:00,2014-02-05 17:00,2014-01-08 08:00,2014-02-05 17:00,2014-01-29 08:00,2014-02-27 17:00,,PT_Normal,,,,,0B8taPJSR9GVm9hbytTw1g,,,,N,0,0,,,2013-02-16 15:54,2013-02-16 15:56,admin,admin
503938,6359,125332,13662,0,N,N,N,CP_Drtn,TT_Task,DT_FixedDUR2,TK_NotStart,DUKHCONP1AZ5ARGF3005,Plastering work,8169,144,0,200,0,13637.5,13637.5,200,0,0,0,,,,2014-02-22 08:00,2014-03-22 17:00,,2014-01-30 08:00,2014-03-01 17:00,2014-01-30 08:00,2014-03-01 17:00,2014-01-30 08:00,2014-03-01 17:00,2014-02-22 08:00,2014-03-22 17:00,,PT_Normal,,,,,7YwDtIIIRLeArgRopPMEhA,,,,N,0,0,,,2013-02-16 15:54,2013-02-16 15:56,admin,admin
503939,6359,125332,13662,0,N,N,N,CP_Drtn,TT_Task,DT_FixedDUR2,TK_NotStart,DUKHCONP1AZ5ARGF3010,Flooring screed,8164,208,64,168,0,1580.25,1580.25,168,0,0,0,,,,2014-03-11 08:00,2014-04-03 17:00,,2014-02-08 08:00,2014-03-04 17:00,2014-02-08 08:00,2014-03-04 17:00,2014-02-08 08:00,2014-03-04 17:00,2014-03-11 08:00,2014-04-03 17:00,,PT_Normal,,,,,RGp/y6eyQMeRw+ONfND5kw,,,,N,0,0,,,2013-02-16 15:54,2013-02-16 15:56,admin,admin
503940,6359,125332,13662,0,N,N,N,CP_Drtn,TT_Task,DT_FixedDUR2,TK_NotStart,DUKHCONP1AZ5ARGF3015,Wet area waterproofing & Protection Screed,8178,144,0,120,0,247.5,247.5,120,0,0,0,,,,2014-03-11 08:00,2014-03-27 17:00,,2014-02-18 08:00,2014-03-06 17:00,2014-02-18 08:00,2014-03-06 17:00,2014-02-18 08:00,2014-03-06 17:00,2014-03-11 08:00,2014-03-27 17:00,,PT_Normal,,,,,SsH9zPy3QQ2wSOA0uD2ITg,,,,N,0,0,,,2013-02-16 15:54,2013-02-16 15:56,admin,admin
503941,6359,125332,13662,0,N,N,N,CP_Drtn,TT_Task,DT_FixedDUR2,TK_NotStart,DUKHCONP1AZ5ARGF3030,Paint First coat,8178,256,0,200,0,5425.75,5425.75,200,0,0,0,,,,2014-03-26 08:00,2014-04-23 17:00,,2014-02-17 08:00,2014-03-17 17:00,2014-02-17 08:00,2014-03-17 17:00,2014-02-17 08:00,2014-03-17 17:00,2014-03-26 08:00,2014-04-23 17:00,,PT_Normal,,,,,g4BgEJPTTruEdd3KEu9K/g,,,,N,0,0,,,2013-02-16 15:54,2013-02-16 15:56,admin,admin
503942,6359,125332,13662,0,N,N,N,CP_Drtn,TT_Task,DT_FixedDUR2,TK_NotStart,DUKHCONP1AZ5ARGF3020,Ceramic Wall Tiling,8170,144,0,200,0,4428.5,4428.5,200,0,0,0,,,,2014-03-17 08:00,2014-04-14 17:00,,2014-02-24 08:00,2014-03-24 17:00,2014-02-24 08:00,2014-03-24 17:00,2014-02-24 08:00,2014-03-24 17:00,2014-03-17 08:00,2014-04-14 17:00,,PT_Normal,,,,,bYCtbzniSVSbmA/sAKiHQg,,,,N,0,0,,,2013-02-16 15:54,2013-02-16 15:56,admin,admin
503943,6359,125332,13662,0,N,N,N,CP_Drtn,TT_Task,DT_FixedDUR2,TK_NotStart,DUKHCONP1AZ5ARGF3025,Porcelain Tile flooring,8170,144,0,200,0,1743.75,1743.75,200,0,0,0,,,,2014-03-23 08:00,2014-04-20 17:00,,2014-03-02 08:00,2014-03-30 17:00,2014-03-02 08:00,2014-03-30 17:00,2014-03-02 08:00,2014-03-30 17:00,2014-03-23 08:00,2014-04-20 17:00,,PT_Normal,,,,,tIdlO45aQWmn3hdjAaI93Q,,,,N,0,0,,,2013-02-16 15:54,2013-02-16 15:56,admin,admin
503944,6359,125332,13662,0,N,N,N,CP_Drtn,TT_Task,DT_FixedDUR2,TK_NotStart,DUKHCONP1AZ5ARGF3040,Cobble Tile flooring,8170,168,0,120,0,741,741,120,0,0,0,,,,2014-04-22 08:00,2014-05-08 17:00,,2014-03-29 08:00,2014-04-14 17:00,2014-03-29 08:00,2014-04-14 17:00,2014-03-29 08:00,2014-04-14 17:00,2014-04-22 08:00,2014-05-08 17:00,,PT_Normal,,,,,WGYvpqoHSxGm/Sa3Fl6QMQ,,,,N,0,0,,,2013-02-16 15:54,2013-02-16 15:56,admin,admin
503945,6359,125332,13662,0,N,N,N,CP_Drtn,TT_Task,DT_FixedDUR2,TK_NotStart,DUKHCONP1AZ5ARGF3035,Slate Tile Flooring & Skirting,8170,184,16,120,0,761.5,761.5,120,0,0,0,,,,2014-04-17 08:00,2014-05-04 17:00,,2014-03-22 08:00,2014-04-07 17:00,2014-03-22 08:00,2014-04-07 17:00,2014-03-22 08:00,2014-04-07 17:00,2014-04-17 08:00,2014-05-04 17:00,,PT_Normal,,,,,c5WmWK/4TuSwWLryYQNstw,,,,N,0,0,,,2013-02-16 15:54,2013-02-16 15:56,admin,admin
503946,6359,125332,13662,0,N,N,N,CP_Drtn,TT_Task,DT_FixedDUR2,TK_NotStart,DUKHCONP1AZ5ARGF3050,Granite - Stair case flooring & Skirting,8171,168,0,160,0,875,875,160,0,0,0,,,,2014-04-30 08:00,2014-05-22 17:00,,2014-04-06 08:00,2014-04-28 17:00,2014-04-06 08:00,2014-04-28 17:00,2014-04-06 08:00,2014-04-28 17:00,2014-04-30 08:00,2014-05-22 17:00,,PT_Normal,,,,,B2VQB5Z7TLOuj5TfwIS1EQ,,,,N,0,0,,,2013-02-16 15:54,2013-02-16 15:56,admin,admin
503947,6359,125332,13662,0,N,N,N,CP_Drtn,TT_Task,DT_FixedDUR2,TK_NotStart,DUKHCONP1AZ5ARGF3045,Fixing of Suspension systems,8178,144,0,160,0,1455.05,1455.05,160,0,0,0,,,,2014-04-09 08:00,2014-05-01 17:00,,2014-03-19 08:00,2014-04-10 17:00,2014-03-19 08:00,2014-04-10 17:00,2014-03-19 08:00,2014-04-10 17:00,2014-04-09 08:00,2014-05-01 17:00,,PT_Normal,,,,,5w5I0Th1Q7iJzX4YjvWgIg,,,,N,0,0,,,2013-02-16 15:54,2013-02-23 09:03,admin,admin
503948,6359,125332,13662,0,N,N,N,CP_Drtn,TT_Task,DT_FixedDUR2,TK_NotStart,DUKHCONP1AZ5ARGF3055,Aluminum tile false ceiling,8178,168,24,200,0,150,150,200,0,0,0,,,,2014-04-21 08:00,2014-05-19 17:00,,2014-03-27 08:00,2014-04-24 17:00,2014-03-27 08:00,2014-04-24 17:00,2014-03-27 08:00,2014-04-24 17:00,2014-04-21 08:00,2014-05-19 17:00,,PT_Normal,,,,,mtB3wUoJTGS17QpoE8KYfw,,,,N,0,0,,,2013-02-16 15:54,2013-02-16 15:56,admin,admin
503949,6359,125332,13662,0,N,N,N,CP_Drtn,TT_Task,DT_FixedDUR2,TK_NotStart,DUKHCONP1AZ5ARGF3060,Gypsum board false ceiling,8178,144,0,200,0,1335.15,1335.15,200,0,0,0,,,,2014-04-21 08:00,2014-05-19 17:00,,2014-03-31 08:00,2014-04-28 17:00,2014-03-31 08:00,2014-04-28 17:00,2014-03-31 08:00,2014-04-28 17:00,2014-04-21 08:00,2014-05-19 17:00,,PT_Normal,,,,,58KAQuP8SF+zENkAgMjydw,,,,N,0,0,,,2013-02-16 15:54,2013-02-16 15:56,admin,admin
503950,6359,125332,13662,0,N,N,N,CP_Drtn,TT_Task,DT_FixedDUR2,TK_NotStart,DUKHCONP1AZ5ARGF3065,Wooden door & PVC Door,8178,168,0,120,0,308,308,120,0,0,0,,,,2014-05-14 08:00,2014-05-31 17:00,,2014-04-20 08:00,2014-05-06 17:00,2014-04-20 08:00,2014-05-06 17:00,2014-04-20 08:00,2014-05-06 17:00,2014-05-14 08:00,2014-05-31 17:00,,PT_Normal,,,,,LX8JcwnNR9GuADzQ4d/CkA,,,,N,0,0,,,2013-02-16 15:54,2013-02-16 15:56,admin,admin
503951,6359,125332,13662,0,N,N,N,CP_Drtn,TT_Task,DT_FixedDUR2,TK_NotStart,DUKHCONP1AZ5ARGF3070,Aluminum doors,8178,168,0,120,0,176,176,120,0,0,0,,,,2014-05-20 08:00,2014-06-05 17:00,,2014-04-26 08:00,2014-05-12 17:00,2014-04-26 08:00,2014-05-12 17:00,2014-04-26 08:00,2014-05-12 17:00,2014-05-20 08:00,2014-06-05 17:00,,PT_Normal,,,,,AjshabO6Qtyau+irS6dpnw,,,,N,0,0,,,2013-02-16 15:54,2013-02-16 15:56,admin,admin
503952,6359,125332,13662,0,N,N,N,CP_Drtn,TT_Task,DT_FixedDUR2,TK_NotStart,DUKHCONP1AZ5ARGF3080,Aluminum windows,8178,248,40,160,0,162.25,162.25,160,0,0,0,,,,2014-06-08 08:00,2014-06-30 17:00,,2014-05-03 08:00,2014-05-25 17:00,2014-05-03 08:00,2014-05-25 17:00,2014-05-03 08:00,2014-05-25 17:00,2014-06-08 08:00,2014-06-30 17:00,,PT_Normal,,,,,oE3x+ghtQnaFJGp61L5T2Q,,,,N,0,0,,,2013-02-16 15:54,2013-02-16 15:56,admin,admin
503953,6359,125332,13662,0,N,N,N,CP_Drtn,TT_Task,DT_FixedDUR2,TK_NotStart,DUKHCONP1AZ5ARGF3075,Carpentry & Joinery Works,8178,168,0,160,0,572,572,160,0,0,0,,,,2014-05-26 08:00,2014-06-17 17:00,,2014-05-01 08:00,2014-05-24 17:00,2014-05-01 08:00,2014-05-24 17:00,2014-05-01 08:00,2014-05-24 17:00,2014-05-26 08:00,2014-06-17 17:00,,PT_Normal,,,,,iHquyGKWTsurW1SI4UPOIg,,,,N,0,0,,,2013-02-16 15:54,2013-02-16 15:56,admin,admin
503954,6359,125332,13662,0,N,N,N,CP_Drtn,TT_Task,DT_FixedDUR2,TK_NotStart,DUKHCONP1AZ5ARGF3090,Installation of Granite Counter Top,8171,168,0,120,0,176,176,120,0,0,0,,,,2014-06-08 08:00,2014-06-24 17:00,,2014-05-14 08:00,2014-05-31 17:00,2014-05-14 08:00,2014-05-31 17:00,2014-05-14 08:00,2014-05-31 17:00,2014-06-08 08:00,2014-06-24 17:00,,PT_Normal,,,,,6A4QU7M5SIeYaZUuU5ZUXA,,,,N,0,0,,,2013-02-16 15:54,2013-02-16 15:56,admin,admin
503955,6359,125332,13662,0,N,N,N,CP_Drtn,TT_Task,DT_FixedDUR2,TK_NotStart,DUKHCONP1AZ5ARGF3085,S.S.Balustrade,8178,208,40,160,0,262.5,262.5,160,0,0,0,,,,2014-06-09 08:00,2014-07-01 17:00,,2014-05-10 08:00,2014-06-01 17:00,2014-05-10 08:00,2014-06-01 17:00,2014-05-10 08:00,2014-06-01 17:00,2014-06-09 08:00,2014-07-01 17:00,,PT_Normal,,,,,FLDWK1C8Quu9KRCDH2R2hA,,,,N,0,0,,,2013-02-16 15:54,2013-02-16 15:56,admin,admin
503956,6359,125332,13662,0,N,N,N,CP_Drtn,TT_Task,DT_FixedDUR2,TK_NotStart,DUKHCONP1AZ5ARGF3095,Final Painting,8178,168,0,200,0,5425.75,5425.75,200,0,0,0,,,,2014-06-17 08:00,2014-07-15 17:00,,2014-05-24 08:00,2014-06-21 17:00,2014-05-24 08:00,2014-06-21 17:00,2014-05-24 08:00,2014-06-21 17:00,2014-06-17 08:00,2014-07-15 17:00,,PT_Normal,,,,,bn53RzkWQL2OQR0lPq+k5A,,,,N,0,0,,,2013-02-16 15:54,2013-02-16 15:56,admin,admin
503957,6359,125333,13662,0,N,N,N,CP_Drtn,TT_Task,DT_FixedDUR2,TK_NotStart,DUKHCONP1AZ5ARFF3300,Block work,8168,0,0,200,0,6387.5,6387.5,200,0,0,0,,,,2014-02-20 08:00,2014-03-20 17:00,,2014-02-20 08:00,2014-03-20 17:00,2014-02-20 08:00,2014-03-20 17:00,2014-02-20 08:00,2014-03-20 17:00,2014-02-20 08:00,2014-03-20 17:00,,PT_Normal,,,,,+DGPnMf/QhG2QnwUDUTFeg,,,,Y,0,0,,,2013-02-16 15:54,2013-02-16 15:56,admin,admin
503958,6359,125333,13662,0,N,N,N,CP_Drtn,TT_Task,DT_FixedDUR2,TK_NotStart,DUKHCONP1AZ5ARFF3305,Plastering work,8169,0,0,200,0,8899,8899,200,0,0,0,,,,2014-03-17 08:00,2014-04-14 17:00,,2014-03-17 08:00,2014-04-14 17:00,2014-03-17 08:00,2014-04-14 17:00,2014-03-17 08:00,2014-04-14 17:00,2014-03-17 08:00,2014-04-14 17:00,,PT_Normal,,,,,et69NYlqS6KMwVGDA7rYqg,,,,Y,0,0,,,2013-02-16 15:54,2013-02-16 15:56,admin,admin
503959,6359,125333,13662,0,N,N,N,CP_Drtn,TT_Task,DT_FixedDUR2,TK_NotStart,DUKHCONP1AZ5ARFF3310,Flooring screed,8164,96,96,168,0,1215.5,1215.5,168,0,0,0,,,,2014-04-08 08:00,2014-05-01 17:00,,2014-03-25 08:00,2014-04-17 17:00,2014-03-25 08:00,2014-04-17 17:00,2014-03-25 08:00,2014-04-17 17:00,2014-04-08 08:00,2014-05-01 17:00,,PT_Normal,,,,,3uuVuXdTT7aiUzCczxuyyQ,,,,N,0,0,,,2013-02-16 15:54,2013-02-16 15:56,admin,admin
503960,6359,125333,13662,0,N,N,N,CP_Drtn,TT_Task,DT_FixedDUR2,TK_NotStart,DUKHCONP1AZ5ARFF3315,Wet area waterproofing,8178,0,0,120,0,1215.5,1215.5,120,0,0,0,,,,2014-04-06 08:00,2014-04-22 17:00,,2014-04-06 08:00,2014-04-22 17:00,2014-04-06 08:00,2014-04-22 17:00,2014-04-06 08:00,2014-04-22 17:00,2014-04-06 08:00,2014-04-22 17:00,,PT_Normal,,,,,K3kzNsffQkK/OjfOoPqVLA,,,,Y,0,0,,,2013-02-16 15:54,2013-02-16 15:56,admin,admin
503961,6359,125333,13662,0,N,N,N,CP_Drtn,TT_Task,DT_FixedDUR2,TK_NotStart,DUKHCONP1AZ5ARFF3330,Paint First coat,8178,112,112,200,0,4742.75,4742.75,200,0,0,0,,,,2014-04-19 08:00,2014-05-17 17:00,,2014-04-02 08:00,2014-04-30 17:00,2014-04-02 08:00,2014-04-30 17:00,2014-04-02 08:00,2014-04-30 17:00,2014-04-19 08:00,2014-05-17 17:00,,PT_Normal,,,,,NoreR+RuTKa0k4PmiB1TTg,,,,N,0,0,,,2013-02-16 15:54,2013-02-16 15:56,admin,admin
503962,6359,125333,13662,0,N,N,N,CP_Drtn,TT_Task,DT_FixedDUR2,TK_NotStart,DUKHCONP1AZ5ARFF3320,Ceramic Wall Tiling,8170,0,0,200,0,1897.25,1897.25,200,0,0,0,,,,2014-04-13 08:00,2014-05-11 17:00,,2014-04-13 08:00,2014-05-11 17:00,2014-04-13 08:00,2014-05-11 17:00,2014-04-13 08:00,2014-05-11 17:00,2014-04-13 08:00,2014-05-11 17:00,,PT_Normal,,,,,Ka37s9RYR6SL4hTPZFqfbQ,,,,Y,0,0,,,2013-02-16 15:54,2013-02-16 15:56,admin,admin
503963,6359,125333,13662,0,N,N,N,CP_Drtn,TT_Task,DT_FixedDUR2,TK_NotStart,DUKHCONP1AZ5ARFF3325,Porcelain Tile flooring,8170,0,0,200,0,1743.75,1743.75,200,0,0,0,,,,2014-04-20 08:00,2014-05-18 17:00,,2014-04-20 08:00,2014-05-18 17:00,2014-04-20 08:00,2014-05-18 17:00,2014-04-20 08:00,2014-05-18 17:00,2014-04-20 08:00,2014-05-18 17:00,,PT_Normal,,,,,yACYLeSlSSSu0XwiSZdyjw,,,,Y,0,0,,,2013-02-16 15:54,2013-02-16 15:56,admin,admin
503964,6359,125333,13662,0,N,N,N,CP_Drtn,TT_Task,DT_FixedDUR2,TK_NotStart,DUKHCONP1AZ5ARFF3335,Slate Tile Flooring & Skirting,8170,64,64,120,0,261.5,261.5,120,0,0,0,,,,2014-05-17 08:00,2014-06-02 17:00,,2014-05-07 08:00,2014-05-24 17:00,2014-05-07 08:00,2014-05-24 17:00,2014-05-07 08:00,2014-05-24 17:00,2014-05-17 08:00,2014-06-02 17:00,,PT_Normal,,,,,j9GyVVoLTuuI0D5C/njxng,,,,N,0,0,,,2013-02-16 15:54,2013-02-16 15:56,admin,admin
503965,6359,125333,13662,0,N,N,N,CP_Drtn,TT_Task,DT_FixedDUR2,TK_NotStart,DUKHCONP1AZ5ARFF3350,Granite - Stair case flooring & Skirting,8171,16,16,160,0,875,875,160,0,0,0,,,,2014-05-13 08:00,2014-06-04 17:00,,2014-05-11 08:00,2014-06-02 17:00,2014-05-11 08:00,2014-06-02 17:00,2014-05-11 08:00,2014-06-02 17:00,2014-05-13 08:00,2014-06-04 17:00,,PT_Normal,,,,,G5hAN/aXTdGRMGpe+YJe5A,,,,N,0,0,,,2013-02-16 15:54,2013-02-16 15:56,admin,admin
503966,6359,125333,13662,0,N,N,N,CP_Drtn,TT_Task,DT_FixedDUR2,TK_NotStart,DUKHCONP1AZ5ARFF3345,Fixing of Suspension systems,8178,0,0,160,0,1305,1305,160,0,0,0,,,,2014-05-03 08:00,2014-05-25 17:00,,2014-05-03 08:00,2014-05-25 17:00,2014-05-03 08:00,2014-05-25 17:00,2014-05-03 08:00,2014-05-25 17:00,2014-05-03 08:00,2014-05-25 17:00,,PT_Normal,,,,,/hfpUA43Sy6pCR8JBbJAKQ,,,,Y,0,0,,,2013-02-16 15:54,2013-02-16 15:56,admin,admin
503967,6359,125333,13662,0,N,N,N,CP_Drtn,TT_Task,DT_FixedDUR2,TK_NotStart,DUKHCONP1AZ5ARFF3360,Gypsum board false ceiling,8178,0,0,200,0,1305,1305,200,0,0,0,,,,2014-05-10 08:00,2014-06-07 17:00,,2014-05-10 08:00,2014-06-07 17:00,2014-05-10 08:00,2014-06-07 17:00,2014-05-10 08:00,2014-06-07 17:00,2014-05-10 08:00,2014-06-07 17:00,,PT_Normal,,,,,8kiav5NnT0O+NIt2smw27g,,,,Y,0,0,,,2013-02-16 15:54,2013-02-16 15:56,admin,admin
503968,6359,125333,13662,0,N,N,N,CP_Drtn,TT_Task,DT_FixedDUR2,TK_NotStart,DUKHCONP1AZ5ARFF3365,Wooden door,8178,0,0,120,0,308,308,120,0,0,0,,,,2014-05-25 08:00,2014-06-10 17:00,,2014-05-25 08:00,2014-06-10 17:00,2014-05-25 08:00,2014-06-10 17:00,2014-05-25 08:00,2014-06-10 17:00,2014-05-25 08:00,2014-06-10 17:00,,PT_Normal,,,,,sjH0kZomS+OA3C9UhXynzw,,,,Y,0,0,,,2013-02-16 15:54,2013-02-16 15:56,admin,admin
503969,6359,125333,13662,0,N,N,N,CP_Drtn,TT_Task,DT_FixedDUR2,TK_NotStart,DUKHCONP1AZ5ARFF3370,Aluminum Door,8178,0,0,160,0,220,220,160,0,0,0,,,,2014-05-25 08:00,2014-06-16 17:00,,2014-05-25 08:00,2014-06-16 17:00,2014-05-25 08:00,2014-06-16 17:00,2014-05-25 08:00,2014-06-16 17:00,2014-05-25 08:00,2014-06-16 17:00,,PT_Normal,,,,,a9Rt5lP4S4C3/L9UpqEuKA,,,,Y,0,0,,,2013-02-16 15:54,2013-02-16 15:56,admin,admin
503970,6359,125333,13662,0,N,N,N,CP_Drtn,TT_Task,DT_FixedDUR2,TK_NotStart,DUKHCONP1AZ5ARFF3380,Aluminum windows,8178,32,32,160,0,162.25,162.25,160,0,0,0,,,,2014-06-05 08:00,2014-06-28 17:00,,2014-06-01 08:00,2014-06-23 17:00,2014-06-01 08:00,2014-06-23 17:00,2014-06-01 08:00,2014-06-23 17:00,2014-06-05 08:00,2014-06-28 17:00,,PT_Normal,,,,,JGC4EWcSSJGko24Q/Kr65A,,,,N,0,0,,,2013-02-16 15:54,2013-02-16 15:56,admin,admin
503971,6359,125333,13662,0,N,N,N,CP_Drtn,TT_Task,DT_FixedDUR2,TK_NotStart,DUKHCONP1AZ5ARFF3375,Carpentry & Joinery Works,8178,0,0,200,0,1100,1100,200,0,0,0,,,,2014-05-31 08:00,2014-06-28 17:00,,2014-05-31 08:00,2014-06-28 17:00,2014-05-31 08:00,2014-06-28 17:00,2014-05-31 08:00,2014-06-28 17:00,2014-05-31 08:00,2014-06-28 17:00,,PT_Normal,,,,,R00pGoEqRjuVCnAgx1htCw,,,,Y,0,0,,,2013-02-16 15:54,2013-02-16 15:56,admin,admin
503972,6359,125333,13662,0,N,N,N,CP_Drtn,TT_Task,DT_FixedDUR2,TK_NotStart,DUKHCONP1AZ5ARFF3390,Installation of Granite Counter Top,8171,8,8,160,0,88,88,160,0,0,0,,,,2014-06-12 08:00,2014-07-05 17:00,,2014-06-11 08:00,2014-07-03 17:00,2014-06-11 08:00,2014-07-03 17:00,2014-06-11 08:00,2014-07-03 17:00,2014-06-12 08:00,2014-07-05 17:00,,PT_Normal,,,,,IImk+bJ0S6erOJNw6uPEWQ,,,,N,0,0,,,2013-02-16 15:54,2013-02-16 15:56,admin,admin
503973,6359,125333,13662,0,N,N,N,CP_Drtn,TT_Task,DT_FixedDUR2,TK_NotStart,DUKHCONP1AZ5ARFF3385,Handrail &  Balustrade,8178,0,0,160,0,787.5,787.5,160,0,0,0,,,,2014-06-11 08:00,2014-07-03 17:00,,2014-06-11 08:00,2014-07-03 17:00,2014-06-11 08:00,2014-07-03 17:00,2014-06-11 08:00,2014-07-03 17:00,2014-06-11 08:00,2014-07-03 17:00,,PT_Normal,,,,,uVAyKULASUm0xWyun6L50g,,,,Y,0,0,,,2013-02-16 15:54,2013-02-16 15:56,admin,admin
503974,6359,125333,13662,0,N,N,N,CP_Drtn,TT_Task,DT_FixedDUR2,TK_NotStart,DUKHCONP1AZ5ARFF3395,Final Painting,8178,0,0,200,0,4742.75,4742.75,200,0,0,0,,,,2014-06-17 08:00,2014-07-15 17:00,,2014-06-17 08:00,2014-07-15 17:00,2014-06-17 08:00,2014-07-15 17:00,2014-06-17 08:00,2014-07-15 17:00,2014-06-17 08:00,2014-07-15 17:00,,PT_Normal,,,,,z9E6ppbfRa2a9HqJGCMmAw,,,,Y,0,0,,,2013-02-16 15:54,2013-02-16 15:56,admin,admin
503975,6359,125334,13662,0,N,N,N,CP_Drtn,TT_Task,DT_FixedDUR2,TK_NotStart,DUKHCONP1AZ5ARRF3600,Block work,8168,416,0,160,0,700,700,160,0,0,0,,,,2014-05-06 08:00,2014-05-28 17:00,,2014-03-06 08:00,2014-03-29 17:00,2014-03-06 08:00,2014-03-29 17:00,2014-03-06 08:00,2014-03-29 17:00,2014-05-06 08:00,2014-05-28 17:00,,PT_Normal,,,,,pXcDPJJsT66KLE2xgxjTKg,,,,N,0,0,,,2013-02-16 15:54,2013-02-16 15:56,admin,admin
503976,6359,125334,13662,0,N,N,N,CP_Drtn,TT_Task,DT_FixedDUR2,TK_NotStart,DUKHCONP1AZ5ARRF3605,Plastering work,8169,416,0,160,0,1786.5,1786.5,160,0,0,0,,,,2014-05-14 08:00,2014-06-05 17:00,,2014-03-15 08:00,2014-04-06 17:00,2014-03-15 08:00,2014-04-06 17:00,2014-03-15 08:00,2014-04-06 17:00,2014-05-14 08:00,2014-06-05 17:00,,PT_Normal,,,,,vcCWsuofS5C2gVzcWz2OAA,,,,N,0,0,,,2013-02-16 15:54,2013-02-16 15:56,admin,admin
503977,6359,125334,13662,0,N,N,N,CP_Drtn,TT_Task,DT_FixedDUR2,TK_NotStart,DUKHCONP1AZ5ARRF3610,Flooring screed,8164,456,0,120,0,136.5,136.5,120,0,0,0,,,,2014-06-03 08:00,2014-06-19 17:00,,2014-03-29 08:00,2014-04-14 17:00,2014-03-29 08:00,2014-04-14 17:00,2014-03-29 08:00,2014-04-14 17:00,2014-06-03 08:00,2014-06-19 17:00,,PT_Normal,,,,,8gj35HkTTNOMGegiaz2Gag,,,,N,0,0,,,2013-02-16 15:54,2013-02-16 15:56,admin,admin
503978,6359,125334,13662,0,N,N,N,CP_Drtn,TT_Task,DT_FixedDUR2,TK_NotStart,DUKHCONP1AZ5ARRF3695,Painting -Storage area,8178,456,0,160,0,1640,1640,160,0,0,0,,,,2014-06-11 08:00,2014-07-03 17:00,,2014-04-06 08:00,2014-04-28 17:00,2014-04-06 08:00,2014-04-28 17:00,2014-04-06 08:00,2014-04-28 17:00,2014-06-11 08:00,2014-07-03 17:00,,PT_Normal,,,,,HvwMFu6lRFqL8Lo8LsWOEg,,,,N,0,0,,,2013-02-16 15:54,2013-02-16 15:56,admin,admin
503979,6359,125334,13662,0,N,N,N,CP_Drtn,TT_Task,DT_FixedDUR2,TK_NotStart,DUKHCONP1AZ5ARRF3620,Epoxy Painting -Storage area,8178,456,456,120,0,48.5,48.5,120,0,0,0,,,,2014-06-29 08:00,2014-07-15 17:00,,2014-04-23 08:00,2014-05-10 17:00,2014-04-23 08:00,2014-05-10 17:00,2014-04-23 08:00,2014-05-10 17:00,2014-06-29 08:00,2014-07-15 17:00,,PT_Normal,,,,,R3/7nfkkSj6egnp5jNBCQw,,,,N,0,0,,,2013-02-16 15:54,2013-02-16 15:56,admin,admin
503980,6359,125337,13662,0,N,N,N,CP_Drtn,TT_Task,DT_FixedDUR2,TK_NotStart,DUKHCONP1AZ9WEEX5035,Construction of Raft,8165,384,0,200,0,1050,1050,200,0,0,0,,,,2014-09-03 08:00,2014-10-01 17:00,,2014-07-06 08:00,2014-08-06 17:00,2014-07-06 08:00,2014-08-06 17:00,2014-07-06 08:00,2014-08-06 17:00,2014-09-03 08:00,2014-10-01 17:00,,PT_Normal,,,,,0Aa03b59QDyx0QmOIQnAOQ,,,,N,0,0,,,2013-02-16 15:54,2013-02-16 15:56,admin,admin
503981,6359,125337,13662,0,N,N,N,CP_Drtn,TT_Task,DT_FixedDUR2,TK_NotStart,DUKHCONP1AZ9WEEX5040,Block works & Plastering,8168,384,0,200,0,640,640,200,0,0,0,,,,2014-09-13 08:00,2014-10-13 17:00,,2014-07-15 08:00,2014-08-16 17:00,2014-07-15 08:00,2014-08-16 17:00,2014-07-15 08:00,2014-08-16 17:00,2014-09-13 08:00,2014-10-13 17:00,,PT_Normal,,,,,TCRAmb3ERsWU/wgi6EkLRw,,,,N,0,0,,,2013-02-16 15:54,2013-02-16 15:56,admin,admin
503982,6359,125337,13662,0,N,N,N,CP_Drtn,TT_Task,DT_FixedDUR2,TK_NotStart,DUKHCONP1AZ9WEEX5045,Flooring & Painting,8178,384,232,200,0,290,290,200,0,0,0,,,,2014-09-20 08:00,2014-10-20 17:00,,2014-07-22 08:00,2014-08-23 17:00,2014-07-22 08:00,2014-08-23 17:00,2014-07-22 08:00,2014-08-23 17:00,2014-09-20 08:00,2014-10-20 17:00,,PT_Normal,,,,,Y0MfhXMRT0GBnoUW02ueGw,,,,N,0,0,,,2013-02-16 15:54,2013-02-16 15:56,admin,admin
503983,6359,125337,13662,0,N,N,N,CP_Drtn,TT_Task,DT_FixedDUR2,TK_NotStart,DUKHCONP1AZ9WEEX5050,Installation of Steel Gate,8178,152,72,160,0,70,70,160,0,0,0,,,,2014-10-02 08:00,2014-10-27 17:00,,2014-09-10 08:00,2014-10-02 17:00,2014-09-10 08:00,2014-10-02 17:00,2014-09-10 08:00,2014-10-02 17:00,2014-10-02 08:00,2014-10-27 17:00,,PT_Normal,,,,,3MwAIIkSQy+Rv8FnA55j7Q,,,,N,0,0,,,2013-02-16 15:54,2013-02-16 15:56,admin,admin
503984,6359,125337,13662,0,N,N,N,CP_Drtn,TT_Task,DT_FixedDUR2,TK_NotStart,DUKHCONP1AZ9WEEX5060,Structural steel &  SS Shed cover installation,8178,80,8,200,0,420,420,200,0,0,0,,,,2014-10-08 08:00,2014-11-08 17:00,,2014-09-27 08:00,2014-10-27 17:00,2014-09-27 08:00,2014-10-27 17:00,2014-09-27 08:00,2014-10-27 17:00,2014-10-08 08:00,2014-11-08 17:00,,PT_Normal,,,,,UbaTNGlyRZaWkg11Zfz/qw,,,,N,0,0,,,2013-02-16 15:54,2013-02-16 15:56,admin,admin
503985,6359,125337,13662,0,N,N,N,CP_Drtn,TT_Task,DT_FixedDUR2,TK_NotStart,DUKHCONP1AZ9WEEX5065,"Install. of Water Tank,Chiller,Pump & Meter",8178,72,72,200,0,254,254,200,0,0,0,,,,2014-10-18 08:00,2014-11-15 17:00,,2014-10-05 08:00,2014-11-04 17:00,2014-10-05 08:00,2014-11-04 17:00,2014-10-05 08:00,2014-11-04 17:00,2014-10-18 08:00,2014-11-15 17:00,,PT_Normal,,,,,8PrU+U3BTjOGmVaMqbeogg,,,,N,0,0,,,2013-02-16 15:54,2013-02-16 15:56,admin,admin
503986,6359,125337,13662,0,N,N,N,CP_Drtn,TT_Task,DT_FixedDUR2,TK_NotStart,DUKHCONP1AZ9WEEX5030,Excavation,8177,384,0,160,0,70,70,160,40,0,40,,,,2014-08-28 08:00,2014-09-20 17:00,,2014-06-30 08:00,2014-07-22 17:00,2014-06-30 08:00,2014-07-22 17:00,2014-06-30 08:00,2014-07-22 17:00,2014-08-28 08:00,2014-09-20 17:00,,PT_Normal,,,,,S1t6ffYhS1GeVvdGCInfgQ,,,,N,0,0,,,2013-02-16 15:54,2013-02-16 15:56,admin,admin
503987,6359,125338,13662,0,N,N,N,CP_Drtn,TT_Task,DT_FixedDUR2,TK_NotStart,DUKHCONP1AZ9HDEX5090,kerb works,8173,128,0,160,0,430,430,160,0,0,0,,,,2014-09-14 08:00,2014-10-06 17:00,,2014-08-26 08:00,2014-09-17 17:00,2014-08-26 08:00,2014-09-17 17:00,2014-08-26 08:00,2014-09-17 17:00,2014-09-14 08:00,2014-10-06 17:00,,PT_Normal,,,,,6xC1tf9GQcGmgpxIFY/Z6w,,,,N,0,0,,,2013-02-16 15:54,2013-02-16 15:56,admin,admin
503988,6359,125338,13662,0,N,N,N,CP_Drtn,TT_Task,DT_FixedDUR2,TK_NotStart,DUKHCONP1AZ9HDEX5095,Cobble Stone Works,8170,128,0,160,0,250,250,160,0,0,0,,,,2014-09-25 08:00,2014-10-20 17:00,,2014-09-07 08:00,2014-09-29 17:00,2014-09-07 08:00,2014-09-29 17:00,2014-09-07 08:00,2014-09-29 17:00,2014-09-25 08:00,2014-10-20 17:00,,PT_Normal,,,,,XV0O3MusRjGfwoKWSvEumg,,,,N,0,0,,,2013-02-16 15:54,2013-02-16 15:56,admin,admin
503989,6359,125338,13662,0,N,N,N,CP_Drtn,TT_Task,DT_FixedDUR2,TK_NotStart,DUKHCONP1AZ9HDEX5100,Interlock works,8174,128,0,160,0,290,290,160,0,0,0,,,,2014-10-02 08:00,2014-10-27 17:00,,2014-09-14 08:00,2014-10-06 17:00,2014-09-14 08:00,2014-10-06 17:00,2014-09-14 08:00,2014-10-06 17:00,2014-10-02 08:00,2014-10-27 17:00,,PT_Normal,,,,,9i5tmjb7SC6tKVIo0iY4Ag,,,,N,0,0,,,2013-02-16 15:54,2013-02-16 15:56,admin,admin
503990,6359,125339,13662,0,N,N,N,CP_Drtn,TT_Task,DT_FixedDUR2,TK_NotStart,DUKHCONP1AZ9SLEX5105,Laying of Grass/ green area,8178,128,0,200,0,3430,3430,200,0,0,0,,,,2014-10-08 08:00,2014-11-08 17:00,,2014-09-20 08:00,2014-10-20 17:00,2014-09-20 08:00,2014-10-20 17:00,2014-09-20 08:00,2014-10-20 17:00,2014-10-08 08:00,2014-11-08 17:00,,PT_Normal,,,,,auOD0ScVROOmmzoIbcmKOQ,,,,N,0,0,,,2013-02-16 15:54,2013-02-16 15:56,admin,admin
503991,6359,125339,13662,0,N,N,N,CP_Drtn,TT_Task,DT_FixedDUR2,TK_NotStart,DUKHCONP1AZ9SLEX5110,Laying of Palm tree,8178,128,128,200,0,210,210,200,0,0,0,,,,2014-10-18 08:00,2014-11-15 17:00,,2014-09-27 08:00,2014-10-27 17:00,2014-09-27 08:00,2014-10-27 17:00,2014-09-27 08:00,2014-10-27 17:00,2014-10-18 08:00,2014-11-15 17:00,,PT_Normal,,,,,CaE/o+xZTwy7EVDFLC5wmA,,,,N,0,0,,,2013-02-16 15:54,2013-02-16 15:56,admin,admin
503992,6359,125340,13662,0,N,N,N,CP_Drtn,TT_Task,DT_FixedDUR2,TK_NotStart,DUKHCONP1AZ9MSEX5335,Aluminum Roll-up Shutter with 2m Wall,8178,272,272,200,0,400,400,200,0,0,0,,,,2014-11-16 08:00,2014-12-14 17:00,,2014-10-05 08:00,2014-11-04 17:00,2014-10-05 08:00,2014-11-04 17:00,2014-10-05 08:00,2014-11-04 17:00,2014-11-16 08:00,2014-12-14 17:00,,PT_Normal,,,,,dyqQlptaRV29JmLfKGdVDw,,,,N,0,0,,,2013-02-16 15:54,2013-02-16 16:35,admin,admin
503993,6359,125340,13662,0,N,N,N,CP_Drtn,TT_Task,DT_FixedDUR2,TK_NotStart,DUKHCONP1AZ9MSEX5020,Construction Entrance Ramp,8164,128,0,200,0,820,820,200,0,0,0,,,,2014-08-31 08:00,2014-09-28 17:00,,2014-08-12 08:00,2014-09-09 17:00,2014-08-12 08:00,2014-09-09 17:00,2014-08-12 08:00,2014-09-09 17:00,2014-08-31 08:00,2014-09-28 17:00,,PT_Normal,,,,,QMvBqi2gTdCfz9XeusLl/g,,,,N,0,0,,,2013-02-16 15:54,2013-02-16 15:56,admin,admin
503994,6359,125340,13662,0,N,N,N,CP_Drtn,TT_Task,DT_FixedDUR2,TK_NotStart,DUKHCONP1AZ9MSEX5025,SS.Handrails and Balustrades,8178,152,0,160,0,70,70,160,0,0,0,,,,2014-09-21 08:00,2014-10-15 17:00,,2014-08-30 08:00,2014-09-21 17:00,2014-08-30 08:00,2014-09-21 17:00,2014-08-30 08:00,2014-09-21 17:00,2014-09-21 08:00,2014-10-15 17:00,,PT_Normal,,,,,88K2qyWcReqBSuazvfsTZQ,,,,N,0,0,,,2013-02-16 15:54,2013-02-16 15:56,admin,admin
503995,6359,125340,13662,0,N,N,N,CP_Drtn,TT_Task,DT_FixedDUR2,TK_NotStart,DUKHCONP1AZ9MSEX5015,Construction of grease Trap,8178,72,0,160,0,70,70,160,0,0,0,,,,2014-07-31 08:00,2014-08-26 17:00,,2014-07-21 08:00,2014-08-16 17:00,2014-07-21 08:00,2014-08-16 17:00,2014-07-21 08:00,2014-08-16 17:00,2014-07-31 08:00,2014-08-26 17:00,,PT_Normal,,,,,uWLWkwQYQAKCgM2PiFYjlQ,,,,N,0,0,,,2013-02-16 15:54,2013-02-16 15:56,admin,admin
503996,6359,125340,13662,0,N,N,N,CP_Drtn,TT_Task,DT_FixedDUR2,TK_NotStart,DUKHCONP1AZ9MSEX5000,Construction of Manholes,8172,72,0,200,0,660,660,200,0,0,0,,,,2014-06-28 08:00,2014-07-26 17:00,,2014-06-17 08:00,2014-07-15 17:00,2014-06-17 08:00,2014-07-15 17:00,2014-06-17 08:00,2014-07-15 17:00,2014-06-28 08:00,2014-07-26 17:00,,PT_Normal,,,,,arC4uHZTR92DK2dH5K+acQ,,,,N,0,0,,,2013-02-16 15:54,2013-02-16 15:56,admin,admin
503997,6359,125340,13662,0,N,N,N,CP_Drtn,TT_Task,DT_FixedDUR2,TK_NotStart,DUKHCONP1AZ9MSEX5005,"Construction  of Soak pit, Chambers",8172,72,0,200,0,220,220,200,0,0,0,,,,2014-07-12 08:00,2014-08-12 17:00,,2014-07-01 08:00,2014-07-29 17:00,2014-07-01 08:00,2014-07-29 17:00,2014-07-01 08:00,2014-07-29 17:00,2014-07-12 08:00,2014-08-12 17:00,,PT_Normal,,,,,pnm6cnLIRzOXmDGTUx9vkg,,,,N,0,0,,,2013-02-16 15:54,2013-02-16 15:56,admin,admin
503998,6359,125340,13662,0,N,N,N,CP_Drtn,TT_Task,DT_FixedDUR2,TK_NotStart,DUKHCONP1AZ9MSEX5010,Telephone cable laying,8177,72,0,200,0,500,500,200,0,0,0,,,,2014-08-27 08:00,2014-09-24 17:00,,2014-08-17 08:00,2014-09-14 17:00,2014-08-17 08:00,2014-09-14 17:00,2014-08-17 08:00,2014-09-14 17:00,2014-08-27 08:00,2014-09-24 17:00,,PT_Normal,,,,,fTtSliaETlCTqIL/Ic9aCg,,,,N,0,0,,,2013-02-16 15:54,2013-02-16 15:56,admin,admin
503999,6359,125341,13662,0,N,N,N,CP_Drtn,TT_Task,DT_FixedDUR2,TK_NotStart,DUKHCONP1AZ9ACTC8000,Pre-Commissioning & Testing of AC Works,8178,0,0,200,0,1500,1500,200,0,0,0,,,,2014-11-16 08:00,2014-12-14 17:00,,2014-11-16 08:00,2014-12-14 17:00,2014-11-16 08:00,2014-12-14 17:00,2014-11-16 08:00,2014-12-14 17:00,2014-11-16 08:00,2014-12-14 17:00,,PT_Normal,,,,,RnO8xAOpS7q9Y5yXsQVlxg,,,,Y,0,0,,,2013-02-16 15:54,2013-02-16 15:56,admin,admin
504000,6359,125341,13662,0,N,N,N,CP_Drtn,TT_Task,DT_FixedDUR2,TK_NotStart,DUKHCONP1AZ9ELTC8010,Pre-Commissioning & Testing of Electrical Works,8178,0,0,200,0,3000,3000,200,0,0,0,,,,2014-11-16 08:00,2014-12-14 17:00,,2014-11-16 08:00,2014-12-14 17:00,2014-11-16 08:00,2014-12-14 17:00,2014-11-16 08:00,2014-12-14 17:00,2014-11-16 08:00,2014-12-14 17:00,,PT_Normal,,,,,4/akdkDsSVWr1l94w9G7DA,,,,Y,0,0,,,2013-02-16 15:54,2013-02-16 15:56,admin,admin
504001,6359,125341,13662,0,N,N,N,CP_Drtn,TT_Task,DT_FixedDUR2,TK_NotStart,DUKHCONP1AZ9PLTC8005,Pre-Commissioning & Testing of Plumbing Works,8178,0,0,200,0,3000,3000,200,0,0,0,,,,2014-11-16 08:00,2014-12-14 17:00,,2014-11-16 08:00,2014-12-14 17:00,2014-11-16 08:00,2014-12-14 17:00,2014-11-16 08:00,2014-12-14 17:00,2014-11-16 08:00,2014-12-14 17:00,,PT_Normal,,,,,afFUzvO9RMOE4+jC+YBDug,,,,Y,0,0,,,2013-02-16 15:54,2013-02-16 15:56,admin,admin
504002,6359,125344,13662,0,N,N,N,CP_Drtn,TT_Task,DT_FixedDUR2,TK_NotStart,DUKHCONP1AZ9PLFF4325,Installation of Plumbing pipes & testing,8178,0,0,144,0,552,552,144,0,0,0,,,,2014-07-05 08:00,2014-07-24 17:00,,2014-07-05 08:00,2014-07-24 17:00,2014-07-05 08:00,2014-07-24 17:00,2014-07-05 08:00,2014-07-24 17:00,2014-07-05 08:00,2014-07-24 17:00,,PT_Normal,,,,,Dsdo6y7YT7SL8r6epOejHg,,,,Y,0,0,,,2013-02-16 15:54,2013-02-16 15:56,admin,admin
504003,6359,125344,13662,0,N,N,N,CP_Drtn,TT_Task,DT_FixedDUR2,TK_NotStart,DUKHCONP1AZ9PLFF4330,Installation of Drainage pipes & testing,8178,176,176,144,0,222,222,144,0,0,0,,,,2014-07-30 08:00,2014-08-23 17:00,,2014-07-05 08:00,2014-07-24 17:00,2014-07-05 08:00,2014-07-24 17:00,2014-07-05 08:00,2014-07-24 17:00,2014-07-30 08:00,2014-08-23 17:00,,PT_Normal,,,,,XQP3yBQFRbSMEvHNehcn4A,,,,N,0,0,,,2013-02-16 15:54,2013-02-16 15:56,admin,admin
504004,6359,125344,13662,0,N,N,N,CP_Drtn,TT_Task,DT_FixedDUR2,TK_NotStart,DUKHCONP1AZ9PLFF4335,Sanitary Fittings & Accessories,8178,40,0,160,0,84,84,160,0,0,0,,,,2014-09-28 08:00,2014-10-22 17:00,,2014-09-22 08:00,2014-10-16 17:00,2014-09-22 08:00,2014-10-16 17:00,2014-09-22 08:00,2014-10-16 17:00,2014-09-28 08:00,2014-10-22 17:00,,PT_Normal,,,,,fuc63KdiRuO51bdU1B4Z/Q,,,,N,0,0,,,2013-02-16 15:54,2013-02-16 15:56,admin,admin
504005,6359,125344,13662,0,N,N,N,CP_Drtn,TT_Task,DT_FixedDUR2,TK_NotStart,DUKHCONP1AZ9PLFF4340,Installation of Water Heater,8178,40,32,120,0,84,84,120,0,0,0,,,,2014-10-12 08:00,2014-10-28 17:00,,2014-10-04 08:00,2014-10-22 17:00,2014-10-04 08:00,2014-10-22 17:00,2014-10-04 08:00,2014-10-22 17:00,2014-10-12 08:00,2014-10-28 17:00,,PT_Normal,,,,,j366OIuJQpWaszjHjHXOdQ,,,,N,0,0,,,2013-02-16 15:54,2013-02-16 15:56,admin,admin
504006,6359,125345,13662,0,N,N,N,CP_Drtn,TT_Task,DT_FixedDUR2,TK_NotStart,DUKHCONP1AZ9PLGF4305,Installation of Plumbing pipes & testing,8178,144,0,144,0,552,552,144,0,0,0,,,,2014-06-12 08:00,2014-07-02 17:00,,2014-05-22 08:00,2014-06-11 17:00,2014-05-22 08:00,2014-06-11 17:00,2014-05-22 08:00,2014-06-11 17:00,2014-06-12 08:00,2014-07-02 17:00,,PT_Normal,,,,,ZPRYgzmzTIG61SlHIKYCsw,,,,N,0,0,,,2013-02-16 15:54,2013-02-16 15:56,admin,admin
504007,6359,125345,13662,0,N,N,N,CP_Drtn,TT_Task,DT_FixedDUR2,TK_NotStart,DUKHCONP1AZ9PLGF4310,Installation of Drainage pipes &testing,8178,168,96,144,0,222,222,144,0,0,0,,,,2014-06-16 08:00,2014-07-06 17:00,,2014-05-22 08:00,2014-06-11 17:00,2014-05-22 08:00,2014-06-11 17:00,2014-05-22 08:00,2014-06-11 17:00,2014-06-16 08:00,2014-07-06 17:00,,PT_Normal,,,,,/2PExLhbTsqqUf5375RcRg,,,,N,0,0,,,2013-02-16 15:54,2013-02-16 15:56,admin,admin
504008,6359,125345,13662,0,N,N,N,CP_Drtn,TT_Task,DT_FixedDUR2,TK_NotStart,DUKHCONP1AZ9PLGF4315,Sanitary Fittings & Accessories,8178,360,0,160,0,168,168,160,0,0,0,,,,2014-10-18 08:00,2014-11-09 17:00,,2014-08-24 08:00,2014-09-15 17:00,2014-08-24 08:00,2014-09-15 17:00,2014-08-24 08:00,2014-09-15 17:00,2014-10-18 08:00,2014-11-09 17:00,,PT_Normal,,,,,Zi3vH3K/Q4W8u1RC2gwypw,,,,N,0,0,,,2013-02-16 15:54,2013-02-16 15:56,admin,admin
504009,6359,125345,13662,0,N,N,N,CP_Drtn,TT_Task,DT_FixedDUR2,TK_NotStart,DUKHCONP1AZ9PLGF4320,Installation of Water Heater,8178,360,360,120,0,168,168,120,0,0,0,,,,2014-10-29 08:00,2014-11-15 17:00,,2014-09-04 08:00,2014-09-21 17:00,2014-09-04 08:00,2014-09-21 17:00,2014-09-04 08:00,2014-09-21 17:00,2014-10-29 08:00,2014-11-15 17:00,,PT_Normal,,,,,43G4NX80Rhy56qSIy7klMw,,,,N,0,0,,,2013-02-16 15:54,2013-02-16 15:56,admin,admin
504010,6359,125345,13662,0,N,N,N,CP_Drtn,TT_Task,DT_FixedDUR2,TK_NotStart,DUKHCONP1AZ9PLUG4300,Drainage / Storm Pipes in Grade Slab,8178,0,0,128,0,84,84,128,0,0,0,,,,2014-01-28 08:00,2014-02-16 17:00,,2014-01-28 08:00,2014-02-16 17:00,2014-01-28 08:00,2014-02-16 17:00,2014-01-28 08:00,2014-02-16 17:00,2014-01-28 08:00,2014-02-16 17:00,,PT_Normal,,,,,CQ0++FjsR4a0iM5IOEshSA,,,,Y,0,0,,,2013-02-16 15:54,2013-02-16 15:56,admin,admin
504011,6359,125346,13662,0,N,N,N,CP_Drtn,TT_Task,DT_FixedDUR2,TK_NotStart,DUKHCONP1AZ9PLRF4345,Installation of Plumbing pipes & fittings,8178,416,208,120,0,138,138,120,0,0,0,,,,2014-09-30 08:00,2014-10-19 17:00,,2014-07-28 08:00,2014-08-17 17:00,2014-07-28 08:00,2014-08-17 17:00,2014-07-28 08:00,2014-08-17 17:00,2014-09-30 08:00,2014-10-19 17:00,,PT_Normal,,,,,CGnpblrzSESAZZzPlM0GWQ,,,,N,0,0,,,2013-02-16 15:54,2013-02-16 15:56,admin,admin
504012,6359,125346,13662,0,N,N,N,CP_Drtn,TT_Task,DT_FixedDUR2,TK_NotStart,DUKHCONP1AZ9PLRF4350,Installation of Rain water Pipes,8178,208,136,120,0,84,84,120,0,0,0,,,,2014-10-12 08:00,2014-10-28 17:00,,2014-09-09 08:00,2014-09-25 17:00,2014-09-09 08:00,2014-09-25 17:00,2014-09-09 08:00,2014-09-25 17:00,2014-10-12 08:00,2014-10-28 17:00,,PT_Normal,,,,,OFSSwShgT4CXt5Gf0pdnKg,,,,N,0,0,,,2013-02-16 15:54,2013-02-16 15:56,admin,admin
504013,6359,125346,13662,0,N,N,N,CP_Drtn,TT_Task,DT_FixedDUR2,TK_NotStart,DUKHCONP1AZ9PLRF4355,Roof  Water Tank Installation & Connections,8178,8,8,200,0,420,420,200,0,0,0,,,,2014-10-18 08:00,2014-11-15 17:00,,2014-10-16 08:00,2014-11-13 17:00,2014-10-16 08:00,2014-11-13 17:00,2014-10-16 08:00,2014-11-13 17:00,2014-10-18 08:00,2014-11-15 17:00,,PT_Normal,,,,,IvM5I04TSXa69oWVDrIOvw,,,,N,0,0,,,2013-02-16 15:54,2013-02-16 15:56,admin,admin
504014,6359,125348,13662,0,N,N,N,CP_Drtn,TT_Task,DT_FixedDUR2,TK_NotStart,DUKHCONP1AZ9ELFF4035,Fixing of wall conduits & switch socket boxes,8178,88,0,200,0,1528,1528,200,0,0,0,,,,2014-07-06 08:00,2014-08-06 17:00,,2014-06-23 08:00,2014-07-21 17:00,2014-06-23 08:00,2014-07-21 17:00,2014-06-23 08:00,2014-07-21 17:00,2014-07-06 08:00,2014-08-06 17:00,,PT_Normal,,,,,xjMaI8JAQ4q5hZopMxHxaQ,,,,N,0,0,,,2013-02-16 15:54,2013-02-16 15:56,admin,admin
504015,6359,125348,13662,0,N,N,N,CP_Drtn,TT_Task,DT_FixedDUR2,TK_NotStart,DUKHCONP1AZ9ELFF4040,Cable tray & trunking installation,8178,232,16,160,0,1648,1648,160,0,0,0,,,,2014-08-11 08:00,2014-09-02 17:00,,2014-07-05 08:00,2014-07-27 17:00,2014-07-05 08:00,2014-07-27 17:00,2014-07-05 08:00,2014-07-27 17:00,2014-08-11 08:00,2014-09-02 17:00,,PT_Normal,,,,,m5iJ+0sbS76gMKKzE8vsPg,,,,N,0,0,,,2013-02-16 15:54,2013-02-16 15:56,admin,admin
504016,6359,125348,13662,0,N,N,N,CP_Drtn,TT_Task,DT_FixedDUR2,TK_NotStart,DUKHCONP1AZ9ELFF4045,Installation of wiring & Main Cabling,8178,216,216,200,0,370,370,200,0,0,0,,,,2014-08-19 08:00,2014-09-16 17:00,,2014-07-15 08:00,2014-08-16 17:00,2014-07-15 08:00,2014-08-16 17:00,2014-07-15 08:00,2014-08-16 17:00,2014-08-19 08:00,2014-09-16 17:00,,PT_Normal,,,,,/7VxRGWCTOqMbG+3SWp57w,,,,N,0,0,,,2013-02-16 15:54,2013-02-16 15:56,admin,admin
504017,6359,125348,13662,0,N,N,N,CP_Drtn,TT_Task,DT_FixedDUR2,TK_NotStart,DUKHCONP1AZ9ELFF4060,"Installation  of DBS,MCCB Accessories.",8178,24,16,160,0,284,284,160,0,0,0,,,,2014-09-22 08:00,2014-10-16 17:00,,2014-09-18 08:00,2014-10-13 17:00,2014-09-18 08:00,2014-10-13 17:00,2014-09-18 08:00,2014-10-13 17:00,2014-09-22 08:00,2014-10-16 17:00,,PT_Normal,,,,,fyZx7ZVXTxmoCgFsxREaUQ,,,,N,0,0,,,2013-02-16 15:54,2013-02-16 15:56,admin,admin
504018,6359,125348,13662,0,N,N,N,CP_Drtn,TT_Task,DT_FixedDUR2,TK_NotStart,DUKHCONP1AZ9ELFF4065,Installation of Lighting fixtures & Accessories,8178,8,0,200,0,2064,2064,200,0,0,0,,,,2014-09-28 08:00,2014-10-28 17:00,,2014-09-27 08:00,2014-10-27 17:00,2014-09-27 08:00,2014-10-27 17:00,2014-09-27 08:00,2014-10-27 17:00,2014-09-28 08:00,2014-10-28 17:00,,PT_Normal,,,,,1mCQb+32QN6V7spyCm1Wpw,,,,N,0,0,,,2013-02-16 15:54,2013-02-16 15:56,admin,admin
504019,6359,125348,13662,0,N,N,N,CP_Drtn,TT_Task,DT_FixedDUR2,TK_NotStart,DUKHCONP1AZ9ELFF4055,Install. of CAMS & Fire Fighting Accessories,8178,8,8,200,0,1260,1260,200,0,0,0,,,,2014-09-16 08:00,2014-10-16 17:00,,2014-09-15 08:00,2014-10-15 17:00,2014-09-15 08:00,2014-10-15 17:00,2014-09-15 08:00,2014-10-15 17:00,2014-09-16 08:00,2014-10-16 17:00,,PT_Normal,,,,,oYpPfpvXQzOZpcC8FhwZ9w,,,,N,0,0,,,2013-02-16 15:54,2013-02-16 15:56,admin,admin
504020,6359,125348,13662,0,N,N,N,CP_Drtn,TT_Task,DT_FixedDUR2,TK_NotStart,DUKHCONP1AZ9ELFF4050,Installation of Telephone System,8178,72,64,200,0,564,564,200,0,0,0,,,,2014-09-25 08:00,2014-10-26 17:00,,2014-09-15 08:00,2014-10-15 17:00,2014-09-15 08:00,2014-10-15 17:00,2014-09-15 08:00,2014-10-15 17:00,2014-09-25 08:00,2014-10-26 17:00,,PT_Normal,,,,,S1pu0ke/TyOAsGMO3s01zQ,,,,N,0,0,,,2013-02-16 15:54,2013-02-16 15:56,admin,admin
504021,6359,125349,13662,0,N,N,N,CP_Drtn,TT_Task,DT_FixedDUR2,TK_NotStart,DUKHCONP1AZ9ELGF4000,Fixing of wall conduits & switch socket boxes,8178,216,0,200,0,1528,1528,200,0,0,0,,,,2014-06-12 08:00,2014-07-10 17:00,,2014-05-12 08:00,2014-06-09 17:00,2014-05-12 08:00,2014-06-09 17:00,2014-05-12 08:00,2014-06-09 17:00,2014-06-12 08:00,2014-07-10 17:00,,PT_Normal,,,,,oipdp665SpyRJftGGI4Lqg,,,,N,0,0,,,2013-02-16 15:54,2013-02-16 15:56,admin,admin
504022,6359,125349,13662,0,N,N,N,CP_Drtn,TT_Task,DT_FixedDUR2,TK_NotStart,DUKHCONP1AZ9ELGF4005,Cable tray & trunking installation,8178,360,0,160,0,1648,1648,160,0,0,0,,,,2014-07-15 08:00,2014-08-10 17:00,,2014-05-24 08:00,2014-06-15 17:00,2014-05-24 08:00,2014-06-15 17:00,2014-05-24 08:00,2014-06-15 17:00,2014-07-15 08:00,2014-08-10 17:00,,PT_Normal,,,,,yerjNK/WTlemNxmn6uKmzQ,,,,N,0,0,,,2013-02-16 15:54,2013-02-16 15:56,admin,admin
504023,6359,125349,13662,0,N,N,N,CP_Drtn,TT_Task,DT_FixedDUR2,TK_NotStart,DUKHCONP1AZ9ELGF4010,Installation of wiring & Main Cabling,8178,360,216,200,0,370,370,200,0,0,0,,,,2014-07-23 08:00,2014-08-24 17:00,,2014-06-01 08:00,2014-06-29 17:00,2014-06-01 08:00,2014-06-29 17:00,2014-06-01 08:00,2014-06-29 17:00,2014-07-23 08:00,2014-08-24 17:00,,PT_Normal,,,,,359xiebRSyqUiJiZUexWKg,,,,N,0,0,,,2013-02-16 15:54,2013-02-16 15:56,admin,admin
504024,6359,125349,13662,0,N,N,N,CP_Drtn,TT_Task,DT_FixedDUR2,TK_NotStart,DUKHCONP1AZ9ELGF4020,"Installation  of DBS,MCCB Accessories.",8178,144,0,160,0,284,284,160,0,0,0,,,,2014-09-02 08:00,2014-09-24 17:00,,2014-08-12 08:00,2014-09-03 17:00,2014-08-12 08:00,2014-09-03 17:00,2014-08-12 08:00,2014-09-03 17:00,2014-09-02 08:00,2014-09-24 17:00,,PT_Normal,,,,,NS4AIIt8Tam2JSoGS7yl+A,,,,N,0,0,,,2013-02-16 15:54,2013-02-16 15:56,admin,admin
504025,6359,125349,13662,0,N,N,N,CP_Drtn,TT_Task,DT_FixedDUR2,TK_NotStart,DUKHCONP1AZ9ELGF4025,Installation of Lighting fixtures & Accessories,8178,200,192,200,0,2064,2064,200,0,0,0,,,,2014-09-22 08:00,2014-10-22 17:00,,2014-08-24 08:00,2014-09-21 17:00,2014-08-24 08:00,2014-09-21 17:00,2014-08-24 08:00,2014-09-21 17:00,2014-09-22 08:00,2014-10-22 17:00,,PT_Normal,,,,,7THxEovvStG/m2krTqXKBg,,,,N,0,0,,,2013-02-16 15:54,2013-02-16 15:56,admin,admin
504026,6359,125349,13662,0,N,N,N,CP_Drtn,TT_Task,DT_FixedDUR2,TK_NotStart,DUKHCONP1AZ9ELGF4015,Install. of CAMS & Fire Fighting Accessories,8178,240,232,200,0,1344,1344,200,0,0,0,,,,2014-09-10 08:00,2014-10-08 17:00,,2014-08-06 08:00,2014-09-03 17:00,2014-08-06 08:00,2014-09-03 17:00,2014-08-06 08:00,2014-09-03 17:00,2014-09-10 08:00,2014-10-08 17:00,,PT_Normal,,,,,Og1siRPPT1KOntglbZHXWA,,,,N,0,0,,,2013-02-16 15:54,2013-02-16 15:56,admin,admin
504027,6359,125349,13662,0,N,N,N,CP_Drtn,TT_Task,DT_FixedDUR2,TK_NotStart,DUKHCONP1AZ9ELGF4030,Installation of Telephone System,8178,144,72,160,0,650,650,160,0,0,0,,,,2014-09-14 08:00,2014-10-06 17:00,,2014-08-24 08:00,2014-09-15 17:00,2014-08-24 08:00,2014-09-15 17:00,2014-08-24 08:00,2014-09-15 17:00,2014-09-14 08:00,2014-10-06 17:00,,PT_Normal,,,,,i1GHa/P9RQ+CPAi9ILjoBw,,,,N,0,0,,,2013-02-16 15:54,2013-02-16 15:56,admin,admin
504028,6359,125350,13662,0,N,N,N,CP_Drtn,TT_Task,DT_FixedDUR2,TK_NotStart,DUKHCONP1AZ9ELRF4070,Installation of Isolator,8178,8,0,144,0,516,516,144,0,0,0,,,,2014-10-14 08:00,2014-11-03 17:00,,2014-10-13 08:00,2014-11-02 17:00,2014-10-13 08:00,2014-11-02 17:00,2014-10-13 08:00,2014-11-02 17:00,2014-10-14 08:00,2014-11-03 17:00,,PT_Normal,,,,,x/8N+AG3SWO7AlvF1KgdOw,,,,N,0,0,,,2013-02-16 15:54,2013-02-16 15:56,admin,admin
504029,6359,125350,13662,0,N,N,N,CP_Drtn,TT_Task,DT_FixedDUR2,TK_NotStart,DUKHCONP1AZ9ELRF4075,Installation of TV Dish Antenna,8178,8,8,184,0,916,916,184,0,0,0,,,,2014-10-20 08:00,2014-11-15 17:00,,2014-10-19 08:00,2014-11-13 17:00,2014-10-19 08:00,2014-11-13 17:00,2014-10-19 08:00,2014-11-13 17:00,2014-10-20 08:00,2014-11-15 17:00,,PT_Normal,,,,,c9xjCQU+Qt+kDdXtSR4LJw,,,,N,0,0,,,2013-02-16 15:54,2013-02-16 15:56,admin,admin
504030,6359,125352,13662,0,N,N,N,CP_Drtn,TT_Task,DT_FixedDUR2,TK_NotStart,DUKHCONP1AZ9ACGF4600,Installation AC Pipes,8178,392,224,160,0,1222,1222,160,0,0,0,,,,2014-08-11 08:00,2014-09-02 17:00,,2014-06-11 08:00,2014-07-03 17:00,2014-06-11 08:00,2014-07-03 17:00,2014-06-11 08:00,2014-07-03 17:00,2014-08-11 08:00,2014-09-02 17:00,,PT_Normal,,,,,dYRCZB6OTg64iKz66nV4TA,,,,N,0,0,,,2013-02-16 15:54,2013-02-16 15:56,admin,admin
504031,6359,125352,13662,0,N,N,N,CP_Drtn,TT_Task,DT_FixedDUR2,TK_NotStart,DUKHCONP1AZ9ACGF4605,Fixing of Ventilation Equipments,8178,256,0,200,0,228,228,200,0,0,0,,,,2014-09-13 08:00,2014-10-13 17:00,,2014-08-06 08:00,2014-09-03 17:00,2014-08-06 08:00,2014-09-03 17:00,2014-08-06 08:00,2014-09-03 17:00,2014-09-13 08:00,2014-10-13 17:00,,PT_Normal,,,,,Q+eOCx4aSQay8gc0M4CX5Q,,,,N,0,0,,,2013-02-16 15:54,2013-02-16 15:56,admin,admin
504032,6359,125352,13662,0,N,N,N,CP_Drtn,TT_Task,DT_FixedDUR2,TK_NotStart,DUKHCONP1AZ9ACGF4610,Fixing of Split AC,8178,256,88,160,0,370,370,160,0,0,0,,,,2014-10-04 08:00,2014-10-28 17:00,,2014-08-27 08:00,2014-09-18 17:00,2014-08-27 08:00,2014-09-18 17:00,2014-08-27 08:00,2014-09-18 17:00,2014-10-04 08:00,2014-10-28 17:00,,PT_Normal,,,,,6Oy/YhtRR4qpz1WyWvK/6Q,,,,N,0,0,,,2013-02-16 15:54,2013-02-16 15:56,admin,admin
504033,6359,125353,13662,0,N,N,N,CP_Drtn,TT_Task,DT_FixedDUR2,TK_NotStart,DUKHCONP1AZ9ACRF4630,Installation of Refrigerant Pipes,8178,272,248,200,0,512,512,200,0,0,0,,,,2014-10-12 08:00,2014-11-09 17:00,,2014-08-31 08:00,2014-09-28 17:00,2014-08-31 08:00,2014-09-28 17:00,2014-08-31 08:00,2014-09-28 17:00,2014-10-12 08:00,2014-11-09 17:00,,PT_Normal,,,,,XP/WM/6XRVWXebPeprJM7A,,,,N,0,0,,,2013-02-16 15:54,2013-02-16 15:56,admin,admin
504034,6359,125353,13662,0,N,N,N,CP_Drtn,TT_Task,DT_FixedDUR2,TK_NotStart,DUKHCONP1AZ9ACRF4635,Installation of Condensing Unit,8178,24,24,200,0,710,710,200,0,0,0,,,,2014-10-18 08:00,2014-11-15 17:00,,2014-10-14 08:00,2014-11-11 17:00,2014-10-14 08:00,2014-11-11 17:00,2014-10-14 08:00,2014-11-11 17:00,2014-10-18 08:00,2014-11-15 17:00,,PT_Normal,,,,,QRbU/bBRTPSeizaBLCdV+A,,,,N,0,0,,,2013-02-16 15:54,2013-02-16 15:56,admin,admin
504035,6359,125354,13662,0,N,N,N,CP_Drtn,TT_Task,DT_FixedDUR2,TK_NotStart,DUKHCONP1AZ9ACFF4615,Installation AC Pipes,8178,216,168,160,0,1222,1222,160,0,0,0,,,,2014-08-30 08:00,2014-09-21 17:00,,2014-07-26 08:00,2014-08-20 17:00,2014-07-26 08:00,2014-08-20 17:00,2014-07-26 08:00,2014-08-20 17:00,2014-08-30 08:00,2014-09-21 17:00,,PT_Normal,,,,,2YGbfbwvQVSXhz4FdR1T7A,,,,N,0,0,,,2013-02-16 15:54,2013-02-16 15:56,admin,admin
504036,6359,125354,13662,0,N,N,N,CP_Drtn,TT_Task,DT_FixedDUR2,TK_NotStart,DUKHCONP1AZ9ACFF4620,Fixing of Ventilation Equipments,8178,16,0,200,0,142,142,200,0,0,0,,,,2014-09-17 08:00,2014-10-18 17:00,,2014-09-15 08:00,2014-10-15 17:00,2014-09-15 08:00,2014-10-15 17:00,2014-09-15 08:00,2014-10-15 17:00,2014-09-17 08:00,2014-10-18 17:00,,PT_Normal,,,,,IATrb7TvSzqKFj/VaaacAQ,,,,N,0,0,,,2013-02-16 15:54,2013-02-16 15:56,admin,admin
504037,6359,125354,13662,0,N,N,N,CP_Drtn,TT_Task,DT_FixedDUR2,TK_NotStart,DUKHCONP1AZ9ACFF4625,Fixing of Split AC,8178,16,0,160,0,370,370,160,0,0,0,,,,2014-10-08 08:00,2014-11-02 17:00,,2014-10-06 08:00,2014-10-30 17:00,2014-10-06 08:00,2014-10-30 17:00,2014-10-06 08:00,2014-10-30 17:00,2014-10-08 08:00,2014-11-02 17:00,,PT_Normal,,,,,pDwptm9XQQGsS66WJ2apeA,,,,N,0,0,,,2013-02-16 15:54,2013-02-16 15:56,admin,admin
504038,6359,125357,13662,0,N,N,N,CP_Drtn,TT_Task,DT_FixedDUR2,TK_NotStart,DUKHCONP1AZ9AREL3665,External Plastering,8169,376,0,200,0,17843.75,17843.75,200,0,0,0,,,,2014-09-20 08:00,2014-10-20 17:00,,2014-07-23 08:00,2014-08-24 17:00,2014-07-23 08:00,2014-08-24 17:00,2014-07-23 08:00,2014-08-24 17:00,2014-09-20 08:00,2014-10-20 17:00,,PT_Normal,,,,,OyrgRi2QRCaI5iEfZt96rA,,,,N,0,0,,,2013-02-16 15:54,2013-02-16 15:56,admin,admin
504039,6359,125357,13662,0,N,N,N,CP_Drtn,TT_Task,DT_FixedDUR2,TK_NotStart,DUKHCONP1AZ9AREL3670,External stone cladding works,8170,392,0,160,0,1237.5,1237.5,160,0,0,0,,,,2014-10-12 08:00,2014-11-03 17:00,,2014-08-13 08:00,2014-09-04 17:00,2014-08-13 08:00,2014-09-04 17:00,2014-08-13 08:00,2014-09-04 17:00,2014-10-12 08:00,2014-11-03 17:00,,PT_Normal,,,,,85E8W7zpTsmXlS3fvs+XZg,,,,N,0,0,,,2013-02-16 15:54,2013-02-16 15:56,admin,admin
504040,6359,125357,13662,0,N,N,N,CP_Drtn,TT_Task,DT_FixedDUR2,TK_NotStart,DUKHCONP1AZ9AREL3680,External Painting,8178,392,392,160,0,4730,4730,160,0,0,0,,,,2014-10-23 08:00,2014-11-15 17:00,,2014-08-25 08:00,2014-09-16 17:00,2014-08-25 08:00,2014-09-16 17:00,2014-08-25 08:00,2014-09-16 17:00,2014-10-23 08:00,2014-11-15 17:00,,PT_Normal,,,,,0fZ5l4YsRYSsJcinp+JNSw,,,,N,0,0,,,2013-02-16 15:54,2013-02-16 15:56,admin,admin
504041,6359,125358,13662,0,N,N,N,CP_Drtn,TT_Task,DT_FixedDUR2,TK_NotStart,DUKHCONP1AZ9ARRF3635,Laying of Waterproofing Membrane,8178,168,0,200,0,1423.5,1423.5,200,0,0,0,,,,2014-09-07 08:00,2014-10-05 17:00,,2014-08-13 08:00,2014-09-10 17:00,2014-08-13 08:00,2014-09-10 17:00,2014-08-13 08:00,2014-09-10 17:00,2014-09-07 08:00,2014-10-05 17:00,,PT_Normal,,,,,OxuI+ykDSvWp++U12XAQQA,,,,N,0,0,,,2013-02-16 15:54,2013-02-16 15:56,admin,admin
504042,6359,125358,13662,0,N,N,N,CP_Drtn,TT_Task,DT_FixedDUR2,TK_NotStart,DUKHCONP1AZ9ARRF3640,Installation of Insulation & Protection,8178,168,0,200,0,1760,1760,200,0,0,0,,,,2014-09-11 08:00,2014-10-12 17:00,,2014-08-18 08:00,2014-09-15 17:00,2014-08-18 08:00,2014-09-15 17:00,2014-08-18 08:00,2014-09-15 17:00,2014-09-11 08:00,2014-10-12 17:00,,PT_Normal,,,,,na/LpHJhT6CSwTOJZvwfBA,,,,N,0,0,,,2013-02-16 15:54,2013-02-16 15:56,admin,admin
504043,6359,125358,13662,0,N,N,N,CP_Drtn,TT_Task,DT_FixedDUR2,TK_NotStart,DUKHCONP1AZ9ARRF3645,Lime Stone Chips & Paving slab Installation,8170,168,0,200,0,858,858,200,0,0,0,,,,2014-09-16 08:00,2014-10-16 17:00,,2014-08-23 08:00,2014-09-20 17:00,2014-08-23 08:00,2014-09-20 17:00,2014-08-23 08:00,2014-09-20 17:00,2014-09-16 08:00,2014-10-16 17:00,,PT_Normal,,,,,PtBeBEEmQQ2lXHo/7t/8Ig,,,,N,0,0,,,2013-02-16 15:54,2013-02-16 15:56,admin,admin
504044,6359,125358,13662,0,N,N,N,CP_Drtn,TT_Task,DT_FixedDUR2,TK_NotStart,DUKHCONP1AZ9ARRF3655,Installation of Pumps Protection cabinets,8178,168,0,160,0,770,770,160,0,0,0,,,,2014-10-12 08:00,2014-11-03 17:00,,2014-09-15 08:00,2014-10-07 17:00,2014-09-15 08:00,2014-10-07 17:00,2014-09-15 08:00,2014-10-07 17:00,2014-10-12 08:00,2014-11-03 17:00,,PT_Normal,,,,,mllFZqabTjiNKrh9KuHiFA,,,,N,0,0,,,2013-02-16 15:54,2013-02-16 15:56,admin,admin
504045,6359,125358,13662,0,N,N,N,CP_Drtn,TT_Task,DT_FixedDUR2,TK_NotStart,DUKHCONP1AZ9ARRF3650,Install. of Gal. Frame & Aluminum Slat Screen,8178,168,0,200,0,1307.25,1307.25,200,0,0,0,,,,2014-09-24 08:00,2014-10-25 17:00,,2014-08-31 08:00,2014-09-28 17:00,2014-08-31 08:00,2014-09-28 17:00,2014-08-31 08:00,2014-09-28 17:00,2014-09-24 08:00,2014-10-25 17:00,,PT_Normal,,,,,YFC6c2I1Tj6lsuu9ND5ZUw,,,,N,0,0,,,2013-02-16 15:54,2013-02-16 15:56,admin,admin
504046,6359,125358,13662,0,N,N,N,CP_Drtn,TT_Task,DT_FixedDUR2,TK_NotStart,DUKHCONP1AZ9ARRF3660,Installation of Access Ladder,8178,208,208,120,0,220,220,120,0,0,0,,,,2014-10-29 08:00,2014-11-15 17:00,,2014-09-27 08:00,2014-10-15 17:00,2014-09-27 08:00,2014-10-15 17:00,2014-09-27 08:00,2014-10-15 17:00,2014-10-29 08:00,2014-11-15 17:00,,PT_Normal,,,,,N8yz9DfASIOPj1ELjwjxSg,,,,N,0,0,,,2013-02-16 15:54,2013-02-16 15:56,admin,admin
504047,6359,125358,13662,0,N,N,N,CP_Drtn,TT_Task,DT_FixedDUR2,TK_NotStart,DUKHCONP1AZ9ARRF3630,Leveling Screed for Waterproofing,8164,168,0,200,0,1000,1000,200,0,0,0,,,,2014-09-03 08:00,2014-10-01 17:00,,2014-08-10 08:00,2014-09-07 17:00,2014-08-10 08:00,2014-09-07 17:00,2014-08-10 08:00,2014-09-07 17:00,2014-09-03 08:00,2014-10-01 17:00,,PT_Normal,,,,,lSLrtpUIRTi8RN3t3G8OOA,,,,N,0,0,,,2013-02-16 15:54,2013-02-16 15:56,admin,admin
504048,6359,125360,13662,0,N,N,N,CP_Drtn,TT_Task,DT_FixedDUR2,TK_NotStart,DUKHCONP1AZ9ARGF3000,Block work,8168,144,0,200,0,12172.25,12172.25,200,0,0,0,,,,2014-05-27 08:00,2014-06-24 17:00,,2014-05-06 08:00,2014-06-03 17:00,2014-05-06 08:00,2014-06-03 17:00,2014-05-06 08:00,2014-06-03 17:00,2014-05-27 08:00,2014-06-24 17:00,,PT_Normal,,,,,Y988BpTgTwCeeXKiHdvU+A,,,,N,0,0,,,2013-02-16 15:54,2013-02-16 15:56,admin,admin
504049,6359,125360,13662,0,N,N,N,CP_Drtn,TT_Task,DT_FixedDUR2,TK_NotStart,DUKHCONP1AZ9ARGF3005,Plastering work,8169,144,0,200,0,17049,17049,200,0,0,0,,,,2014-06-18 08:00,2014-07-16 17:00,,2014-05-28 08:00,2014-06-25 17:00,2014-05-28 08:00,2014-06-25 17:00,2014-05-28 08:00,2014-06-25 17:00,2014-06-18 08:00,2014-07-16 17:00,,PT_Normal,,,,,esIsjy03Sv+BaN/LyAIdQA,,,,N,0,0,,,2013-02-16 15:54,2013-02-16 15:56,admin,admin
504050,6359,125360,13662,0,N,N,N,CP_Drtn,TT_Task,DT_FixedDUR2,TK_NotStart,DUKHCONP1AZ9ARGF3010,Flooring screed,8164,208,64,168,0,1974.5,1974.5,168,0,0,0,,,,2014-07-06 08:00,2014-07-29 17:00,,2014-06-05 08:00,2014-06-29 17:00,2014-06-05 08:00,2014-06-29 17:00,2014-06-05 08:00,2014-06-29 17:00,2014-07-06 08:00,2014-07-29 17:00,,PT_Normal,,,,,VMFXEnnCR+SyIjRCO699Vw,,,,N,0,0,,,2013-02-16 15:54,2013-02-16 15:56,admin,admin
504051,6359,125360,13662,0,N,N,N,CP_Drtn,TT_Task,DT_FixedDUR2,TK_NotStart,DUKHCONP1AZ9ARGF3015,Wet area waterproofing & Protection Screed,8178,144,0,120,0,308,308,120,0,0,0,,,,2014-07-06 08:00,2014-07-22 17:00,,2014-06-15 08:00,2014-07-01 17:00,2014-06-15 08:00,2014-07-01 17:00,2014-06-15 08:00,2014-07-01 17:00,2014-07-06 08:00,2014-07-22 17:00,,PT_Normal,,,,,gFRHKXksTFuiODGx8/CpBQ,,,,N,0,0,,,2013-02-16 15:54,2013-02-16 15:56,admin,admin
504052,6359,125360,13662,0,N,N,N,CP_Drtn,TT_Task,DT_FixedDUR2,TK_NotStart,DUKHCONP1AZ9ARGF3030,Paint First coat,8178,256,112,200,0,6781.5,6781.5,200,0,0,0,,,,2014-07-21 08:00,2014-08-21 17:00,,2014-06-14 08:00,2014-07-12 17:00,2014-06-14 08:00,2014-07-12 17:00,2014-06-14 08:00,2014-07-12 17:00,2014-07-21 08:00,2014-08-21 17:00,,PT_Normal,,,,,mV9PDfO+SaGP8CvprA7Gww,,,,N,0,0,,,2013-02-16 15:54,2013-02-16 15:56,admin,admin
504053,6359,125360,13662,0,N,N,N,CP_Drtn,TT_Task,DT_FixedDUR2,TK_NotStart,DUKHCONP1AZ9ARGF3020,Ceramic Wall Tiling,8170,144,0,200,0,5534.75,5534.75,200,0,0,0,,,,2014-07-12 08:00,2014-08-12 17:00,,2014-06-21 08:00,2014-07-19 17:00,2014-06-21 08:00,2014-07-19 17:00,2014-06-21 08:00,2014-07-19 17:00,2014-07-12 08:00,2014-08-12 17:00,,PT_Normal,,,,,Z+kmFIkzSk6P70D/+sPByA,,,,N,0,0,,,2013-02-16 15:54,2013-02-16 15:56,admin,admin
504054,6359,125360,13662,0,N,N,N,CP_Drtn,TT_Task,DT_FixedDUR2,TK_NotStart,DUKHCONP1AZ9ARGF3025,Porcelain Tile flooring,8170,144,0,200,0,2180.25,2180.25,200,0,0,0,,,,2014-07-17 08:00,2014-08-18 17:00,,2014-06-26 08:00,2014-07-24 17:00,2014-06-26 08:00,2014-07-24 17:00,2014-06-26 08:00,2014-07-24 17:00,2014-07-17 08:00,2014-08-18 17:00,,PT_Normal,,,,,EmebZFTxSlay1l80bxa4AQ,,,,N,0,0,,,2013-02-16 15:54,2013-02-16 15:56,admin,admin
504055,6359,125360,13662,0,N,N,N,CP_Drtn,TT_Task,DT_FixedDUR2,TK_NotStart,DUKHCONP1AZ9ARGF3040,Cobble Tile flooring,8170,168,0,120,0,925,925,120,0,0,0,,,,2014-08-20 08:00,2014-09-06 17:00,,2014-07-23 08:00,2014-08-12 17:00,2014-07-23 08:00,2014-08-12 17:00,2014-07-23 08:00,2014-08-12 17:00,2014-08-20 08:00,2014-09-06 17:00,,PT_Normal,,,,,auq2gUqyT3eTe07hhKsm1A,,,,N,0,0,,,2013-02-16 15:54,2013-02-16 15:56,admin,admin
504056,6359,125360,13662,0,N,N,N,CP_Drtn,TT_Task,DT_FixedDUR2,TK_NotStart,DUKHCONP1AZ9ARGF3035,Slate Tile Flooring & Skirting,8170,184,16,120,0,950,950,120,0,0,0,,,,2014-08-16 08:00,2014-09-01 17:00,,2014-07-16 08:00,2014-08-05 17:00,2014-07-16 08:00,2014-08-05 17:00,2014-07-16 08:00,2014-08-05 17:00,2014-08-16 08:00,2014-09-01 17:00,,PT_Normal,,,,,xFmestIGQuC3sfcipLTUDA,,,,N,0,0,,,2013-02-16 15:54,2013-02-16 15:56,admin,admin
504057,6359,125360,13662,0,N,N,N,CP_Drtn,TT_Task,DT_FixedDUR2,TK_NotStart,DUKHCONP1AZ9ARGF3050,Granite - Stair case flooring & Skirting,8171,168,0,160,0,1093.75,1093.75,160,0,0,0,,,,2014-08-28 08:00,2014-09-20 17:00,,2014-07-31 08:00,2014-08-26 17:00,2014-07-31 08:00,2014-08-26 17:00,2014-07-31 08:00,2014-08-26 17:00,2014-08-28 08:00,2014-09-20 17:00,,PT_Normal,,,,,IJfP65BaSVO62CkwtOGMDA,,,,N,0,0,,,2013-02-16 15:54,2013-02-16 15:56,admin,admin
504058,6359,125360,13662,0,N,N,N,CP_Drtn,TT_Task,DT_FixedDUR2,TK_NotStart,DUKHCONP1AZ9ARGF3045,Fixing of Suspension systems,8178,144,0,160,0,1818.81,1818.81,160,0,0,0,,,,2014-08-07 08:00,2014-08-30 17:00,,2014-07-14 08:00,2014-08-09 17:00,2014-07-14 08:00,2014-08-09 17:00,2014-07-14 08:00,2014-08-09 17:00,2014-08-07 08:00,2014-08-30 17:00,,PT_Normal,,,,,fy4CnzzsQbubu+svVxU/Vg,,,,N,0,0,,,2013-02-16 15:54,2013-02-16 15:56,admin,admin
504059,6359,125360,13662,0,N,N,N,CP_Drtn,TT_Task,DT_FixedDUR2,TK_NotStart,DUKHCONP1AZ9ARGF3055,Aluminum tile false ceiling,8178,168,24,200,0,187.5,187.5,200,0,0,0,,,,2014-08-19 08:00,2014-09-16 17:00,,2014-07-22 08:00,2014-08-23 17:00,2014-07-22 08:00,2014-08-23 17:00,2014-07-22 08:00,2014-08-23 17:00,2014-08-19 08:00,2014-09-16 17:00,,PT_Normal,,,,,eJJfpG++T4KKk49Ti45hXg,,,,N,0,0,,,2013-02-16 15:54,2013-02-16 15:56,admin,admin
504060,6359,125360,13662,0,N,N,N,CP_Drtn,TT_Task,DT_FixedDUR2,TK_NotStart,DUKHCONP1AZ9ARGF3060,Gypsum board false ceiling,8178,144,0,200,0,1668.81,1668.81,200,0,0,0,,,,2014-08-19 08:00,2014-09-16 17:00,,2014-07-26 08:00,2014-08-26 17:00,2014-07-26 08:00,2014-08-26 17:00,2014-07-26 08:00,2014-08-26 17:00,2014-08-19 08:00,2014-09-16 17:00,,PT_Normal,,,,,NLhTn3I+QsOZgUOwi+5r4A,,,,N,0,0,,,2013-02-16 15:54,2013-02-16 15:56,admin,admin
504061,6359,125360,13662,0,N,N,N,CP_Drtn,TT_Task,DT_FixedDUR2,TK_NotStart,DUKHCONP1AZ9ARGF3065,Wooden door & PVC Door,8178,168,0,120,0,385,385,120,0,0,0,,,,2014-09-11 08:00,2014-09-28 17:00,,2014-08-18 08:00,2014-09-03 17:00,2014-08-18 08:00,2014-09-03 17:00,2014-08-18 08:00,2014-09-03 17:00,2014-09-11 08:00,2014-09-28 17:00,,PT_Normal,,,,,AdMrTKf/SG+V5vyTKRBCuQ,,,,N,0,0,,,2013-02-16 15:54,2013-02-16 15:56,admin,admin
504062,6359,125360,13662,0,N,N,N,CP_Drtn,TT_Task,DT_FixedDUR2,TK_NotStart,DUKHCONP1AZ9ARGF3070,Aluminum doors,8178,168,0,120,0,220,220,120,0,0,0,,,,2014-09-17 08:00,2014-10-04 17:00,,2014-08-24 08:00,2014-09-09 17:00,2014-08-24 08:00,2014-09-09 17:00,2014-08-24 08:00,2014-09-09 17:00,2014-09-17 08:00,2014-10-04 17:00,,PT_Normal,,,,,fZrZN3CNSZKksSFmZ3VM8Q,,,,N,0,0,,,2013-02-16 15:54,2013-02-16 15:56,admin,admin
504063,6359,125360,13662,0,N,N,N,CP_Drtn,TT_Task,DT_FixedDUR2,TK_NotStart,DUKHCONP1AZ9ARGF3080,Aluminum windows,8178,248,80,160,0,202.5,202.5,160,0,0,0,,,,2014-10-06 08:00,2014-10-30 17:00,,2014-08-31 08:00,2014-09-22 17:00,2014-08-31 08:00,2014-09-22 17:00,2014-08-31 08:00,2014-09-22 17:00,2014-10-06 08:00,2014-10-30 17:00,,PT_Normal,,,,,Nntu1wfhRsWzQDPHgzAAEA,,,,N,0,0,,,2013-02-16 15:54,2013-02-16 15:56,admin,admin
504064,6359,125360,13662,0,N,N,N,CP_Drtn,TT_Task,DT_FixedDUR2,TK_NotStart,DUKHCONP1AZ9ARGF3075,Carpentry & Joinery Works,8178,168,0,160,0,715,715,160,0,0,0,,,,2014-09-23 08:00,2014-10-18 17:00,,2014-08-30 08:00,2014-09-21 17:00,2014-08-30 08:00,2014-09-21 17:00,2014-08-30 08:00,2014-09-21 17:00,2014-09-23 08:00,2014-10-18 17:00,,PT_Normal,,,,,lQRQzEdpQ/+BKhEMZgAIyw,,,,N,0,0,,,2013-02-16 15:54,2013-02-16 15:56,admin,admin
504065,6359,125360,13662,0,N,N,N,CP_Drtn,TT_Task,DT_FixedDUR2,TK_NotStart,DUKHCONP1AZ9ARGF3090,Installation of Granite Counter Top,8171,168,0,120,0,220,220,120,0,0,0,,,,2014-10-06 08:00,2014-10-25 17:00,,2014-09-11 08:00,2014-09-28 17:00,2014-09-11 08:00,2014-09-28 17:00,2014-09-11 08:00,2014-09-28 17:00,2014-10-06 08:00,2014-10-25 17:00,,PT_Normal,,,,,XepbsXcBSYaQj5DzdwVjtQ,,,,N,0,0,,,2013-02-16 15:54,2013-02-16 15:56,admin,admin
504066,6359,125360,13662,0,N,N,N,CP_Drtn,TT_Task,DT_FixedDUR2,TK_NotStart,DUKHCONP1AZ9ARGF3085,S.S.Balustrade,8178,208,40,160,0,328.5,328.5,160,0,0,0,,,,2014-10-07 08:00,2014-11-01 17:00,,2014-09-07 08:00,2014-09-29 17:00,2014-09-07 08:00,2014-09-29 17:00,2014-09-07 08:00,2014-09-29 17:00,2014-10-07 08:00,2014-11-01 17:00,,PT_Normal,,,,,TpdCWl2bTnaqtz+ZR4UoCQ,,,,N,0,0,,,2013-02-16 15:54,2013-02-16 15:56,admin,admin
504067,6359,125360,13662,0,N,N,N,CP_Drtn,TT_Task,DT_FixedDUR2,TK_NotStart,DUKHCONP1AZ9ARGF3095,Final Painting,8178,168,168,200,0,6781.5,6781.5,200,0,0,0,,,,2014-10-18 08:00,2014-11-15 17:00,,2014-09-21 08:00,2014-10-21 17:00,2014-09-21 08:00,2014-10-21 17:00,2014-09-21 08:00,2014-10-21 17:00,2014-10-18 08:00,2014-11-15 17:00,,PT_Normal,,,,,0RM2vI35RWCTxiCNT6ON3A,,,,N,0,0,,,2013-02-16 15:54,2013-02-16 15:56,admin,admin
504068,6359,125361,13662,0,N,N,N,CP_Drtn,TT_Task,DT_FixedDUR2,TK_NotStart,DUKHCONP1AZ9ARRF3600,Block work,8168,384,0,160,0,875,875,160,0,0,0,,,,2014-09-03 08:00,2014-09-25 17:00,,2014-07-06 08:00,2014-07-28 17:00,2014-07-06 08:00,2014-07-28 17:00,2014-07-06 08:00,2014-07-28 17:00,2014-09-03 08:00,2014-09-25 17:00,,PT_Normal,,,,,1M7YB5ArQ7+HklOjWYdLvA,,,,N,0,0,,,2013-02-16 15:54,2013-02-16 15:56,admin,admin
504069,6359,125361,13662,0,N,N,N,CP_Drtn,TT_Task,DT_FixedDUR2,TK_NotStart,DUKHCONP1AZ9ARRF3605,Plastering work,8169,384,0,160,0,2231.25,2231.25,160,0,0,0,,,,2014-09-11 08:00,2014-10-04 17:00,,2014-07-14 08:00,2014-08-09 17:00,2014-07-14 08:00,2014-08-09 17:00,2014-07-14 08:00,2014-08-09 17:00,2014-09-11 08:00,2014-10-04 17:00,,PT_Normal,,,,,imWYgBqsSXyabTNVL4sjDA,,,,N,0,0,,,2013-02-16 15:54,2013-02-16 15:56,admin,admin
504070,6359,125361,13662,0,N,N,N,CP_Drtn,TT_Task,DT_FixedDUR2,TK_NotStart,DUKHCONP1AZ9ARRF3610,Flooring screed,8164,424,0,120,0,170.5,170.5,120,0,0,0,,,,2014-10-01 08:00,2014-10-20 17:00,,2014-07-28 08:00,2014-08-17 17:00,2014-07-28 08:00,2014-08-17 17:00,2014-07-28 08:00,2014-08-17 17:00,2014-10-01 08:00,2014-10-20 17:00,,PT_Normal,,,,,HmWLhy5YRrC8vsNPmMzNCw,,,,N,0,0,,,2013-02-16 15:54,2013-02-16 15:56,admin,admin
504071,6359,125361,13662,0,N,N,N,CP_Drtn,TT_Task,DT_FixedDUR2,TK_NotStart,DUKHCONP1AZ9ARRF3695,Painting -Storage area,8178,424,0,160,0,2050,2050,160,0,0,0,,,,2014-10-12 08:00,2014-11-03 17:00,,2014-08-09 08:00,2014-08-31 17:00,2014-08-09 08:00,2014-08-31 17:00,2014-08-09 08:00,2014-08-31 17:00,2014-10-12 08:00,2014-11-03 17:00,,PT_Normal,,,,,mzw0qAP8RoyGuYPBpjMs5Q,,,,N,0,0,,,2013-02-16 15:54,2013-02-16 15:56,admin,admin
504072,6359,125361,13662,0,N,N,N,CP_Drtn,TT_Task,DT_FixedDUR2,TK_NotStart,DUKHCONP1AZ9ARRF3620,Epoxy Painting -Storage area,8178,424,424,120,0,59.5,59.5,120,0,0,0,,,,2014-10-29 08:00,2014-11-15 17:00,,2014-08-26 08:00,2014-09-11 17:00,2014-08-26 08:00,2014-09-11 17:00,2014-08-26 08:00,2014-09-11 17:00,2014-10-29 08:00,2014-11-15 17:00,,PT_Normal,,,,,9cks8qidQtqnkxBr1PEmfg,,,,N,0,0,,,2013-02-16 15:54,2013-02-16 15:56,admin,admin
504073,6359,125362,13662,0,N,N,N,CP_Drtn,TT_Task,DT_FixedDUR2,TK_NotStart,DUKHCONP1AZ9ARFF3345,Fixing of Suspension systems,8178,0,0,160,0,1631.25,1631.25,160,0,0,0,,,,2014-08-31 08:00,2014-09-22 17:00,,2014-08-31 08:00,2014-09-22 17:00,2014-08-31 08:00,2014-09-22 17:00,2014-08-31 08:00,2014-09-22 17:00,2014-08-31 08:00,2014-09-22 17:00,,PT_Normal,,,,,krRezLcsRNKmWpDm9tYSCw,,,,Y,0,0,,,2013-02-16 15:54,2013-02-16 15:56,admin,admin
504074,6359,125362,13662,0,N,N,N,CP_Drtn,TT_Task,DT_FixedDUR2,TK_NotStart,DUKHCONP1AZ9ARFF3360,Gypsum board false ceiling,8178,0,0,200,0,1631.25,1631.25,200,0,0,0,,,,2014-09-07 08:00,2014-10-05 17:00,,2014-09-07 08:00,2014-10-05 17:00,2014-09-07 08:00,2014-10-05 17:00,2014-09-07 08:00,2014-10-05 17:00,2014-09-07 08:00,2014-10-05 17:00,,PT_Normal,,,,,d9MtHR8nQGmB0CDiJbXFuA,,,,Y,0,0,,,2013-02-16 15:54,2013-02-16 15:56,admin,admin
504075,6359,125362,13662,0,N,N,N,CP_Drtn,TT_Task,DT_FixedDUR2,TK_NotStart,DUKHCONP1AZ9ARFF3365,Wooden door,8178,0,0,120,0,385,385,120,0,0,0,,,,2014-09-22 08:00,2014-10-08 17:00,,2014-09-22 08:00,2014-10-08 17:00,2014-09-22 08:00,2014-10-08 17:00,2014-09-22 08:00,2014-10-08 17:00,2014-09-22 08:00,2014-10-08 17:00,,PT_Normal,,,,,lEdGnlW9RnipyKLWG18uZg,,,,Y,0,0,,,2013-02-16 15:54,2013-02-16 15:56,admin,admin
504076,6359,125362,13662,0,N,N,N,CP_Drtn,TT_Task,DT_FixedDUR2,TK_NotStart,DUKHCONP1AZ9ARFF3370,Aluminum Door,8178,0,0,160,0,275,275,160,0,0,0,,,,2014-09-22 08:00,2014-10-16 17:00,,2014-09-22 08:00,2014-10-16 17:00,2014-09-22 08:00,2014-10-16 17:00,2014-09-22 08:00,2014-10-16 17:00,2014-09-22 08:00,2014-10-16 17:00,,PT_Normal,,,,,kbBycXN+TMyI7jhlPUTswA,,,,Y,0,0,,,2013-02-16 15:54,2013-02-16 15:56,admin,admin
504077,6359,125362,13662,0,N,N,N,CP_Drtn,TT_Task,DT_FixedDUR2,TK_NotStart,DUKHCONP1AZ9ARFF3380,Aluminum windows,8178,32,32,160,0,202.5,202.5,160,0,0,0,,,,2014-10-04 08:00,2014-10-28 17:00,,2014-09-29 08:00,2014-10-23 17:00,2014-09-29 08:00,2014-10-23 17:00,2014-09-29 08:00,2014-10-23 17:00,2014-10-04 08:00,2014-10-28 17:00,,PT_Normal,,,,,5UCOLe0KTOe2NYOqEllCCQ,,,,N,0,0,,,2013-02-16 15:54,2013-02-16 15:56,admin,admin
504078,6359,125362,13662,0,N,N,N,CP_Drtn,TT_Task,DT_FixedDUR2,TK_NotStart,DUKHCONP1AZ9ARFF3375,Carpentry & Joinery Works,8178,0,0,200,0,1375,1375,200,0,0,0,,,,2014-09-28 08:00,2014-10-28 17:00,,2014-09-28 08:00,2014-10-28 17:00,2014-09-28 08:00,2014-10-28 17:00,2014-09-28 08:00,2014-10-28 17:00,2014-09-28 08:00,2014-10-28 17:00,,PT_Normal,,,,,u6YZq7oISAukNgAW1uDE5A,,,,Y,0,0,,,2013-02-16 15:54,2013-02-16 15:56,admin,admin
504079,6359,125362,13662,0,N,N,N,CP_Drtn,TT_Task,DT_FixedDUR2,TK_NotStart,DUKHCONP1AZ9ARFF3390,Installation of Granite Counter Top,8171,8,8,160,0,110,110,160,0,0,0,,,,2014-10-13 08:00,2014-11-04 17:00,,2014-10-12 08:00,2014-11-03 17:00,2014-10-12 08:00,2014-11-03 17:00,2014-10-12 08:00,2014-11-03 17:00,2014-10-13 08:00,2014-11-04 17:00,,PT_Normal,,,,,USvVoopWTXOmWSn26fnldw,,,,N,0,0,,,2013-02-16 15:54,2013-02-16 15:56,admin,admin
504080,6359,125362,13662,0,N,N,N,CP_Drtn,TT_Task,DT_FixedDUR2,TK_NotStart,DUKHCONP1AZ9ARFF3385,Handrail &  Balustrade,8178,0,0,160,0,984.75,984.75,160,0,0,0,,,,2014-10-12 08:00,2014-11-03 17:00,,2014-10-12 08:00,2014-11-03 17:00,2014-10-12 08:00,2014-11-03 17:00,2014-10-12 08:00,2014-11-03 17:00,2014-10-12 08:00,2014-11-03 17:00,,PT_Normal,,,,,DCGAxFxmSq+LFjSMR7VX6A,,,,Y,0,0,,,2013-02-16 15:54,2013-02-16 15:56,admin,admin
504081,6359,125362,13662,0,N,N,N,CP_Drtn,TT_Task,DT_FixedDUR2,TK_NotStart,DUKHCONP1AZ9ARFF3395,Final Painting,8178,0,0,200,0,5928.18,5928.18,200,0,0,0,,,,2014-10-18 08:00,2014-11-15 17:00,,2014-10-18 08:00,2014-11-15 17:00,2014-10-18 08:00,2014-11-15 17:00,2014-10-18 08:00,2014-11-15 17:00,2014-10-18 08:00,2014-11-15 17:00,,PT_Normal,,,,,Z25LA+pLRs6aFIq6kK5w9Q,,,,Y,0,0,,,2013-02-16 15:54,2013-02-23 09:03,admin,admin
504082,6359,125362,13662,0,N,N,N,CP_Drtn,TT_Task,DT_FixedDUR2,TK_NotStart,DUKHCONP1AZ9ARFF3300,Block work,8168,0,0,200,0,7984.75,7984.75,200,0,0,0,,,,2014-06-17 08:00,2014-07-15 17:00,,2014-06-17 08:00,2014-07-15 17:00,2014-06-17 08:00,2014-07-15 17:00,2014-06-17 08:00,2014-07-15 17:00,2014-06-17 08:00,2014-07-15 17:00,,PT_Normal,,,,,PQlOtgtnSXSopkwmZZJKWw,,,,Y,0,0,,,2013-02-16 15:54,2013-02-16 15:56,admin,admin
504083,6359,125362,13662,0,N,N,N,CP_Drtn,TT_Task,DT_FixedDUR2,TK_NotStart,DUKHCONP1AZ9ARFF3305,Plastering work,8169,0,0,200,0,11124,11124,200,0,0,0,,,,2014-07-12 08:00,2014-08-12 17:00,,2014-07-12 08:00,2014-08-12 17:00,2014-07-12 08:00,2014-08-12 17:00,2014-07-12 08:00,2014-08-12 17:00,2014-07-12 08:00,2014-08-12 17:00,,PT_Normal,,,,,VE20ydFvTiCcEUd12MYJfg,,,,Y,0,0,,,2013-02-16 15:54,2013-02-16 15:56,admin,admin
504084,6359,125362,13662,0,N,N,N,CP_Drtn,TT_Task,DT_FixedDUR2,TK_NotStart,DUKHCONP1AZ9ARFF3310,Flooring screed,8164,96,96,168,0,1520.75,1520.75,168,0,0,0,,,,2014-08-06 08:00,2014-08-30 17:00,,2014-07-20 08:00,2014-08-16 17:00,2014-07-20 08:00,2014-08-16 17:00,2014-07-20 08:00,2014-08-16 17:00,2014-08-06 08:00,2014-08-30 17:00,,PT_Normal,,,,,8Vs4OIh3TTqsXlDIWr5NeQ,,,,N,0,0,,,2013-02-16 15:54,2013-02-16 15:56,admin,admin
504085,6359,125362,13662,0,N,N,N,CP_Drtn,TT_Task,DT_FixedDUR2,TK_NotStart,DUKHCONP1AZ9ARFF3315,Wet area waterproofing,8178,0,0,120,0,1518,1518,120,0,0,0,,,,2014-07-31 08:00,2014-08-20 17:00,,2014-07-31 08:00,2014-08-20 17:00,2014-07-31 08:00,2014-08-20 17:00,2014-07-31 08:00,2014-08-20 17:00,2014-07-31 08:00,2014-08-20 17:00,,PT_Normal,,,,,bONMjO8cSEywkGqALcs3og,,,,Y,0,0,,,2013-02-16 15:54,2013-02-16 15:56,admin,admin
504086,6359,125362,13662,0,N,N,N,CP_Drtn,TT_Task,DT_FixedDUR2,TK_NotStart,DUKHCONP1AZ9ARFF3330,Paint First coat,8178,112,112,200,0,5928.18,5928.18,200,0,0,0,,,,2014-08-17 08:00,2014-09-14 17:00,,2014-07-28 08:00,2014-08-28 17:00,2014-07-28 08:00,2014-08-28 17:00,2014-07-28 08:00,2014-08-28 17:00,2014-08-17 08:00,2014-09-14 17:00,,PT_Normal,,,,,4wiVzD3XRXaByXkpmDeUaQ,,,,N,0,0,,,2013-02-16 15:54,2013-02-23 09:03,admin,admin
504087,6359,125362,13662,0,N,N,N,CP_Drtn,TT_Task,DT_FixedDUR2,TK_NotStart,DUKHCONP1AZ9ARFF3320,Ceramic Wall Tiling,8170,0,0,200,0,2372.25,2372.25,200,0,0,0,,,,2014-08-11 08:00,2014-09-08 17:00,,2014-08-11 08:00,2014-09-08 17:00,2014-08-11 08:00,2014-09-08 17:00,2014-08-11 08:00,2014-09-08 17:00,2014-08-11 08:00,2014-09-08 17:00,,PT_Normal,,,,,Z8AfkQy0TL6OQduoP1k8vQ,,,,Y,0,0,,,2013-02-16 15:54,2013-02-16 15:56,admin,admin
504088,6359,125362,13662,0,N,N,N,CP_Drtn,TT_Task,DT_FixedDUR2,TK_NotStart,DUKHCONP1AZ9ARFF3325,Porcelain Tile flooring,8170,0,0,200,0,2180.25,2180.25,200,0,0,0,,,,2014-08-18 08:00,2014-09-15 17:00,,2014-08-18 08:00,2014-09-15 17:00,2014-08-18 08:00,2014-09-15 17:00,2014-08-18 08:00,2014-09-15 17:00,2014-08-18 08:00,2014-09-15 17:00,,PT_Normal,,,,,33KISCFuScOqUar0SDPbwg,,,,Y,0,0,,,2013-02-16 15:54,2013-02-16 15:56,admin,admin
504089,6359,125362,13662,0,N,N,N,CP_Drtn,TT_Task,DT_FixedDUR2,TK_NotStart,DUKHCONP1AZ9ARFF3335,Slate Tile Flooring & Skirting,8170,64,64,120,0,325,325,120,0,0,0,,,,2014-09-14 08:00,2014-09-30 17:00,,2014-09-04 08:00,2014-09-21 17:00,2014-09-04 08:00,2014-09-21 17:00,2014-09-04 08:00,2014-09-21 17:00,2014-09-14 08:00,2014-09-30 17:00,,PT_Normal,,,,,Y7SL6aAEQpSegC/4hBwiIA,,,,N,0,0,,,2013-02-16 15:54,2013-02-16 15:56,admin,admin
504090,6359,125362,13662,0,N,N,N,CP_Drtn,TT_Task,DT_FixedDUR2,TK_NotStart,DUKHCONP1AZ9ARFF3350,Granite - Stair case flooring & Skirting,8171,16,16,160,0,1093.75,1093.75,160,0,0,0,,,,2014-09-10 08:00,2014-10-02 17:00,,2014-09-08 08:00,2014-09-30 17:00,2014-09-08 08:00,2014-09-30 17:00,2014-09-08 08:00,2014-09-30 17:00,2014-09-10 08:00,2014-10-02 17:00,,PT_Normal,,,,,gBHFbHPZRcGQ46Ze85Eylg,,,,N,0,0,,,2013-02-16 15:54,2013-02-16 15:56,admin,admin
504091,6359,125365,13662,0,N,N,N,CP_Drtn,TT_Task,DT_FixedDUR2,TK_NotStart,DUKHCONP1AZ9STFF2020,Column-Rebar & Formwork,8165,0,0,200,0,4476.5,4476.5,200,0,0,0,,,,2014-04-10 08:00,2014-05-08 17:00,,2014-04-10 08:00,2014-05-08 17:00,2014-04-10 08:00,2014-05-08 17:00,2014-04-10 08:00,2014-05-08 17:00,2014-04-10 08:00,2014-05-08 17:00,,PT_Normal,,,,,v5nVaFh3Tkuba3/X7659Mw,,,,Y,0,0,,,2013-02-16 15:54,2013-02-16 15:56,admin,admin
504092,6359,125365,13662,0,N,N,N,CP_Drtn,TT_Task,DT_FixedDUR2,TK_NotStart,DUKHCONP1AZ9STFF2025,Column-Concrete,8167,0,0,192,0,280,280,192,0,0,0,,,,2014-04-22 08:00,2014-05-19 17:00,,2014-04-22 08:00,2014-05-19 17:00,2014-04-22 08:00,2014-05-19 17:00,2014-04-22 08:00,2014-05-19 17:00,2014-04-22 08:00,2014-05-19 17:00,,PT_Normal,,,,,5sihZ6XSQVmVJQgDtIEqag,,,,Y,0,0,,,2013-02-16 15:54,2013-02-16 15:56,admin,admin
504093,6359,125365,13662,0,N,N,N,CP_Drtn,TT_Task,DT_FixedDUR2,TK_NotStart,DUKHCONP1AZ9STFF2030,"Beam, Stairs ,Slab-Rebar & Formwork",8165,0,0,200,0,20147.75,20147.75,200,0,0,0,,,,2014-05-07 08:00,2014-06-04 17:00,,2014-05-07 08:00,2014-06-04 17:00,2014-05-07 08:00,2014-06-04 17:00,2014-05-07 08:00,2014-06-04 17:00,2014-05-07 08:00,2014-06-04 17:00,,PT_Normal,,,,,3043YnFhR3GdfmIUbs2g9w,,,,Y,0,0,,,2013-02-16 15:54,2013-02-16 15:56,admin,admin
504094,6359,125365,13662,0,N,N,N,CP_Drtn,TT_Task,DT_FixedDUR2,TK_NotStart,DUKHCONP1AZ9STFF2035,"Beam, Stairs ,Slab-Concrete",8167,0,0,112,0,1428,1428,112,0,0,0,,,,2014-05-24 08:00,2014-06-08 17:00,,2014-05-24 08:00,2014-06-08 17:00,2014-05-24 08:00,2014-06-08 17:00,2014-05-24 08:00,2014-06-08 17:00,2014-05-24 08:00,2014-06-08 17:00,,PT_Normal,,,,,BUUb6esXS+ej47/XA3RFlA,,,,Y,0,0,,,2013-02-16 15:54,2013-02-16 15:56,admin,admin
504095,6359,125366,13662,0,N,N,N,CP_Drtn,TT_Task,DT_FixedDUR2,TK_NotStart,DUKHCONP1AZ9STRF2040,Column-Rebar & Formwork,8165,72,0,144,0,1506.75,1506.75,144,0,0,0,,,,2014-06-05 08:00,2014-06-25 17:00,,2014-05-26 08:00,2014-06-15 17:00,2014-05-26 08:00,2014-06-15 17:00,2014-05-26 08:00,2014-06-15 17:00,2014-06-05 08:00,2014-06-25 17:00,,PT_Normal,,,,,whFwgYhZRreC0ljpjsWkUA,,,,N,0,0,,,2013-02-16 15:54,2013-02-16 15:56,admin,admin
504096,6359,125366,13662,0,N,N,N,CP_Drtn,TT_Task,DT_FixedDUR2,TK_NotStart,DUKHCONP1AZ9STRF2045,Column-Concrete,8167,72,0,136,0,66.5,66.5,136,0,0,0,,,,2014-06-09 08:00,2014-06-28 17:00,,2014-05-29 08:00,2014-06-17 17:00,2014-05-29 08:00,2014-06-17 17:00,2014-05-29 08:00,2014-06-17 17:00,2014-06-09 08:00,2014-06-28 17:00,,PT_Normal,,,,,SITPdw0rRayH0oxbkQDYMA,,,,N,0,0,,,2013-02-16 15:54,2013-02-16 15:56,admin,admin
504097,6359,125366,13662,0,N,N,N,CP_Drtn,TT_Task,DT_FixedDUR2,TK_NotStart,DUKHCONP1AZ9STRF2050,Slab-Rebar & Formwork - Head Room,8165,72,0,160,0,3416,3416,160,0,0,0,,,,2014-06-11 08:00,2014-07-03 17:00,,2014-06-01 08:00,2014-06-23 17:00,2014-06-01 08:00,2014-06-23 17:00,2014-06-01 08:00,2014-06-23 17:00,2014-06-11 08:00,2014-07-03 17:00,,PT_Normal,,,,,nPfax2qDTASdOFr+v0ND2g,,,,N,0,0,,,2013-02-16 15:54,2013-02-16 15:56,admin,admin
504098,6359,125366,13662,0,N,N,N,CP_Drtn,TT_Task,DT_FixedDUR2,TK_NotStart,DUKHCONP1AZ9STRF2055,Slab-Concrete-Head room,8167,72,0,104,0,315,315,104,0,0,0,,,,2014-06-22 08:00,2014-07-06 17:00,,2014-06-11 08:00,2014-06-25 17:00,2014-06-11 08:00,2014-06-25 17:00,2014-06-11 08:00,2014-06-25 17:00,2014-06-22 08:00,2014-07-06 17:00,,PT_Normal,,,,,NCXDOVeZT0Ca8m/f3nvNWA,,,,N,0,0,,,2013-02-16 15:54,2013-02-16 15:56,admin,admin
504099,6359,125366,13662,0,N,N,N,CP_Drtn,TT_Task,DT_FixedDUR2,TK_NotStart,DUKHCONP1AZ9STRF2060,Construction of Parapets,8168,416,0,200,0,2750,2750,200,0,0,0,,,,2014-08-17 08:00,2014-09-14 17:00,,2014-06-14 08:00,2014-07-12 17:00,2014-06-14 08:00,2014-07-12 17:00,2014-06-14 08:00,2014-07-12 17:00,2014-08-17 08:00,2014-09-14 17:00,,PT_Normal,,,,,6QvvQm9fRcaJs1io+llWeA,,,,N,0,0,,,2013-02-16 15:54,2013-02-16 15:56,admin,admin
504100,6359,125366,13662,0,N,N,N,CP_Drtn,TT_Task,DT_FixedDUR2,TK_NotStart,DUKHCONP1AZ9STRF2065,Construction of up stands/Plinth,8165,416,176,200,0,693,693,200,0,0,0,,,,2014-08-23 08:00,2014-09-20 17:00,,2014-06-19 08:00,2014-07-17 17:00,2014-06-19 08:00,2014-07-17 17:00,2014-06-19 08:00,2014-07-17 17:00,2014-08-23 08:00,2014-09-20 17:00,,PT_Normal,,,,,wfx6tmY6RYu0gu0ouysNdA,,,,N,0,0,,,2013-02-16 15:54,2013-02-16 15:56,admin,admin
504101,6359,125367,13662,0,N,N,N,CP_Drtn,TT_Task,DT_FixedDUR2,TK_NotStart,DUKHCONP1AZ9STGF2000,Column-Rebar & Formwork,8165,0,0,200,0,5057.5,5057.5,200,0,0,0,,,,2014-02-25 08:00,2014-03-25 17:00,,2014-02-25 08:00,2014-03-25 17:00,2014-02-25 08:00,2014-03-25 17:00,2014-02-25 08:00,2014-03-25 17:00,2014-02-25 08:00,2014-03-25 17:00,,PT_Normal,,,,,b/qL5hs6TRCvk/hwDjyVbQ,,,,Y,0,0,,,2013-02-16 15:54,2013-02-16 15:56,admin,admin
504102,6359,125367,13662,0,N,N,N,CP_Drtn,TT_Task,DT_FixedDUR2,TK_NotStart,DUKHCONP1AZ9STGF2005,Column-Concrete,8167,0,0,192,0,318.5,318.5,192,0,0,0,,,,2014-03-06 08:00,2014-04-02 17:00,,2014-03-06 08:00,2014-04-02 17:00,2014-03-06 08:00,2014-04-02 17:00,2014-03-06 08:00,2014-04-02 17:00,2014-03-06 08:00,2014-04-02 17:00,,PT_Normal,,,,,VXV1N2kPQFaMNRk8yjVDGg,,,,Y,0,0,,,2013-02-16 15:54,2013-02-16 15:56,admin,admin
504103,6359,125367,13662,0,N,N,N,CP_Drtn,TT_Task,DT_FixedDUR2,TK_NotStart,DUKHCONP1AZ9STGF2010,"Beam, Stairs ,Slab-Rebar & Formwork",8165,0,0,200,0,21035,21035,200,0,0,0,,,,2014-03-22 08:00,2014-04-19 17:00,,2014-03-22 08:00,2014-04-19 17:00,2014-03-22 08:00,2014-04-19 17:00,2014-03-22 08:00,2014-04-19 17:00,2014-03-22 08:00,2014-04-19 17:00,,PT_Normal,,,,,f4FUiy8XRo+sfTPUOVACJw,,,,Y,0,0,,,2013-02-16 15:54,2013-02-16 15:56,admin,admin
504104,6359,125367,13662,0,N,N,N,CP_Drtn,TT_Task,DT_FixedDUR2,TK_NotStart,DUKHCONP1AZ9STGF2015,"Beam, Stairs ,Slab-Concrete",8167,0,0,112,0,1617,1617,112,0,0,0,,,,2014-04-07 08:00,2014-04-22 17:00,,2014-04-07 08:00,2014-04-22 17:00,2014-04-07 08:00,2014-04-22 17:00,2014-04-07 08:00,2014-04-22 17:00,2014-04-07 08:00,2014-04-22 17:00,,PT_Normal,,,,,mOtm1q8lQlWTNhGb0Csm5A,,,,Y,0,0,,,2013-02-16 15:54,2013-02-16 15:56,admin,admin
504105,6359,125369,13662,0,N,N,N,CP_Drtn,TT_Task,DT_FixedDUR2,TK_NotStart,DUKHCONP1AZ9STUG1015,Footing Waterproofing & Screed,8164,0,0,200,0,719.5,719.5,200,0,0,0,,,,2013-11-02 08:00,2013-11-30 17:00,,2013-11-02 08:00,2013-11-30 17:00,2013-11-02 08:00,2013-11-30 17:00,2013-11-02 08:00,2013-11-30 17:00,2013-11-02 08:00,2013-11-30 17:00,,PT_Normal,,,,,rF42Q3BZSLuomFLcJ2wD0Q,,,,Y,0,0,,,2013-02-16 15:54,2013-02-16 15:56,admin,admin
504106,6359,125369,13662,0,N,N,N,CP_Drtn,TT_Task,DT_FixedDUR2,TK_NotStart,DUKHCONP1AZ9STUG1020,Construction of foundations,8165,0,0,160,0,9721.25,9721.25,160,0,0,0,,,,2013-11-17 08:00,2013-12-09 17:00,,2013-11-17 08:00,2013-12-09 17:00,2013-11-17 08:00,2013-12-09 17:00,2013-11-17 08:00,2013-12-09 17:00,2013-11-17 08:00,2013-12-09 17:00,,PT_Normal,,,,,vuiD4bYFQau6ZmWK1KDkDA,,,,Y,0,0,,,2013-02-16 15:54,2013-02-16 15:56,admin,admin
504107,6359,125369,13662,0,N,N,N,CP_Drtn,TT_Task,DT_FixedDUR2,TK_NotStart,DUKHCONP1AZ9STUG1030,Waterproofing Footing & Neck Column,8178,0,0,200,0,643.5,643.5,200,0,0,0,,,,2013-12-05 08:00,2014-01-04 17:00,,2013-12-05 08:00,2014-01-04 17:00,2013-12-05 08:00,2014-01-04 17:00,2013-12-05 08:00,2014-01-04 17:00,2013-12-05 08:00,2014-01-04 17:00,,PT_Normal,,,,,38TZvIWaRamkrNPGdRkrcA,,,,Y,0,0,,,2013-02-16 15:54,2013-02-16 15:56,admin,admin
504108,6359,125369,13662,0,N,N,N,CP_Drtn,TT_Task,DT_FixedDUR2,TK_NotStart,DUKHCONP1AZ9STUG1035,Backfilling Upto Grade Beam Bottom,8177,0,0,200,0,1095,1095,200,825,0,825,,,,2013-12-21 08:00,2014-01-18 17:00,,2013-12-21 08:00,2014-01-18 17:00,2013-12-21 08:00,2014-01-18 17:00,2013-12-21 08:00,2014-01-18 17:00,2013-12-21 08:00,2014-01-18 17:00,,PT_Normal,,,,,6TCG4T72Tc6WGoMCH8KBwg,,,,Y,0,0,,,2013-02-16 15:54,2013-02-16 15:56,admin,admin
504109,6359,125369,13662,0,N,N,N,CP_Drtn,TT_Task,DT_FixedDUR2,TK_NotStart,DUKHCONP1AZ9STUG1040,Construction of Grade Beams,8163,0,0,200,0,9462.25,9462.25,200,0,0,0,,,,2014-01-06 08:00,2014-02-03 17:00,,2014-01-06 08:00,2014-02-03 17:00,2014-01-06 08:00,2014-02-03 17:00,2014-01-06 08:00,2014-02-03 17:00,2014-01-06 08:00,2014-02-03 17:00,,PT_Normal,,,,,nQqvmypPT+6WJBP1x318wQ,,,,Y,0,0,,,2013-02-16 15:54,2013-02-16 15:56,admin,admin
504110,6359,125369,13662,0,N,N,N,CP_Drtn,TT_Task,DT_FixedDUR2,TK_NotStart,DUKHCONP1AZ9STUG1045,Construction of slab on grade,8163,0,0,200,0,5529,5529,200,0,0,0,,,,2014-02-08 08:00,2014-03-09 17:00,,2014-02-08 08:00,2014-03-09 17:00,2014-02-08 08:00,2014-03-09 17:00,2014-02-08 08:00,2014-03-09 17:00,2014-02-08 08:00,2014-03-09 17:00,,PT_Normal,,,,,7wlbu3LRQAuMfJ3u8NWkNA,,,,Y,0,0,,,2013-02-16 15:54,2013-02-16 15:56,admin,admin
504111,6359,125369,13662,0,N,N,N,CP_Drtn,TT_Task,DT_FixedDUR2,TK_NotStart,DUKHCONP1AZ9STUG1025,Construction of neck of columns,8165,0,0,200,0,2007.25,2007.25,200,0,0,0,,,,2013-11-26 08:00,2013-12-25 17:00,,2013-11-26 08:00,2013-12-25 17:00,2013-11-26 08:00,2013-12-25 17:00,2013-11-26 08:00,2013-12-25 17:00,2013-11-26 08:00,2013-12-25 17:00,,PT_Normal,,,,,VdHqIcp1SqKuD6WLpKKshg,,,,Y,0,0,,,2013-02-16 15:54,2013-02-16 15:56,admin,admin
504112,6359,125369,13662,0,N,N,N,CP_Drtn,TT_Task,DT_FixedDUR2,TK_NotStart,DUKHCONP1AZ9STUG1000,Footing Excavation,8177,0,0,200,0,1394,1394,200,656,0,656,,,,2013-10-09 08:00,2013-11-09 17:00,,2013-10-09 08:00,2013-11-09 17:00,2013-10-09 08:00,2013-11-09 17:00,2013-10-09 08:00,2013-11-09 17:00,2013-10-09 08:00,2013-11-09 17:00,,PT_Normal,,,,,d4YdjpulSyquhbFWYANqzg,,,,Y,0,0,,,2013-02-16 15:54,2013-02-16 15:56,admin,admin
504113,6359,125369,13662,0,N,N,N,CP_Drtn,TT_Task,DT_FixedDUR2,TK_NotStart,DUKHCONP1AZ9STUG1005,Footing Antitermite,8178,0,0,184,0,1980,1980,184,0,0,0,,,,2013-10-23 08:00,2013-11-18 17:00,,2013-10-23 08:00,2013-11-18 17:00,2013-10-23 08:00,2013-11-18 17:00,2013-10-23 08:00,2013-11-18 17:00,2013-10-23 08:00,2013-11-18 17:00,,PT_Normal,,,,,pJ9REf5IQ1ydmgXMCAJ7mg,,,,Y,0,0,,,2013-02-16 15:54,2013-02-16 15:56,admin,admin
504114,6359,125369,13662,0,N,N,N,CP_Drtn,TT_Task,DT_FixedDUR2,TK_NotStart,DUKHCONP1AZ9STUG1010,Footing Blinding,8163,0,0,184,0,994,994,184,0,0,0,,,,2013-10-27 08:00,2013-11-21 17:00,,2013-10-27 08:00,2013-11-21 17:00,2013-10-27 08:00,2013-11-21 17:00,2013-10-27 08:00,2013-11-21 17:00,2013-10-27 08:00,2013-11-21 17:00,,PT_Normal,,,,,Mofso5rOST6h219Y+TtuKg,,,,Y,0,0,,,2013-02-16 15:54,2013-02-16 15:56,admin,admin
504115,6359,125373,13662,0,N,N,N,CP_Drtn,TT_Task,DT_FixedDUR2,TK_NotStart,DUKHCONP1AZ6STUG1000,Footing Excavation,8177,0,0,200,0,1114,1114,200,524,0,524,,,,2013-07-10 08:00,2013-08-07 17:00,,2013-07-10 08:00,2013-08-07 17:00,2013-07-10 08:00,2013-08-07 17:00,2013-07-10 08:00,2013-08-07 17:00,2013-07-10 08:00,2013-08-07 17:00,,PT_Normal,,,,,EODDAwNvRvOmb4VHlnPaig,,,,Y,0,0,,,2013-02-16 15:54,2013-02-16 15:56,admin,admin
504116,6359,125373,13662,0,N,N,N,CP_Drtn,TT_Task,DT_FixedDUR2,TK_NotStart,DUKHCONP1AZ6STUG1005,Footing Antitermite,8178,0,0,184,0,1584,1584,184,0,0,0,,,,2013-07-22 08:00,2013-08-20 17:00,,2013-07-22 08:00,2013-08-20 17:00,2013-07-22 08:00,2013-08-20 17:00,2013-07-22 08:00,2013-08-20 17:00,2013-07-22 08:00,2013-08-20 17:00,,PT_Normal,,,,,i4Xa2ETASRWXtc0qUko2ew,,,,Y,0,0,,,2013-02-16 15:54,2013-02-16 15:56,admin,admin
504117,6359,125373,13662,0,N,N,N,CP_Drtn,TT_Task,DT_FixedDUR2,TK_NotStart,DUKHCONP1AZ6STUG1010,Footing Blinding,8163,0,0,184,0,794.5,794.5,184,0,0,0,,,,2013-07-25 08:00,2013-08-24 17:00,,2013-07-25 08:00,2013-08-24 17:00,2013-07-25 08:00,2013-08-24 17:00,2013-07-25 08:00,2013-08-24 17:00,2013-07-25 08:00,2013-08-24 17:00,,PT_Normal,,,,,7M+DmV5uQAeVtlzr6sra9A,,,,Y,0,0,,,2013-02-16 15:54,2013-02-16 15:56,admin,admin
504118,6359,125373,13662,0,N,N,N,CP_Drtn,TT_Task,DT_FixedDUR2,TK_NotStart,DUKHCONP1AZ6STUG1015,Footing Waterproofing & Screed,8164,0,0,200,0,574.75,574.75,200,0,0,0,,,,2013-07-31 08:00,2013-09-01 17:00,,2013-07-31 08:00,2013-09-01 17:00,2013-07-31 08:00,2013-09-01 17:00,2013-07-31 08:00,2013-09-01 17:00,2013-07-31 08:00,2013-09-01 17:00,,PT_Normal,,,,,4OSagSOBTRyvFH/DeswHvw,,,,Y,0,0,,,2013-02-16 15:54,2013-02-16 15:56,admin,admin
504119,6359,125373,13662,0,N,N,N,CP_Drtn,TT_Task,DT_FixedDUR2,TK_NotStart,DUKHCONP1AZ6STUG1020,Construction of foundations,8165,0,0,160,0,7778.75,7778.75,160,0,0,0,,,,2013-08-19 08:00,2013-09-10 17:00,,2013-08-19 08:00,2013-09-10 17:00,2013-08-19 08:00,2013-09-10 17:00,2013-08-19 08:00,2013-09-10 17:00,2013-08-19 08:00,2013-09-10 17:00,,PT_Normal,,,,,xEAfFp68RTK0jyiK6ECm3Q,,,,Y,0,0,,,2013-02-16 15:54,2013-02-16 15:56,admin,admin
504120,6359,125373,13662,0,N,N,N,CP_Drtn,TT_Task,DT_FixedDUR2,TK_NotStart,DUKHCONP1AZ6STUG1025,Construction of neck of columns,8165,0,0,200,0,1606.5,1606.5,200,0,0,0,,,,2013-08-28 08:00,2013-09-25 17:00,,2013-08-28 08:00,2013-09-25 17:00,2013-08-28 08:00,2013-09-25 17:00,2013-08-28 08:00,2013-09-25 17:00,2013-08-28 08:00,2013-09-25 17:00,,PT_Normal,,,,,TO4YeJw8QEiz+GcWIIJe+Q,,,,Y,0,0,,,2013-02-16 15:54,2013-02-16 15:56,admin,admin
504121,6359,125373,13662,0,N,N,N,CP_Drtn,TT_Task,DT_FixedDUR2,TK_NotStart,DUKHCONP1AZ6STUG1030,Waterproofing Footing & Neck Column,8178,0,0,200,0,516,516,200,0,0,0,,,,2013-09-07 08:00,2013-10-05 17:00,,2013-09-07 08:00,2013-10-05 17:00,2013-09-07 08:00,2013-10-05 17:00,2013-09-07 08:00,2013-10-05 17:00,2013-09-07 08:00,2013-10-05 17:00,,PT_Normal,,,,,DGbhEloiRbOSgW5KuOA/zg,,,,Y,0,0,,,2013-02-16 15:54,2013-02-16 15:56,admin,admin
504122,6359,125373,13662,0,N,N,N,CP_Drtn,TT_Task,DT_FixedDUR2,TK_NotStart,DUKHCONP1AZ6STUG1035,Backfilling Upto Grade Beam Bottom,8177,0,0,200,0,1041,1041,200,825,0,825,,,,2013-09-21 08:00,2013-10-21 17:00,,2013-09-21 08:00,2013-10-21 17:00,2013-09-21 08:00,2013-10-21 17:00,2013-09-21 08:00,2013-10-21 17:00,2013-09-21 08:00,2013-10-21 17:00,,PT_Normal,,,,,uRT9cBm/R+OxuvJFQXiXrQ,,,,Y,0,0,,,2013-02-16 15:54,2013-02-16 15:56,admin,admin
504123,6359,125373,13662,0,N,N,N,CP_Drtn,TT_Task,DT_FixedDUR2,TK_NotStart,DUKHCONP1AZ6STUG1040,Construction of Grade Beams,8163,0,0,200,0,7568.75,7568.75,200,0,0,0,,,,2013-10-07 08:00,2013-11-06 17:00,,2013-10-07 08:00,2013-11-06 17:00,2013-10-07 08:00,2013-11-06 17:00,2013-10-07 08:00,2013-11-06 17:00,2013-10-07 08:00,2013-11-06 17:00,,PT_Normal,,,,,u0mqIas0QZqYp3mWEvo4bQ,,,,Y,0,0,,,2013-02-16 15:54,2013-02-16 15:56,admin,admin
504124,6359,125373,13662,0,N,N,N,CP_Drtn,TT_Task,DT_FixedDUR2,TK_NotStart,DUKHCONP1AZ6STUG1045,Construction of slab on grade,8163,0,0,200,0,4422,4422,200,0,0,0,,,,2013-11-11 08:00,2013-12-09 17:00,,2013-11-11 08:00,2013-12-09 17:00,2013-11-11 08:00,2013-12-09 17:00,2013-11-11 08:00,2013-12-09 17:00,2013-11-11 08:00,2013-12-09 17:00,,PT_Normal,,,,,C0EWmawaQMuqNF4g++6EnA,,,,Y,0,0,,,2013-02-16 15:54,2013-02-16 15:56,admin,admin
504125,6359,125375,13662,0,N,N,N,CP_Drtn,TT_Task,DT_FixedDUR2,TK_NotStart,DUKHCONP1AZ6STRF2040,Column-Rebar & Formwork,8165,64,0,144,0,1205.75,1205.75,144,0,0,0,,,,2014-03-04 08:00,2014-03-24 17:00,,2014-02-23 08:00,2014-03-15 17:00,2014-02-23 08:00,2014-03-15 17:00,2014-02-23 08:00,2014-03-15 17:00,2014-03-04 08:00,2014-03-24 17:00,,PT_Normal,,,,,vWjqct22TpqCWs5pmWQkGw,,,,N,0,0,,,2013-02-16 15:54,2013-02-16 15:56,admin,admin
504126,6359,125375,13662,0,N,N,N,CP_Drtn,TT_Task,DT_FixedDUR2,TK_NotStart,DUKHCONP1AZ6STRF2045,Column-Concrete,8167,64,0,136,0,52.5,52.5,136,0,0,0,,,,2014-03-08 08:00,2014-03-26 17:00,,2014-02-26 08:00,2014-03-17 17:00,2014-02-26 08:00,2014-03-17 17:00,2014-02-26 08:00,2014-03-17 17:00,2014-03-08 08:00,2014-03-26 17:00,,PT_Normal,,,,,DOHozTGKQMW4dxeLJIti5A,,,,N,0,0,,,2013-02-16 15:54,2013-02-16 15:56,admin,admin
504127,6359,125375,13662,0,N,N,N,CP_Drtn,TT_Task,DT_FixedDUR2,TK_NotStart,DUKHCONP1AZ6STRF2050,Slab-Rebar & Formwork - Head Room,8165,64,0,160,0,2735.25,2735.25,160,0,0,0,,,,2014-03-10 08:00,2014-04-01 17:00,,2014-03-01 08:00,2014-03-23 17:00,2014-03-01 08:00,2014-03-23 17:00,2014-03-01 08:00,2014-03-23 17:00,2014-03-10 08:00,2014-04-01 17:00,,PT_Normal,,,,,AMWIyHK8QUCnIHdZH6M3Ww,,,,N,0,0,,,2013-02-16 15:54,2013-02-16 15:56,admin,admin
504128,6359,125375,13662,0,N,N,N,CP_Drtn,TT_Task,DT_FixedDUR2,TK_NotStart,DUKHCONP1AZ6STRF2055,Slab-Concrete-Head room,8167,64,0,104,0,252,252,104,0,0,0,,,,2014-03-20 08:00,2014-04-03 17:00,,2014-03-11 08:00,2014-03-25 17:00,2014-03-11 08:00,2014-03-25 17:00,2014-03-11 08:00,2014-03-25 17:00,2014-03-20 08:00,2014-04-03 17:00,,PT_Normal,,,,,JnjoEeBCTg+PQPhYGkKm5A,,,,N,0,0,,,2013-02-16 15:54,2013-02-16 15:56,admin,admin
504129,6359,125375,13662,0,N,N,N,CP_Drtn,TT_Task,DT_FixedDUR2,TK_NotStart,DUKHCONP1AZ6STRF2060,Construction of Parapets,8168,448,32,200,0,2200,2200,200,0,0,0,,,,2014-05-18 08:00,2014-06-15 17:00,,2014-03-13 08:00,2014-04-10 17:00,2014-03-13 08:00,2014-04-10 17:00,2014-03-13 08:00,2014-04-10 17:00,2014-05-18 08:00,2014-06-15 17:00,,PT_Normal,,,,,CjC1W1rGRjemyp/sX70G4w,,,,N,0,0,,,2013-02-16 15:54,2013-02-16 15:56,admin,admin
504130,6359,125375,13662,0,N,N,N,CP_Drtn,TT_Task,DT_FixedDUR2,TK_NotStart,DUKHCONP1AZ6STRF2065,Construction of up stands/Plinth,8165,416,0,200,0,554.75,554.75,200,0,0,0,,,,2014-05-24 08:00,2014-06-21 17:00,,2014-03-24 08:00,2014-04-21 17:00,2014-03-24 08:00,2014-04-21 17:00,2014-03-24 08:00,2014-04-21 17:00,2014-05-24 08:00,2014-06-21 17:00,,PT_Normal,,,,,ww349yC1TgqYb3QOIsb1gQ,,,,N,0,0,,,2013-02-16 15:54,2013-02-16 15:56,admin,admin
504131,6359,125376,13662,0,N,N,N,CP_Drtn,TT_Task,DT_FixedDUR2,TK_NotStart,DUKHCONP1AZ6STGF2015,"Beam, Stairs ,Slab-Concrete",8167,16,0,112,0,1295,1295,112,0,0,0,,,,2014-01-09 08:00,2014-01-25 17:00,,2014-01-07 08:00,2014-01-22 17:00,2014-01-07 08:00,2014-01-22 17:00,2014-01-07 08:00,2014-01-22 17:00,2014-01-09 08:00,2014-01-25 17:00,,PT_Normal,,,,,jhAIDYkaTI2nITEfa7osEg,,,,N,0,0,,,2013-02-16 15:54,2013-02-16 15:56,admin,admin
504132,6359,125376,13662,0,N,N,N,CP_Drtn,TT_Task,DT_FixedDUR2,TK_NotStart,DUKHCONP1AZ6STGF2000,Column-Rebar & Formwork,8165,0,0,200,0,4046,4046,200,0,0,0,,,,2013-11-27 08:00,2013-12-26 17:00,,2013-11-27 08:00,2013-12-26 17:00,2013-11-27 08:00,2013-12-26 17:00,2013-11-27 08:00,2013-12-26 17:00,2013-11-27 08:00,2013-12-26 17:00,,PT_Normal,,,,,HiFV7O9NTZ+527HvGUtNIw,,,,Y,0,0,,,2013-02-16 15:54,2013-02-16 15:56,admin,admin
504133,6359,125376,13662,0,N,N,N,CP_Drtn,TT_Task,DT_FixedDUR2,TK_NotStart,DUKHCONP1AZ6STGF2005,Column-Concrete,8167,16,0,192,0,255.5,255.5,192,0,0,0,,,,2013-12-08 08:00,2014-01-05 17:00,,2013-12-05 08:00,2014-01-02 17:00,2013-12-05 08:00,2014-01-02 17:00,2013-12-05 08:00,2014-01-02 17:00,2013-12-08 08:00,2014-01-05 17:00,,PT_Normal,,,,,7s4rmbD6QCyho+kgQ50oyA,,,,N,0,0,,,2013-02-16 15:54,2013-02-16 15:56,admin,admin
504134,6359,125376,13662,0,N,N,N,CP_Drtn,TT_Task,DT_FixedDUR2,TK_NotStart,DUKHCONP1AZ6STGF2010,"Beam, Stairs ,Slab-Rebar & Formwork",8165,16,0,200,0,16829.75,16829.75,200,0,0,0,,,,2013-12-24 08:00,2014-01-21 17:00,,2013-12-22 08:00,2014-01-19 17:00,2013-12-22 08:00,2014-01-19 17:00,2013-12-22 08:00,2014-01-19 17:00,2013-12-24 08:00,2014-01-21 17:00,,PT_Normal,,,,,9CaLrmvyS6KTLtT4mnz/mA,,,,N,0,0,,,2013-02-16 15:54,2013-02-16 15:56,admin,admin
504135,6359,125377,13662,0,N,N,N,CP_Drtn,TT_Task,DT_FixedDUR2,TK_NotStart,DUKHCONP1AZ6STFF2020,Column-Rebar & Formwork,8165,16,0,200,0,3580.5,3580.5,200,0,0,0,,,,2014-01-12 08:00,2014-02-09 17:00,,2014-01-09 08:00,2014-02-06 17:00,2014-01-09 08:00,2014-02-06 17:00,2014-01-09 08:00,2014-02-06 17:00,2014-01-12 08:00,2014-02-09 17:00,,PT_Normal,,,,,Wvlg9pCsTkisk0zEeEQ5uw,,,,N,0,0,,,2013-02-16 15:54,2013-02-16 15:56,admin,admin
504136,6359,125377,13662,0,N,N,N,CP_Drtn,TT_Task,DT_FixedDUR2,TK_NotStart,DUKHCONP1AZ6STFF2025,Column-Concrete,8167,32,0,192,0,224,224,192,0,0,0,,,,2014-01-23 08:00,2014-02-20 17:00,,2014-01-19 08:00,2014-02-16 17:00,2014-01-19 08:00,2014-02-16 17:00,2014-01-19 08:00,2014-02-16 17:00,2014-01-23 08:00,2014-02-20 17:00,,PT_Normal,,,,,ZxKMNEWdRrqSQ4HuuG/APw,,,,N,0,0,,,2013-02-16 15:54,2013-02-16 15:56,admin,admin
504137,6359,125377,13662,0,N,N,N,CP_Drtn,TT_Task,DT_FixedDUR2,TK_NotStart,DUKHCONP1AZ6STFF2030,"Beam, Stairs ,Slab-Rebar & Formwork",8165,32,0,200,0,16119.25,16119.25,200,0,0,0,,,,2014-02-08 08:00,2014-03-09 17:00,,2014-02-03 08:00,2014-03-04 17:00,2014-02-03 08:00,2014-03-04 17:00,2014-02-03 08:00,2014-03-04 17:00,2014-02-08 08:00,2014-03-09 17:00,,PT_Normal,,,,,LmL3GPXOQkapj2nqsendUQ,,,,N,0,0,,,2013-02-16 15:54,2013-02-16 15:56,admin,admin
504138,6359,125377,13662,0,N,N,N,CP_Drtn,TT_Task,DT_FixedDUR2,TK_NotStart,DUKHCONP1AZ6STFF2035,"Beam, Stairs ,Slab-Concrete",8167,32,0,112,0,1141,1141,112,0,0,0,,,,2014-02-25 08:00,2014-03-12 17:00,,2014-02-20 08:00,2014-03-08 17:00,2014-02-20 08:00,2014-03-08 17:00,2014-02-20 08:00,2014-03-08 17:00,2014-02-25 08:00,2014-03-12 17:00,,PT_Normal,,,,,i7kOFepvQliApsirTG8P9A,,,,N,0,0,,,2013-02-16 15:54,2013-02-16 15:56,admin,admin
504139,6359,125378,13662,0,N,N,N,CP_Drtn,TT_Task,DT_FixedDUR2,TK_NotStart,DUKHCONP1AZ6ACTC8000,Pre-Commissioning & Testing of AC Works,8178,0,0,200,0,1500,1500,200,0,0,0,,,,2014-08-18 08:00,2014-09-15 17:00,,2014-08-18 08:00,2014-09-15 17:00,2014-08-18 08:00,2014-09-15 17:00,2014-08-18 08:00,2014-09-15 17:00,2014-08-18 08:00,2014-09-15 17:00,,PT_Normal,,,,,D0Ef6cslTLqlYJzLpwZL9Q,,,,Y,0,0,,,2013-02-16 15:54,2013-02-16 15:56,admin,admin
504140,6359,125378,13662,0,N,N,N,CP_Drtn,TT_Task,DT_FixedDUR2,TK_NotStart,DUKHCONP1AZ6ELTC8010,Pre-Commissioning & Testing of Electrical Works,8178,0,0,200,0,3000,3000,200,0,0,0,,,,2014-08-18 08:00,2014-09-15 17:00,,2014-08-18 08:00,2014-09-15 17:00,2014-08-18 08:00,2014-09-15 17:00,2014-08-18 08:00,2014-09-15 17:00,2014-08-18 08:00,2014-09-15 17:00,,PT_Normal,,,,,uw+e0t1yQHqiJTuzuAKepw,,,,Y,0,0,,,2013-02-16 15:54,2013-02-16 15:56,admin,admin
504141,6359,125378,13662,0,N,N,N,CP_Drtn,TT_Task,DT_FixedDUR2,TK_NotStart,DUKHCONP1AZ6PLTC8005,Pre-Commissioning & Testing of Plumbing Works,8178,0,0,200,0,3000,3000,200,0,0,0,,,,2014-08-18 08:00,2014-09-15 17:00,,2014-08-18 08:00,2014-09-15 17:00,2014-08-18 08:00,2014-09-15 17:00,2014-08-18 08:00,2014-09-15 17:00,2014-08-18 08:00,2014-09-15 17:00,,PT_Normal,,,,,D0PyQZajQP2UGSjAFrgW9Q,,,,Y,0,0,,,2013-02-16 15:54,2013-02-16 15:56,admin,admin
504142,6359,125380,13662,0,N,N,N,CP_Drtn,TT_Task,DT_FixedDUR2,TK_NotStart,DUKHCONP1AZ6WEEX5030,Excavation,8177,264,0,160,0,64,64,160,40,0,40,,,,2014-05-29 08:00,2014-06-21 17:00,,2014-04-21 08:00,2014-05-13 17:00,2014-04-21 08:00,2014-05-13 17:00,2014-04-21 08:00,2014-05-13 17:00,2014-05-29 08:00,2014-06-21 17:00,,PT_Normal,,,,,BACBy+1YTNCxDSX2O4ELPA,,,,N,0,0,,,2013-02-16 15:54,2013-02-16 15:56,admin,admin
504143,6359,125380,13662,0,N,N,N,CP_Drtn,TT_Task,DT_FixedDUR2,TK_NotStart,DUKHCONP1AZ6WEEX5035,Construction of Raft,8165,264,0,200,0,840,840,200,0,0,0,,,,2014-06-04 08:00,2014-07-02 17:00,,2014-04-27 08:00,2014-05-25 17:00,2014-04-27 08:00,2014-05-25 17:00,2014-04-27 08:00,2014-05-25 17:00,2014-06-04 08:00,2014-07-02 17:00,,PT_Normal,,,,,Kqd97/5rR+Wje4IGevb4GQ,,,,N,0,0,,,2013-02-16 15:54,2013-02-16 15:56,admin,admin
504144,6359,125380,13662,0,N,N,N,CP_Drtn,TT_Task,DT_FixedDUR2,TK_NotStart,DUKHCONP1AZ6WEEX5040,Block works & Plastering,8168,264,0,200,0,512,512,200,0,0,0,,,,2014-06-14 08:00,2014-07-12 17:00,,2014-05-06 08:00,2014-06-03 17:00,2014-05-06 08:00,2014-06-03 17:00,2014-05-06 08:00,2014-06-03 17:00,2014-06-14 08:00,2014-07-12 17:00,,PT_Normal,,,,,PCpsR42lS1Cfg+h2YbAX1A,,,,N,0,0,,,2013-02-16 15:54,2013-02-16 15:56,admin,admin
504145,6359,125380,13662,0,N,N,N,CP_Drtn,TT_Task,DT_FixedDUR2,TK_NotStart,DUKHCONP1AZ6WEEX5045,Flooring & Painting,8178,264,112,200,0,232,232,200,0,0,0,,,,2014-06-21 08:00,2014-07-19 17:00,,2014-05-13 08:00,2014-06-10 17:00,2014-05-13 08:00,2014-06-10 17:00,2014-05-13 08:00,2014-06-10 17:00,2014-06-21 08:00,2014-07-19 17:00,,PT_Normal,,,,,RNVSF7+kTeugKLbx9QOIRQ,,,,N,0,0,,,2013-02-16 15:54,2013-02-16 15:56,admin,admin
504146,6359,125380,13662,0,N,N,N,CP_Drtn,TT_Task,DT_FixedDUR2,TK_NotStart,DUKHCONP1AZ6WEEX5050,Installation of Steel Gate,8178,152,72,160,0,56,56,160,0,0,0,,,,2014-07-03 08:00,2014-07-26 17:00,,2014-06-11 08:00,2014-07-03 17:00,2014-06-11 08:00,2014-07-03 17:00,2014-06-11 08:00,2014-07-03 17:00,2014-07-03 08:00,2014-07-26 17:00,,PT_Normal,,,,,HQT1x/k9TfmfUOhZV6CdTg,,,,N,0,0,,,2013-02-16 15:54,2013-02-16 15:56,admin,admin
504147,6359,125380,13662,0,N,N,N,CP_Drtn,TT_Task,DT_FixedDUR2,TK_NotStart,DUKHCONP1AZ6WEEX5060,Structural steel &  SS Shed cover installation,8178,80,0,200,0,336,336,200,0,0,0,,,,2014-07-09 08:00,2014-08-10 17:00,,2014-06-28 08:00,2014-07-26 17:00,2014-06-28 08:00,2014-07-26 17:00,2014-06-28 08:00,2014-07-26 17:00,2014-07-09 08:00,2014-08-10 17:00,,PT_Normal,,,,,eVfzO2KzSGKQ6Bcysjjw5w,,,,N,0,0,,,2013-02-16 15:54,2013-02-16 15:56,admin,admin
504148,6359,125380,13662,0,N,N,N,CP_Drtn,TT_Task,DT_FixedDUR2,TK_NotStart,DUKHCONP1AZ6WEEX5065,"Install. of Water Tank,Chiller,Pump & Meter",8178,72,0,200,0,203.2,203.2,200,0,0,0,,,,2014-07-16 08:00,2014-08-17 17:00,,2014-07-06 08:00,2014-08-06 17:00,2014-07-06 08:00,2014-08-06 17:00,2014-07-06 08:00,2014-08-06 17:00,2014-07-16 08:00,2014-08-17 17:00,,PT_Normal,,,,,c00MAxW6SD6zBc3o+skjmQ,,,,N,0,0,,,2013-02-16 15:54,2013-02-16 15:56,admin,admin
504149,6359,125381,13662,0,N,N,N,CP_Drtn,TT_Task,DT_FixedDUR2,TK_NotStart,DUKHCONP1AZ6MSEX5335,Aluminum Roll-up Shutter with 2m Wall,8178,672,168,200,0,400,400,200,0,0,0,,,,2014-10-22 08:00,2014-11-19 17:00,,2014-07-10 08:00,2014-08-11 17:00,2014-07-10 08:00,2014-08-11 17:00,2014-07-10 08:00,2014-08-11 17:00,2014-10-22 08:00,2014-11-19 17:00,,PT_Normal,,,,,GT5EecZHRNGWpCbnISo7YA,,,,N,0,0,,,2013-02-16 15:54,2013-02-16 16:35,admin,admin
504150,6359,125381,13662,0,N,N,N,CP_Drtn,TT_Task,DT_FixedDUR2,TK_NotStart,DUKHCONP1AZ6MSEX5020,Construction Entrance Ramp,8164,128,0,200,0,656,656,200,0,0,0,,,,2014-06-01 08:00,2014-06-29 17:00,,2014-05-13 08:00,2014-06-10 17:00,2014-05-13 08:00,2014-06-10 17:00,2014-05-13 08:00,2014-06-10 17:00,2014-06-01 08:00,2014-06-29 17:00,,PT_Normal,,,,,ViAIsVVUQrq7CDsPyPRaXA,,,,N,0,0,,,2013-02-16 15:54,2013-02-16 15:56,admin,admin
504151,6359,125381,13662,0,N,N,N,CP_Drtn,TT_Task,DT_FixedDUR2,TK_NotStart,DUKHCONP1AZ6MSEX5025,SS.Handrails and Balustrades,8178,152,0,160,0,56,56,160,0,0,0,,,,2014-06-22 08:00,2014-07-14 17:00,,2014-05-31 08:00,2014-06-22 17:00,2014-05-31 08:00,2014-06-22 17:00,2014-05-31 08:00,2014-06-22 17:00,2014-06-22 08:00,2014-07-14 17:00,,PT_Normal,,,,,IJIf/Y4iR42D8GJi8wHEXw,,,,N,0,0,,,2013-02-16 15:54,2013-02-16 15:56,admin,admin
504152,6359,125381,13662,0,N,N,N,CP_Drtn,TT_Task,DT_FixedDUR2,TK_NotStart,DUKHCONP1AZ6MSEX5015,Construction of grease Trap,8178,64,0,160,0,56,56,160,0,0,0,,,,2014-05-05 08:00,2014-05-27 17:00,,2014-04-26 08:00,2014-05-18 17:00,2014-04-26 08:00,2014-05-18 17:00,2014-04-26 08:00,2014-05-18 17:00,2014-05-05 08:00,2014-05-27 17:00,,PT_Normal,,,,,Rwe9nvwgTPmXuKj/CmYAKA,,,,N,0,0,,,2013-02-16 15:54,2013-02-16 15:56,admin,admin
504153,6359,125381,13662,0,N,N,N,CP_Drtn,TT_Task,DT_FixedDUR2,TK_NotStart,DUKHCONP1AZ6MSEX5000,Construction of Manholes,8172,64,0,200,0,528,528,200,0,0,0,,,,2014-04-01 08:00,2014-04-29 17:00,,2014-03-23 08:00,2014-04-20 17:00,2014-03-23 08:00,2014-04-20 17:00,2014-03-23 08:00,2014-04-20 17:00,2014-04-01 08:00,2014-04-29 17:00,,PT_Normal,,,,,OlPZwLTdS+Kew1QzX80rEw,,,,N,0,0,,,2013-02-16 15:54,2013-02-16 15:56,admin,admin
504154,6359,125381,13662,0,N,N,N,CP_Drtn,TT_Task,DT_FixedDUR2,TK_NotStart,DUKHCONP1AZ6MSEX5005,"Construction  of Soak pit, Chambers",8172,64,0,200,0,176,176,200,0,0,0,,,,2014-04-15 08:00,2014-05-13 17:00,,2014-04-06 08:00,2014-05-04 17:00,2014-04-06 08:00,2014-05-04 17:00,2014-04-06 08:00,2014-05-04 17:00,2014-04-15 08:00,2014-05-13 17:00,,PT_Normal,,,,,StsgxflfQH+PfbkHYxFG5Q,,,,N,0,0,,,2013-02-16 15:54,2013-02-16 15:56,admin,admin
504155,6359,125381,13662,0,N,N,N,CP_Drtn,TT_Task,DT_FixedDUR2,TK_NotStart,DUKHCONP1AZ6MSEX5010,Telephone cable laying,8177,64,0,200,0,500,500,200,0,0,0,,,,2014-05-28 08:00,2014-06-25 17:00,,2014-05-19 08:00,2014-06-16 17:00,2014-05-19 08:00,2014-06-16 17:00,2014-05-19 08:00,2014-06-16 17:00,2014-05-28 08:00,2014-06-25 17:00,,PT_Normal,,,,,tN6h2oVuS2yJrkGa5iUFrg,,,,N,0,0,,,2013-02-16 15:54,2013-02-16 15:56,admin,admin
504156,6359,125382,13662,0,N,N,N,CP_Drtn,TT_Task,DT_FixedDUR2,TK_NotStart,DUKHCONP1AZ6HDEX5090,kerb works,8173,128,0,160,0,344,344,160,0,0,0,,,,2014-06-15 08:00,2014-07-07 17:00,,2014-05-27 08:00,2014-06-18 17:00,2014-05-27 08:00,2014-06-18 17:00,2014-05-27 08:00,2014-06-18 17:00,2014-06-15 08:00,2014-07-07 17:00,,PT_Normal,,,,,eln2AMj9Qh6qNHFqz4Vbow,,,,N,0,0,,,2013-02-16 15:54,2013-02-16 15:56,admin,admin
504157,6359,125382,13662,0,N,N,N,CP_Drtn,TT_Task,DT_FixedDUR2,TK_NotStart,DUKHCONP1AZ6HDEX5095,Cobble Stone Works,8170,128,0,160,0,200,200,160,0,0,0,,,,2014-06-26 08:00,2014-07-19 17:00,,2014-06-08 08:00,2014-06-30 17:00,2014-06-08 08:00,2014-06-30 17:00,2014-06-08 08:00,2014-06-30 17:00,2014-06-26 08:00,2014-07-19 17:00,,PT_Normal,,,,,WJvS+sJhQ52MakQK13Se4Q,,,,N,0,0,,,2013-02-16 15:54,2013-02-16 15:56,admin,admin
504158,6359,125382,13662,0,N,N,N,CP_Drtn,TT_Task,DT_FixedDUR2,TK_NotStart,DUKHCONP1AZ6HDEX5100,Interlock works,8174,128,0,160,0,232,232,160,0,0,0,,,,2014-07-03 08:00,2014-07-26 17:00,,2014-06-15 08:00,2014-07-07 17:00,2014-06-15 08:00,2014-07-07 17:00,2014-06-15 08:00,2014-07-07 17:00,2014-07-03 08:00,2014-07-26 17:00,,PT_Normal,,,,,Hsg5aX4bSeucmSC8Uv5zKw,,,,N,0,0,,,2013-02-16 15:54,2013-02-16 15:56,admin,admin
504159,6359,125383,13662,0,N,N,N,CP_Drtn,TT_Task,DT_FixedDUR2,TK_NotStart,DUKHCONP1AZ6SLEX5105,Laying of Grass/ green area,8178,128,0,200,0,2744,2744,200,0,0,0,,,,2014-07-09 08:00,2014-08-10 17:00,,2014-06-21 08:00,2014-07-19 17:00,2014-06-21 08:00,2014-07-19 17:00,2014-06-21 08:00,2014-07-19 17:00,2014-07-09 08:00,2014-08-10 17:00,,PT_Normal,,,,,gp2+4pupS0KdUT+EKYumuA,,,,N,0,0,,,2013-02-16 15:54,2013-02-16 15:56,admin,admin
504160,6359,125383,13662,0,N,N,N,CP_Drtn,TT_Task,DT_FixedDUR2,TK_NotStart,DUKHCONP1AZ6SLEX5110,Laying of Palm tree,8178,128,128,200,0,168,168,200,0,0,0,,,,2014-07-16 08:00,2014-08-17 17:00,,2014-06-28 08:00,2014-07-26 17:00,2014-06-28 08:00,2014-07-26 17:00,2014-06-28 08:00,2014-07-26 17:00,2014-07-16 08:00,2014-08-17 17:00,,PT_Normal,,,,,f5xB5TEHTOGUpd+awfL9Ww,,,,N,0,0,,,2013-02-16 15:54,2013-02-16 15:56,admin,admin
504161,6359,125386,13662,0,N,N,N,CP_Drtn,TT_Task,DT_FixedDUR2,TK_NotStart,DUKHCONP1AZ6ELRF4070,Installation of Isolator,8178,8,0,144,0,412.8,412.8,144,0,0,0,,,,2014-07-13 08:00,2014-08-05 17:00,,2014-07-12 08:00,2014-07-31 17:00,2014-07-12 08:00,2014-07-31 17:00,2014-07-12 08:00,2014-07-31 17:00,2014-07-13 08:00,2014-08-05 17:00,,PT_Normal,,,,,wdePEWFeRgCWuW8hfiq2PA,,,,N,0,0,,,2013-02-16 15:54,2013-02-16 15:56,admin,admin
504162,6359,125386,13662,0,N,N,N,CP_Drtn,TT_Task,DT_FixedDUR2,TK_NotStart,DUKHCONP1AZ6ELRF4075,Installation of TV Dish Antenna,8178,8,8,184,0,732.8,732.8,184,0,0,0,,,,2014-07-19 08:00,2014-08-17 17:00,,2014-07-17 08:00,2014-08-16 17:00,2014-07-17 08:00,2014-08-16 17:00,2014-07-17 08:00,2014-08-16 17:00,2014-07-19 08:00,2014-08-17 17:00,,PT_Normal,,,,,ReOl9NxJTn2vKmj5UOYt7Q,,,,N,0,0,,,2013-02-16 15:54,2013-02-23 09:03,admin,admin
504163,6359,125387,13662,0,N,N,N,CP_Drtn,TT_Task,DT_FixedDUR2,TK_NotStart,DUKHCONP1AZ6ELFF4035,Fixing of wall conduits & switch socket boxes,8178,88,0,200,0,1222.4,1222.4,200,0,0,0,,,,2014-04-09 08:00,2014-05-07 17:00,,2014-03-27 08:00,2014-04-24 17:00,2014-03-27 08:00,2014-04-24 17:00,2014-03-27 08:00,2014-04-24 17:00,2014-04-09 08:00,2014-05-07 17:00,,PT_Normal,,,,,XIJ4HcDRRqijbV/MLLX1zg,,,,N,0,0,,,2013-02-16 15:54,2013-02-16 15:56,admin,admin
504164,6359,125387,13662,0,N,N,N,CP_Drtn,TT_Task,DT_FixedDUR2,TK_NotStart,DUKHCONP1AZ6ELFF4040,Cable tray & trunking installation,8178,232,16,160,0,1318.4,1318.4,160,0,0,0,,,,2014-05-12 08:00,2014-06-03 17:00,,2014-04-08 08:00,2014-04-30 17:00,2014-04-08 08:00,2014-04-30 17:00,2014-04-08 08:00,2014-04-30 17:00,2014-05-12 08:00,2014-06-03 17:00,,PT_Normal,,,,,SilZTSMFR2udG0kMCXuw7Q,,,,N,0,0,,,2013-02-16 15:54,2013-02-16 15:56,admin,admin
504165,6359,125387,13662,0,N,N,N,CP_Drtn,TT_Task,DT_FixedDUR2,TK_NotStart,DUKHCONP1AZ6ELFF4045,Installation of wiring & Main Cabling,8178,216,0,200,0,296,296,200,0,0,0,,,,2014-05-20 08:00,2014-06-17 17:00,,2014-04-19 08:00,2014-05-17 17:00,2014-04-19 08:00,2014-05-17 17:00,2014-04-19 08:00,2014-05-17 17:00,2014-05-20 08:00,2014-06-17 17:00,,PT_Normal,,,,,2kwct4ncSXSsuOx1BhhEaQ,,,,N,0,0,,,2013-02-16 15:54,2013-02-16 15:56,admin,admin
504166,6359,125387,13662,0,N,N,N,CP_Drtn,TT_Task,DT_FixedDUR2,TK_NotStart,DUKHCONP1AZ6ELFF4060,"Installation  of DBS,MCCB Accessories.",8178,24,16,160,0,227.2,227.2,160,0,0,0,,,,2014-06-23 08:00,2014-07-15 17:00,,2014-06-19 08:00,2014-07-12 17:00,2014-06-19 08:00,2014-07-12 17:00,2014-06-19 08:00,2014-07-12 17:00,2014-06-23 08:00,2014-07-15 17:00,,PT_Normal,,,,,rH2cWYWzS5qV0FJWaASASw,,,,N,0,0,,,2013-02-16 15:54,2013-02-16 15:56,admin,admin
504167,6359,125387,13662,0,N,N,N,CP_Drtn,TT_Task,DT_FixedDUR2,TK_NotStart,DUKHCONP1AZ6ELFF4065,Installation of Lighting fixtures & Accessories,8178,8,0,200,0,1651.2,1651.2,200,0,0,0,,,,2014-06-29 08:00,2014-07-27 17:00,,2014-06-28 08:00,2014-07-26 17:00,2014-06-28 08:00,2014-07-26 17:00,2014-06-28 08:00,2014-07-26 17:00,2014-06-29 08:00,2014-07-27 17:00,,PT_Normal,,,,,/04oSBZZRn2MZ18Dru4h6g,,,,N,0,0,,,2013-02-16 15:54,2013-02-16 15:56,admin,admin
504168,6359,125387,13662,0,N,N,N,CP_Drtn,TT_Task,DT_FixedDUR2,TK_NotStart,DUKHCONP1AZ6ELFF4055,Install. of CAMS & Fire Fighting Accessories,8178,8,0,200,0,1008,1008,200,0,0,0,,,,2014-06-17 08:00,2014-07-15 17:00,,2014-06-16 08:00,2014-07-14 17:00,2014-06-16 08:00,2014-07-14 17:00,2014-06-16 08:00,2014-07-14 17:00,2014-06-17 08:00,2014-07-15 17:00,,PT_Normal,,,,,1H/oYkI0Rxay53trjL/Zmw,,,,N,0,0,,,2013-02-16 15:54,2013-02-16 15:56,admin,admin
504169,6359,125387,13662,0,N,N,N,CP_Drtn,TT_Task,DT_FixedDUR2,TK_NotStart,DUKHCONP1AZ6ELFF4050,Installation of Telephone System,8178,64,56,200,0,451.2,451.2,200,0,0,0,,,,2014-06-26 08:00,2014-07-24 17:00,,2014-06-17 08:00,2014-07-15 17:00,2014-06-17 08:00,2014-07-15 17:00,2014-06-17 08:00,2014-07-15 17:00,2014-06-26 08:00,2014-07-24 17:00,,PT_Normal,,,,,MyUKV5lAS16czVQdpgtfjQ,,,,N,0,0,,,2013-02-16 15:54,2013-02-16 15:56,admin,admin
504170,6359,125388,13662,0,N,N,N,CP_Drtn,TT_Task,DT_FixedDUR2,TK_NotStart,DUKHCONP1AZ6ELGF4000,Fixing of wall conduits & switch socket boxes,8178,216,0,200,0,1222.4,1222.4,200,0,0,0,,,,2014-03-17 08:00,2014-04-14 17:00,,2014-02-13 08:00,2014-03-13 17:00,2014-02-13 08:00,2014-03-13 17:00,2014-02-13 08:00,2014-03-13 17:00,2014-03-17 08:00,2014-04-14 17:00,,PT_Normal,,,,,eYL6yZaeS2iRvMq8xeWY8Q,,,,N,0,0,,,2013-02-16 15:54,2013-02-16 15:56,admin,admin
504171,6359,125388,13662,0,N,N,N,CP_Drtn,TT_Task,DT_FixedDUR2,TK_NotStart,DUKHCONP1AZ6ELGF4005,Cable tray & trunking installation,8178,360,0,160,0,1318.4,1318.4,160,0,0,0,,,,2014-04-19 08:00,2014-05-11 17:00,,2014-02-25 08:00,2014-03-19 17:00,2014-02-25 08:00,2014-03-19 17:00,2014-02-25 08:00,2014-03-19 17:00,2014-04-19 08:00,2014-05-11 17:00,,PT_Normal,,,,,PfNjz+j6SP2+tvXI3l8rXQ,,,,N,0,0,,,2013-02-16 15:54,2013-02-16 15:56,admin,admin
504172,6359,125388,13662,0,N,N,N,CP_Drtn,TT_Task,DT_FixedDUR2,TK_NotStart,DUKHCONP1AZ6ELGF4010,Installation of wiring & Main Cabling,8178,360,216,200,0,296,296,200,0,0,0,,,,2014-04-27 08:00,2014-05-25 17:00,,2014-03-05 08:00,2014-04-02 17:00,2014-03-05 08:00,2014-04-02 17:00,2014-03-05 08:00,2014-04-02 17:00,2014-04-27 08:00,2014-05-25 17:00,,PT_Normal,,,,,fAPFwNkIS72LKfUUBlnuww,,,,N,0,0,,,2013-02-16 15:54,2013-02-16 15:56,admin,admin
504173,6359,125388,13662,0,N,N,N,CP_Drtn,TT_Task,DT_FixedDUR2,TK_NotStart,DUKHCONP1AZ6ELGF4020,"Installation  of DBS,MCCB Accessories.",8178,144,0,160,0,227.2,227.2,160,0,0,0,,,,2014-06-03 08:00,2014-06-25 17:00,,2014-05-13 08:00,2014-06-04 17:00,2014-05-13 08:00,2014-06-04 17:00,2014-05-13 08:00,2014-06-04 17:00,2014-06-03 08:00,2014-06-25 17:00,,PT_Normal,,,,,kqM91GVMQAiqDPFKoObT0w,,,,N,0,0,,,2013-02-16 15:54,2013-02-16 15:56,admin,admin
504174,6359,125388,13662,0,N,N,N,CP_Drtn,TT_Task,DT_FixedDUR2,TK_NotStart,DUKHCONP1AZ6ELGF4025,Installation of Lighting fixtures & Accessories,8178,200,0,200,0,1651.2,1651.2,200,0,0,0,,,,2014-06-23 08:00,2014-07-21 17:00,,2014-05-25 08:00,2014-06-22 17:00,2014-05-25 08:00,2014-06-22 17:00,2014-05-25 08:00,2014-06-22 17:00,2014-06-23 08:00,2014-07-21 17:00,,PT_Normal,,,,,1TE7SE0/RtuBVE42twN6EQ,,,,N,0,0,,,2013-02-16 15:54,2013-02-16 15:56,admin,admin
504175,6359,125388,13662,0,N,N,N,CP_Drtn,TT_Task,DT_FixedDUR2,TK_NotStart,DUKHCONP1AZ6ELGF4015,Install. of CAMS & Fire Fighting Accessories,8178,240,0,200,0,1075.2,1075.2,200,0,0,0,,,,2014-06-11 08:00,2014-07-09 17:00,,2014-05-07 08:00,2014-06-04 17:00,2014-05-07 08:00,2014-06-04 17:00,2014-05-07 08:00,2014-06-04 17:00,2014-06-11 08:00,2014-07-09 17:00,,PT_Normal,,,,,S4lock3ISjKSE3S9vMRLOg,,,,N,0,0,,,2013-02-16 15:54,2013-02-16 15:56,admin,admin
504176,6359,125388,13662,0,N,N,N,CP_Drtn,TT_Task,DT_FixedDUR2,TK_NotStart,DUKHCONP1AZ6ELGF4030,Installation of Telephone System,8178,144,40,160,0,520,520,160,0,0,0,,,,2014-06-15 08:00,2014-07-07 17:00,,2014-05-25 08:00,2014-06-16 17:00,2014-05-25 08:00,2014-06-16 17:00,2014-05-25 08:00,2014-06-16 17:00,2014-06-15 08:00,2014-07-07 17:00,,PT_Normal,,,,,Txvm4SRtS4+XxPssDOnokA,,,,N,0,0,,,2013-02-16 15:54,2013-02-16 15:56,admin,admin
504177,6359,125390,13662,0,N,N,N,CP_Drtn,TT_Task,DT_FixedDUR2,TK_NotStart,DUKHCONP1AZ6PLGF4305,Installation of Plumbing pipes & testing,8178,144,0,144,0,441.6,441.6,144,0,0,0,,,,2014-03-17 08:00,2014-04-06 17:00,,2014-02-24 08:00,2014-03-16 17:00,2014-02-24 08:00,2014-03-16 17:00,2014-02-24 08:00,2014-03-16 17:00,2014-03-17 08:00,2014-04-06 17:00,,PT_Normal,,,,,vyt5c+KsTGGb5bfZwj3o9Q,,,,N,0,0,,,2013-02-16 15:54,2013-02-16 15:56,admin,admin
504178,6359,125390,13662,0,N,N,N,CP_Drtn,TT_Task,DT_FixedDUR2,TK_NotStart,DUKHCONP1AZ6PLGF4310,Installation of Drainage pipes &testing,8178,168,104,144,0,177.6,177.6,144,0,0,0,,,,2014-03-20 08:00,2014-04-09 17:00,,2014-02-24 08:00,2014-03-16 17:00,2014-02-24 08:00,2014-03-16 17:00,2014-02-24 08:00,2014-03-16 17:00,2014-03-20 08:00,2014-04-09 17:00,,PT_Normal,,,,,Ilg5DgOBQw+2CV1ZPlpTXA,,,,N,0,0,,,2013-02-16 15:54,2013-02-16 15:56,admin,admin
504179,6359,125390,13662,0,N,N,N,CP_Drtn,TT_Task,DT_FixedDUR2,TK_NotStart,DUKHCONP1AZ6PLGF4315,Sanitary Fittings & Accessories,8178,360,0,160,0,134.4,134.4,160,0,0,0,,,,2014-07-16 08:00,2014-08-11 17:00,,2014-05-25 08:00,2014-06-16 17:00,2014-05-25 08:00,2014-06-16 17:00,2014-05-25 08:00,2014-06-16 17:00,2014-07-16 08:00,2014-08-11 17:00,,PT_Normal,,,,,N3JwQ1UjSV+F2n1GusQQlQ,,,,N,0,0,,,2013-02-16 15:54,2013-02-16 15:56,admin,admin
504180,6359,125390,13662,0,N,N,N,CP_Drtn,TT_Task,DT_FixedDUR2,TK_NotStart,DUKHCONP1AZ6PLGF4320,Installation of Water Heater,8178,360,80,120,0,134.4,134.4,120,0,0,0,,,,2014-07-28 08:00,2014-08-17 17:00,,2014-06-05 08:00,2014-06-22 17:00,2014-06-05 08:00,2014-06-22 17:00,2014-06-05 08:00,2014-06-22 17:00,2014-07-28 08:00,2014-08-17 17:00,,PT_Normal,,,,,vzpXuF9DSLWFyOQVkfj/vw,,,,N,0,0,,,2013-02-16 15:54,2013-02-16 15:56,admin,admin
504181,6359,125390,13662,0,N,N,N,CP_Drtn,TT_Task,DT_FixedDUR2,TK_NotStart,DUKHCONP1AZ6PLUG4300,Drainage / Storm Pipes in Grade Slab,8178,0,0,128,0,67.2,67.2,128,0,0,0,,,,2013-11-02 08:00,2013-11-19 17:00,,2013-11-02 08:00,2013-11-19 17:00,2013-11-02 08:00,2013-11-19 17:00,2013-11-02 08:00,2013-11-19 17:00,2013-11-02 08:00,2013-11-19 17:00,,PT_Normal,,,,,iaUpoZUyS8+TzFPbFdGRhQ,,,,Y,0,0,,,2013-02-16 15:54,2013-02-16 15:56,admin,admin
504182,6359,125391,13662,0,N,N,N,CP_Drtn,TT_Task,DT_FixedDUR2,TK_NotStart,DUKHCONP1AZ6PLRF4345,Installation of Plumbing pipes & fittings,8178,448,240,120,0,110.4,110.4,120,0,0,0,,,,2014-07-01 08:00,2014-07-17 17:00,,2014-04-27 08:00,2014-05-13 17:00,2014-04-27 08:00,2014-05-13 17:00,2014-04-27 08:00,2014-05-13 17:00,2014-07-01 08:00,2014-07-17 17:00,,PT_Normal,,,,,678uVZ+pTNaNP4vaRdXiew,,,,N,0,0,,,2013-02-16 15:54,2013-02-16 15:56,admin,admin
504183,6359,125391,13662,0,N,N,N,CP_Drtn,TT_Task,DT_FixedDUR2,TK_NotStart,DUKHCONP1AZ6PLRF4350,Installation of Rain water Pipes,8178,208,80,120,0,67.2,67.2,120,0,0,0,,,,2014-07-10 08:00,2014-07-27 17:00,,2014-06-10 08:00,2014-06-26 17:00,2014-06-10 08:00,2014-06-26 17:00,2014-06-10 08:00,2014-06-26 17:00,2014-07-10 08:00,2014-07-27 17:00,,PT_Normal,,,,,82q6a2KCSAOZMemnVWyQvQ,,,,N,0,0,,,2013-02-16 15:54,2013-02-16 15:56,admin,admin
504184,6359,125391,13662,0,N,N,N,CP_Drtn,TT_Task,DT_FixedDUR2,TK_NotStart,DUKHCONP1AZ6PLRF4355,Roof  Water Tank Installation & Connections,8178,8,0,200,0,336,336,200,0,0,0,,,,2014-07-16 08:00,2014-08-17 17:00,,2014-07-15 08:00,2014-08-16 17:00,2014-07-15 08:00,2014-08-16 17:00,2014-07-15 08:00,2014-08-16 17:00,2014-07-16 08:00,2014-08-17 17:00,,PT_Normal,,,,,gryjN7HBTqq3pp0sXbW9XA,,,,N,0,0,,,2013-02-16 15:54,2013-02-16 15:56,admin,admin
504185,6359,125392,13662,0,N,N,N,CP_Drtn,TT_Task,DT_FixedDUR2,TK_NotStart,DUKHCONP1AZ6PLFF4325,Installation of Plumbing pipes & testing,8178,0,0,144,0,441.6,441.6,144,0,0,0,,,,2014-04-08 08:00,2014-04-28 17:00,,2014-04-08 08:00,2014-04-28 17:00,2014-04-08 08:00,2014-04-28 17:00,2014-04-08 08:00,2014-04-28 17:00,2014-04-08 08:00,2014-04-28 17:00,,PT_Normal,,,,,L1LQNQhiRrG16f/2GCsWJQ,,,,Y,0,0,,,2013-02-16 15:54,2013-02-16 15:56,admin,admin
504186,6359,125392,13662,0,N,N,N,CP_Drtn,TT_Task,DT_FixedDUR2,TK_NotStart,DUKHCONP1AZ6PLFF4330,Installation of Drainage pipes & testing,8178,176,56,144,0,177.6,177.6,144,0,0,0,,,,2014-05-04 08:00,2014-05-24 17:00,,2014-04-08 08:00,2014-04-28 17:00,2014-04-08 08:00,2014-04-28 17:00,2014-04-08 08:00,2014-04-28 17:00,2014-05-04 08:00,2014-05-24 17:00,,PT_Normal,,,,,WDAZzNzFTxaXaXS8hbxg4w,,,,N,0,0,,,2013-02-16 15:54,2013-02-16 15:56,admin,admin
504187,6359,125392,13662,0,N,N,N,CP_Drtn,TT_Task,DT_FixedDUR2,TK_NotStart,DUKHCONP1AZ6PLFF4335,Sanitary Fittings & Accessories,8178,40,0,160,0,67.2,67.2,160,0,0,0,,,,2014-06-29 08:00,2014-07-21 17:00,,2014-06-23 08:00,2014-07-15 17:00,2014-06-23 08:00,2014-07-15 17:00,2014-06-23 08:00,2014-07-15 17:00,2014-06-29 08:00,2014-07-21 17:00,,PT_Normal,,,,,EfZl9AA7SMKR9GWoDmAzjA,,,,N,0,0,,,2013-02-16 15:54,2013-02-16 15:56,admin,admin
504188,6359,125392,13662,0,N,N,N,CP_Drtn,TT_Task,DT_FixedDUR2,TK_NotStart,DUKHCONP1AZ6PLFF4340,Installation of Water Heater,8178,40,32,120,0,67.2,67.2,120,0,0,0,,,,2014-07-10 08:00,2014-07-27 17:00,,2014-07-05 08:00,2014-07-21 17:00,2014-07-05 08:00,2014-07-21 17:00,2014-07-05 08:00,2014-07-21 17:00,2014-07-10 08:00,2014-07-27 17:00,,PT_Normal,,,,,2jb/+UFDQ7iJNkpfo/iF8w,,,,N,0,0,,,2013-02-16 15:54,2013-02-16 15:56,admin,admin
504189,6359,125394,13662,0,N,N,N,CP_Drtn,TT_Task,DT_FixedDUR2,TK_NotStart,DUKHCONP1AZ6ACFF4615,Installation AC Pipes,8178,216,40,160,0,977.6,977.6,160,0,0,0,,,,2014-05-31 08:00,2014-06-22 17:00,,2014-04-29 08:00,2014-05-21 17:00,2014-04-29 08:00,2014-05-21 17:00,2014-04-29 08:00,2014-05-21 17:00,2014-05-31 08:00,2014-06-22 17:00,,PT_Normal,,,,,WUvLBT5xR+2CNwNgm7VNuQ,,,,N,0,0,,,2013-02-16 15:54,2013-02-16 15:56,admin,admin
504190,6359,125394,13662,0,N,N,N,CP_Drtn,TT_Task,DT_FixedDUR2,TK_NotStart,DUKHCONP1AZ6ACFF4620,Fixing of Ventilation Equipments,8178,16,0,200,0,113.6,113.6,200,0,0,0,,,,2014-06-18 08:00,2014-07-16 17:00,,2014-06-16 08:00,2014-07-14 17:00,2014-06-16 08:00,2014-07-14 17:00,2014-06-16 08:00,2014-07-14 17:00,2014-06-18 08:00,2014-07-16 17:00,,PT_Normal,,,,,tN+2KqAqQvuV2bnRBEyFxg,,,,N,0,0,,,2013-02-16 15:54,2013-02-16 15:56,admin,admin
504191,6359,125394,13662,0,N,N,N,CP_Drtn,TT_Task,DT_FixedDUR2,TK_NotStart,DUKHCONP1AZ6ACFF4625,Fixing of Split AC,8178,16,0,160,0,296,296,160,0,0,0,,,,2014-07-09 08:00,2014-07-31 17:00,,2014-07-07 08:00,2014-07-29 17:00,2014-07-07 08:00,2014-07-29 17:00,2014-07-07 08:00,2014-07-29 17:00,2014-07-09 08:00,2014-07-31 17:00,,PT_Normal,,,,,BEUhwdorTXq/K8nkfnUdcw,,,,N,0,0,,,2013-02-16 15:54,2013-02-16 15:56,admin,admin
504192,6359,125395,13662,0,N,N,N,CP_Drtn,TT_Task,DT_FixedDUR2,TK_NotStart,DUKHCONP1AZ6ACGF4600,Installation AC Pipes,8178,392,40,160,0,977.6,977.6,160,0,0,0,,,,2014-05-12 08:00,2014-06-03 17:00,,2014-03-16 08:00,2014-04-07 17:00,2014-03-16 08:00,2014-04-07 17:00,2014-03-16 08:00,2014-04-07 17:00,2014-05-12 08:00,2014-06-03 17:00,,PT_Normal,,,,,4KlnqpdjTyOShKQJ0dAF4w,,,,N,0,0,,,2013-02-16 15:54,2013-02-16 15:56,admin,admin
504193,6359,125395,13662,0,N,N,N,CP_Drtn,TT_Task,DT_FixedDUR2,TK_NotStart,DUKHCONP1AZ6ACGF4605,Fixing of Ventilation Equipments,8178,256,0,200,0,182.4,182.4,200,0,0,0,,,,2014-06-14 08:00,2014-07-12 17:00,,2014-05-07 08:00,2014-06-04 17:00,2014-05-07 08:00,2014-06-04 17:00,2014-05-07 08:00,2014-06-04 17:00,2014-06-14 08:00,2014-07-12 17:00,,PT_Normal,,,,,UEk5bVTuShOvuumece1vhw,,,,N,0,0,,,2013-02-16 15:54,2013-02-16 15:56,admin,admin
504194,6359,125395,13662,0,N,N,N,CP_Drtn,TT_Task,DT_FixedDUR2,TK_NotStart,DUKHCONP1AZ6ACGF4610,Fixing of Split AC,8178,256,40,160,0,296,296,160,0,0,0,,,,2014-07-05 08:00,2014-07-27 17:00,,2014-05-28 08:00,2014-06-19 17:00,2014-05-28 08:00,2014-06-19 17:00,2014-05-28 08:00,2014-06-19 17:00,2014-07-05 08:00,2014-07-27 17:00,,PT_Normal,,,,,5wy0gWZdSqmwMrIjb0a3aQ,,,,N,0,0,,,2013-02-16 15:54,2013-02-16 15:56,admin,admin
504195,6359,125396,13662,0,N,N,N,CP_Drtn,TT_Task,DT_FixedDUR2,TK_NotStart,DUKHCONP1AZ6ACRF4630,Installation of Refrigerant Pipes,8178,272,0,200,0,409.6,409.6,200,0,0,0,,,,2014-07-10 08:00,2014-08-11 17:00,,2014-06-01 08:00,2014-06-29 17:00,2014-06-01 08:00,2014-06-29 17:00,2014-06-01 08:00,2014-06-29 17:00,2014-07-10 08:00,2014-08-11 17:00,,PT_Normal,,,,,adkLDPRrRkSVmzdJLI0s3Q,,,,N,0,0,,,2013-02-16 15:54,2013-02-16 15:56,admin,admin
504196,6359,125396,13662,0,N,N,N,CP_Drtn,TT_Task,DT_FixedDUR2,TK_NotStart,DUKHCONP1AZ6ACRF4635,Installation of Condensing Unit,8178,24,0,200,0,568,568,200,0,0,0,,,,2014-07-16 08:00,2014-08-17 17:00,,2014-07-13 08:00,2014-08-13 17:00,2014-07-13 08:00,2014-08-13 17:00,2014-07-13 08:00,2014-08-13 17:00,2014-07-16 08:00,2014-08-17 17:00,,PT_Normal,,,,,G35X+7QAToa2uVukn6WMSQ,,,,N,0,0,,,2013-02-16 15:54,2013-02-16 15:56,admin,admin
504197,6359,125399,13662,0,N,N,N,CP_Drtn,TT_Task,DT_FixedDUR2,TK_NotStart,DUKHCONP1AZ6ARRF3600,Block work,8168,416,0,160,0,700,700,160,0,0,0,,,,2014-06-04 08:00,2014-06-26 17:00,,2014-04-05 08:00,2014-04-27 17:00,2014-04-05 08:00,2014-04-27 17:00,2014-04-05 08:00,2014-04-27 17:00,2014-06-04 08:00,2014-06-26 17:00,,PT_Normal,,,,,arZWKGmYRru8Uep7wVl1YA,,,,N,0,0,,,2013-02-16 15:54,2013-02-16 15:56,admin,admin
504198,6359,125399,13662,0,N,N,N,CP_Drtn,TT_Task,DT_FixedDUR2,TK_NotStart,DUKHCONP1AZ6ARRF3605,Plastering work,8169,416,0,160,0,1786.5,1786.5,160,0,0,0,,,,2014-06-12 08:00,2014-07-05 17:00,,2014-04-13 08:00,2014-05-05 17:00,2014-04-13 08:00,2014-05-05 17:00,2014-04-13 08:00,2014-05-05 17:00,2014-06-12 08:00,2014-07-05 17:00,,PT_Normal,,,,,WUXDtfSNQ0mZ9fJJs3y3Hw,,,,N,0,0,,,2013-02-16 15:54,2013-02-16 15:56,admin,admin
504199,6359,125399,13662,0,N,N,N,CP_Drtn,TT_Task,DT_FixedDUR2,TK_NotStart,DUKHCONP1AZ6ARRF3610,Flooring screed,8164,456,0,120,0,136.5,136.5,120,0,0,0,,,,2014-07-02 08:00,2014-07-19 17:00,,2014-04-27 08:00,2014-05-13 17:00,2014-04-27 08:00,2014-05-13 17:00,2014-04-27 08:00,2014-05-13 17:00,2014-07-02 08:00,2014-07-19 17:00,,PT_Normal,,,,,IOlkUUeqTMmyIKR+FoOgQg,,,,N,0,0,,,2013-02-16 15:54,2013-02-16 15:56,admin,admin
504200,6359,125399,13662,0,N,N,N,CP_Drtn,TT_Task,DT_FixedDUR2,TK_NotStart,DUKHCONP1AZ6ARRF3695,Painting -Storage area,8178,456,0,160,0,1640,1640,160,0,0,0,,,,2014-07-10 08:00,2014-08-05 17:00,,2014-05-05 08:00,2014-05-27 17:00,2014-05-05 08:00,2014-05-27 17:00,2014-05-05 08:00,2014-05-27 17:00,2014-07-10 08:00,2014-08-05 17:00,,PT_Normal,,,,,jWhgKExkQJGruzN/o1KzDQ,,,,N,0,0,,,2013-02-16 15:54,2013-02-16 15:56,admin,admin
504201,6359,125399,13662,0,N,N,N,CP_Drtn,TT_Task,DT_FixedDUR2,TK_NotStart,DUKHCONP1AZ6ARRF3620,Epoxy Painting -Storage area,8178,456,456,120,0,48.5,48.5,120,0,0,0,,,,2014-07-28 08:00,2014-08-17 17:00,,2014-05-22 08:00,2014-06-08 17:00,2014-05-22 08:00,2014-06-08 17:00,2014-05-22 08:00,2014-06-08 17:00,2014-07-28 08:00,2014-08-17 17:00,,PT_Normal,,,,,CbK6l+KvQICQQ2acQ/aU0g,,,,N,0,0,,,2013-02-16 15:54,2013-02-16 15:56,admin,admin
504202,6359,125400,13662,0,N,N,N,CP_Drtn,TT_Task,DT_FixedDUR2,TK_NotStart,DUKHCONP1AZ6ARFF3300,Block work,8168,0,0,200,0,6387.5,6387.5,200,0,0,0,,,,2014-03-22 08:00,2014-04-19 17:00,,2014-03-22 08:00,2014-04-19 17:00,2014-03-22 08:00,2014-04-19 17:00,2014-03-22 08:00,2014-04-19 17:00,2014-03-22 08:00,2014-04-19 17:00,,PT_Normal,,,,,62pNKGVBRDO1unZdc+2fuA,,,,Y,0,0,,,2013-02-16 15:54,2013-02-16 15:56,admin,admin
504203,6359,125400,13662,0,N,N,N,CP_Drtn,TT_Task,DT_FixedDUR2,TK_NotStart,DUKHCONP1AZ6ARFF3305,Plastering work,8169,0,0,200,0,8899,8899,200,0,0,0,,,,2014-04-15 08:00,2014-05-13 17:00,,2014-04-15 08:00,2014-05-13 17:00,2014-04-15 08:00,2014-05-13 17:00,2014-04-15 08:00,2014-05-13 17:00,2014-04-15 08:00,2014-05-13 17:00,,PT_Normal,,,,,E+aGl+5iSROy97Qvd6NReA,,,,Y,0,0,,,2013-02-16 15:54,2013-02-16 15:56,admin,admin
504204,6359,125400,13662,0,N,N,N,CP_Drtn,TT_Task,DT_FixedDUR2,TK_NotStart,DUKHCONP1AZ6ARFF3310,Flooring screed,8164,96,96,168,0,1215.5,1215.5,168,0,0,0,,,,2014-05-07 08:00,2014-05-31 17:00,,2014-04-23 08:00,2014-05-17 17:00,2014-04-23 08:00,2014-05-17 17:00,2014-04-23 08:00,2014-05-17 17:00,2014-05-07 08:00,2014-05-31 17:00,,PT_Normal,,,,,fu9howYDQeuZrTNaKzr4Qw,,,,N,0,0,,,2013-02-16 15:54,2013-02-16 15:56,admin,admin
504205,6359,125400,13662,0,N,N,N,CP_Drtn,TT_Task,DT_FixedDUR2,TK_NotStart,DUKHCONP1AZ6ARFF3315,Wet area waterproofing,8178,0,0,120,0,1215.5,1215.5,120,0,0,0,,,,2014-05-05 08:00,2014-05-21 17:00,,2014-05-05 08:00,2014-05-21 17:00,2014-05-05 08:00,2014-05-21 17:00,2014-05-05 08:00,2014-05-21 17:00,2014-05-05 08:00,2014-05-21 17:00,,PT_Normal,,,,,wMDbaLbzS9aZHd+l0H2ShQ,,,,Y,0,0,,,2013-02-16 15:54,2013-02-16 15:56,admin,admin
504206,6359,125400,13662,0,N,N,N,CP_Drtn,TT_Task,DT_FixedDUR2,TK_NotStart,DUKHCONP1AZ6ARFF3330,Paint First coat,8178,112,112,200,0,4742.75,4742.75,200,0,0,0,,,,2014-05-18 08:00,2014-06-15 17:00,,2014-05-01 08:00,2014-05-29 17:00,2014-05-01 08:00,2014-05-29 17:00,2014-05-01 08:00,2014-05-29 17:00,2014-05-18 08:00,2014-06-15 17:00,,PT_Normal,,,,,FLyASuPLREKFM7nC+5JmAw,,,,N,0,0,,,2013-02-16 15:54,2013-02-16 15:56,admin,admin
504207,6359,125400,13662,0,N,N,N,CP_Drtn,TT_Task,DT_FixedDUR2,TK_NotStart,DUKHCONP1AZ6ARFF3320,Ceramic Wall Tiling,8170,0,0,200,0,1897.25,1897.25,200,0,0,0,,,,2014-05-12 08:00,2014-06-09 17:00,,2014-05-12 08:00,2014-06-09 17:00,2014-05-12 08:00,2014-06-09 17:00,2014-05-12 08:00,2014-06-09 17:00,2014-05-12 08:00,2014-06-09 17:00,,PT_Normal,,,,,CB6pz+ELS0iNGvmHj/weFg,,,,Y,0,0,,,2013-02-16 15:54,2013-02-16 15:56,admin,admin
504208,6359,125400,13662,0,N,N,N,CP_Drtn,TT_Task,DT_FixedDUR2,TK_NotStart,DUKHCONP1AZ6ARFF3325,Porcelain Tile flooring,8170,0,0,200,0,1743.75,1743.75,200,0,0,0,,,,2014-05-19 08:00,2014-06-16 17:00,,2014-05-19 08:00,2014-06-16 17:00,2014-05-19 08:00,2014-06-16 17:00,2014-05-19 08:00,2014-06-16 17:00,2014-05-19 08:00,2014-06-16 17:00,,PT_Normal,,,,,Enz84yL2Tyir4lER7qe5QQ,,,,Y,0,0,,,2013-02-16 15:54,2013-02-16 15:56,admin,admin
504209,6359,125400,13662,0,N,N,N,CP_Drtn,TT_Task,DT_FixedDUR2,TK_NotStart,DUKHCONP1AZ6ARFF3335,Slate Tile Flooring & Skirting,8170,64,64,120,0,261.5,261.5,120,0,0,0,,,,2014-06-15 08:00,2014-07-01 17:00,,2014-06-05 08:00,2014-06-22 17:00,2014-06-05 08:00,2014-06-22 17:00,2014-06-05 08:00,2014-06-22 17:00,2014-06-15 08:00,2014-07-01 17:00,,PT_Normal,,,,,kKvGTzq6S7aIpkb5T/GhvQ,,,,N,0,0,,,2013-02-16 15:54,2013-02-16 15:56,admin,admin
504210,6359,125400,13662,0,N,N,N,CP_Drtn,TT_Task,DT_FixedDUR2,TK_NotStart,DUKHCONP1AZ6ARFF3350,Granite - Stair case flooring & Skirting,8171,16,16,160,0,875,875,160,0,0,0,,,,2014-06-11 08:00,2014-07-03 17:00,,2014-06-09 08:00,2014-07-01 17:00,2014-06-09 08:00,2014-07-01 17:00,2014-06-09 08:00,2014-07-01 17:00,2014-06-11 08:00,2014-07-03 17:00,,PT_Normal,,,,,4xN1CMLRRWWVd2+2MI0TXQ,,,,N,0,0,,,2013-02-16 15:54,2013-02-16 15:56,admin,admin
504211,6359,125400,13662,0,N,N,N,CP_Drtn,TT_Task,DT_FixedDUR2,TK_NotStart,DUKHCONP1AZ6ARFF3345,Fixing of Suspension systems,8178,0,0,160,0,1305,1305,160,0,0,0,,,,2014-06-01 08:00,2014-06-23 17:00,,2014-06-01 08:00,2014-06-23 17:00,2014-06-01 08:00,2014-06-23 17:00,2014-06-01 08:00,2014-06-23 17:00,2014-06-01 08:00,2014-06-23 17:00,,PT_Normal,,,,,FnZkOiFpQ/WGyhVbqG1moQ,,,,Y,0,0,,,2013-02-16 15:54,2013-02-16 15:56,admin,admin
504212,6359,125400,13662,0,N,N,N,CP_Drtn,TT_Task,DT_FixedDUR2,TK_NotStart,DUKHCONP1AZ6ARFF3360,Gypsum board false ceiling,8178,0,0,200,0,1305,1305,200,0,0,0,,,,2014-06-08 08:00,2014-07-06 17:00,,2014-06-08 08:00,2014-07-06 17:00,2014-06-08 08:00,2014-07-06 17:00,2014-06-08 08:00,2014-07-06 17:00,2014-06-08 08:00,2014-07-06 17:00,,PT_Normal,,,,,N5gORMlQRKmYWI7RxcJeLw,,,,Y,0,0,,,2013-02-16 15:54,2013-02-16 15:56,admin,admin
504213,6359,125400,13662,0,N,N,N,CP_Drtn,TT_Task,DT_FixedDUR2,TK_NotStart,DUKHCONP1AZ6ARFF3365,Wooden door,8178,0,0,120,0,308,308,120,0,0,0,,,,2014-06-23 08:00,2014-07-09 17:00,,2014-06-23 08:00,2014-07-09 17:00,2014-06-23 08:00,2014-07-09 17:00,2014-06-23 08:00,2014-07-09 17:00,2014-06-23 08:00,2014-07-09 17:00,,PT_Normal,,,,,yGZuccv5RpW5tfM3bOd0hA,,,,Y,0,0,,,2013-02-16 15:54,2013-02-16 15:56,admin,admin
504214,6359,125400,13662,0,N,N,N,CP_Drtn,TT_Task,DT_FixedDUR2,TK_NotStart,DUKHCONP1AZ6ARFF3370,Aluminum Door,8178,0,0,160,0,220,220,160,0,0,0,,,,2014-06-23 08:00,2014-07-15 17:00,,2014-06-23 08:00,2014-07-15 17:00,2014-06-23 08:00,2014-07-15 17:00,2014-06-23 08:00,2014-07-15 17:00,2014-06-23 08:00,2014-07-15 17:00,,PT_Normal,,,,,hd3DyXxjTR2VvtUKzL6j0g,,,,Y,0,0,,,2013-02-16 15:54,2013-02-16 15:56,admin,admin
504215,6359,125400,13662,0,N,N,N,CP_Drtn,TT_Task,DT_FixedDUR2,TK_NotStart,DUKHCONP1AZ6ARFF3380,Aluminum windows,8178,32,32,160,0,162.25,162.25,160,0,0,0,,,,2014-07-05 08:00,2014-07-27 17:00,,2014-06-30 08:00,2014-07-22 17:00,2014-06-30 08:00,2014-07-22 17:00,2014-06-30 08:00,2014-07-22 17:00,2014-07-05 08:00,2014-07-27 17:00,,PT_Normal,,,,,eKJfdURoReKjEyswvlxBLg,,,,N,0,0,,,2013-02-16 15:54,2013-02-16 15:56,admin,admin
504216,6359,125400,13662,0,N,N,N,CP_Drtn,TT_Task,DT_FixedDUR2,TK_NotStart,DUKHCONP1AZ6ARFF3375,Carpentry & Joinery Works,8178,0,0,200,0,1100,1100,200,0,0,0,,,,2014-06-29 08:00,2014-07-27 17:00,,2014-06-29 08:00,2014-07-27 17:00,2014-06-29 08:00,2014-07-27 17:00,2014-06-29 08:00,2014-07-27 17:00,2014-06-29 08:00,2014-07-27 17:00,,PT_Normal,,,,,1czqykfOQVe9VaScJmi3PQ,,,,Y,0,0,,,2013-02-16 15:54,2013-02-16 15:56,admin,admin
504217,6359,125400,13662,0,N,N,N,CP_Drtn,TT_Task,DT_FixedDUR2,TK_NotStart,DUKHCONP1AZ6ARFF3390,Installation of Granite Counter Top,8171,8,8,160,0,88,88,160,0,0,0,,,,2014-07-12 08:00,2014-08-06 17:00,,2014-07-10 08:00,2014-08-05 17:00,2014-07-10 08:00,2014-08-05 17:00,2014-07-10 08:00,2014-08-05 17:00,2014-07-12 08:00,2014-08-06 17:00,,PT_Normal,,,,,J8zuDofZRLC1O7e6+HFeig,,,,N,0,0,,,2013-02-16 15:54,2013-02-16 15:56,admin,admin
504218,6359,125400,13662,0,N,N,N,CP_Drtn,TT_Task,DT_FixedDUR2,TK_NotStart,DUKHCONP1AZ6ARFF3385,Handrail &  Balustrade,8178,0,0,160,0,787.5,787.5,160,0,0,0,,,,2014-07-10 08:00,2014-08-05 17:00,,2014-07-10 08:00,2014-08-05 17:00,2014-07-10 08:00,2014-08-05 17:00,2014-07-10 08:00,2014-08-05 17:00,2014-07-10 08:00,2014-08-05 17:00,,PT_Normal,,,,,XePTzig+QdOrVCLFXqNX9A,,,,Y,0,0,,,2013-02-16 15:54,2013-02-16 15:56,admin,admin
504219,6359,125400,13662,0,N,N,N,CP_Drtn,TT_Task,DT_FixedDUR2,TK_NotStart,DUKHCONP1AZ6ARFF3395,Final Painting,8178,0,0,200,0,4742.75,4742.75,200,0,0,0,,,,2014-07-16 08:00,2014-08-17 17:00,,2014-07-16 08:00,2014-08-17 17:00,2014-07-16 08:00,2014-08-17 17:00,2014-07-16 08:00,2014-08-17 17:00,2014-07-16 08:00,2014-08-17 17:00,,PT_Normal,,,,,boCGybT0RsyBgFwr3cvRfw,,,,Y,0,0,,,2013-02-16 15:54,2013-02-16 15:56,admin,admin
504220,6359,125401,13662,0,N,N,N,CP_Drtn,TT_Task,DT_FixedDUR2,TK_NotStart,DUKHCONP1AZ6ARGF3000,Block work,8168,144,0,200,0,9737.5,9737.5,200,0,0,0,,,,2014-03-01 08:00,2014-03-29 17:00,,2014-02-06 08:00,2014-03-08 17:00,2014-02-06 08:00,2014-03-08 17:00,2014-02-06 08:00,2014-03-08 17:00,2014-03-01 08:00,2014-03-29 17:00,,PT_Normal,,,,,sun3j7ivRdCvpY++mKJaDw,,,,N,0,0,,,2013-02-16 15:54,2013-02-16 15:56,admin,admin
504221,6359,125401,13662,0,N,N,N,CP_Drtn,TT_Task,DT_FixedDUR2,TK_NotStart,DUKHCONP1AZ6ARGF3005,Plastering work,8169,144,0,200,0,13637.5,13637.5,200,0,0,0,,,,2014-03-23 08:00,2014-04-20 17:00,,2014-03-02 08:00,2014-03-30 17:00,2014-03-02 08:00,2014-03-30 17:00,2014-03-02 08:00,2014-03-30 17:00,2014-03-23 08:00,2014-04-20 17:00,,PT_Normal,,,,,vMMZIxHBSWO46ng0ilKYfw,,,,N,0,0,,,2013-02-16 15:54,2013-02-16 15:56,admin,admin
504222,6359,125401,13662,0,N,N,N,CP_Drtn,TT_Task,DT_FixedDUR2,TK_NotStart,DUKHCONP1AZ6ARGF3010,Flooring screed,8164,208,64,168,0,1580.25,1580.25,168,0,0,0,,,,2014-04-09 08:00,2014-05-03 17:00,,2014-03-10 08:00,2014-04-02 17:00,2014-03-10 08:00,2014-04-02 17:00,2014-03-10 08:00,2014-04-02 17:00,2014-04-09 08:00,2014-05-03 17:00,,PT_Normal,,,,,ZQUcbdU1TpaeIyrijfXK6g,,,,N,0,0,,,2013-02-16 15:54,2013-02-16 15:56,admin,admin
504223,6359,125401,13662,0,N,N,N,CP_Drtn,TT_Task,DT_FixedDUR2,TK_NotStart,DUKHCONP1AZ6ARGF3015,Wet area waterproofing & Protection Screed,8178,144,0,120,0,247.5,247.5,120,0,0,0,,,,2014-04-09 08:00,2014-04-26 17:00,,2014-03-19 08:00,2014-04-05 17:00,2014-03-19 08:00,2014-04-05 17:00,2014-03-19 08:00,2014-04-05 17:00,2014-04-09 08:00,2014-04-26 17:00,,PT_Normal,,,,,mPH3QHE2T9OdT53U3p4ZUQ,,,,N,0,0,,,2013-02-16 15:54,2013-02-16 15:56,admin,admin
504224,6359,125401,13662,0,N,N,N,CP_Drtn,TT_Task,DT_FixedDUR2,TK_NotStart,DUKHCONP1AZ6ARGF3030,Paint First coat,8178,256,0,200,0,5425.75,5425.75,200,0,0,0,,,,2014-04-24 08:00,2014-05-22 17:00,,2014-03-18 08:00,2014-04-15 17:00,2014-03-18 08:00,2014-04-15 17:00,2014-03-18 08:00,2014-04-15 17:00,2014-04-24 08:00,2014-05-22 17:00,,PT_Normal,,,,,xLz8FM4KQz2hhBMfE7+K6A,,,,N,0,0,,,2013-02-16 15:54,2013-02-16 15:56,admin,admin
504225,6359,125401,13662,0,N,N,N,CP_Drtn,TT_Task,DT_FixedDUR2,TK_NotStart,DUKHCONP1AZ6ARGF3020,Ceramic Wall Tiling,8170,144,0,200,0,4428.5,4428.5,200,0,0,0,,,,2014-04-15 08:00,2014-05-13 17:00,,2014-03-25 08:00,2014-04-22 17:00,2014-03-25 08:00,2014-04-22 17:00,2014-03-25 08:00,2014-04-22 17:00,2014-04-15 08:00,2014-05-13 17:00,,PT_Normal,,,,,UXjuOlrnRIe4B33c5Q4Z2Q,,,,N,0,0,,,2013-02-16 15:54,2013-02-16 15:56,admin,admin
504226,6359,125401,13662,0,N,N,N,CP_Drtn,TT_Task,DT_FixedDUR2,TK_NotStart,DUKHCONP1AZ6ARGF3025,Porcelain Tile flooring,8170,144,0,200,0,1743.75,1743.75,200,0,0,0,,,,2014-04-21 08:00,2014-05-19 17:00,,2014-03-31 08:00,2014-04-28 17:00,2014-03-31 08:00,2014-04-28 17:00,2014-03-31 08:00,2014-04-28 17:00,2014-04-21 08:00,2014-05-19 17:00,,PT_Normal,,,,,1HhiDQuoSyaGm6bZRF2s1w,,,,N,0,0,,,2013-02-16 15:54,2013-02-16 15:56,admin,admin
504227,6359,125401,13662,0,N,N,N,CP_Drtn,TT_Task,DT_FixedDUR2,TK_NotStart,DUKHCONP1AZ6ARGF3040,Cobble Tile flooring,8170,168,0,120,0,741,741,120,0,0,0,,,,2014-05-21 08:00,2014-06-07 17:00,,2014-04-27 08:00,2014-05-13 17:00,2014-04-27 08:00,2014-05-13 17:00,2014-04-27 08:00,2014-05-13 17:00,2014-05-21 08:00,2014-06-07 17:00,,PT_Normal,,,,,q2IChTPKRiK9euBMC/ygsg,,,,N,0,0,,,2013-02-16 15:54,2013-02-16 15:56,admin,admin
504228,6359,125401,13662,0,N,N,N,CP_Drtn,TT_Task,DT_FixedDUR2,TK_NotStart,DUKHCONP1AZ6ARGF3035,Slate Tile Flooring & Skirting,8170,184,16,120,0,761.5,761.5,120,0,0,0,,,,2014-05-17 08:00,2014-06-02 17:00,,2014-04-20 08:00,2014-05-06 17:00,2014-04-20 08:00,2014-05-06 17:00,2014-04-20 08:00,2014-05-06 17:00,2014-05-17 08:00,2014-06-02 17:00,,PT_Normal,,,,,90F6HefTQAycJSt03+yFhA,,,,N,0,0,,,2013-02-16 15:54,2013-02-16 15:56,admin,admin
504229,6359,125401,13662,0,N,N,N,CP_Drtn,TT_Task,DT_FixedDUR2,TK_NotStart,DUKHCONP1AZ6ARGF3050,Granite - Stair case flooring & Skirting,8171,168,0,160,0,875,875,160,0,0,0,,,,2014-05-29 08:00,2014-06-21 17:00,,2014-05-05 08:00,2014-05-27 17:00,2014-05-05 08:00,2014-05-27 17:00,2014-05-05 08:00,2014-05-27 17:00,2014-05-29 08:00,2014-06-21 17:00,,PT_Normal,,,,,RgyySe5fSNa0/s7aTviQVA,,,,N,0,0,,,2013-02-16 15:54,2013-02-16 15:56,admin,admin
504230,6359,125401,13662,0,N,N,N,CP_Drtn,TT_Task,DT_FixedDUR2,TK_NotStart,DUKHCONP1AZ6ARGF3045,Fixing of Suspension systems,8178,144,0,160,0,1455.05,1455.05,160,0,0,0,,,,2014-05-08 08:00,2014-05-31 17:00,,2014-04-17 08:00,2014-05-10 17:00,2014-04-17 08:00,2014-05-10 17:00,2014-04-17 08:00,2014-05-10 17:00,2014-05-08 08:00,2014-05-31 17:00,,PT_Normal,,,,,CqiR+oPZTLGe6aATscSTpw,,,,N,0,0,,,2013-02-16 15:54,2013-02-23 09:03,admin,admin
504231,6359,125401,13662,0,N,N,N,CP_Drtn,TT_Task,DT_FixedDUR2,TK_NotStart,DUKHCONP1AZ6ARGF3055,Aluminum tile false ceiling,8178,168,24,200,0,150,150,200,0,0,0,,,,2014-05-20 08:00,2014-06-17 17:00,,2014-04-26 08:00,2014-05-24 17:00,2014-04-26 08:00,2014-05-24 17:00,2014-04-26 08:00,2014-05-24 17:00,2014-05-20 08:00,2014-06-17 17:00,,PT_Normal,,,,,/s1ZZvHcSOOeve7EtkcSjw,,,,N,0,0,,,2013-02-16 15:54,2013-02-16 15:56,admin,admin
504232,6359,125401,13662,0,N,N,N,CP_Drtn,TT_Task,DT_FixedDUR2,TK_NotStart,DUKHCONP1AZ6ARGF3060,Gypsum board false ceiling,8178,144,0,200,0,1335.15,1335.15,200,0,0,0,,,,2014-05-20 08:00,2014-06-17 17:00,,2014-04-29 08:00,2014-05-27 17:00,2014-04-29 08:00,2014-05-27 17:00,2014-04-29 08:00,2014-05-27 17:00,2014-05-20 08:00,2014-06-17 17:00,,PT_Normal,,,,,E7sfggprQZuwpNi4rf7lgQ,,,,N,0,0,,,2013-02-16 15:54,2013-02-16 15:56,admin,admin
504233,6359,125401,13662,0,N,N,N,CP_Drtn,TT_Task,DT_FixedDUR2,TK_NotStart,DUKHCONP1AZ6ARGF3065,Wooden door & PVC Door,8178,168,0,120,0,308,308,120,0,0,0,,,,2014-06-12 08:00,2014-06-29 17:00,,2014-05-19 08:00,2014-06-04 17:00,2014-05-19 08:00,2014-06-04 17:00,2014-05-19 08:00,2014-06-04 17:00,2014-06-12 08:00,2014-06-29 17:00,,PT_Normal,,,,,oB5ioImJTrSYYkajcrK2MQ,,,,N,0,0,,,2013-02-16 15:54,2013-02-16 15:56,admin,admin
504234,6359,125401,13662,0,N,N,N,CP_Drtn,TT_Task,DT_FixedDUR2,TK_NotStart,DUKHCONP1AZ6ARGF3070,Aluminum doors,8178,168,0,120,0,176,176,120,0,0,0,,,,2014-06-18 08:00,2014-07-05 17:00,,2014-05-25 08:00,2014-06-10 17:00,2014-05-25 08:00,2014-06-10 17:00,2014-05-25 08:00,2014-06-10 17:00,2014-06-18 08:00,2014-07-05 17:00,,PT_Normal,,,,,pRCDXwfARg6acE9UMJdRuA,,,,N,0,0,,,2013-02-16 15:54,2013-02-16 15:56,admin,admin
504235,6359,125401,13662,0,N,N,N,CP_Drtn,TT_Task,DT_FixedDUR2,TK_NotStart,DUKHCONP1AZ6ARGF3080,Aluminum windows,8178,248,40,160,0,162.25,162.25,160,0,0,0,,,,2014-07-07 08:00,2014-07-29 17:00,,2014-06-01 08:00,2014-06-23 17:00,2014-06-01 08:00,2014-06-23 17:00,2014-06-01 08:00,2014-06-23 17:00,2014-07-07 08:00,2014-07-29 17:00,,PT_Normal,,,,,/5gmoXvnQoODfcrQSb+L7A,,,,N,0,0,,,2013-02-16 15:54,2013-02-16 15:56,admin,admin
504236,6359,125401,13662,0,N,N,N,CP_Drtn,TT_Task,DT_FixedDUR2,TK_NotStart,DUKHCONP1AZ6ARGF3075,Carpentry & Joinery Works,8178,168,0,160,0,572,572,160,0,0,0,,,,2014-06-24 08:00,2014-07-16 17:00,,2014-05-31 08:00,2014-06-22 17:00,2014-05-31 08:00,2014-06-22 17:00,2014-05-31 08:00,2014-06-22 17:00,2014-06-24 08:00,2014-07-16 17:00,,PT_Normal,,,,,WN4slLYJTDuW2muTrgVYyA,,,,N,0,0,,,2013-02-16 15:54,2013-02-16 15:56,admin,admin
504237,6359,125401,13662,0,N,N,N,CP_Drtn,TT_Task,DT_FixedDUR2,TK_NotStart,DUKHCONP1AZ6ARGF3090,Installation of Granite Counter Top,8171,168,0,120,0,176,176,120,0,0,0,,,,2014-07-07 08:00,2014-07-23 17:00,,2014-06-12 08:00,2014-06-29 17:00,2014-06-12 08:00,2014-06-29 17:00,2014-06-12 08:00,2014-06-29 17:00,2014-07-07 08:00,2014-07-23 17:00,,PT_Normal,,,,,uasYcjinTQu5l9YnDQ+b4w,,,,N,0,0,,,2013-02-16 15:54,2013-02-16 15:56,admin,admin
504238,6359,125401,13662,0,N,N,N,CP_Drtn,TT_Task,DT_FixedDUR2,TK_NotStart,DUKHCONP1AZ6ARGF3085,S.S.Balustrade,8178,208,40,160,0,262.5,262.5,160,0,0,0,,,,2014-07-08 08:00,2014-07-30 17:00,,2014-06-08 08:00,2014-06-30 17:00,2014-06-08 08:00,2014-06-30 17:00,2014-06-08 08:00,2014-06-30 17:00,2014-07-08 08:00,2014-07-30 17:00,,PT_Normal,,,,,tGTwrGF9RFKo2QuqIK0P+w,,,,N,0,0,,,2013-02-16 15:54,2013-02-16 15:56,admin,admin
504239,6359,125401,13662,0,N,N,N,CP_Drtn,TT_Task,DT_FixedDUR2,TK_NotStart,DUKHCONP1AZ6ARGF3095,Final Painting,8178,168,0,200,0,5425.75,5425.75,200,0,0,0,,,,2014-07-16 08:00,2014-08-17 17:00,,2014-06-22 08:00,2014-07-20 17:00,2014-06-22 08:00,2014-07-20 17:00,2014-06-22 08:00,2014-07-20 17:00,2014-07-16 08:00,2014-08-17 17:00,,PT_Normal,,,,,Arw96XWrQVyma+He488UWg,,,,N,0,0,,,2013-02-16 15:54,2013-02-16 15:56,admin,admin
504240,6359,125403,13662,0,N,N,N,CP_Drtn,TT_Task,DT_FixedDUR2,TK_NotStart,DUKHCONP1AZ6ARRF3630,Leveling Screed for Waterproofing,8164,168,0,200,0,800,800,200,0,0,0,,,,2014-06-04 08:00,2014-07-02 17:00,,2014-05-11 08:00,2014-06-08 17:00,2014-05-11 08:00,2014-06-08 17:00,2014-05-11 08:00,2014-06-08 17:00,2014-06-04 08:00,2014-07-02 17:00,,PT_Normal,,,,,+DoqrBluQtWiBsXTfTDHmg,,,,N,0,0,,,2013-02-16 15:54,2013-02-16 15:56,admin,admin
504241,6359,125403,13662,0,N,N,N,CP_Drtn,TT_Task,DT_FixedDUR2,TK_NotStart,DUKHCONP1AZ6ARRF3635,Laying of Waterproofing Membrane,8178,168,0,200,0,1138.5,1138.5,200,0,0,0,,,,2014-06-08 08:00,2014-07-06 17:00,,2014-05-14 08:00,2014-06-11 17:00,2014-05-14 08:00,2014-06-11 17:00,2014-05-14 08:00,2014-06-11 17:00,2014-06-08 08:00,2014-07-06 17:00,,PT_Normal,,,,,Lu6ZRFyOR9SIG82D/U8+3Q,,,,N,0,0,,,2013-02-16 15:54,2013-02-16 15:56,admin,admin
504242,6359,125403,13662,0,N,N,N,CP_Drtn,TT_Task,DT_FixedDUR2,TK_NotStart,DUKHCONP1AZ6ARRF3640,Installation of Insulation & Protection,8178,168,0,200,0,1408,1408,200,0,0,0,,,,2014-06-12 08:00,2014-07-10 17:00,,2014-05-19 08:00,2014-06-16 17:00,2014-05-19 08:00,2014-06-16 17:00,2014-05-19 08:00,2014-06-16 17:00,2014-06-12 08:00,2014-07-10 17:00,,PT_Normal,,,,,CTpcrlz6T0y20EBvyj6gYg,,,,N,0,0,,,2013-02-16 15:54,2013-02-16 15:56,admin,admin
504243,6359,125403,13662,0,N,N,N,CP_Drtn,TT_Task,DT_FixedDUR2,TK_NotStart,DUKHCONP1AZ6ARRF3645,Lime Stone Chips & Paving slab Installation,8170,168,0,200,0,688.25,688.25,200,0,0,0,,,,2014-06-17 08:00,2014-07-15 17:00,,2014-05-24 08:00,2014-06-21 17:00,2014-05-24 08:00,2014-06-21 17:00,2014-05-24 08:00,2014-06-21 17:00,2014-06-17 08:00,2014-07-15 17:00,,PT_Normal,,,,,U5D37KqJRv28H6RptK6UaA,,,,N,0,0,,,2013-02-16 15:54,2013-02-16 15:56,admin,admin
504244,6359,125403,13662,0,N,N,N,CP_Drtn,TT_Task,DT_FixedDUR2,TK_NotStart,DUKHCONP1AZ6ARRF3655,Installation of Pumps Protection cabinets,8178,168,0,160,0,616,616,160,0,0,0,,,,2014-07-10 08:00,2014-08-05 17:00,,2014-06-16 08:00,2014-07-08 17:00,2014-06-16 08:00,2014-07-08 17:00,2014-06-16 08:00,2014-07-08 17:00,2014-07-10 08:00,2014-08-05 17:00,,PT_Normal,,,,,3X1SZCbKTy+jljyJ37SOmw,,,,N,0,0,,,2013-02-16 15:54,2013-02-16 15:56,admin,admin
504245,6359,125403,13662,0,N,N,N,CP_Drtn,TT_Task,DT_FixedDUR2,TK_NotStart,DUKHCONP1AZ6ARRF3650,Install. of Gal. Frame & Aluminum Slat Screen,8178,168,0,200,0,1046.5,1046.5,200,0,0,0,,,,2014-06-25 08:00,2014-07-23 17:00,,2014-06-01 08:00,2014-06-29 17:00,2014-06-01 08:00,2014-06-29 17:00,2014-06-01 08:00,2014-06-29 17:00,2014-06-25 08:00,2014-07-23 17:00,,PT_Normal,,,,,aj5CFRXxTM20lZJZuWRTDw,,,,N,0,0,,,2013-02-16 15:54,2013-02-16 15:56,admin,admin
504246,6359,125403,13662,0,N,N,N,CP_Drtn,TT_Task,DT_FixedDUR2,TK_NotStart,DUKHCONP1AZ6ARRF3660,Installation of Access Ladder,8178,208,208,120,0,176,176,120,0,0,0,,,,2014-07-28 08:00,2014-08-17 17:00,,2014-06-28 08:00,2014-07-14 17:00,2014-06-28 08:00,2014-07-14 17:00,2014-06-28 08:00,2014-07-14 17:00,2014-07-28 08:00,2014-08-17 17:00,,PT_Normal,,,,,pZcH50okR1OtUp8ySs6eyg,,,,N,0,0,,,2013-02-16 15:54,2013-02-16 15:56,admin,admin
504247,6359,125404,13662,0,N,N,N,CP_Drtn,TT_Task,DT_FixedDUR2,TK_NotStart,DUKHCONP1AZ6AREL3665,External Plastering,8169,376,0,200,0,14275,14275,200,0,0,0,,,,2014-06-21 08:00,2014-07-19 17:00,,2014-04-27 08:00,2014-05-25 17:00,2014-04-27 08:00,2014-05-25 17:00,2014-04-27 08:00,2014-05-25 17:00,2014-06-21 08:00,2014-07-19 17:00,,PT_Normal,,,,,n8dr3dvhTEOnzvWveiLt/w,,,,N,0,0,,,2013-02-16 15:54,2013-02-16 15:56,admin,admin
504248,6359,125404,13662,0,N,N,N,CP_Drtn,TT_Task,DT_FixedDUR2,TK_NotStart,DUKHCONP1AZ6AREL3670,External stone cladding works,8170,392,0,160,0,990,990,160,0,0,0,,,,2014-07-10 08:00,2014-08-05 17:00,,2014-05-14 08:00,2014-06-05 17:00,2014-05-14 08:00,2014-06-05 17:00,2014-05-14 08:00,2014-06-05 17:00,2014-07-10 08:00,2014-08-05 17:00,,PT_Normal,,,,,U9YJ9WUEQOSm5oZ6MvBuIw,,,,N,0,0,,,2013-02-16 15:54,2013-02-16 15:56,admin,admin
504249,6359,125404,13662,0,N,N,N,CP_Drtn,TT_Task,DT_FixedDUR2,TK_NotStart,DUKHCONP1AZ6AREL3680,External Painting,8178,392,40,160,0,3784,3784,160,0,0,0,,,,2014-07-22 08:00,2014-08-17 17:00,,2014-05-26 08:00,2014-06-17 17:00,2014-05-26 08:00,2014-06-17 17:00,2014-05-26 08:00,2014-06-17 17:00,2014-07-22 08:00,2014-08-17 17:00,,PT_Normal,,,,,Uh+BuAdjT4KFadIXm0B4Gg,,,,N,0,0,,,2013-02-16 15:54,2013-02-16 15:56,admin,admin
504250,6359,125406,13662,0,N,N,N,CP_Drtn,TT_Task,DT_FixedDUR2,TK_NotStart,DUKHCONP1AZ8ELTC8010,Pre-Commissioning & Testing of Electrical Works,8178,0,0,200,0,3000,3000,200,0,0,0,,,,2014-10-18 08:00,2014-11-15 17:00,,2014-10-18 08:00,2014-11-15 17:00,2014-10-18 08:00,2014-11-15 17:00,2014-10-18 08:00,2014-11-15 17:00,2014-10-18 08:00,2014-11-15 17:00,,PT_Normal,,,,,aiIbJMZeTg2GomDfukewFw,,,,Y,0,0,,,2013-02-16 15:54,2013-02-16 15:56,admin,admin
504251,6359,125406,13662,0,N,N,N,CP_Drtn,TT_Task,DT_FixedDUR2,TK_NotStart,DUKHCONP1AZ8PLTC8005,Pre-Commissioning & Testing of Plumbing Works,8178,0,0,200,0,3000,3000,200,0,0,0,,,,2014-10-18 08:00,2014-11-15 17:00,,2014-10-18 08:00,2014-11-15 17:00,2014-10-18 08:00,2014-11-15 17:00,2014-10-18 08:00,2014-11-15 17:00,2014-10-18 08:00,2014-11-15 17:00,,PT_Normal,,,,,JPdBqdKVQkGe6wWDP/Knew,,,,Y,0,0,,,2013-02-16 15:54,2013-02-16 15:56,admin,admin
504252,6359,125406,13662,0,N,N,N,CP_Drtn,TT_Task,DT_FixedDUR2,TK_NotStart,DUKHCONP1AZ8ACTC8000,Pre-Commissioning & Testing of AC Works,8178,0,0,200,0,1500,1500,200,0,0,0,,,,2014-10-18 08:00,2014-11-15 17:00,,2014-10-18 08:00,2014-11-15 17:00,2014-10-18 08:00,2014-11-15 17:00,2014-10-18 08:00,2014-11-15 17:00,2014-10-18 08:00,2014-11-15 17:00,,PT_Normal,,,,,t7ZSegHrTPWujvpO526wLQ,,,,Y,0,0,,,2013-02-16 15:54,2013-02-16 15:56,admin,admin
504253,6359,125408,13662,0,N,N,N,CP_Drtn,TT_Task,DT_FixedDUR2,TK_NotStart,DUKHCONP1AZ8HDEX5090,kerb works,8173,128,0,160,0,344,344,160,0,0,0,,,,2014-08-16 08:00,2014-09-07 17:00,,2014-07-24 08:00,2014-08-19 17:00,2014-07-24 08:00,2014-08-19 17:00,2014-07-24 08:00,2014-08-19 17:00,2014-08-16 08:00,2014-09-07 17:00,,PT_Normal,,,,,FO4t4h7sSHGC7JBy6Wx0ZQ,,,,N,0,0,,,2013-02-16 15:54,2013-02-16 15:56,admin,admin
504254,6359,125408,13662,0,N,N,N,CP_Drtn,TT_Task,DT_FixedDUR2,TK_NotStart,DUKHCONP1AZ8HDEX5095,Cobble Stone Works,8170,128,0,160,0,200,200,160,0,0,0,,,,2014-08-27 08:00,2014-09-18 17:00,,2014-08-09 08:00,2014-08-31 17:00,2014-08-09 08:00,2014-08-31 17:00,2014-08-09 08:00,2014-08-31 17:00,2014-08-27 08:00,2014-09-18 17:00,,PT_Normal,,,,,6sxH0gV8Sbikqpc8DkXmXA,,,,N,0,0,,,2013-02-16 15:54,2013-02-16 15:56,admin,admin
504255,6359,125408,13662,0,N,N,N,CP_Drtn,TT_Task,DT_FixedDUR2,TK_NotStart,DUKHCONP1AZ8HDEX5100,Interlock works,8174,128,0,160,0,232,232,160,0,0,0,,,,2014-09-03 08:00,2014-09-25 17:00,,2014-08-16 08:00,2014-09-07 17:00,2014-08-16 08:00,2014-09-07 17:00,2014-08-16 08:00,2014-09-07 17:00,2014-09-03 08:00,2014-09-25 17:00,,PT_Normal,,,,,5PWg2UXISlmDq0un1jmWJw,,,,N,0,0,,,2013-02-16 15:54,2013-02-16 15:56,admin,admin
504256,6359,125409,13662,0,N,N,N,CP_Drtn,TT_Task,DT_FixedDUR2,TK_NotStart,DUKHCONP1AZ8MSEX5335,Aluminum Roll-up Shutter with 2m Wall,8178,440,168,200,0,400,400,200,0,0,0,,,,2014-11-08 08:00,2014-12-06 17:00,,2014-09-02 08:00,2014-09-30 17:00,2014-09-02 08:00,2014-09-30 17:00,2014-09-02 08:00,2014-09-30 17:00,2014-11-08 08:00,2014-12-06 17:00,,PT_Normal,,,,,i1+ySOIbTSqEBCqgHikRig,,,,N,0,0,,,2013-02-16 15:54,2013-02-16 16:35,admin,admin
504257,6359,125409,13662,0,N,N,N,CP_Drtn,TT_Task,DT_FixedDUR2,TK_NotStart,DUKHCONP1AZ8MSEX5020,Construction Entrance Ramp,8164,128,0,200,0,656,656,200,0,0,0,,,,2014-07-29 08:00,2014-08-30 17:00,,2014-07-10 08:00,2014-08-11 17:00,2014-07-10 08:00,2014-08-11 17:00,2014-07-10 08:00,2014-08-11 17:00,2014-07-29 08:00,2014-08-30 17:00,,PT_Normal,,,,,bq3jXblWR/+7S197F6SpyA,,,,N,0,0,,,2013-02-16 15:54,2013-02-16 15:56,admin,admin
504258,6359,125409,13662,0,N,N,N,CP_Drtn,TT_Task,DT_FixedDUR2,TK_NotStart,DUKHCONP1AZ8MSEX5025,SS.Handrails and Balustrades,8178,152,0,160,0,56,56,160,0,0,0,,,,2014-08-23 08:00,2014-09-14 17:00,,2014-07-28 08:00,2014-08-23 17:00,2014-07-28 08:00,2014-08-23 17:00,2014-07-28 08:00,2014-08-23 17:00,2014-08-23 08:00,2014-09-14 17:00,,PT_Normal,,,,,nRrU3peySROYnrw8BlQ7yA,,,,N,0,0,,,2013-02-16 15:54,2013-02-16 15:56,admin,admin
504259,6359,125409,13662,0,N,N,N,CP_Drtn,TT_Task,DT_FixedDUR2,TK_NotStart,DUKHCONP1AZ8MSEX5015,Construction of grease Trap,8178,64,0,160,0,56,56,160,0,0,0,,,,2014-07-02 08:00,2014-07-24 17:00,,2014-06-23 08:00,2014-07-15 17:00,2014-06-23 08:00,2014-07-15 17:00,2014-06-23 08:00,2014-07-15 17:00,2014-07-02 08:00,2014-07-24 17:00,,PT_Normal,,,,,++1xX90gQ7CFzrDSK8K/dg,,,,N,0,0,,,2013-02-16 15:54,2013-02-16 15:56,admin,admin
504260,6359,125409,13662,0,N,N,N,CP_Drtn,TT_Task,DT_FixedDUR2,TK_NotStart,DUKHCONP1AZ8MSEX5000,Construction of Manholes,8172,64,0,200,0,528,528,200,0,0,0,,,,2014-05-29 08:00,2014-06-26 17:00,,2014-05-20 08:00,2014-06-17 17:00,2014-05-20 08:00,2014-06-17 17:00,2014-05-20 08:00,2014-06-17 17:00,2014-05-29 08:00,2014-06-26 17:00,,PT_Normal,,,,,bys5ywvDSee8O8XULsottA,,,,N,0,0,,,2013-02-16 15:54,2013-02-16 15:56,admin,admin
504261,6359,125409,13662,0,N,N,N,CP_Drtn,TT_Task,DT_FixedDUR2,TK_NotStart,DUKHCONP1AZ8MSEX5005,"Construction  of Soak pit, Chambers",8172,64,0,200,0,176,176,200,0,0,0,,,,2014-06-12 08:00,2014-07-10 17:00,,2014-06-03 08:00,2014-07-01 17:00,2014-06-03 08:00,2014-07-01 17:00,2014-06-03 08:00,2014-07-01 17:00,2014-06-12 08:00,2014-07-10 17:00,,PT_Normal,,,,,5ptPo+GGTXunjd0J9WsKgA,,,,N,0,0,,,2013-02-16 15:54,2013-02-16 15:56,admin,admin
504262,6359,125409,13662,0,N,N,N,CP_Drtn,TT_Task,DT_FixedDUR2,TK_NotStart,DUKHCONP1AZ8MSEX5010,Telephone cable laying,8177,64,0,200,0,500,500,200,0,0,0,,,,2014-07-26 08:00,2014-08-26 17:00,,2014-07-16 08:00,2014-08-17 17:00,2014-07-16 08:00,2014-08-17 17:00,2014-07-16 08:00,2014-08-17 17:00,2014-07-26 08:00,2014-08-26 17:00,,PT_Normal,,,,,jYMwF/l2RwKnE19axZ31Zw,,,,N,0,0,,,2013-02-16 15:54,2013-02-16 15:56,admin,admin
504263,6359,125410,13662,0,N,N,N,CP_Drtn,TT_Task,DT_FixedDUR2,TK_NotStart,DUKHCONP1AZ8SLEX5105,Laying of Grass/ green area,8178,128,0,200,0,2744,2744,200,0,0,0,,,,2014-09-09 08:00,2014-10-07 17:00,,2014-08-21 08:00,2014-09-18 17:00,2014-08-21 08:00,2014-09-18 17:00,2014-08-21 08:00,2014-09-18 17:00,2014-09-09 08:00,2014-10-07 17:00,,PT_Normal,,,,,QURRtM7/R4C1dCGEwm99rQ,,,,N,0,0,,,2013-02-16 15:54,2013-02-16 15:56,admin,admin
504264,6359,125410,13662,0,N,N,N,CP_Drtn,TT_Task,DT_FixedDUR2,TK_NotStart,DUKHCONP1AZ8SLEX5110,Laying of Palm tree,8178,128,128,200,0,168,168,200,0,0,0,,,,2014-09-16 08:00,2014-10-16 17:00,,2014-08-28 08:00,2014-09-25 17:00,2014-08-28 08:00,2014-09-25 17:00,2014-08-28 08:00,2014-09-25 17:00,2014-09-16 08:00,2014-10-16 17:00,,PT_Normal,,,,,CrBXSZF4ShCO5p7dBH24RQ,,,,N,0,0,,,2013-02-16 15:54,2013-02-16 15:56,admin,admin
504265,6359,125411,13662,0,N,N,N,CP_Drtn,TT_Task,DT_FixedDUR2,TK_NotStart,DUKHCONP1AZ8WEEX5030,Excavation,8177,344,0,160,0,64,64,160,40,0,40,,,,2014-07-27 08:00,2014-08-21 17:00,,2014-06-07 08:00,2014-06-29 17:00,2014-06-07 08:00,2014-06-29 17:00,2014-06-07 08:00,2014-06-29 17:00,2014-07-27 08:00,2014-08-21 17:00,,PT_Normal,,,,,S/lVMDLHQ3m/XigjKV9O6g,,,,N,0,0,,,2013-02-16 15:54,2013-02-16 15:56,admin,admin
504266,6359,125411,13662,0,N,N,N,CP_Drtn,TT_Task,DT_FixedDUR2,TK_NotStart,DUKHCONP1AZ8WEEX5035,Construction of Raft,8165,344,0,200,0,840,840,200,0,0,0,,,,2014-08-05 08:00,2014-09-02 17:00,,2014-06-12 08:00,2014-07-10 17:00,2014-06-12 08:00,2014-07-10 17:00,2014-06-12 08:00,2014-07-10 17:00,2014-08-05 08:00,2014-09-02 17:00,,PT_Normal,,,,,VhnxPXxoTt+VvqXIpyBtgQ,,,,N,0,0,,,2013-02-16 15:54,2013-02-16 15:56,admin,admin
504267,6359,125411,13662,0,N,N,N,CP_Drtn,TT_Task,DT_FixedDUR2,TK_NotStart,DUKHCONP1AZ8WEEX5040,Block works & Plastering,8168,344,0,200,0,512,512,200,0,0,0,,,,2014-08-14 08:00,2014-09-11 17:00,,2014-06-22 08:00,2014-07-20 17:00,2014-06-22 08:00,2014-07-20 17:00,2014-06-22 08:00,2014-07-20 17:00,2014-08-14 08:00,2014-09-11 17:00,,PT_Normal,,,,,eWUnOAgwRiSl+wSxLhOXDA,,,,N,0,0,,,2013-02-16 15:54,2013-02-16 15:56,admin,admin
504268,6359,125411,13662,0,N,N,N,CP_Drtn,TT_Task,DT_FixedDUR2,TK_NotStart,DUKHCONP1AZ8WEEX5045,Flooring & Painting,8178,344,192,200,0,232,232,200,0,0,0,,,,2014-08-21 08:00,2014-09-18 17:00,,2014-06-29 08:00,2014-07-27 17:00,2014-06-29 08:00,2014-07-27 17:00,2014-06-29 08:00,2014-07-27 17:00,2014-08-21 08:00,2014-09-18 17:00,,PT_Normal,,,,,cFN0Op5+SsSljJ81AQV5Kw,,,,N,0,0,,,2013-02-16 15:54,2013-02-16 15:56,admin,admin
504269,6359,125411,13662,0,N,N,N,CP_Drtn,TT_Task,DT_FixedDUR2,TK_NotStart,DUKHCONP1AZ8WEEX5050,Installation of Steel Gate,8178,152,72,160,0,56,56,160,0,0,0,,,,2014-09-03 08:00,2014-09-25 17:00,,2014-08-12 08:00,2014-09-03 17:00,2014-08-12 08:00,2014-09-03 17:00,2014-08-12 08:00,2014-09-03 17:00,2014-09-03 08:00,2014-09-25 17:00,,PT_Normal,,,,,u+UcWAe9TZKxLauksVDOZA,,,,N,0,0,,,2013-02-16 15:54,2013-02-16 15:56,admin,admin
504270,6359,125411,13662,0,N,N,N,CP_Drtn,TT_Task,DT_FixedDUR2,TK_NotStart,DUKHCONP1AZ8WEEX5060,Structural steel &  SS Shed cover installation,8178,80,0,200,0,336,336,200,0,0,0,,,,2014-09-09 08:00,2014-10-07 17:00,,2014-08-28 08:00,2014-09-25 17:00,2014-08-28 08:00,2014-09-25 17:00,2014-08-28 08:00,2014-09-25 17:00,2014-09-09 08:00,2014-10-07 17:00,,PT_Normal,,,,,RIg225RFRjWSvYNfRd8XkA,,,,N,0,0,,,2013-02-16 15:54,2013-02-16 15:56,admin,admin
504271,6359,125411,13662,0,N,N,N,CP_Drtn,TT_Task,DT_FixedDUR2,TK_NotStart,DUKHCONP1AZ8WEEX5065,"Install. of Water Tank,Chiller,Pump & Meter",8178,72,0,200,0,203.2,203.2,200,0,0,0,,,,2014-09-16 08:00,2014-10-16 17:00,,2014-09-06 08:00,2014-10-04 17:00,2014-09-06 08:00,2014-10-04 17:00,2014-09-06 08:00,2014-10-04 17:00,2014-09-16 08:00,2014-10-16 17:00,,PT_Normal,,,,,82SnrJMhQt2OGVYBUVnUeA,,,,N,0,0,,,2013-02-16 15:54,2013-02-16 15:56,admin,admin
504272,6359,125414,13662,0,N,N,N,CP_Drtn,TT_Task,DT_FixedDUR2,TK_NotStart,DUKHCONP1AZ8STFF2030,"Beam, Stairs ,Slab-Rebar & Formwork",8165,32,0,200,0,16119.25,16119.25,200,0,0,0,,,,2014-04-08 08:00,2014-05-06 17:00,,2014-04-03 08:00,2014-05-01 17:00,2014-04-03 08:00,2014-05-01 17:00,2014-04-03 08:00,2014-05-01 17:00,2014-04-08 08:00,2014-05-06 17:00,,PT_Normal,,,,,6AjlTL9xQZes67WQY4atTw,,,,N,0,0,,,2013-02-16 15:54,2013-02-16 15:56,admin,admin
504273,6359,125414,13662,0,N,N,N,CP_Drtn,TT_Task,DT_FixedDUR2,TK_NotStart,DUKHCONP1AZ8STFF2035,"Beam, Stairs ,Slab-Concrete",8167,32,0,112,0,1141,1141,112,0,0,0,,,,2014-04-24 08:00,2014-05-10 17:00,,2014-04-20 08:00,2014-05-05 17:00,2014-04-20 08:00,2014-05-05 17:00,2014-04-20 08:00,2014-05-05 17:00,2014-04-24 08:00,2014-05-10 17:00,,PT_Normal,,,,,NxVoqER5RXOyVQjB88NnTA,,,,N,0,0,,,2013-02-16 15:54,2013-02-16 15:56,admin,admin
504274,6359,125414,13662,0,N,N,N,CP_Drtn,TT_Task,DT_FixedDUR2,TK_NotStart,DUKHCONP1AZ8STFF2020,Column-Rebar & Formwork,8165,16,0,200,0,3580.5,3580.5,200,0,0,0,,,,2014-03-12 08:00,2014-04-09 17:00,,2014-03-10 08:00,2014-04-07 17:00,2014-03-10 08:00,2014-04-07 17:00,2014-03-10 08:00,2014-04-07 17:00,2014-03-12 08:00,2014-04-09 17:00,,PT_Normal,,,,,lUD8weHHTZqgb+mIPfsmIQ,,,,N,0,0,,,2013-02-16 15:54,2013-02-16 15:56,admin,admin
504275,6359,125414,13662,0,N,N,N,CP_Drtn,TT_Task,DT_FixedDUR2,TK_NotStart,DUKHCONP1AZ8STFF2025,Column-Concrete,8167,32,0,192,0,224,224,192,0,0,0,,,,2014-03-24 08:00,2014-04-20 17:00,,2014-03-19 08:00,2014-04-15 17:00,2014-03-19 08:00,2014-04-15 17:00,2014-03-19 08:00,2014-04-15 17:00,2014-03-24 08:00,2014-04-20 17:00,,PT_Normal,,,,,qqyG04P7SDqhj+71bN7x9w,,,,N,0,0,,,2013-02-16 15:54,2013-02-16 15:56,admin,admin
504276,6359,125415,13662,0,N,N,N,CP_Drtn,TT_Task,DT_FixedDUR2,TK_NotStart,DUKHCONP1AZ8STGF2000,Column-Rebar & Formwork,8165,0,0,200,0,4046,4046,200,0,0,0,,,,2014-01-26 08:00,2014-02-24 17:00,,2014-01-26 08:00,2014-02-24 17:00,2014-01-26 08:00,2014-02-24 17:00,2014-01-26 08:00,2014-02-24 17:00,2014-01-26 08:00,2014-02-24 17:00,,PT_Normal,,,,,x4eotDLGTIeM6fXOW3h9cw,,,,Y,0,0,,,2013-02-16 15:54,2013-02-16 15:56,admin,admin
504277,6359,125415,13662,0,N,N,N,CP_Drtn,TT_Task,DT_FixedDUR2,TK_NotStart,DUKHCONP1AZ8STGF2005,Column-Concrete,8167,16,0,192,0,255.5,255.5,192,0,0,0,,,,2014-02-05 08:00,2014-03-05 17:00,,2014-02-03 08:00,2014-03-03 17:00,2014-02-03 08:00,2014-03-03 17:00,2014-02-03 08:00,2014-03-03 17:00,2014-02-05 08:00,2014-03-05 17:00,,PT_Normal,,,,,vKZs2Z+1T6OEIjzMOhUI3A,,,,N,0,0,,,2013-02-16 15:54,2013-02-16 15:56,admin,admin
504278,6359,125415,13662,0,N,N,N,CP_Drtn,TT_Task,DT_FixedDUR2,TK_NotStart,DUKHCONP1AZ8STGF2010,"Beam, Stairs ,Slab-Rebar & Formwork",8165,16,0,200,0,16829.75,16829.75,200,0,0,0,,,,2014-02-22 08:00,2014-03-22 17:00,,2014-02-19 08:00,2014-03-19 17:00,2014-02-19 08:00,2014-03-19 17:00,2014-02-19 08:00,2014-03-19 17:00,2014-02-22 08:00,2014-03-22 17:00,,PT_Normal,,,,,h4VBXaf3SP6YE97OZMZ7/Q,,,,N,0,0,,,2013-02-16 15:54,2013-02-16 15:56,admin,admin
504279,6359,125415,13662,0,N,N,N,CP_Drtn,TT_Task,DT_FixedDUR2,TK_NotStart,DUKHCONP1AZ8STGF2015,"Beam, Stairs ,Slab-Concrete",8167,16,0,112,0,1295,1295,112,0,0,0,,,,2014-03-10 08:00,2014-03-25 17:00,,2014-03-08 08:00,2014-03-23 17:00,2014-03-08 08:00,2014-03-23 17:00,2014-03-08 08:00,2014-03-23 17:00,2014-03-10 08:00,2014-03-25 17:00,,PT_Normal,,,,,lGthWsHLTHiWMhCc9dfsWA,,,,N,0,0,,,2013-02-16 15:54,2013-02-16 15:56,admin,admin
504280,6359,125416,13662,0,N,N,N,CP_Drtn,TT_Task,DT_FixedDUR2,TK_NotStart,DUKHCONP1AZ8STRF2040,Column-Rebar & Formwork,8165,64,0,144,0,1205.75,1205.75,144,0,0,0,,,,2014-05-01 08:00,2014-05-21 17:00,,2014-04-22 08:00,2014-05-12 17:00,2014-04-22 08:00,2014-05-12 17:00,2014-04-22 08:00,2014-05-12 17:00,2014-05-01 08:00,2014-05-21 17:00,,PT_Normal,,,,,bJHAzTRCTwav89zPsm2iuQ,,,,N,0,0,,,2013-02-16 15:54,2013-02-16 15:56,admin,admin
504281,6359,125416,13662,0,N,N,N,CP_Drtn,TT_Task,DT_FixedDUR2,TK_NotStart,DUKHCONP1AZ8STRF2045,Column-Concrete,8167,64,0,136,0,52.5,52.5,136,0,0,0,,,,2014-05-05 08:00,2014-05-24 17:00,,2014-04-26 08:00,2014-05-14 17:00,2014-04-26 08:00,2014-05-14 17:00,2014-04-26 08:00,2014-05-14 17:00,2014-05-05 08:00,2014-05-24 17:00,,PT_Normal,,,,,d38H8lbmScCLaDCeiG5ZTQ,,,,N,0,0,,,2013-02-16 15:54,2013-02-16 15:56,admin,admin
504282,6359,125416,13662,0,N,N,N,CP_Drtn,TT_Task,DT_FixedDUR2,TK_NotStart,DUKHCONP1AZ8STRF2050,Slab-Rebar & Formwork - Head Room,8165,64,0,160,0,2735.25,2735.25,160,0,0,0,,,,2014-05-07 08:00,2014-05-29 17:00,,2014-04-28 08:00,2014-05-20 17:00,2014-04-28 08:00,2014-05-20 17:00,2014-04-28 08:00,2014-05-20 17:00,2014-05-07 08:00,2014-05-29 17:00,,PT_Normal,,,,,fFWUykmSRBudxK1TXhD6SA,,,,N,0,0,,,2013-02-16 15:54,2013-02-16 15:56,admin,admin
504283,6359,125416,13662,0,N,N,N,CP_Drtn,TT_Task,DT_FixedDUR2,TK_NotStart,DUKHCONP1AZ8STRF2055,Slab-Concrete-Head room,8167,64,0,104,0,252,252,104,0,0,0,,,,2014-05-18 08:00,2014-06-01 17:00,,2014-05-08 08:00,2014-05-22 17:00,2014-05-08 08:00,2014-05-22 17:00,2014-05-08 08:00,2014-05-22 17:00,2014-05-18 08:00,2014-06-01 17:00,,PT_Normal,,,,,zwD5p08+Rx+BcQG3oYWqvQ,,,,N,0,0,,,2013-02-16 15:54,2013-02-16 15:56,admin,admin
504284,6359,125416,13662,0,N,N,N,CP_Drtn,TT_Task,DT_FixedDUR2,TK_NotStart,DUKHCONP1AZ8STRF2060,Construction of Parapets,8168,448,32,200,0,2200,2200,200,0,0,0,,,,2014-07-15 08:00,2014-08-16 17:00,,2014-05-11 08:00,2014-06-08 17:00,2014-05-11 08:00,2014-06-08 17:00,2014-05-11 08:00,2014-06-08 17:00,2014-07-15 08:00,2014-08-16 17:00,,PT_Normal,,,,,cZ74FfNyQ7+bUpd53TTwRw,,,,N,0,0,,,2013-02-16 15:54,2013-02-16 15:56,admin,admin
504285,6359,125416,13662,0,N,N,N,CP_Drtn,TT_Task,DT_FixedDUR2,TK_NotStart,DUKHCONP1AZ8STRF2065,Construction of up stands/Plinth,8165,416,0,200,0,554.75,554.75,200,0,0,0,,,,2014-07-21 08:00,2014-08-21 17:00,,2014-05-21 08:00,2014-06-18 17:00,2014-05-21 08:00,2014-06-18 17:00,2014-05-21 08:00,2014-06-18 17:00,2014-07-21 08:00,2014-08-21 17:00,,PT_Normal,,,,,ecifZK+cSS6wTHqsBOj7yg,,,,N,0,0,,,2013-02-16 15:54,2013-02-16 15:56,admin,admin
504286,6359,125418,13662,0,N,N,N,CP_Drtn,TT_Task,DT_FixedDUR2,TK_NotStart,DUKHCONP1AZ8STUG1005,Footing Antitermite,8178,0,0,184,0,1584,1584,184,0,0,0,,,,2013-09-22 08:00,2013-10-20 17:00,,2013-09-22 08:00,2013-10-20 17:00,2013-09-22 08:00,2013-10-20 17:00,2013-09-22 08:00,2013-10-20 17:00,2013-09-22 08:00,2013-10-20 17:00,,PT_Normal,,,,,2vP+qCJjRniqhgYaTz3yQA,,,,Y,0,0,,,2013-02-16 15:54,2013-02-16 15:56,admin,admin
504287,6359,125418,13662,0,N,N,N,CP_Drtn,TT_Task,DT_FixedDUR2,TK_NotStart,DUKHCONP1AZ8STUG1010,Footing Blinding,8163,0,0,184,0,794.5,794.5,184,0,0,0,,,,2013-09-25 08:00,2013-10-23 17:00,,2013-09-25 08:00,2013-10-23 17:00,2013-09-25 08:00,2013-10-23 17:00,2013-09-25 08:00,2013-10-23 17:00,2013-09-25 08:00,2013-10-23 17:00,,PT_Normal,,,,,l9JvoRtCRLO28sLxrMtzeA,,,,Y,0,0,,,2013-02-16 15:54,2013-02-16 15:56,admin,admin
504288,6359,125418,13662,0,N,N,N,CP_Drtn,TT_Task,DT_FixedDUR2,TK_NotStart,DUKHCONP1AZ8STUG1015,Footing Waterproofing & Screed,8164,0,0,200,0,574.75,574.75,200,0,0,0,,,,2013-10-01 08:00,2013-10-31 17:00,,2013-10-01 08:00,2013-10-31 17:00,2013-10-01 08:00,2013-10-31 17:00,2013-10-01 08:00,2013-10-31 17:00,2013-10-01 08:00,2013-10-31 17:00,,PT_Normal,,,,,gJi9ltTdQ6yLNEpUYFL6JQ,,,,Y,0,0,,,2013-02-16 15:54,2013-02-16 15:56,admin,admin
504289,6359,125418,13662,0,N,N,N,CP_Drtn,TT_Task,DT_FixedDUR2,TK_NotStart,DUKHCONP1AZ8STUG1020,Construction of foundations,8165,0,0,160,0,7778.75,7778.75,160,0,0,0,,,,2013-10-16 08:00,2013-11-10 17:00,,2013-10-16 08:00,2013-11-10 17:00,2013-10-16 08:00,2013-11-10 17:00,2013-10-16 08:00,2013-11-10 17:00,2013-10-16 08:00,2013-11-10 17:00,,PT_Normal,,,,,i/HJvJSETNyuRgWRD62vSg,,,,Y,0,0,,,2013-02-16 15:54,2013-02-16 15:56,admin,admin
504290,6359,125418,13662,0,N,N,N,CP_Drtn,TT_Task,DT_FixedDUR2,TK_NotStart,DUKHCONP1AZ8STUG1025,Construction of neck of columns,8165,0,0,200,0,1606.5,1606.5,200,0,0,0,,,,2013-10-28 08:00,2013-11-25 17:00,,2013-10-28 08:00,2013-11-25 17:00,2013-10-28 08:00,2013-11-25 17:00,2013-10-28 08:00,2013-11-25 17:00,2013-10-28 08:00,2013-11-25 17:00,,PT_Normal,,,,,5JHTLtXDRQyZdCk8jg8r7Q,,,,Y,0,0,,,2013-02-16 15:54,2013-02-16 15:56,admin,admin
504291,6359,125418,13662,0,N,N,N,CP_Drtn,TT_Task,DT_FixedDUR2,TK_NotStart,DUKHCONP1AZ8STUG1030,Waterproofing Footing & Neck Column,8178,0,0,200,0,516,516,200,0,0,0,,,,2013-11-06 08:00,2013-12-04 17:00,,2013-11-06 08:00,2013-12-04 17:00,2013-11-06 08:00,2013-12-04 17:00,2013-11-06 08:00,2013-12-04 17:00,2013-11-06 08:00,2013-12-04 17:00,,PT_Normal,,,,,jTouisvHTuuWQJuI3rz2KQ,,,,Y,0,0,,,2013-02-16 15:54,2013-02-16 15:56,admin,admin
504292,6359,125418,13662,0,N,N,N,CP_Drtn,TT_Task,DT_FixedDUR2,TK_NotStart,DUKHCONP1AZ8STUG1035,Backfilling Upto Grade Beam Bottom,8177,0,0,200,0,1041,1041,200,825,0,825,,,,2013-11-20 08:00,2013-12-19 17:00,,2013-11-20 08:00,2013-12-19 17:00,2013-11-20 08:00,2013-12-19 17:00,2013-11-20 08:00,2013-12-19 17:00,2013-11-20 08:00,2013-12-19 17:00,,PT_Normal,,,,,lLk7/hTBS6STLwdaDznAnQ,,,,Y,0,0,,,2013-02-16 15:54,2013-02-16 15:56,admin,admin
504293,6359,125418,13662,0,N,N,N,CP_Drtn,TT_Task,DT_FixedDUR2,TK_NotStart,DUKHCONP1AZ8STUG1040,Construction of Grade Beams,8163,0,0,200,0,7568.75,7568.75,200,0,0,0,,,,2013-12-07 08:00,2014-01-05 17:00,,2013-12-07 08:00,2014-01-05 17:00,2013-12-07 08:00,2014-01-05 17:00,2013-12-07 08:00,2014-01-05 17:00,2013-12-07 08:00,2014-01-05 17:00,,PT_Normal,,,,,HTt0OhMMRkKFrk+fkqRPfw,,,,Y,0,0,,,2013-02-16 15:54,2013-02-16 15:56,admin,admin
504294,6359,125418,13662,0,N,N,N,CP_Drtn,TT_Task,DT_FixedDUR2,TK_NotStart,DUKHCONP1AZ8STUG1045,Construction of slab on grade,8163,0,0,200,0,4422,4422,200,0,0,0,,,,2014-01-09 08:00,2014-02-06 17:00,,2014-01-09 08:00,2014-02-06 17:00,2014-01-09 08:00,2014-02-06 17:00,2014-01-09 08:00,2014-02-06 17:00,2014-01-09 08:00,2014-02-06 17:00,,PT_Normal,,,,,xacrUYbhQZ+4xuGI0VQ/vQ,,,,Y,0,0,,,2013-02-16 15:54,2013-02-16 15:56,admin,admin
504295,6359,125418,13662,0,N,N,N,CP_Drtn,TT_Task,DT_FixedDUR2,TK_NotStart,DUKHCONP1AZ8STUG1000,Footing Excavation,8177,0,0,200,0,1114,1114,200,524,0,524,,,,2013-09-10 08:00,2013-10-08 17:00,,2013-09-10 08:00,2013-10-08 17:00,2013-09-10 08:00,2013-10-08 17:00,2013-09-10 08:00,2013-10-08 17:00,2013-09-10 08:00,2013-10-08 17:00,,PT_Normal,,,,,GY12/8PGT8ejIpdSNgt1FA,,,,Y,0,0,,,2013-02-16 15:54,2013-02-16 15:56,admin,admin
504296,6359,125421,13662,0,N,N,N,CP_Drtn,TT_Task,DT_FixedDUR2,TK_NotStart,DUKHCONP1AZ8PLRF4345,Installation of Plumbing pipes & fittings,8178,448,240,120,0,110.4,110.4,120,0,0,0,,,,2014-09-01 08:00,2014-09-17 17:00,,2014-06-24 08:00,2014-07-10 17:00,2014-06-24 08:00,2014-07-10 17:00,2014-06-24 08:00,2014-07-10 17:00,2014-09-01 08:00,2014-09-17 17:00,,PT_Normal,,,,,jxiDGErbRsyZUKxNbYYJoQ,,,,N,0,0,,,2013-02-16 15:54,2013-02-16 15:56,admin,admin
504297,6359,125421,13662,0,N,N,N,CP_Drtn,TT_Task,DT_FixedDUR2,TK_NotStart,DUKHCONP1AZ8PLRF4350,Installation of Rain water Pipes,8178,208,80,120,0,67.2,67.2,120,0,0,0,,,,2014-09-10 08:00,2014-09-27 17:00,,2014-08-11 08:00,2014-08-27 17:00,2014-08-11 08:00,2014-08-27 17:00,2014-08-11 08:00,2014-08-27 17:00,2014-09-10 08:00,2014-09-27 17:00,,PT_Normal,,,,,gPMI3cupSeWA61K/7r0b7A,,,,N,0,0,,,2013-02-16 15:54,2013-02-16 15:56,admin,admin
504298,6359,125421,13662,0,N,N,N,CP_Drtn,TT_Task,DT_FixedDUR2,TK_NotStart,DUKHCONP1AZ8PLRF4355,Roof  Water Tank Installation & Connections,8178,8,0,200,0,336,336,200,0,0,0,,,,2014-09-16 08:00,2014-10-16 17:00,,2014-09-15 08:00,2014-10-15 17:00,2014-09-15 08:00,2014-10-15 17:00,2014-09-15 08:00,2014-10-15 17:00,2014-09-16 08:00,2014-10-16 17:00,,PT_Normal,,,,,GKm8uuEVTB+AX4o5IYtg/Q,,,,N,0,0,,,2013-02-16 15:54,2013-02-16 15:56,admin,admin
504299,6359,125422,13662,0,N,N,N,CP_Drtn,TT_Task,DT_FixedDUR2,TK_NotStart,DUKHCONP1AZ8PLFF4325,Installation of Plumbing pipes & testing,8178,0,0,144,0,441.6,441.6,144,0,0,0,,,,2014-06-05 08:00,2014-06-25 17:00,,2014-06-05 08:00,2014-06-25 17:00,2014-06-05 08:00,2014-06-25 17:00,2014-06-05 08:00,2014-06-25 17:00,2014-06-05 08:00,2014-06-25 17:00,,PT_Normal,,,,,wAnSIG94TAOZK0UPR1x2Zw,,,,Y,0,0,,,2013-02-16 15:54,2013-02-16 15:56,admin,admin
504300,6359,125422,13662,0,N,N,N,CP_Drtn,TT_Task,DT_FixedDUR2,TK_NotStart,DUKHCONP1AZ8PLFF4330,Installation of Drainage pipes & testing,8178,176,56,144,0,177.6,177.6,144,0,0,0,,,,2014-07-01 08:00,2014-07-21 17:00,,2014-06-05 08:00,2014-06-25 17:00,2014-06-05 08:00,2014-06-25 17:00,2014-06-05 08:00,2014-06-25 17:00,2014-07-01 08:00,2014-07-21 17:00,,PT_Normal,,,,,u48JE/VnRRu/L/0SlW2xzw,,,,N,0,0,,,2013-02-16 15:54,2013-02-16 15:56,admin,admin
504301,6359,125422,13662,0,N,N,N,CP_Drtn,TT_Task,DT_FixedDUR2,TK_NotStart,DUKHCONP1AZ8PLFF4335,Sanitary Fittings & Accessories,8178,40,0,160,0,67.2,67.2,160,0,0,0,,,,2014-08-30 08:00,2014-09-21 17:00,,2014-08-24 08:00,2014-09-15 17:00,2014-08-24 08:00,2014-09-15 17:00,2014-08-24 08:00,2014-09-15 17:00,2014-08-30 08:00,2014-09-21 17:00,,PT_Normal,,,,,1SzKp+3AT6SW+sVIlZ/XoA,,,,N,0,0,,,2013-02-16 15:54,2013-02-16 15:56,admin,admin
504302,6359,125422,13662,0,N,N,N,CP_Drtn,TT_Task,DT_FixedDUR2,TK_NotStart,DUKHCONP1AZ8PLFF4340,Installation of Water Heater,8178,40,32,120,0,67.2,67.2,120,0,0,0,,,,2014-09-10 08:00,2014-09-27 17:00,,2014-09-04 08:00,2014-09-21 17:00,2014-09-04 08:00,2014-09-21 17:00,2014-09-04 08:00,2014-09-21 17:00,2014-09-10 08:00,2014-09-27 17:00,,PT_Normal,,,,,ri9ZtvwlQt+zCSDi5eZ7RA,,,,N,0,0,,,2013-02-16 15:54,2013-02-16 15:56,admin,admin
504303,6359,125423,13662,0,N,N,N,CP_Drtn,TT_Task,DT_FixedDUR2,TK_NotStart,DUKHCONP1AZ8PLGF4305,Installation of Plumbing pipes & testing,8178,144,0,144,0,441.6,441.6,144,0,0,0,,,,2014-05-14 08:00,2014-06-03 17:00,,2014-04-23 08:00,2014-05-13 17:00,2014-04-23 08:00,2014-05-13 17:00,2014-04-23 08:00,2014-05-13 17:00,2014-05-14 08:00,2014-06-03 17:00,,PT_Normal,,,,,7datScGlR4qItF7ND7Cgag,,,,N,0,0,,,2013-02-16 15:54,2013-02-16 15:56,admin,admin
504304,6359,125423,13662,0,N,N,N,CP_Drtn,TT_Task,DT_FixedDUR2,TK_NotStart,DUKHCONP1AZ8PLGF4310,Installation of Drainage pipes &testing,8178,168,104,144,0,177.6,177.6,144,0,0,0,,,,2014-05-18 08:00,2014-06-07 17:00,,2014-04-23 08:00,2014-05-13 17:00,2014-04-23 08:00,2014-05-13 17:00,2014-04-23 08:00,2014-05-13 17:00,2014-05-18 08:00,2014-06-07 17:00,,PT_Normal,,,,,BnmdSBaGT6+P5WsKR9l29A,,,,N,0,0,,,2013-02-16 15:54,2013-02-16 15:56,admin,admin
504305,6359,125423,13662,0,N,N,N,CP_Drtn,TT_Task,DT_FixedDUR2,TK_NotStart,DUKHCONP1AZ8PLGF4315,Sanitary Fittings & Accessories,8178,360,0,160,0,134.4,134.4,160,0,0,0,,,,2014-09-16 08:00,2014-10-08 17:00,,2014-07-22 08:00,2014-08-17 17:00,2014-07-22 08:00,2014-08-17 17:00,2014-07-22 08:00,2014-08-17 17:00,2014-09-16 08:00,2014-10-08 17:00,,PT_Normal,,,,,3XJwgU6ZSlSUsh0FgjSQOA,,,,N,0,0,,,2013-02-16 15:54,2013-02-16 15:56,admin,admin
504306,6359,125423,13662,0,N,N,N,CP_Drtn,TT_Task,DT_FixedDUR2,TK_NotStart,DUKHCONP1AZ8PLGF4320,Installation of Water Heater,8178,360,80,120,0,134.4,134.4,120,0,0,0,,,,2014-09-28 08:00,2014-10-16 17:00,,2014-08-06 08:00,2014-08-23 17:00,2014-08-06 08:00,2014-08-23 17:00,2014-08-06 08:00,2014-08-23 17:00,2014-09-28 08:00,2014-10-16 17:00,,PT_Normal,,,,,As6gCMSEQvKijujeuZxDOg,,,,N,0,0,,,2013-02-16 15:54,2013-02-16 15:56,admin,admin
504307,6359,125423,13662,0,N,N,N,CP_Drtn,TT_Task,DT_FixedDUR2,TK_NotStart,DUKHCONP1AZ8PLUG4300,Drainage / Storm Pipes in Grade Slab,8178,0,0,128,0,67.2,67.2,128,0,0,0,,,,2013-12-31 08:00,2014-01-18 17:00,,2013-12-31 08:00,2014-01-18 17:00,2013-12-31 08:00,2014-01-18 17:00,2013-12-31 08:00,2014-01-18 17:00,2013-12-31 08:00,2014-01-18 17:00,,PT_Normal,,,,,WT/8neU9SjOUN2U1KcdN0g,,,,Y,0,0,,,2013-02-16 15:54,2013-02-16 15:56,admin,admin
504308,6359,125425,13662,0,N,N,N,CP_Drtn,TT_Task,DT_FixedDUR2,TK_NotStart,DUKHCONP1AZ8ACFF4615,Installation AC Pipes,8178,216,40,160,0,977.6,977.6,160,0,0,0,,,,2014-07-28 08:00,2014-08-23 17:00,,2014-06-26 08:00,2014-07-19 17:00,2014-06-26 08:00,2014-07-19 17:00,2014-06-26 08:00,2014-07-19 17:00,2014-07-28 08:00,2014-08-23 17:00,,PT_Normal,,,,,sgYeaV28Rb+7MHXirhbUHg,,,,N,0,0,,,2013-02-16 15:54,2013-02-16 15:56,admin,admin
504309,6359,125425,13662,0,N,N,N,CP_Drtn,TT_Task,DT_FixedDUR2,TK_NotStart,DUKHCONP1AZ8ACFF4620,Fixing of Ventilation Equipments,8178,16,0,200,0,113.6,113.6,200,0,0,0,,,,2014-08-19 08:00,2014-09-16 17:00,,2014-08-17 08:00,2014-09-14 17:00,2014-08-17 08:00,2014-09-14 17:00,2014-08-17 08:00,2014-09-14 17:00,2014-08-19 08:00,2014-09-16 17:00,,PT_Normal,,,,,/pbvJmv4SYeWjSA2YVk3KQ,,,,N,0,0,,,2013-02-16 15:54,2013-02-16 15:56,admin,admin
504310,6359,125425,13662,0,N,N,N,CP_Drtn,TT_Task,DT_FixedDUR2,TK_NotStart,DUKHCONP1AZ8ACFF4625,Fixing of Split AC,8178,16,0,160,0,296,296,160,0,0,0,,,,2014-09-09 08:00,2014-10-01 17:00,,2014-09-07 08:00,2014-09-29 17:00,2014-09-07 08:00,2014-09-29 17:00,2014-09-07 08:00,2014-09-29 17:00,2014-09-09 08:00,2014-10-01 17:00,,PT_Normal,,,,,lju983JGToisWopOaAqp9A,,,,N,0,0,,,2013-02-16 15:54,2013-02-16 15:56,admin,admin
504311,6359,125426,13662,0,N,N,N,CP_Drtn,TT_Task,DT_FixedDUR2,TK_NotStart,DUKHCONP1AZ8ACGF4600,Installation AC Pipes,8178,392,40,160,0,977.6,977.6,160,0,0,0,,,,2014-07-09 08:00,2014-07-31 17:00,,2014-05-13 08:00,2014-06-04 17:00,2014-05-13 08:00,2014-06-04 17:00,2014-05-13 08:00,2014-06-04 17:00,2014-07-09 08:00,2014-07-31 17:00,,PT_Normal,,,,,OFKbYILeSD+jQod5WppcQg,,,,N,0,0,,,2013-02-16 15:54,2013-02-16 15:56,admin,admin
504312,6359,125426,13662,0,N,N,N,CP_Drtn,TT_Task,DT_FixedDUR2,TK_NotStart,DUKHCONP1AZ8ACGF4605,Fixing of Ventilation Equipments,8178,256,0,200,0,182.4,182.4,200,0,0,0,,,,2014-08-14 08:00,2014-09-11 17:00,,2014-07-05 08:00,2014-08-05 17:00,2014-07-05 08:00,2014-08-05 17:00,2014-07-05 08:00,2014-08-05 17:00,2014-08-14 08:00,2014-09-11 17:00,,PT_Normal,,,,,/OFSYGB9TNSWvziz32ylrQ,,,,N,0,0,,,2013-02-16 15:54,2013-02-16 15:56,admin,admin
504313,6359,125426,13662,0,N,N,N,CP_Drtn,TT_Task,DT_FixedDUR2,TK_NotStart,DUKHCONP1AZ8ACGF4610,Fixing of Split AC,8178,256,40,160,0,296,296,160,0,0,0,,,,2014-09-04 08:00,2014-09-27 17:00,,2014-07-26 08:00,2014-08-20 17:00,2014-07-26 08:00,2014-08-20 17:00,2014-07-26 08:00,2014-08-20 17:00,2014-09-04 08:00,2014-09-27 17:00,,PT_Normal,,,,,MvKU7xN6QeimBjkuE4Jw2w,,,,N,0,0,,,2013-02-16 15:54,2013-02-16 15:56,admin,admin
504314,6359,125427,13662,0,N,N,N,CP_Drtn,TT_Task,DT_FixedDUR2,TK_NotStart,DUKHCONP1AZ8ACRF4630,Installation of Refrigerant Pipes,8178,272,0,200,0,409.6,409.6,200,0,0,0,,,,2014-09-10 08:00,2014-10-08 17:00,,2014-07-29 08:00,2014-08-30 17:00,2014-07-29 08:00,2014-08-30 17:00,2014-07-29 08:00,2014-08-30 17:00,2014-09-10 08:00,2014-10-08 17:00,,PT_Normal,,,,,K6YrPrtHSIeWALYBzMdCGQ,,,,N,0,0,,,2013-02-16 15:54,2013-02-16 15:56,admin,admin
504315,6359,125427,13662,0,N,N,N,CP_Drtn,TT_Task,DT_FixedDUR2,TK_NotStart,DUKHCONP1AZ8ACRF4635,Installation of Condensing Unit,8178,24,0,200,0,568,568,200,0,0,0,,,,2014-09-16 08:00,2014-10-16 17:00,,2014-09-13 08:00,2014-10-13 17:00,2014-09-13 08:00,2014-10-13 17:00,2014-09-13 08:00,2014-10-13 17:00,2014-09-16 08:00,2014-10-16 17:00,,PT_Normal,,,,,7qaCBP4CSw+2zJ4tK8DooA,,,,N,0,0,,,2013-02-16 15:54,2013-02-16 15:56,admin,admin
504316,6359,125429,13662,0,N,N,N,CP_Drtn,TT_Task,DT_FixedDUR2,TK_NotStart,DUKHCONP1AZ8ELFF4035,Fixing of wall conduits & switch socket boxes,8178,88,0,200,0,1222.4,1222.4,200,0,0,0,,,,2014-06-07 08:00,2014-07-05 17:00,,2014-05-25 08:00,2014-06-22 17:00,2014-05-25 08:00,2014-06-22 17:00,2014-05-25 08:00,2014-06-22 17:00,2014-06-07 08:00,2014-07-05 17:00,,PT_Normal,,,,,bnvIYRLxSmmJXuzed2YYcg,,,,N,0,0,,,2013-02-16 15:54,2013-02-16 15:56,admin,admin
504317,6359,125429,13662,0,N,N,N,CP_Drtn,TT_Task,DT_FixedDUR2,TK_NotStart,DUKHCONP1AZ8ELFF4040,Cable tray & trunking installation,8178,232,16,160,0,1318.4,1318.4,160,0,0,0,,,,2014-07-09 08:00,2014-07-31 17:00,,2014-06-05 08:00,2014-06-28 17:00,2014-06-05 08:00,2014-06-28 17:00,2014-06-05 08:00,2014-06-28 17:00,2014-07-09 08:00,2014-07-31 17:00,,PT_Normal,,,,,TJbBaVvqRZWiCbqNOTzcsw,,,,N,0,0,,,2013-02-16 15:54,2013-02-16 15:56,admin,admin
504318,6359,125429,13662,0,N,N,N,CP_Drtn,TT_Task,DT_FixedDUR2,TK_NotStart,DUKHCONP1AZ8ELFF4045,Installation of wiring & Main Cabling,8178,216,0,200,0,296,296,200,0,0,0,,,,2014-07-17 08:00,2014-08-18 17:00,,2014-06-16 08:00,2014-07-14 17:00,2014-06-16 08:00,2014-07-14 17:00,2014-06-16 08:00,2014-07-14 17:00,2014-07-17 08:00,2014-08-18 17:00,,PT_Normal,,,,,auShZ20fQNSccyQJ5lCkFw,,,,N,0,0,,,2013-02-16 15:54,2013-02-16 15:56,admin,admin
504319,6359,125429,13662,0,N,N,N,CP_Drtn,TT_Task,DT_FixedDUR2,TK_NotStart,DUKHCONP1AZ8ELFF4060,"Installation  of DBS,MCCB Accessories.",8178,24,16,160,0,227.2,227.2,160,0,0,0,,,,2014-08-24 08:00,2014-09-15 17:00,,2014-08-20 08:00,2014-09-11 17:00,2014-08-20 08:00,2014-09-11 17:00,2014-08-20 08:00,2014-09-11 17:00,2014-08-24 08:00,2014-09-15 17:00,,PT_Normal,,,,,yKYEV3grTXqJY2ziQb3CIg,,,,N,0,0,,,2013-02-16 15:54,2013-02-16 15:56,admin,admin
504320,6359,125429,13662,0,N,N,N,CP_Drtn,TT_Task,DT_FixedDUR2,TK_NotStart,DUKHCONP1AZ8ELFF4065,Installation of Lighting fixtures & Accessories,8178,8,0,200,0,1651.2,1651.2,200,0,0,0,,,,2014-08-30 08:00,2014-09-27 17:00,,2014-08-28 08:00,2014-09-25 17:00,2014-08-28 08:00,2014-09-25 17:00,2014-08-28 08:00,2014-09-25 17:00,2014-08-30 08:00,2014-09-27 17:00,,PT_Normal,,,,,MvXMiGuPSHWmRTz+uNcZHw,,,,N,0,0,,,2013-02-16 15:54,2013-02-16 15:56,admin,admin
504321,6359,125429,13662,0,N,N,N,CP_Drtn,TT_Task,DT_FixedDUR2,TK_NotStart,DUKHCONP1AZ8ELFF4055,Install. of CAMS & Fire Fighting Accessories,8178,8,0,200,0,1008,1008,200,0,0,0,,,,2014-08-18 08:00,2014-09-15 17:00,,2014-08-17 08:00,2014-09-14 17:00,2014-08-17 08:00,2014-09-14 17:00,2014-08-17 08:00,2014-09-14 17:00,2014-08-18 08:00,2014-09-15 17:00,,PT_Normal,,,,,Smu5yxIESxCDSZMmlkRusA,,,,N,0,0,,,2013-02-16 15:54,2013-02-16 15:56,admin,admin
504322,6359,125429,13662,0,N,N,N,CP_Drtn,TT_Task,DT_FixedDUR2,TK_NotStart,DUKHCONP1AZ8ELFF4050,Installation of Telephone System,8178,64,56,200,0,451.2,451.2,200,0,0,0,,,,2014-08-27 08:00,2014-09-24 17:00,,2014-08-18 08:00,2014-09-15 17:00,2014-08-18 08:00,2014-09-15 17:00,2014-08-18 08:00,2014-09-15 17:00,2014-08-27 08:00,2014-09-24 17:00,,PT_Normal,,,,,dFLfszmCQD+fAm6HyY/9dw,,,,N,0,0,,,2013-02-16 15:54,2013-02-16 15:56,admin,admin
504323,6359,125430,13662,0,N,N,N,CP_Drtn,TT_Task,DT_FixedDUR2,TK_NotStart,DUKHCONP1AZ8ELGF4000,Fixing of wall conduits & switch socket boxes,8178,216,0,200,0,1222.4,1222.4,200,0,0,0,,,,2014-05-14 08:00,2014-06-11 17:00,,2014-04-13 08:00,2014-05-11 17:00,2014-04-13 08:00,2014-05-11 17:00,2014-04-13 08:00,2014-05-11 17:00,2014-05-14 08:00,2014-06-11 17:00,,PT_Normal,,,,,grQFadBYSUSlxluvAsmpJA,,,,N,0,0,,,2013-02-16 15:54,2013-02-16 15:56,admin,admin
504324,6359,125430,13662,0,N,N,N,CP_Drtn,TT_Task,DT_FixedDUR2,TK_NotStart,DUKHCONP1AZ8ELGF4005,Cable tray & trunking installation,8178,360,0,160,0,1318.4,1318.4,160,0,0,0,,,,2014-06-16 08:00,2014-07-08 17:00,,2014-04-24 08:00,2014-05-17 17:00,2014-04-24 08:00,2014-05-17 17:00,2014-04-24 08:00,2014-05-17 17:00,2014-06-16 08:00,2014-07-08 17:00,,PT_Normal,,,,,gXndLZ5wR+66OA3SQXKvbg,,,,N,0,0,,,2013-02-16 15:54,2013-02-16 15:56,admin,admin
504325,6359,125430,13662,0,N,N,N,CP_Drtn,TT_Task,DT_FixedDUR2,TK_NotStart,DUKHCONP1AZ8ELGF4010,Installation of wiring & Main Cabling,8178,360,216,200,0,296,296,200,0,0,0,,,,2014-06-24 08:00,2014-07-22 17:00,,2014-05-03 08:00,2014-05-31 17:00,2014-05-03 08:00,2014-05-31 17:00,2014-05-03 08:00,2014-05-31 17:00,2014-06-24 08:00,2014-07-22 17:00,,PT_Normal,,,,,zsq/Vl6vQ7Cf5op3FSPiOA,,,,N,0,0,,,2013-02-16 15:54,2013-02-16 15:56,admin,admin
504326,6359,125430,13662,0,N,N,N,CP_Drtn,TT_Task,DT_FixedDUR2,TK_NotStart,DUKHCONP1AZ8ELGF4020,"Installation  of DBS,MCCB Accessories.",8178,144,0,160,0,227.2,227.2,160,0,0,0,,,,2014-07-31 08:00,2014-08-26 17:00,,2014-07-10 08:00,2014-08-05 17:00,2014-07-10 08:00,2014-08-05 17:00,2014-07-10 08:00,2014-08-05 17:00,2014-07-31 08:00,2014-08-26 17:00,,PT_Normal,,,,,u8tqvn4lTfGFLAoPvhfALQ,,,,N,0,0,,,2013-02-16 15:54,2013-02-16 15:56,admin,admin
504327,6359,125430,13662,0,N,N,N,CP_Drtn,TT_Task,DT_FixedDUR2,TK_NotStart,DUKHCONP1AZ8ELGF4025,Installation of Lighting fixtures & Accessories,8178,200,0,200,0,1651.2,1651.2,200,0,0,0,,,,2014-08-24 08:00,2014-09-21 17:00,,2014-07-22 08:00,2014-08-23 17:00,2014-07-22 08:00,2014-08-23 17:00,2014-07-22 08:00,2014-08-23 17:00,2014-08-24 08:00,2014-09-21 17:00,,PT_Normal,,,,,GhCoROoqTNqYtA4mAI2jwQ,,,,N,0,0,,,2013-02-16 15:54,2013-02-16 15:56,admin,admin
504328,6359,125430,13662,0,N,N,N,CP_Drtn,TT_Task,DT_FixedDUR2,TK_NotStart,DUKHCONP1AZ8ELGF4015,Install. of CAMS & Fire Fighting Accessories,8178,240,0,200,0,1075.2,1075.2,200,0,0,0,,,,2014-08-12 08:00,2014-09-09 17:00,,2014-07-05 08:00,2014-08-05 17:00,2014-07-05 08:00,2014-08-05 17:00,2014-07-05 08:00,2014-08-05 17:00,2014-08-12 08:00,2014-09-09 17:00,,PT_Normal,,,,,DW4wsTttSuSTeLuuXnaXCw,,,,N,0,0,,,2013-02-16 15:54,2013-02-16 15:56,admin,admin
504329,6359,125430,13662,0,N,N,N,CP_Drtn,TT_Task,DT_FixedDUR2,TK_NotStart,DUKHCONP1AZ8ELGF4030,Installation of Telephone System,8178,144,40,160,0,520,520,160,0,0,0,,,,2014-08-16 08:00,2014-09-07 17:00,,2014-07-22 08:00,2014-08-17 17:00,2014-07-22 08:00,2014-08-17 17:00,2014-07-22 08:00,2014-08-17 17:00,2014-08-16 08:00,2014-09-07 17:00,,PT_Normal,,,,,8ulfDqGlQLONe6klXND+sQ,,,,N,0,0,,,2013-02-16 15:54,2013-02-16 15:56,admin,admin
504330,6359,125431,13662,0,N,N,N,CP_Drtn,TT_Task,DT_FixedDUR2,TK_NotStart,DUKHCONP1AZ8ELRF4070,Installation of Isolator,8178,8,0,144,0,412.8,412.8,144,0,0,0,,,,2014-09-13 08:00,2014-10-02 17:00,,2014-09-11 08:00,2014-10-01 17:00,2014-09-11 08:00,2014-10-01 17:00,2014-09-11 08:00,2014-10-01 17:00,2014-09-13 08:00,2014-10-02 17:00,,PT_Normal,,,,,yG5/m4uwRP2nZcCjfKS1Pw,,,,N,0,0,,,2013-02-16 15:54,2013-02-16 15:56,admin,admin
504331,6359,125431,13662,0,N,N,N,CP_Drtn,TT_Task,DT_FixedDUR2,TK_NotStart,DUKHCONP1AZ8ELRF4075,Installation of TV Dish Antenna,8178,8,8,184,0,732.8,732.8,184,0,0,0,,,,2014-09-18 08:00,2014-10-16 17:00,,2014-09-17 08:00,2014-10-15 17:00,2014-09-17 08:00,2014-10-15 17:00,2014-09-17 08:00,2014-10-15 17:00,2014-09-18 08:00,2014-10-16 17:00,,PT_Normal,,,,,QRLrVPPSR4iJy79DhABc0Q,,,,N,0,0,,,2013-02-16 15:54,2013-02-23 09:03,admin,admin
504332,6359,125434,13662,0,N,N,N,CP_Drtn,TT_Task,DT_FixedDUR2,TK_NotStart,DUKHCONP1AZ8ARRF3630,Leveling Screed for Waterproofing,8164,168,0,200,0,800,800,200,0,0,0,,,,2014-08-05 08:00,2014-09-02 17:00,,2014-07-08 08:00,2014-08-09 17:00,2014-07-08 08:00,2014-08-09 17:00,2014-07-08 08:00,2014-08-09 17:00,2014-08-05 08:00,2014-09-02 17:00,,PT_Normal,,,,,t7xjFFEBRAWLJNMMglLn8A,,,,N,0,0,,,2013-02-16 15:54,2013-02-16 15:56,admin,admin
504333,6359,125434,13662,0,N,N,N,CP_Drtn,TT_Task,DT_FixedDUR2,TK_NotStart,DUKHCONP1AZ8ARRF3635,Laying of Waterproofing Membrane,8178,168,0,200,0,1138.5,1138.5,200,0,0,0,,,,2014-08-09 08:00,2014-09-06 17:00,,2014-07-12 08:00,2014-08-12 17:00,2014-07-12 08:00,2014-08-12 17:00,2014-07-12 08:00,2014-08-12 17:00,2014-08-09 08:00,2014-09-06 17:00,,PT_Normal,,,,,5OLBJGR0QBOfu5f4U48oOw,,,,N,0,0,,,2013-02-16 15:54,2013-02-16 15:56,admin,admin
504334,6359,125434,13662,0,N,N,N,CP_Drtn,TT_Task,DT_FixedDUR2,TK_NotStart,DUKHCONP1AZ8ARRF3640,Installation of Insulation & Protection,8178,168,0,200,0,1408,1408,200,0,0,0,,,,2014-08-13 08:00,2014-09-10 17:00,,2014-07-16 08:00,2014-08-17 17:00,2014-07-16 08:00,2014-08-17 17:00,2014-07-16 08:00,2014-08-17 17:00,2014-08-13 08:00,2014-09-10 17:00,,PT_Normal,,,,,R/UGRmBkQtSGpEHeWaPkqg,,,,N,0,0,,,2013-02-16 15:54,2013-02-16 15:56,admin,admin
504335,6359,125434,13662,0,N,N,N,CP_Drtn,TT_Task,DT_FixedDUR2,TK_NotStart,DUKHCONP1AZ8ARRF3645,Lime Stone Chips & Paving slab Installation,8170,168,0,200,0,688.25,688.25,200,0,0,0,,,,2014-08-18 08:00,2014-09-15 17:00,,2014-07-21 08:00,2014-08-21 17:00,2014-07-21 08:00,2014-08-21 17:00,2014-07-21 08:00,2014-08-21 17:00,2014-08-18 08:00,2014-09-15 17:00,,PT_Normal,,,,,R1PcCG1rQsyQYBBGOyzS0g,,,,N,0,0,,,2013-02-16 15:54,2013-02-16 15:56,admin,admin
504336,6359,125434,13662,0,N,N,N,CP_Drtn,TT_Task,DT_FixedDUR2,TK_NotStart,DUKHCONP1AZ8ARRF3655,Installation of Pumps Protection cabinets,8178,168,0,160,0,616,616,160,0,0,0,,,,2014-09-10 08:00,2014-10-02 17:00,,2014-08-17 08:00,2014-09-08 17:00,2014-08-17 08:00,2014-09-08 17:00,2014-08-17 08:00,2014-09-08 17:00,2014-09-10 08:00,2014-10-02 17:00,,PT_Normal,,,,,oQCTLavCQNGMDRupo1poEA,,,,N,0,0,,,2013-02-16 15:54,2013-02-16 15:56,admin,admin
504337,6359,125434,13662,0,N,N,N,CP_Drtn,TT_Task,DT_FixedDUR2,TK_NotStart,DUKHCONP1AZ8ARRF3650,Install. of Gal. Frame & Aluminum Slat Screen,8178,168,0,200,0,1046.5,1046.5,200,0,0,0,,,,2014-08-26 08:00,2014-09-23 17:00,,2014-07-29 08:00,2014-08-30 17:00,2014-07-29 08:00,2014-08-30 17:00,2014-07-29 08:00,2014-08-30 17:00,2014-08-26 08:00,2014-09-23 17:00,,PT_Normal,,,,,cEQTeWgHQHWDmtJRPtpx9Q,,,,N,0,0,,,2013-02-16 15:54,2013-02-16 15:56,admin,admin
504338,6359,125434,13662,0,N,N,N,CP_Drtn,TT_Task,DT_FixedDUR2,TK_NotStart,DUKHCONP1AZ8ARRF3660,Installation of Access Ladder,8178,208,208,120,0,176,176,120,0,0,0,,,,2014-09-28 08:00,2014-10-16 17:00,,2014-08-28 08:00,2014-09-14 17:00,2014-08-28 08:00,2014-09-14 17:00,2014-08-28 08:00,2014-09-14 17:00,2014-09-28 08:00,2014-10-16 17:00,,PT_Normal,,,,,/uqv0EdeSomgwsDaX8gzvw,,,,N,0,0,,,2013-02-16 15:54,2013-02-16 15:56,admin,admin
504339,6359,125435,13662,0,N,N,N,CP_Drtn,TT_Task,DT_FixedDUR2,TK_NotStart,DUKHCONP1AZ8AREL3665,External Plastering,8169,376,0,200,0,14275,14275,200,0,0,0,,,,2014-08-21 08:00,2014-09-18 17:00,,2014-06-24 08:00,2014-07-22 17:00,2014-06-24 08:00,2014-07-22 17:00,2014-06-24 08:00,2014-07-22 17:00,2014-08-21 08:00,2014-09-18 17:00,,PT_Normal,,,,,3WMPo4inR3q/Jl6nSSSWLg,,,,N,0,0,,,2013-02-16 15:54,2013-02-16 15:56,admin,admin
504340,6359,125435,13662,0,N,N,N,CP_Drtn,TT_Task,DT_FixedDUR2,TK_NotStart,DUKHCONP1AZ8AREL3670,External stone cladding works,8170,392,0,160,0,990,990,160,0,0,0,,,,2014-09-10 08:00,2014-10-02 17:00,,2014-07-12 08:00,2014-08-06 17:00,2014-07-12 08:00,2014-08-06 17:00,2014-07-12 08:00,2014-08-06 17:00,2014-09-10 08:00,2014-10-02 17:00,,PT_Normal,,,,,S+rerYJtR+O49lFV9LkA1g,,,,N,0,0,,,2013-02-16 15:54,2013-02-16 15:56,admin,admin
504341,6359,125435,13662,0,N,N,N,CP_Drtn,TT_Task,DT_FixedDUR2,TK_NotStart,DUKHCONP1AZ8AREL3680,External Painting,8178,392,40,160,0,3784,3784,160,0,0,0,,,,2014-09-22 08:00,2014-10-16 17:00,,2014-07-23 08:00,2014-08-18 17:00,2014-07-23 08:00,2014-08-18 17:00,2014-07-23 08:00,2014-08-18 17:00,2014-09-22 08:00,2014-10-16 17:00,,PT_Normal,,,,,4HTAW+hBR4eJn4SWAz6O/g,,,,N,0,0,,,2013-02-16 15:54,2013-02-16 15:56,admin,admin
504342,6359,125437,13662,0,N,N,N,CP_Drtn,TT_Task,DT_FixedDUR2,TK_NotStart,DUKHCONP1AZ8ARRF3600,Block work,8168,416,0,160,0,700,700,160,0,0,0,,,,2014-08-05 08:00,2014-08-27 17:00,,2014-06-02 08:00,2014-06-24 17:00,2014-06-02 08:00,2014-06-24 17:00,2014-06-02 08:00,2014-06-24 17:00,2014-08-05 08:00,2014-08-27 17:00,,PT_Normal,,,,,KLWkfRG4TP69yIhU8vtkdQ,,,,N,0,0,,,2013-02-16 15:54,2013-02-16 15:56,admin,admin
504343,6359,125437,13662,0,N,N,N,CP_Drtn,TT_Task,DT_FixedDUR2,TK_NotStart,DUKHCONP1AZ8ARRF3605,Plastering work,8169,416,0,160,0,1786.5,1786.5,160,0,0,0,,,,2014-08-13 08:00,2014-09-04 17:00,,2014-06-10 08:00,2014-07-02 17:00,2014-06-10 08:00,2014-07-02 17:00,2014-06-10 08:00,2014-07-02 17:00,2014-08-13 08:00,2014-09-04 17:00,,PT_Normal,,,,,VK9zAEBOQc6JZ3bP3T0MdQ,,,,N,0,0,,,2013-02-16 15:54,2013-02-16 15:56,admin,admin
504344,6359,125437,13662,0,N,N,N,CP_Drtn,TT_Task,DT_FixedDUR2,TK_NotStart,DUKHCONP1AZ8ARRF3610,Flooring screed,8164,456,0,120,0,136.5,136.5,120,0,0,0,,,,2014-09-02 08:00,2014-09-18 17:00,,2014-06-24 08:00,2014-07-10 17:00,2014-06-24 08:00,2014-07-10 17:00,2014-06-24 08:00,2014-07-10 17:00,2014-09-02 08:00,2014-09-18 17:00,,PT_Normal,,,,,zb/KjzO9Tryh1Fj/K2uOZA,,,,N,0,0,,,2013-02-16 15:54,2013-02-16 15:56,admin,admin
504345,6359,125437,13662,0,N,N,N,CP_Drtn,TT_Task,DT_FixedDUR2,TK_NotStart,DUKHCONP1AZ8ARRF3695,Painting -Storage area,8178,456,0,160,0,1640,1640,160,0,0,0,,,,2014-09-10 08:00,2014-10-02 17:00,,2014-07-02 08:00,2014-07-24 17:00,2014-07-02 08:00,2014-07-24 17:00,2014-07-02 08:00,2014-07-24 17:00,2014-09-10 08:00,2014-10-02 17:00,,PT_Normal,,,,,ME53LcIqTbS0N+cfhZRxqg,,,,N,0,0,,,2013-02-16 15:54,2013-02-16 15:56,admin,admin
504346,6359,125437,13662,0,N,N,N,CP_Drtn,TT_Task,DT_FixedDUR2,TK_NotStart,DUKHCONP1AZ8ARRF3620,Epoxy Painting -Storage area,8178,456,456,120,0,48.5,48.5,120,0,0,0,,,,2014-09-28 08:00,2014-10-16 17:00,,2014-07-20 08:00,2014-08-09 17:00,2014-07-20 08:00,2014-08-09 17:00,2014-07-20 08:00,2014-08-09 17:00,2014-09-28 08:00,2014-10-16 17:00,,PT_Normal,,,,,M5VjZvhURKCXPrQexTY/pQ,,,,N,0,0,,,2013-02-16 15:54,2013-02-16 15:56,admin,admin
504347,6359,125438,13662,0,N,N,N,CP_Drtn,TT_Task,DT_FixedDUR2,TK_NotStart,DUKHCONP1AZ8ARFF3300,Block work,8168,0,0,200,0,6387.5,6387.5,200,0,0,0,,,,2014-05-19 08:00,2014-06-16 17:00,,2014-05-19 08:00,2014-06-16 17:00,2014-05-19 08:00,2014-06-16 17:00,2014-05-19 08:00,2014-06-16 17:00,2014-05-19 08:00,2014-06-16 17:00,,PT_Normal,,,,,ZyYqTtC3Tg6FFRhS80T8nw,,,,Y,0,0,,,2013-02-16 15:54,2013-02-16 15:56,admin,admin
504348,6359,125438,13662,0,N,N,N,CP_Drtn,TT_Task,DT_FixedDUR2,TK_NotStart,DUKHCONP1AZ8ARFF3305,Plastering work,8169,0,0,200,0,8899,8899,200,0,0,0,,,,2014-06-12 08:00,2014-07-10 17:00,,2014-06-12 08:00,2014-07-10 17:00,2014-06-12 08:00,2014-07-10 17:00,2014-06-12 08:00,2014-07-10 17:00,2014-06-12 08:00,2014-07-10 17:00,,PT_Normal,,,,,v0xT9NmtRFqKwdxvuLy1pA,,,,Y,0,0,,,2013-02-16 15:54,2013-02-16 15:56,admin,admin
504349,6359,125438,13662,0,N,N,N,CP_Drtn,TT_Task,DT_FixedDUR2,TK_NotStart,DUKHCONP1AZ8ARFF3310,Flooring screed,8164,96,96,168,0,1215.5,1215.5,168,0,0,0,,,,2014-07-05 08:00,2014-07-28 17:00,,2014-06-21 08:00,2014-07-14 17:00,2014-06-21 08:00,2014-07-14 17:00,2014-06-21 08:00,2014-07-14 17:00,2014-07-05 08:00,2014-07-28 17:00,,PT_Normal,,,,,FY8FUf6dTA+7ZxTuW5DobA,,,,N,0,0,,,2013-02-16 15:55,2013-02-16 15:56,admin,admin
504350,6359,125438,13662,0,N,N,N,CP_Drtn,TT_Task,DT_FixedDUR2,TK_NotStart,DUKHCONP1AZ8ARFF3315,Wet area waterproofing,8178,0,0,120,0,1215.5,1215.5,120,0,0,0,,,,2014-07-02 08:00,2014-07-19 17:00,,2014-07-02 08:00,2014-07-19 17:00,2014-07-02 08:00,2014-07-19 17:00,2014-07-02 08:00,2014-07-19 17:00,2014-07-02 08:00,2014-07-19 17:00,,PT_Normal,,,,,4wgMbvEQQneECnE8isP3yA,,,,Y,0,0,,,2013-02-16 15:55,2013-02-16 15:56,admin,admin
504351,6359,125438,13662,0,N,N,N,CP_Drtn,TT_Task,DT_FixedDUR2,TK_NotStart,DUKHCONP1AZ8ARFF3330,Paint First coat,8178,112,112,200,0,4742.75,4742.75,200,0,0,0,,,,2014-07-15 08:00,2014-08-16 17:00,,2014-06-29 08:00,2014-07-27 17:00,2014-06-29 08:00,2014-07-27 17:00,2014-06-29 08:00,2014-07-27 17:00,2014-07-15 08:00,2014-08-16 17:00,,PT_Normal,,,,,Xu4WV+IBSTCKJ1Uf6TS5Mw,,,,N,0,0,,,2013-02-16 15:55,2013-02-16 15:56,admin,admin
504352,6359,125438,13662,0,N,N,N,CP_Drtn,TT_Task,DT_FixedDUR2,TK_NotStart,DUKHCONP1AZ8ARFF3320,Ceramic Wall Tiling,8170,0,0,200,0,1897.25,1897.25,200,0,0,0,,,,2014-07-09 08:00,2014-08-10 17:00,,2014-07-09 08:00,2014-08-10 17:00,2014-07-09 08:00,2014-08-10 17:00,2014-07-09 08:00,2014-08-10 17:00,2014-07-09 08:00,2014-08-10 17:00,,PT_Normal,,,,,5/VIKWksTF+/c121j5PWPw,,,,Y,0,0,,,2013-02-16 15:55,2013-02-16 15:56,admin,admin
504353,6359,125438,13662,0,N,N,N,CP_Drtn,TT_Task,DT_FixedDUR2,TK_NotStart,DUKHCONP1AZ8ARFF3325,Porcelain Tile flooring,8170,0,0,200,0,1743.75,1743.75,200,0,0,0,,,,2014-07-16 08:00,2014-08-17 17:00,,2014-07-16 08:00,2014-08-17 17:00,2014-07-16 08:00,2014-08-17 17:00,2014-07-16 08:00,2014-08-17 17:00,2014-07-16 08:00,2014-08-17 17:00,,PT_Normal,,,,,7Ge0usl6Txy/uMUHzJz1AQ,,,,Y,0,0,,,2013-02-16 15:55,2013-02-16 15:56,admin,admin
504354,6359,125438,13662,0,N,N,N,CP_Drtn,TT_Task,DT_FixedDUR2,TK_NotStart,DUKHCONP1AZ8ARFF3335,Slate Tile Flooring & Skirting,8170,64,64,120,0,261.5,261.5,120,0,0,0,,,,2014-08-16 08:00,2014-09-01 17:00,,2014-08-06 08:00,2014-08-23 17:00,2014-08-06 08:00,2014-08-23 17:00,2014-08-06 08:00,2014-08-23 17:00,2014-08-16 08:00,2014-09-01 17:00,,PT_Normal,,,,,bc0TxfViS+Skgi6KLeqYpQ,,,,N,0,0,,,2013-02-16 15:55,2013-02-16 15:56,admin,admin
504355,6359,125438,13662,0,N,N,N,CP_Drtn,TT_Task,DT_FixedDUR2,TK_NotStart,DUKHCONP1AZ8ARFF3350,Granite - Stair case flooring & Skirting,8171,16,16,160,0,875,875,160,0,0,0,,,,2014-08-12 08:00,2014-09-03 17:00,,2014-08-10 08:00,2014-09-01 17:00,2014-08-10 08:00,2014-09-01 17:00,2014-08-10 08:00,2014-09-01 17:00,2014-08-12 08:00,2014-09-03 17:00,,PT_Normal,,,,,EG4Yydg/SJGIr3L101d/1A,,,,N,0,0,,,2013-02-16 15:55,2013-02-16 15:56,admin,admin
504356,6359,125438,13662,0,N,N,N,CP_Drtn,TT_Task,DT_FixedDUR2,TK_NotStart,DUKHCONP1AZ8ARFF3345,Fixing of Suspension systems,8178,0,0,160,0,1305,1305,160,0,0,0,,,,2014-07-29 08:00,2014-08-24 17:00,,2014-07-29 08:00,2014-08-24 17:00,2014-07-29 08:00,2014-08-24 17:00,2014-07-29 08:00,2014-08-24 17:00,2014-07-29 08:00,2014-08-24 17:00,,PT_Normal,,,,,BaZGeeh0T8CZfyvYExqtLQ,,,,Y,0,0,,,2013-02-16 15:55,2013-02-16 15:56,admin,admin
504357,6359,125438,13662,0,N,N,N,CP_Drtn,TT_Task,DT_FixedDUR2,TK_NotStart,DUKHCONP1AZ8ARFF3360,Gypsum board false ceiling,8178,0,0,200,0,1305,1305,200,0,0,0,,,,2014-08-09 08:00,2014-09-06 17:00,,2014-08-09 08:00,2014-09-06 17:00,2014-08-09 08:00,2014-09-06 17:00,2014-08-09 08:00,2014-09-06 17:00,2014-08-09 08:00,2014-09-06 17:00,,PT_Normal,,,,,hxCa2d+oQAeeEFVQVQdwTA,,,,Y,0,0,,,2013-02-16 15:55,2013-02-16 15:56,admin,admin
504358,6359,125438,13662,0,N,N,N,CP_Drtn,TT_Task,DT_FixedDUR2,TK_NotStart,DUKHCONP1AZ8ARFF3365,Wooden door,8178,0,0,120,0,308,308,120,0,0,0,,,,2014-08-24 08:00,2014-09-09 17:00,,2014-08-24 08:00,2014-09-09 17:00,2014-08-24 08:00,2014-09-09 17:00,2014-08-24 08:00,2014-09-09 17:00,2014-08-24 08:00,2014-09-09 17:00,,PT_Normal,,,,,RO5kUqpfTb6rHCfcbAV1GQ,,,,Y,0,0,,,2013-02-16 15:55,2013-02-16 15:56,admin,admin
504359,6359,125438,13662,0,N,N,N,CP_Drtn,TT_Task,DT_FixedDUR2,TK_NotStart,DUKHCONP1AZ8ARFF3370,Aluminum Door,8178,0,0,160,0,220,220,160,0,0,0,,,,2014-08-24 08:00,2014-09-15 17:00,,2014-08-24 08:00,2014-09-15 17:00,2014-08-24 08:00,2014-09-15 17:00,2014-08-24 08:00,2014-09-15 17:00,2014-08-24 08:00,2014-09-15 17:00,,PT_Normal,,,,,wQUQoMFhQheuxLEXy+oE0w,,,,Y,0,0,,,2013-02-16 15:55,2013-02-16 15:56,admin,admin
504360,6359,125438,13662,0,N,N,N,CP_Drtn,TT_Task,DT_FixedDUR2,TK_NotStart,DUKHCONP1AZ8ARFF3380,Aluminum windows,8178,32,32,160,0,162.25,162.25,160,0,0,0,,,,2014-09-04 08:00,2014-09-27 17:00,,2014-08-31 08:00,2014-09-22 17:00,2014-08-31 08:00,2014-09-22 17:00,2014-08-31 08:00,2014-09-22 17:00,2014-09-04 08:00,2014-09-27 17:00,,PT_Normal,,,,,D7vCt+viRmK0ROTsQQkImQ,,,,N,0,0,,,2013-02-16 15:55,2013-02-16 15:56,admin,admin
504361,6359,125438,13662,0,N,N,N,CP_Drtn,TT_Task,DT_FixedDUR2,TK_NotStart,DUKHCONP1AZ8ARFF3375,Carpentry & Joinery Works,8178,0,0,200,0,1100,1100,200,0,0,0,,,,2014-08-30 08:00,2014-09-27 17:00,,2014-08-30 08:00,2014-09-27 17:00,2014-08-30 08:00,2014-09-27 17:00,2014-08-30 08:00,2014-09-27 17:00,2014-08-30 08:00,2014-09-27 17:00,,PT_Normal,,,,,9O51ugnkTaeEpTCHs0dnjA,,,,Y,0,0,,,2013-02-16 15:55,2013-02-16 15:56,admin,admin
504362,6359,125438,13662,0,N,N,N,CP_Drtn,TT_Task,DT_FixedDUR2,TK_NotStart,DUKHCONP1AZ8ARFF3390,Installation of Granite Counter Top,8171,8,8,160,0,88,88,160,0,0,0,,,,2014-09-11 08:00,2014-10-04 17:00,,2014-09-10 08:00,2014-10-02 17:00,2014-09-10 08:00,2014-10-02 17:00,2014-09-10 08:00,2014-10-02 17:00,2014-09-11 08:00,2014-10-04 17:00,,PT_Normal,,,,,Bu6z2UXdRAGyDO9DSFMZsw,,,,N,0,0,,,2013-02-16 15:55,2013-02-16 15:56,admin,admin
504363,6359,125438,13662,0,N,N,N,CP_Drtn,TT_Task,DT_FixedDUR2,TK_NotStart,DUKHCONP1AZ8ARFF3385,Handrail &  Balustrade,8178,0,0,160,0,787.5,787.5,160,0,0,0,,,,2014-09-10 08:00,2014-10-02 17:00,,2014-09-10 08:00,2014-10-02 17:00,2014-09-10 08:00,2014-10-02 17:00,2014-09-10 08:00,2014-10-02 17:00,2014-09-10 08:00,2014-10-02 17:00,,PT_Normal,,,,,uiOUlOU/TZe9TrCOyp7nyg,,,,Y,0,0,,,2013-02-16 15:55,2013-02-16 15:56,admin,admin
504364,6359,125438,13662,0,N,N,N,CP_Drtn,TT_Task,DT_FixedDUR2,TK_NotStart,DUKHCONP1AZ8ARFF3395,Final Painting,8178,0,0,200,0,4742.75,4742.75,200,0,0,0,,,,2014-09-16 08:00,2014-10-16 17:00,,2014-09-16 08:00,2014-10-16 17:00,2014-09-16 08:00,2014-10-16 17:00,2014-09-16 08:00,2014-10-16 17:00,2014-09-16 08:00,2014-10-16 17:00,,PT_Normal,,,,,ULjSPQ6OQBOIADQ3CIzEnQ,,,,Y,0,0,,,2013-02-16 15:55,2013-02-16 15:56,admin,admin
504365,6359,125439,13662,0,N,N,N,CP_Drtn,TT_Task,DT_FixedDUR2,TK_NotStart,DUKHCONP1AZ8ARGF3000,Block work,8168,144,0,200,0,9737.5,9737.5,200,0,0,0,,,,2014-04-28 08:00,2014-05-26 17:00,,2014-04-07 08:00,2014-05-05 17:00,2014-04-07 08:00,2014-05-05 17:00,2014-04-07 08:00,2014-05-05 17:00,2014-04-28 08:00,2014-05-26 17:00,,PT_Normal,,,,,XjUX7Cc+Rya51PgSeJTDIg,,,,N,0,0,,,2013-02-16 15:55,2013-02-16 15:56,admin,admin
504366,6359,125439,13662,0,N,N,N,CP_Drtn,TT_Task,DT_FixedDUR2,TK_NotStart,DUKHCONP1AZ8ARGF3005,Plastering work,8169,144,0,200,0,13637.5,13637.5,200,0,0,0,,,,2014-05-20 08:00,2014-06-17 17:00,,2014-04-29 08:00,2014-05-27 17:00,2014-04-29 08:00,2014-05-27 17:00,2014-04-29 08:00,2014-05-27 17:00,2014-05-20 08:00,2014-06-17 17:00,,PT_Normal,,,,,sXI2veHWSMaPTiftlc8MNg,,,,N,0,0,,,2013-02-16 15:55,2013-02-16 15:56,admin,admin
504367,6359,125439,13662,0,N,N,N,CP_Drtn,TT_Task,DT_FixedDUR2,TK_NotStart,DUKHCONP1AZ8ARGF3010,Flooring screed,8164,208,64,168,0,1580.25,1580.25,168,0,0,0,,,,2014-06-07 08:00,2014-06-30 17:00,,2014-05-07 08:00,2014-05-31 17:00,2014-05-07 08:00,2014-05-31 17:00,2014-05-07 08:00,2014-05-31 17:00,2014-06-07 08:00,2014-06-30 17:00,,PT_Normal,,,,,1zSU/vZiSJa+fax7g/uOMw,,,,N,0,0,,,2013-02-16 15:55,2013-02-16 15:56,admin,admin
504368,6359,125439,13662,0,N,N,N,CP_Drtn,TT_Task,DT_FixedDUR2,TK_NotStart,DUKHCONP1AZ8ARGF3015,Wet area waterproofing & Protection Screed,8178,144,0,120,0,247.5,247.5,120,0,0,0,,,,2014-06-07 08:00,2014-06-23 17:00,,2014-05-17 08:00,2014-06-02 17:00,2014-05-17 08:00,2014-06-02 17:00,2014-05-17 08:00,2014-06-02 17:00,2014-06-07 08:00,2014-06-23 17:00,,PT_Normal,,,,,+jLOyYtESF6bZxtQF5A5/g,,,,N,0,0,,,2013-02-16 15:55,2013-02-16 15:56,admin,admin
504369,6359,125439,13662,0,N,N,N,CP_Drtn,TT_Task,DT_FixedDUR2,TK_NotStart,DUKHCONP1AZ8ARGF3030,Paint First coat,8178,256,0,200,0,5425.75,5425.75,200,0,0,0,,,,2014-06-22 08:00,2014-07-20 17:00,,2014-05-15 08:00,2014-06-12 17:00,2014-05-15 08:00,2014-06-12 17:00,2014-05-15 08:00,2014-06-12 17:00,2014-06-22 08:00,2014-07-20 17:00,,PT_Normal,,,,,GnT5Ak/WRVymjIYt3vVyvA,,,,N,0,0,,,2013-02-16 15:55,2013-02-16 15:56,admin,admin
504370,6359,125439,13662,0,N,N,N,CP_Drtn,TT_Task,DT_FixedDUR2,TK_NotStart,DUKHCONP1AZ8ARGF3020,Ceramic Wall Tiling,8170,144,0,200,0,4428.5,4428.5,200,0,0,0,,,,2014-06-12 08:00,2014-07-10 17:00,,2014-05-22 08:00,2014-06-19 17:00,2014-05-22 08:00,2014-06-19 17:00,2014-05-22 08:00,2014-06-19 17:00,2014-06-12 08:00,2014-07-10 17:00,,PT_Normal,,,,,+T1M9R0IRLG1VVuIIHAHRQ,,,,N,0,0,,,2013-02-16 15:55,2013-02-16 15:56,admin,admin
504371,6359,125439,13662,0,N,N,N,CP_Drtn,TT_Task,DT_FixedDUR2,TK_NotStart,DUKHCONP1AZ8ARGF3025,Porcelain Tile flooring,8170,144,0,200,0,1743.75,1743.75,200,0,0,0,,,,2014-06-18 08:00,2014-07-16 17:00,,2014-05-28 08:00,2014-06-25 17:00,2014-05-28 08:00,2014-06-25 17:00,2014-05-28 08:00,2014-06-25 17:00,2014-06-18 08:00,2014-07-16 17:00,,PT_Normal,,,,,xQxsW57ARUaZ+szY3h0VWw,,,,N,0,0,,,2013-02-16 15:55,2013-02-16 15:56,admin,admin
504372,6359,125439,13662,0,N,N,N,CP_Drtn,TT_Task,DT_FixedDUR2,TK_NotStart,DUKHCONP1AZ8ARGF3040,Cobble Tile flooring,8170,168,0,120,0,741,741,120,0,0,0,,,,2014-07-19 08:00,2014-08-07 17:00,,2014-06-24 08:00,2014-07-10 17:00,2014-06-24 08:00,2014-07-10 17:00,2014-06-24 08:00,2014-07-10 17:00,2014-07-19 08:00,2014-08-07 17:00,,PT_Normal,,,,,72IEVzZPT46kkNtVDxeQ1g,,,,N,0,0,,,2013-02-16 15:55,2013-02-16 15:56,admin,admin
504373,6359,125439,13662,0,N,N,N,CP_Drtn,TT_Task,DT_FixedDUR2,TK_NotStart,DUKHCONP1AZ8ARGF3035,Slate Tile Flooring & Skirting,8170,184,16,120,0,761.5,761.5,120,0,0,0,,,,2014-07-14 08:00,2014-07-30 17:00,,2014-06-17 08:00,2014-07-03 17:00,2014-06-17 08:00,2014-07-03 17:00,2014-06-17 08:00,2014-07-03 17:00,2014-07-14 08:00,2014-07-30 17:00,,PT_Normal,,,,,Gf9J6oKdRwOiwz6yb8n0fA,,,,N,0,0,,,2013-02-16 15:55,2013-02-16 15:56,admin,admin
504374,6359,125439,13662,0,N,N,N,CP_Drtn,TT_Task,DT_FixedDUR2,TK_NotStart,DUKHCONP1AZ8ARGF3050,Granite - Stair case flooring & Skirting,8171,168,0,160,0,875,875,160,0,0,0,,,,2014-07-27 08:00,2014-08-21 17:00,,2014-07-02 08:00,2014-07-24 17:00,2014-07-02 08:00,2014-07-24 17:00,2014-07-02 08:00,2014-07-24 17:00,2014-07-27 08:00,2014-08-21 17:00,,PT_Normal,,,,,mCnoOA2LSnqL9tRi4/d6VA,,,,N,0,0,,,2013-02-16 15:55,2013-02-16 15:56,admin,admin
504375,6359,125439,13662,0,N,N,N,CP_Drtn,TT_Task,DT_FixedDUR2,TK_NotStart,DUKHCONP1AZ8ARGF3045,Fixing of Suspension systems,8178,144,0,160,0,1455.05,1455.05,160,0,0,0,,,,2014-07-06 08:00,2014-07-28 17:00,,2014-06-15 08:00,2014-07-07 17:00,2014-06-15 08:00,2014-07-07 17:00,2014-06-15 08:00,2014-07-07 17:00,2014-07-06 08:00,2014-07-28 17:00,,PT_Normal,,,,,Oid4/9JWTdukiyYq0cHKbQ,,,,N,0,0,,,2013-02-16 15:55,2013-02-23 09:03,admin,admin
504376,6359,125439,13662,0,N,N,N,CP_Drtn,TT_Task,DT_FixedDUR2,TK_NotStart,DUKHCONP1AZ8ARGF3055,Aluminum tile false ceiling,8178,168,24,200,0,150,150,200,0,0,0,,,,2014-07-17 08:00,2014-08-18 17:00,,2014-06-23 08:00,2014-07-21 17:00,2014-06-23 08:00,2014-07-21 17:00,2014-06-23 08:00,2014-07-21 17:00,2014-07-17 08:00,2014-08-18 17:00,,PT_Normal,,,,,q46Li7fQTdubfWcU7LXZqQ,,,,N,0,0,,,2013-02-16 15:55,2013-02-16 15:56,admin,admin
504377,6359,125439,13662,0,N,N,N,CP_Drtn,TT_Task,DT_FixedDUR2,TK_NotStart,DUKHCONP1AZ8ARGF3060,Gypsum board false ceiling,8178,144,0,200,0,1335.15,1335.15,200,0,0,0,,,,2014-07-17 08:00,2014-08-18 17:00,,2014-06-26 08:00,2014-07-24 17:00,2014-06-26 08:00,2014-07-24 17:00,2014-06-26 08:00,2014-07-24 17:00,2014-07-17 08:00,2014-08-18 17:00,,PT_Normal,,,,,ZspaneKITPKMeiVHfw7ohg,,,,N,0,0,,,2013-02-16 15:55,2013-02-16 15:56,admin,admin
504378,6359,125439,13662,0,N,N,N,CP_Drtn,TT_Task,DT_FixedDUR2,TK_NotStart,DUKHCONP1AZ8ARGF3065,Wooden door & PVC Door,8178,168,0,120,0,308,308,120,0,0,0,,,,2014-08-13 08:00,2014-08-30 17:00,,2014-07-16 08:00,2014-08-05 17:00,2014-07-16 08:00,2014-08-05 17:00,2014-07-16 08:00,2014-08-05 17:00,2014-08-13 08:00,2014-08-30 17:00,,PT_Normal,,,,,/7yDzuCuSZahs2bON64Bvw,,,,N,0,0,,,2013-02-16 15:55,2013-02-16 15:56,admin,admin
504379,6359,125439,13662,0,N,N,N,CP_Drtn,TT_Task,DT_FixedDUR2,TK_NotStart,DUKHCONP1AZ8ARGF3070,Aluminum doors,8178,168,0,120,0,176,176,120,0,0,0,,,,2014-08-19 08:00,2014-09-04 17:00,,2014-07-22 08:00,2014-08-11 17:00,2014-07-22 08:00,2014-08-11 17:00,2014-07-22 08:00,2014-08-11 17:00,2014-08-19 08:00,2014-09-04 17:00,,PT_Normal,,,,,EVPQ67DhQOWNoPiDlXa5bA,,,,N,0,0,,,2013-02-16 15:55,2013-02-16 15:56,admin,admin
504380,6359,125439,13662,0,N,N,N,CP_Drtn,TT_Task,DT_FixedDUR2,TK_NotStart,DUKHCONP1AZ8ARGF3080,Aluminum windows,8178,248,40,160,0,162.25,162.25,160,0,0,0,,,,2014-09-07 08:00,2014-09-29 17:00,,2014-07-29 08:00,2014-08-24 17:00,2014-07-29 08:00,2014-08-24 17:00,2014-07-29 08:00,2014-08-24 17:00,2014-09-07 08:00,2014-09-29 17:00,,PT_Normal,,,,,boNy0w3iTgG048tDxYoDtg,,,,N,0,0,,,2013-02-16 15:55,2013-02-16 15:56,admin,admin
504381,6359,125439,13662,0,N,N,N,CP_Drtn,TT_Task,DT_FixedDUR2,TK_NotStart,DUKHCONP1AZ8ARGF3075,Carpentry & Joinery Works,8178,168,0,160,0,572,572,160,0,0,0,,,,2014-08-25 08:00,2014-09-16 17:00,,2014-07-28 08:00,2014-08-23 17:00,2014-07-28 08:00,2014-08-23 17:00,2014-07-28 08:00,2014-08-23 17:00,2014-08-25 08:00,2014-09-16 17:00,,PT_Normal,,,,,Kgm1n5Q5RYGpu+y07GVajQ,,,,N,0,0,,,2013-02-16 15:55,2013-02-16 15:56,admin,admin
504382,6359,125439,13662,0,N,N,N,CP_Drtn,TT_Task,DT_FixedDUR2,TK_NotStart,DUKHCONP1AZ8ARGF3090,Installation of Granite Counter Top,8171,168,0,120,0,176,176,120,0,0,0,,,,2014-09-07 08:00,2014-09-23 17:00,,2014-08-13 08:00,2014-08-30 17:00,2014-08-13 08:00,2014-08-30 17:00,2014-08-13 08:00,2014-08-30 17:00,2014-09-07 08:00,2014-09-23 17:00,,PT_Normal,,,,,DbD5dhFwQh6hxp5U9JKklQ,,,,N,0,0,,,2013-02-16 15:55,2013-02-16 15:56,admin,admin
504383,6359,125439,13662,0,N,N,N,CP_Drtn,TT_Task,DT_FixedDUR2,TK_NotStart,DUKHCONP1AZ8ARGF3085,S.S.Balustrade,8178,208,40,160,0,262.5,262.5,160,0,0,0,,,,2014-09-08 08:00,2014-09-30 17:00,,2014-08-09 08:00,2014-08-31 17:00,2014-08-09 08:00,2014-08-31 17:00,2014-08-09 08:00,2014-08-31 17:00,2014-09-08 08:00,2014-09-30 17:00,,PT_Normal,,,,,KOqi3XNESCGqwzPCVRfqrg,,,,N,0,0,,,2013-02-16 15:55,2013-02-16 15:56,admin,admin
504384,6359,125439,13662,0,N,N,N,CP_Drtn,TT_Task,DT_FixedDUR2,TK_NotStart,DUKHCONP1AZ8ARGF3095,Final Painting,8178,168,0,200,0,5425.75,5425.75,200,0,0,0,,,,2014-09-16 08:00,2014-10-16 17:00,,2014-08-23 08:00,2014-09-20 17:00,2014-08-23 08:00,2014-09-20 17:00,2014-08-23 08:00,2014-09-20 17:00,2014-09-16 08:00,2014-10-16 17:00,,PT_Normal,,,,,sp4SXhnLSqqdx+fO+48RNQ,,,,N,0,0,,,2013-02-16 15:55,2013-02-16 15:56,admin,admin
504385,6359,125441,13662,0,N,N,N,CP_Drtn,TT_Task,DT_FixedDUR2,TK_NotStart,DUKHCONP1AZ7PLTC8005,Pre-Commissioning & Testing of Plumbing Works,8178,0,0,200,0,3000,3000,200,0,0,0,,,,2014-09-16 08:00,2014-10-16 17:00,,2014-09-16 08:00,2014-10-16 17:00,2014-09-16 08:00,2014-10-16 17:00,2014-09-16 08:00,2014-10-16 17:00,2014-09-16 08:00,2014-10-16 17:00,,PT_Normal,,,,,2mhuI+1fQH+ik5++o0ly7w,,,,Y,0,0,,,2013-02-16 15:55,2013-02-16 15:56,admin,admin
504386,6359,125441,13662,0,N,N,N,CP_Drtn,TT_Task,DT_FixedDUR2,TK_NotStart,DUKHCONP1AZ7ACTC8000,Pre-Commissioning & Testing of AC Works,8178,0,0,200,0,1500,1500,200,0,0,0,,,,2014-09-16 08:00,2014-10-16 17:00,,2014-09-16 08:00,2014-10-16 17:00,2014-09-16 08:00,2014-10-16 17:00,2014-09-16 08:00,2014-10-16 17:00,2014-09-16 08:00,2014-10-16 17:00,,PT_Normal,,,,,HOI8pNKQQr6FHLJdyJRckA,,,,Y,0,0,,,2013-02-16 15:55,2013-02-16 15:56,admin,admin
504387,6359,125441,13662,0,N,N,N,CP_Drtn,TT_Task,DT_FixedDUR2,TK_NotStart,DUKHCONP1AZ7ELTC8010,Pre-Commissioning & Testing of Electrical Works,8178,0,0,200,0,3000,3000,200,0,0,0,,,,2014-09-16 08:00,2014-10-16 17:00,,2014-09-16 08:00,2014-10-16 17:00,2014-09-16 08:00,2014-10-16 17:00,2014-09-16 08:00,2014-10-16 17:00,2014-09-16 08:00,2014-10-16 17:00,,PT_Normal,,,,,UnjU2Cx/R5C0bn5/4IAHmQ,,,,Y,0,0,,,2013-02-16 15:55,2013-02-16 15:56,admin,admin
504388,6359,125444,13662,0,N,N,N,CP_Drtn,TT_Task,DT_FixedDUR2,TK_NotStart,DUKHCONP1AZ7STUG1000,Footing Excavation,8177,0,0,200,0,1114,1114,200,524,0,524,,,,2013-08-08 08:00,2013-09-09 17:00,,2013-08-08 08:00,2013-09-09 17:00,2013-08-08 08:00,2013-09-09 17:00,2013-08-08 08:00,2013-09-09 17:00,2013-08-08 08:00,2013-09-09 17:00,,PT_Normal,,,,,ZZC+m0HLTTGjxfHvM/6E+A,,,,Y,0,0,,,2013-02-16 15:55,2013-02-16 15:56,admin,admin
504389,6359,125444,13662,0,N,N,N,CP_Drtn,TT_Task,DT_FixedDUR2,TK_NotStart,DUKHCONP1AZ7STUG1005,Footing Antitermite,8178,0,0,184,0,1584,1584,184,0,0,0,,,,2013-08-24 08:00,2013-09-18 17:00,,2013-08-24 08:00,2013-09-18 17:00,2013-08-24 08:00,2013-09-18 17:00,2013-08-24 08:00,2013-09-18 17:00,2013-08-24 08:00,2013-09-18 17:00,,PT_Normal,,,,,hdHHlSbaQvWn1wbDw/t0vg,,,,Y,0,0,,,2013-02-16 15:55,2013-02-16 15:56,admin,admin
504390,6359,125444,13662,0,N,N,N,CP_Drtn,TT_Task,DT_FixedDUR2,TK_NotStart,DUKHCONP1AZ7STUG1010,Footing Blinding,8163,0,0,184,0,794.5,794.5,184,0,0,0,,,,2013-08-27 08:00,2013-09-22 17:00,,2013-08-27 08:00,2013-09-22 17:00,2013-08-27 08:00,2013-09-22 17:00,2013-08-27 08:00,2013-09-22 17:00,2013-08-27 08:00,2013-09-22 17:00,,PT_Normal,,,,,b0NtYw3WSEKgqRUpmrZ8nQ,,,,Y,0,0,,,2013-02-16 15:55,2013-02-16 15:56,admin,admin
504391,6359,125444,13662,0,N,N,N,CP_Drtn,TT_Task,DT_FixedDUR2,TK_NotStart,DUKHCONP1AZ7STUG1015,Footing Waterproofing & Screed,8164,0,0,200,0,574.75,574.75,200,0,0,0,,,,2013-09-02 08:00,2013-09-30 17:00,,2013-09-02 08:00,2013-09-30 17:00,2013-09-02 08:00,2013-09-30 17:00,2013-09-02 08:00,2013-09-30 17:00,2013-09-02 08:00,2013-09-30 17:00,,PT_Normal,,,,,hWuPtN2ySDO25P0dFUskWg,,,,Y,0,0,,,2013-02-16 15:55,2013-02-16 15:56,admin,admin
504392,6359,125444,13662,0,N,N,N,CP_Drtn,TT_Task,DT_FixedDUR2,TK_NotStart,DUKHCONP1AZ7STUG1020,Construction of foundations,8165,0,0,160,0,7778.75,7778.75,160,0,0,0,,,,2013-09-17 08:00,2013-10-09 17:00,,2013-09-17 08:00,2013-10-09 17:00,2013-09-17 08:00,2013-10-09 17:00,2013-09-17 08:00,2013-10-09 17:00,2013-09-17 08:00,2013-10-09 17:00,,PT_Normal,,,,,whTiZ1bbRAib7xhJomoujA,,,,Y,0,0,,,2013-02-16 15:55,2013-02-16 15:56,admin,admin
504393,6359,125444,13662,0,N,N,N,CP_Drtn,TT_Task,DT_FixedDUR2,TK_NotStart,DUKHCONP1AZ7STUG1025,Construction of neck of columns,8165,0,0,200,0,1606.5,1606.5,200,0,0,0,,,,2013-09-26 08:00,2013-10-27 17:00,,2013-09-26 08:00,2013-10-27 17:00,2013-09-26 08:00,2013-10-27 17:00,2013-09-26 08:00,2013-10-27 17:00,2013-09-26 08:00,2013-10-27 17:00,,PT_Normal,,,,,DKrZtxlXTpGL4Kv5cCrrtA,,,,Y,0,0,,,2013-02-16 15:55,2013-02-16 15:56,admin,admin
504394,6359,125444,13662,0,N,N,N,CP_Drtn,TT_Task,DT_FixedDUR2,TK_NotStart,DUKHCONP1AZ7STUG1030,Waterproofing Footing & Neck Column,8178,0,0,200,0,516,516,200,0,0,0,,,,2013-10-06 08:00,2013-11-05 17:00,,2013-10-06 08:00,2013-11-05 17:00,2013-10-06 08:00,2013-11-05 17:00,2013-10-06 08:00,2013-11-05 17:00,2013-10-06 08:00,2013-11-05 17:00,,PT_Normal,,,,,/+YdQ4iAR6WIWHLI1xV8TQ,,,,Y,0,0,,,2013-02-16 15:55,2013-02-16 15:56,admin,admin
504395,6359,125444,13662,0,N,N,N,CP_Drtn,TT_Task,DT_FixedDUR2,TK_NotStart,DUKHCONP1AZ7STUG1035,Backfilling Upto Grade Beam Bottom,8177,0,0,200,0,1041,1041,200,825,0,825,,,,2013-10-22 08:00,2013-11-19 17:00,,2013-10-22 08:00,2013-11-19 17:00,2013-10-22 08:00,2013-11-19 17:00,2013-10-22 08:00,2013-11-19 17:00,2013-10-22 08:00,2013-11-19 17:00,,PT_Normal,,,,,FaC+45k3TLuarjppTzV26g,,,,Y,0,0,,,2013-02-16 15:55,2013-02-16 15:56,admin,admin
504396,6359,125444,13662,0,N,N,N,CP_Drtn,TT_Task,DT_FixedDUR2,TK_NotStart,DUKHCONP1AZ7STUG1040,Construction of Grade Beams,8163,0,0,200,0,7568.75,7568.75,200,0,0,0,,,,2013-11-07 08:00,2013-12-05 17:00,,2013-11-07 08:00,2013-12-05 17:00,2013-11-07 08:00,2013-12-05 17:00,2013-11-07 08:00,2013-12-05 17:00,2013-11-07 08:00,2013-12-05 17:00,,PT_Normal,,,,,7vh71M49TwSP7RpCncJxcw,,,,Y,0,0,,,2013-02-16 15:55,2013-02-16 15:56,admin,admin
504397,6359,125444,13662,0,N,N,N,CP_Drtn,TT_Task,DT_FixedDUR2,TK_NotStart,DUKHCONP1AZ7STUG1045,Construction of slab on grade,8163,0,0,200,0,4422,4422,200,0,0,0,,,,2013-12-10 08:00,2014-01-08 17:00,,2013-12-10 08:00,2014-01-08 17:00,2013-12-10 08:00,2014-01-08 17:00,2013-12-10 08:00,2014-01-08 17:00,2013-12-10 08:00,2014-01-08 17:00,,PT_Normal,,,,,5ltkSYZXSxuxnmXmYCXxlA,,,,Y,0,0,,,2013-02-16 15:55,2013-02-16 15:56,admin,admin
504398,6359,125446,13662,0,N,N,N,CP_Drtn,TT_Task,DT_FixedDUR2,TK_NotStart,DUKHCONP1AZ7STFF2025,Column-Concrete,8167,32,0,192,0,224,224,192,0,0,0,,,,2014-02-23 08:00,2014-03-22 17:00,,2014-02-18 08:00,2014-03-17 17:00,2014-02-18 08:00,2014-03-17 17:00,2014-02-18 08:00,2014-03-17 17:00,2014-02-23 08:00,2014-03-22 17:00,,PT_Normal,,,,,TPEqFx7DQbGqckXiOvNQpg,,,,N,0,0,,,2013-02-16 15:55,2013-02-16 15:56,admin,admin
504399,6359,125446,13662,0,N,N,N,CP_Drtn,TT_Task,DT_FixedDUR2,TK_NotStart,DUKHCONP1AZ7STFF2030,"Beam, Stairs ,Slab-Rebar & Formwork",8165,32,0,200,0,16119.25,16119.25,200,0,0,0,,,,2014-03-10 08:00,2014-04-07 17:00,,2014-03-05 08:00,2014-04-02 17:00,2014-03-05 08:00,2014-04-02 17:00,2014-03-05 08:00,2014-04-02 17:00,2014-03-10 08:00,2014-04-07 17:00,,PT_Normal,,,,,juJqyk8MS+qqsg7nmwBzbg,,,,N,0,0,,,2013-02-16 15:55,2013-02-16 15:56,admin,admin
504400,6359,125446,13662,0,N,N,N,CP_Drtn,TT_Task,DT_FixedDUR2,TK_NotStart,DUKHCONP1AZ7STFF2035,"Beam, Stairs ,Slab-Concrete",8167,32,0,112,0,1141,1141,112,0,0,0,,,,2014-03-26 08:00,2014-04-10 17:00,,2014-03-22 08:00,2014-04-06 17:00,2014-03-22 08:00,2014-04-06 17:00,2014-03-22 08:00,2014-04-06 17:00,2014-03-26 08:00,2014-04-10 17:00,,PT_Normal,,,,,yDsaRnIQRA2KEcmm0fl1uQ,,,,N,0,0,,,2013-02-16 15:55,2013-02-16 15:56,admin,admin
504401,6359,125446,13662,0,N,N,N,CP_Drtn,TT_Task,DT_FixedDUR2,TK_NotStart,DUKHCONP1AZ7STFF2020,Column-Rebar & Formwork,8165,16,0,200,0,3580.5,3580.5,200,0,0,0,,,,2014-02-10 08:00,2014-03-11 17:00,,2014-02-08 08:00,2014-03-09 17:00,2014-02-08 08:00,2014-03-09 17:00,2014-02-08 08:00,2014-03-09 17:00,2014-02-10 08:00,2014-03-11 17:00,,PT_Normal,,,,,Mih/nBrrQJ+NJ4sA3OwwUA,,,,N,0,0,,,2013-02-16 15:55,2013-02-16 15:56,admin,admin
504402,6359,125447,13662,0,N,N,N,CP_Drtn,TT_Task,DT_FixedDUR2,TK_NotStart,DUKHCONP1AZ7STGF2000,Column-Rebar & Formwork,8165,0,0,200,0,4046,4046,200,0,0,0,,,,2013-12-28 08:00,2014-01-25 17:00,,2013-12-28 08:00,2014-01-25 17:00,2013-12-28 08:00,2014-01-25 17:00,2013-12-28 08:00,2014-01-25 17:00,2013-12-28 08:00,2014-01-25 17:00,,PT_Normal,,,,,OtL63Tp/T62xEivz/E7xVA,,,,Y,0,0,,,2013-02-16 15:55,2013-02-16 15:56,admin,admin
504403,6359,125447,13662,0,N,N,N,CP_Drtn,TT_Task,DT_FixedDUR2,TK_NotStart,DUKHCONP1AZ7STGF2005,Column-Concrete,8167,16,0,192,0,255.5,255.5,192,0,0,0,,,,2014-01-07 08:00,2014-02-03 17:00,,2014-01-05 08:00,2014-02-01 17:00,2014-01-05 08:00,2014-02-01 17:00,2014-01-05 08:00,2014-02-01 17:00,2014-01-07 08:00,2014-02-03 17:00,,PT_Normal,,,,,nOdB01/aTAeUNmLKl7azDw,,,,N,0,0,,,2013-02-16 15:55,2013-02-16 15:56,admin,admin
504404,6359,125447,13662,0,N,N,N,CP_Drtn,TT_Task,DT_FixedDUR2,TK_NotStart,DUKHCONP1AZ7STGF2010,"Beam, Stairs ,Slab-Rebar & Formwork",8165,16,0,200,0,16829.75,16829.75,200,0,0,0,,,,2014-01-22 08:00,2014-02-20 17:00,,2014-01-20 08:00,2014-02-18 17:00,2014-01-20 08:00,2014-02-18 17:00,2014-01-20 08:00,2014-02-18 17:00,2014-01-22 08:00,2014-02-20 17:00,,PT_Normal,,,,,GaLP4qJTSDGmnYski3YR/Q,,,,N,0,0,,,2013-02-16 15:55,2013-02-16 15:56,admin,admin
504405,6359,125447,13662,0,N,N,N,CP_Drtn,TT_Task,DT_FixedDUR2,TK_NotStart,DUKHCONP1AZ7STGF2015,"Beam, Stairs ,Slab-Concrete",8167,16,0,112,0,1295,1295,112,0,0,0,,,,2014-02-08 08:00,2014-02-24 17:00,,2014-02-05 08:00,2014-02-22 17:00,2014-02-05 08:00,2014-02-22 17:00,2014-02-05 08:00,2014-02-22 17:00,2014-02-08 08:00,2014-02-24 17:00,,PT_Normal,,,,,JUMpGsSMTiGbvy9s9KpFIQ,,,,N,0,0,,,2013-02-16 15:55,2013-02-16 15:56,admin,admin
504406,6359,125448,13662,0,N,N,N,CP_Drtn,TT_Task,DT_FixedDUR2,TK_NotStart,DUKHCONP1AZ7STRF2040,Column-Rebar & Formwork,8165,64,0,144,0,1205.75,1205.75,144,0,0,0,,,,2014-04-02 08:00,2014-04-22 17:00,,2014-03-24 08:00,2014-04-13 17:00,2014-03-24 08:00,2014-04-13 17:00,2014-03-24 08:00,2014-04-13 17:00,2014-04-02 08:00,2014-04-22 17:00,,PT_Normal,,,,,GvW3JL7USlSZwuaIT0VeCw,,,,N,0,0,,,2013-02-16 15:55,2013-02-16 15:56,admin,admin
504407,6359,125448,13662,0,N,N,N,CP_Drtn,TT_Task,DT_FixedDUR2,TK_NotStart,DUKHCONP1AZ7STRF2045,Column-Concrete,8167,64,0,136,0,52.5,52.5,136,0,0,0,,,,2014-04-06 08:00,2014-04-24 17:00,,2014-03-27 08:00,2014-04-15 17:00,2014-03-27 08:00,2014-04-15 17:00,2014-03-27 08:00,2014-04-15 17:00,2014-04-06 08:00,2014-04-24 17:00,,PT_Normal,,,,,RHlam2anRri2pcy1uTLcMw,,,,N,0,0,,,2013-02-16 15:55,2013-02-16 15:56,admin,admin
504408,6359,125448,13662,0,N,N,N,CP_Drtn,TT_Task,DT_FixedDUR2,TK_NotStart,DUKHCONP1AZ7STRF2050,Slab-Rebar & Formwork - Head Room,8165,64,0,160,0,2735.25,2735.25,160,0,0,0,,,,2014-04-08 08:00,2014-04-30 17:00,,2014-03-30 08:00,2014-04-21 17:00,2014-03-30 08:00,2014-04-21 17:00,2014-03-30 08:00,2014-04-21 17:00,2014-04-08 08:00,2014-04-30 17:00,,PT_Normal,,,,,8zxYmN39QHK9+xtEBQwK/A,,,,N,0,0,,,2013-02-16 15:55,2013-02-16 15:56,admin,admin
504409,6359,125448,13662,0,N,N,N,CP_Drtn,TT_Task,DT_FixedDUR2,TK_NotStart,DUKHCONP1AZ7STRF2055,Slab-Concrete-Head room,8167,64,0,104,0,252,252,104,0,0,0,,,,2014-04-19 08:00,2014-05-03 17:00,,2014-04-09 08:00,2014-04-23 17:00,2014-04-09 08:00,2014-04-23 17:00,2014-04-09 08:00,2014-04-23 17:00,2014-04-19 08:00,2014-05-03 17:00,,PT_Normal,,,,,1kL9Cc21Q3SYE43FtyahEw,,,,N,0,0,,,2013-02-16 15:55,2013-02-16 15:56,admin,admin
504410,6359,125448,13662,0,N,N,N,CP_Drtn,TT_Task,DT_FixedDUR2,TK_NotStart,DUKHCONP1AZ7STRF2060,Construction of Parapets,8168,448,32,200,0,2200,2200,200,0,0,0,,,,2014-06-16 08:00,2014-07-14 17:00,,2014-04-12 08:00,2014-05-10 17:00,2014-04-12 08:00,2014-05-10 17:00,2014-04-12 08:00,2014-05-10 17:00,2014-06-16 08:00,2014-07-14 17:00,,PT_Normal,,,,,5W0ugGPSRAe7neTURcS7sQ,,,,N,0,0,,,2013-02-16 15:55,2013-02-16 15:56,admin,admin
504411,6359,125448,13662,0,N,N,N,CP_Drtn,TT_Task,DT_FixedDUR2,TK_NotStart,DUKHCONP1AZ7STRF2065,Construction of up stands/Plinth,8165,416,0,200,0,554.75,554.75,200,0,0,0,,,,2014-06-22 08:00,2014-07-20 17:00,,2014-04-22 08:00,2014-05-20 17:00,2014-04-22 08:00,2014-05-20 17:00,2014-04-22 08:00,2014-05-20 17:00,2014-06-22 08:00,2014-07-20 17:00,,PT_Normal,,,,,T91SQFF/SBGaFLiQAO11kA,,,,N,0,0,,,2013-02-16 15:55,2013-02-16 15:56,admin,admin
504412,6359,125450,13662,0,N,N,N,CP_Drtn,TT_Task,DT_FixedDUR2,TK_NotStart,DUKHCONP1AZ7HDEX5090,kerb works,8173,128,0,160,0,344,344,160,0,0,0,,,,2014-07-14 08:00,2014-08-09 17:00,,2014-06-25 08:00,2014-07-17 17:00,2014-06-25 08:00,2014-07-17 17:00,2014-06-25 08:00,2014-07-17 17:00,2014-07-14 08:00,2014-08-09 17:00,,PT_Normal,,,,,NWm4OP7yRjKqVp7bP5kmqA,,,,N,0,0,,,2013-02-16 15:55,2013-02-16 15:56,admin,admin
504413,6359,125450,13662,0,N,N,N,CP_Drtn,TT_Task,DT_FixedDUR2,TK_NotStart,DUKHCONP1AZ7HDEX5095,Cobble Stone Works,8170,128,0,160,0,200,200,160,0,0,0,,,,2014-07-26 08:00,2014-08-20 17:00,,2014-07-07 08:00,2014-07-29 17:00,2014-07-07 08:00,2014-07-29 17:00,2014-07-07 08:00,2014-07-29 17:00,2014-07-26 08:00,2014-08-20 17:00,,PT_Normal,,,,,rLzyGevnQDeyPIysP7e16A,,,,N,0,0,,,2013-02-16 15:55,2013-02-16 15:56,admin,admin
504414,6359,125450,13662,0,N,N,N,CP_Drtn,TT_Task,DT_FixedDUR2,TK_NotStart,DUKHCONP1AZ7HDEX5100,Interlock works,8174,128,0,160,0,232,232,160,0,0,0,,,,2014-08-05 08:00,2014-08-27 17:00,,2014-07-14 08:00,2014-08-09 17:00,2014-07-14 08:00,2014-08-09 17:00,2014-07-14 08:00,2014-08-09 17:00,2014-08-05 08:00,2014-08-27 17:00,,PT_Normal,,,,,Dj1hRW/mR3GK7bJzbH6i/g,,,,N,0,0,,,2013-02-16 15:55,2013-02-16 15:56,admin,admin
504415,6359,125451,13662,0,N,N,N,CP_Drtn,TT_Task,DT_FixedDUR2,TK_NotStart,DUKHCONP1AZ7WEEX5030,Excavation,8177,304,0,160,0,64,64,160,40,0,40,,,,2014-06-28 08:00,2014-07-20 17:00,,2014-05-14 08:00,2014-06-05 17:00,2014-05-14 08:00,2014-06-05 17:00,2014-05-14 08:00,2014-06-05 17:00,2014-06-28 08:00,2014-07-20 17:00,,PT_Normal,,,,,YETkWluJQMOEZW+D99P8Rg,,,,N,0,0,,,2013-02-16 15:55,2013-02-16 15:56,admin,admin
504416,6359,125451,13662,0,N,N,N,CP_Drtn,TT_Task,DT_FixedDUR2,TK_NotStart,DUKHCONP1AZ7WEEX5035,Construction of Raft,8165,304,0,200,0,840,840,200,0,0,0,,,,2014-07-03 08:00,2014-07-31 17:00,,2014-05-20 08:00,2014-06-17 17:00,2014-05-20 08:00,2014-06-17 17:00,2014-05-20 08:00,2014-06-17 17:00,2014-07-03 08:00,2014-07-31 17:00,,PT_Normal,,,,,CqVElic/S/S07ukGDSVr/g,,,,N,0,0,,,2013-02-16 15:55,2013-02-16 15:56,admin,admin
504417,6359,125451,13662,0,N,N,N,CP_Drtn,TT_Task,DT_FixedDUR2,TK_NotStart,DUKHCONP1AZ7WEEX5040,Block works & Plastering,8168,304,0,200,0,512,512,200,0,0,0,,,,2014-07-13 08:00,2014-08-13 17:00,,2014-05-29 08:00,2014-06-26 17:00,2014-05-29 08:00,2014-06-26 17:00,2014-05-29 08:00,2014-06-26 17:00,2014-07-13 08:00,2014-08-13 17:00,,PT_Normal,,,,,T0aEqewuRPOwVL0oKUzOow,,,,N,0,0,,,2013-02-16 15:55,2013-02-16 15:56,admin,admin
504418,6359,125451,13662,0,N,N,N,CP_Drtn,TT_Task,DT_FixedDUR2,TK_NotStart,DUKHCONP1AZ7WEEX5045,Flooring & Painting,8178,304,152,200,0,232,232,200,0,0,0,,,,2014-07-20 08:00,2014-08-20 17:00,,2014-06-05 08:00,2014-07-03 17:00,2014-06-05 08:00,2014-07-03 17:00,2014-06-05 08:00,2014-07-03 17:00,2014-07-20 08:00,2014-08-20 17:00,,PT_Normal,,,,,Uu9dkVRgSQKXKRWv05Hdpw,,,,N,0,0,,,2013-02-16 15:55,2013-02-16 15:56,admin,admin
504419,6359,125451,13662,0,N,N,N,CP_Drtn,TT_Task,DT_FixedDUR2,TK_NotStart,DUKHCONP1AZ7WEEX5050,Installation of Steel Gate,8178,152,72,160,0,56,56,160,0,0,0,,,,2014-08-05 08:00,2014-08-27 17:00,,2014-07-10 08:00,2014-08-05 17:00,2014-07-10 08:00,2014-08-05 17:00,2014-07-10 08:00,2014-08-05 17:00,2014-08-05 08:00,2014-08-27 17:00,,PT_Normal,,,,,tTLJG4F4Rj6znRRRcffneA,,,,N,0,0,,,2013-02-16 15:55,2013-02-16 15:56,admin,admin
504420,6359,125451,13662,0,N,N,N,CP_Drtn,TT_Task,DT_FixedDUR2,TK_NotStart,DUKHCONP1AZ7WEEX5060,Structural steel &  SS Shed cover installation,8178,80,0,200,0,336,336,200,0,0,0,,,,2014-08-11 08:00,2014-09-08 17:00,,2014-07-27 08:00,2014-08-27 17:00,2014-07-27 08:00,2014-08-27 17:00,2014-07-27 08:00,2014-08-27 17:00,2014-08-11 08:00,2014-09-08 17:00,,PT_Normal,,,,,yPeTqcxMSdm9rswRggYAQA,,,,N,0,0,,,2013-02-16 15:55,2013-02-16 15:56,admin,admin
504421,6359,125451,13662,0,N,N,N,CP_Drtn,TT_Task,DT_FixedDUR2,TK_NotStart,DUKHCONP1AZ7WEEX5065,"Install. of Water Tank,Chiller,Pump & Meter",8178,72,0,200,0,203.2,203.2,200,0,0,0,,,,2014-08-18 08:00,2014-09-15 17:00,,2014-08-07 08:00,2014-09-04 17:00,2014-08-07 08:00,2014-09-04 17:00,2014-08-07 08:00,2014-09-04 17:00,2014-08-18 08:00,2014-09-15 17:00,,PT_Normal,,,,,d77VK0eVRmac3vfQblSK2g,,,,N,0,0,,,2013-02-16 15:55,2013-02-16 15:56,admin,admin
504422,6359,125452,13662,0,N,N,N,CP_Drtn,TT_Task,DT_FixedDUR2,TK_NotStart,DUKHCONP1AZ7MSEX5335,Aluminum Roll-up Shutter with 2m Wall,8178,504,64,200,0,400,400,200,0,0,0,,,,2014-10-30 08:00,2014-11-27 17:00,,2014-08-16 08:00,2014-09-13 17:00,2014-08-16 08:00,2014-09-13 17:00,2014-08-16 08:00,2014-09-13 17:00,2014-10-30 08:00,2014-11-27 17:00,,PT_Normal,,,,,zjylguJGT0KUPavM3sAiaA,,,,N,0,0,,,2013-02-16 15:55,2013-02-16 16:35,admin,admin
504423,6359,125452,13662,0,N,N,N,CP_Drtn,TT_Task,DT_FixedDUR2,TK_NotStart,DUKHCONP1AZ7MSEX5020,Construction Entrance Ramp,8164,128,0,200,0,656,656,200,0,0,0,,,,2014-06-30 08:00,2014-07-28 17:00,,2014-06-11 08:00,2014-07-09 17:00,2014-06-11 08:00,2014-07-09 17:00,2014-06-11 08:00,2014-07-09 17:00,2014-06-30 08:00,2014-07-28 17:00,,PT_Normal,,,,,C0+3M8y1T0ecrQZDPhQ9lw,,,,N,0,0,,,2013-02-16 15:55,2013-02-16 15:56,admin,admin
504424,6359,125452,13662,0,N,N,N,CP_Drtn,TT_Task,DT_FixedDUR2,TK_NotStart,DUKHCONP1AZ7MSEX5025,SS.Handrails and Balustrades,8178,152,0,160,0,56,56,160,0,0,0,,,,2014-07-21 08:00,2014-08-16 17:00,,2014-06-29 08:00,2014-07-21 17:00,2014-06-29 08:00,2014-07-21 17:00,2014-06-29 08:00,2014-07-21 17:00,2014-07-21 08:00,2014-08-16 17:00,,PT_Normal,,,,,xfn+mY3CRMONned0u/pe3w,,,,N,0,0,,,2013-02-16 15:55,2013-02-16 15:56,admin,admin
504425,6359,125452,13662,0,N,N,N,CP_Drtn,TT_Task,DT_FixedDUR2,TK_NotStart,DUKHCONP1AZ7MSEX5015,Construction of grease Trap,8178,64,0,160,0,56,56,160,0,0,0,,,,2014-06-03 08:00,2014-06-25 17:00,,2014-05-25 08:00,2014-06-16 17:00,2014-05-25 08:00,2014-06-16 17:00,2014-05-25 08:00,2014-06-16 17:00,2014-06-03 08:00,2014-06-25 17:00,,PT_Normal,,,,,tCZKYH1NRgOMa92+MdSvsA,,,,N,0,0,,,2013-02-16 15:55,2013-02-16 15:56,admin,admin
504426,6359,125452,13662,0,N,N,N,CP_Drtn,TT_Task,DT_FixedDUR2,TK_NotStart,DUKHCONP1AZ7MSEX5000,Construction of Manholes,8172,64,0,200,0,528,528,200,0,0,0,,,,2014-04-30 08:00,2014-05-28 17:00,,2014-04-21 08:00,2014-05-19 17:00,2014-04-21 08:00,2014-05-19 17:00,2014-04-21 08:00,2014-05-19 17:00,2014-04-30 08:00,2014-05-28 17:00,,PT_Normal,,,,,Lp6AZ+GNQnqAtt67bMW4/w,,,,N,0,0,,,2013-02-16 15:55,2013-02-16 15:56,admin,admin
504427,6359,125452,13662,0,N,N,N,CP_Drtn,TT_Task,DT_FixedDUR2,TK_NotStart,DUKHCONP1AZ7MSEX5005,"Construction  of Soak pit, Chambers",8172,64,0,200,0,176,176,200,0,0,0,,,,2014-05-14 08:00,2014-06-11 17:00,,2014-05-05 08:00,2014-06-02 17:00,2014-05-05 08:00,2014-06-02 17:00,2014-05-05 08:00,2014-06-02 17:00,2014-05-14 08:00,2014-06-11 17:00,,PT_Normal,,,,,J0cFK38WSV6bGFU4T+hfgQ,,,,N,0,0,,,2013-02-16 15:55,2013-02-16 15:56,admin,admin
504428,6359,125452,13662,0,N,N,N,CP_Drtn,TT_Task,DT_FixedDUR2,TK_NotStart,DUKHCONP1AZ7MSEX5010,Telephone cable laying,8177,64,0,200,0,500,500,200,0,0,0,,,,2014-06-26 08:00,2014-07-24 17:00,,2014-06-17 08:00,2014-07-15 17:00,2014-06-17 08:00,2014-07-15 17:00,2014-06-17 08:00,2014-07-15 17:00,2014-06-26 08:00,2014-07-24 17:00,,PT_Normal,,,,,Oi3Gx2uLQ5CGqTrl+vHKIA,,,,N,0,0,,,2013-02-16 15:55,2013-02-16 15:56,admin,admin
504429,6359,125453,13662,0,N,N,N,CP_Drtn,TT_Task,DT_FixedDUR2,TK_NotStart,DUKHCONP1AZ7SLEX5105,Laying of Grass/ green area,8178,128,0,200,0,2744,2744,200,0,0,0,,,,2014-08-11 08:00,2014-09-08 17:00,,2014-07-20 08:00,2014-08-20 17:00,2014-07-20 08:00,2014-08-20 17:00,2014-07-20 08:00,2014-08-20 17:00,2014-08-11 08:00,2014-09-08 17:00,,PT_Normal,,,,,Yz49jIgCRzm+79i2NA88iA,,,,N,0,0,,,2013-02-16 15:55,2013-02-16 15:56,admin,admin
504430,6359,125453,13662,0,N,N,N,CP_Drtn,TT_Task,DT_FixedDUR2,TK_NotStart,DUKHCONP1AZ7SLEX5110,Laying of Palm tree,8178,128,128,200,0,168,168,200,0,0,0,,,,2014-08-18 08:00,2014-09-15 17:00,,2014-07-27 08:00,2014-08-27 17:00,2014-07-27 08:00,2014-08-27 17:00,2014-07-27 08:00,2014-08-27 17:00,2014-08-18 08:00,2014-09-15 17:00,,PT_Normal,,,,,aaDybtglTNSROXfZVdQm8Q,,,,N,0,0,,,2013-02-16 15:55,2013-02-16 15:56,admin,admin
504431,6359,125456,13662,0,N,N,N,CP_Drtn,TT_Task,DT_FixedDUR2,TK_NotStart,DUKHCONP1AZ7ARRF3630,Leveling Screed for Waterproofing,8164,168,0,200,0,800,800,200,0,0,0,,,,2014-07-03 08:00,2014-07-31 17:00,,2014-06-09 08:00,2014-07-07 17:00,2014-06-09 08:00,2014-07-07 17:00,2014-06-09 08:00,2014-07-07 17:00,2014-07-03 08:00,2014-07-31 17:00,,PT_Normal,,,,,J06t1rJ+RlaOIhAc98N2/g,,,,N,0,0,,,2013-02-16 15:55,2013-02-16 15:56,admin,admin
504432,6359,125456,13662,0,N,N,N,CP_Drtn,TT_Task,DT_FixedDUR2,TK_NotStart,DUKHCONP1AZ7ARRF3635,Laying of Waterproofing Membrane,8178,168,0,200,0,1138.5,1138.5,200,0,0,0,,,,2014-07-07 08:00,2014-08-07 17:00,,2014-06-12 08:00,2014-07-10 17:00,2014-06-12 08:00,2014-07-10 17:00,2014-06-12 08:00,2014-07-10 17:00,2014-07-07 08:00,2014-08-07 17:00,,PT_Normal,,,,,HRLSTDlIRK6ubWf+csz0fQ,,,,N,0,0,,,2013-02-16 15:55,2013-02-16 15:56,admin,admin
504433,6359,125456,13662,0,N,N,N,CP_Drtn,TT_Task,DT_FixedDUR2,TK_NotStart,DUKHCONP1AZ7ARRF3640,Installation of Insulation & Protection,8178,168,0,200,0,1408,1408,200,0,0,0,,,,2014-07-12 08:00,2014-08-12 17:00,,2014-06-17 08:00,2014-07-15 17:00,2014-06-17 08:00,2014-07-15 17:00,2014-06-17 08:00,2014-07-15 17:00,2014-07-12 08:00,2014-08-12 17:00,,PT_Normal,,,,,KKCyVLqqQ8WRCxSbe1+tSQ,,,,N,0,0,,,2013-02-16 15:55,2013-02-16 15:56,admin,admin
504434,6359,125456,13662,0,N,N,N,CP_Drtn,TT_Task,DT_FixedDUR2,TK_NotStart,DUKHCONP1AZ7ARRF3645,Lime Stone Chips & Paving slab Installation,8170,168,0,200,0,688.25,688.25,200,0,0,0,,,,2014-07-16 08:00,2014-08-17 17:00,,2014-06-22 08:00,2014-07-20 17:00,2014-06-22 08:00,2014-07-20 17:00,2014-06-22 08:00,2014-07-20 17:00,2014-07-16 08:00,2014-08-17 17:00,,PT_Normal,,,,,N68KErbSR4qcQx4ksq3HFg,,,,N,0,0,,,2013-02-16 15:55,2013-02-16 15:56,admin,admin
504435,6359,125456,13662,0,N,N,N,CP_Drtn,TT_Task,DT_FixedDUR2,TK_NotStart,DUKHCONP1AZ7ARRF3655,Installation of Pumps Protection cabinets,8178,168,0,160,0,616,616,160,0,0,0,,,,2014-08-12 08:00,2014-09-03 17:00,,2014-07-15 08:00,2014-08-10 17:00,2014-07-15 08:00,2014-08-10 17:00,2014-07-15 08:00,2014-08-10 17:00,2014-08-12 08:00,2014-09-03 17:00,,PT_Normal,,,,,0/SlnlqSRH+Rhf0hbEdw4Q,,,,N,0,0,,,2013-02-16 15:55,2013-02-16 15:56,admin,admin
504436,6359,125456,13662,0,N,N,N,CP_Drtn,TT_Task,DT_FixedDUR2,TK_NotStart,DUKHCONP1AZ7ARRF3650,Install. of Gal. Frame & Aluminum Slat Screen,8178,168,0,200,0,1046.5,1046.5,200,0,0,0,,,,2014-07-24 08:00,2014-08-25 17:00,,2014-06-30 08:00,2014-07-28 17:00,2014-06-30 08:00,2014-07-28 17:00,2014-06-30 08:00,2014-07-28 17:00,2014-07-24 08:00,2014-08-25 17:00,,PT_Normal,,,,,xb+MXp52QwqCNcRjUZtP3w,,,,N,0,0,,,2013-02-16 15:55,2013-02-16 15:56,admin,admin
504437,6359,125456,13662,0,N,N,N,CP_Drtn,TT_Task,DT_FixedDUR2,TK_NotStart,DUKHCONP1AZ7ARRF3660,Installation of Access Ladder,8178,208,208,120,0,176,176,120,0,0,0,,,,2014-08-30 08:00,2014-09-15 17:00,,2014-07-27 08:00,2014-08-16 17:00,2014-07-27 08:00,2014-08-16 17:00,2014-07-27 08:00,2014-08-16 17:00,2014-08-30 08:00,2014-09-15 17:00,,PT_Normal,,,,,BjITlB7xSVarnyBt01JQPg,,,,N,0,0,,,2013-02-16 15:55,2013-02-16 15:56,admin,admin
504438,6359,125457,13662,0,N,N,N,CP_Drtn,TT_Task,DT_FixedDUR2,TK_NotStart,DUKHCONP1AZ7AREL3665,External Plastering,8169,376,0,200,0,14275,14275,200,0,0,0,,,,2014-07-20 08:00,2014-08-20 17:00,,2014-05-26 08:00,2014-06-23 17:00,2014-05-26 08:00,2014-06-23 17:00,2014-05-26 08:00,2014-06-23 17:00,2014-07-20 08:00,2014-08-20 17:00,,PT_Normal,,,,,8U5tErdeSVyMXy6iH1Ae3A,,,,N,0,0,,,2013-02-16 15:55,2013-02-16 15:56,admin,admin
504439,6359,125457,13662,0,N,N,N,CP_Drtn,TT_Task,DT_FixedDUR2,TK_NotStart,DUKHCONP1AZ7AREL3670,External stone cladding works,8170,392,0,160,0,990,990,160,0,0,0,,,,2014-08-12 08:00,2014-09-03 17:00,,2014-06-12 08:00,2014-07-05 17:00,2014-06-12 08:00,2014-07-05 17:00,2014-06-12 08:00,2014-07-05 17:00,2014-08-12 08:00,2014-09-03 17:00,,PT_Normal,,,,,8Rrhg1vZTMa05WGXtCjzKA,,,,N,0,0,,,2013-02-16 15:55,2013-02-16 15:56,admin,admin
504440,6359,125457,13662,0,N,N,N,CP_Drtn,TT_Task,DT_FixedDUR2,TK_NotStart,DUKHCONP1AZ7AREL3680,External Painting,8178,392,40,160,0,3784,3784,160,0,0,0,,,,2014-08-24 08:00,2014-09-15 17:00,,2014-06-24 08:00,2014-07-16 17:00,2014-06-24 08:00,2014-07-16 17:00,2014-06-24 08:00,2014-07-16 17:00,2014-08-24 08:00,2014-09-15 17:00,,PT_Normal,,,,,cYj0xXAEQM6GpNNLyUe26g,,,,N,0,0,,,2013-02-16 15:55,2013-02-16 15:56,admin,admin
504441,6359,125459,13662,0,N,N,N,CP_Drtn,TT_Task,DT_FixedDUR2,TK_NotStart,DUKHCONP1AZ7ARRF3600,Block work,8168,416,0,160,0,700,700,160,0,0,0,,,,2014-07-03 08:00,2014-07-26 17:00,,2014-05-04 08:00,2014-05-26 17:00,2014-05-04 08:00,2014-05-26 17:00,2014-05-04 08:00,2014-05-26 17:00,2014-07-03 08:00,2014-07-26 17:00,,PT_Normal,,,,,uFWQ0t4fRQeXVAuHFxoaRw,,,,N,0,0,,,2013-02-16 15:55,2013-02-16 15:56,admin,admin
504442,6359,125459,13662,0,N,N,N,CP_Drtn,TT_Task,DT_FixedDUR2,TK_NotStart,DUKHCONP1AZ7ARRF3605,Plastering work,8169,416,0,160,0,1786.5,1786.5,160,0,0,0,,,,2014-07-12 08:00,2014-08-06 17:00,,2014-05-12 08:00,2014-06-03 17:00,2014-05-12 08:00,2014-06-03 17:00,2014-05-12 08:00,2014-06-03 17:00,2014-07-12 08:00,2014-08-06 17:00,,PT_Normal,,,,,BaE8a/mMSQOWeWqIOBLhZg,,,,N,0,0,,,2013-02-16 15:55,2013-02-16 15:56,admin,admin
504443,6359,125459,13662,0,N,N,N,CP_Drtn,TT_Task,DT_FixedDUR2,TK_NotStart,DUKHCONP1AZ7ARRF3610,Flooring screed,8164,456,0,120,0,136.5,136.5,120,0,0,0,,,,2014-07-31 08:00,2014-08-20 17:00,,2014-05-26 08:00,2014-06-11 17:00,2014-05-26 08:00,2014-06-11 17:00,2014-05-26 08:00,2014-06-11 17:00,2014-07-31 08:00,2014-08-20 17:00,,PT_Normal,,,,,00B5guiJS6WzApH2GwEreA,,,,N,0,0,,,2013-02-16 15:55,2013-02-16 15:56,admin,admin
504444,6359,125459,13662,0,N,N,N,CP_Drtn,TT_Task,DT_FixedDUR2,TK_NotStart,DUKHCONP1AZ7ARRF3695,Painting -Storage area,8178,456,0,160,0,1640,1640,160,0,0,0,,,,2014-08-12 08:00,2014-09-03 17:00,,2014-06-03 08:00,2014-06-25 17:00,2014-06-03 08:00,2014-06-25 17:00,2014-06-03 08:00,2014-06-25 17:00,2014-08-12 08:00,2014-09-03 17:00,,PT_Normal,,,,,/qc1lOkjQMCmWFRSWQU0Bg,,,,N,0,0,,,2013-02-16 15:55,2013-02-16 15:56,admin,admin
504445,6359,125459,13662,0,N,N,N,CP_Drtn,TT_Task,DT_FixedDUR2,TK_NotStart,DUKHCONP1AZ7ARRF3620,Epoxy Painting -Storage area,8178,456,456,120,0,48.5,48.5,120,0,0,0,,,,2014-08-30 08:00,2014-09-15 17:00,,2014-06-21 08:00,2014-07-07 17:00,2014-06-21 08:00,2014-07-07 17:00,2014-06-21 08:00,2014-07-07 17:00,2014-08-30 08:00,2014-09-15 17:00,,PT_Normal,,,,,QhCB/z2kQCGYl1mUAnckIg,,,,N,0,0,,,2013-02-16 15:55,2013-02-16 15:56,admin,admin
504446,6359,125460,13662,0,N,N,N,CP_Drtn,TT_Task,DT_FixedDUR2,TK_NotStart,DUKHCONP1AZ7ARFF3310,Flooring screed,8164,96,96,168,0,1215.5,1215.5,168,0,0,0,,,,2014-06-05 08:00,2014-06-29 17:00,,2014-05-22 08:00,2014-06-15 17:00,2014-05-22 08:00,2014-06-15 17:00,2014-05-22 08:00,2014-06-15 17:00,2014-06-05 08:00,2014-06-29 17:00,,PT_Normal,,,,,UZlG7BjsRmSegs7BVF3I0Q,,,,N,0,0,,,2013-02-16 15:55,2013-02-16 15:56,admin,admin
504447,6359,125460,13662,0,N,N,N,CP_Drtn,TT_Task,DT_FixedDUR2,TK_NotStart,DUKHCONP1AZ7ARFF3315,Wet area waterproofing,8178,0,0,120,0,1215.5,1215.5,120,0,0,0,,,,2014-06-03 08:00,2014-06-19 17:00,,2014-06-03 08:00,2014-06-19 17:00,2014-06-03 08:00,2014-06-19 17:00,2014-06-03 08:00,2014-06-19 17:00,2014-06-03 08:00,2014-06-19 17:00,,PT_Normal,,,,,YpwpwNbERIWlczQtruHFzQ,,,,Y,0,0,,,2013-02-16 15:55,2013-02-16 15:56,admin,admin
504448,6359,125460,13662,0,N,N,N,CP_Drtn,TT_Task,DT_FixedDUR2,TK_NotStart,DUKHCONP1AZ7ARFF3330,Paint First coat,8178,112,112,200,0,4742.75,4742.75,200,0,0,0,,,,2014-06-16 08:00,2014-07-14 17:00,,2014-05-31 08:00,2014-06-28 17:00,2014-05-31 08:00,2014-06-28 17:00,2014-05-31 08:00,2014-06-28 17:00,2014-06-16 08:00,2014-07-14 17:00,,PT_Normal,,,,,PS0LkYhcQraAQT9ZhkCrRA,,,,N,0,0,,,2013-02-16 15:55,2013-02-16 15:56,admin,admin
504449,6359,125460,13662,0,N,N,N,CP_Drtn,TT_Task,DT_FixedDUR2,TK_NotStart,DUKHCONP1AZ7ARFF3320,Ceramic Wall Tiling,8170,0,0,200,0,1897.25,1897.25,200,0,0,0,,,,2014-06-10 08:00,2014-07-08 17:00,,2014-06-10 08:00,2014-07-08 17:00,2014-06-10 08:00,2014-07-08 17:00,2014-06-10 08:00,2014-07-08 17:00,2014-06-10 08:00,2014-07-08 17:00,,PT_Normal,,,,,qrPwnIvGRty7W/JxSUpG2Q,,,,Y,0,0,,,2013-02-16 15:55,2013-02-16 15:56,admin,admin
504450,6359,125460,13662,0,N,N,N,CP_Drtn,TT_Task,DT_FixedDUR2,TK_NotStart,DUKHCONP1AZ7ARFF3325,Porcelain Tile flooring,8170,0,0,200,0,1743.75,1743.75,200,0,0,0,,,,2014-06-17 08:00,2014-07-15 17:00,,2014-06-17 08:00,2014-07-15 17:00,2014-06-17 08:00,2014-07-15 17:00,2014-06-17 08:00,2014-07-15 17:00,2014-06-17 08:00,2014-07-15 17:00,,PT_Normal,,,,,9o3hSbvwRyuK92kfeIShFA,,,,Y,0,0,,,2013-02-16 15:55,2013-02-16 15:56,admin,admin
504451,6359,125460,13662,0,N,N,N,CP_Drtn,TT_Task,DT_FixedDUR2,TK_NotStart,DUKHCONP1AZ7ARFF3335,Slate Tile Flooring & Skirting,8170,64,64,120,0,261.5,261.5,120,0,0,0,,,,2014-07-14 08:00,2014-07-30 17:00,,2014-07-05 08:00,2014-07-21 17:00,2014-07-05 08:00,2014-07-21 17:00,2014-07-05 08:00,2014-07-21 17:00,2014-07-14 08:00,2014-07-30 17:00,,PT_Normal,,,,,PLw+6434SfSggMHWhZ/6lA,,,,N,0,0,,,2013-02-16 15:55,2013-02-16 15:56,admin,admin
504452,6359,125460,13662,0,N,N,N,CP_Drtn,TT_Task,DT_FixedDUR2,TK_NotStart,DUKHCONP1AZ7ARFF3350,Granite - Stair case flooring & Skirting,8171,16,16,160,0,875,875,160,0,0,0,,,,2014-07-10 08:00,2014-08-05 17:00,,2014-07-08 08:00,2014-07-30 17:00,2014-07-08 08:00,2014-07-30 17:00,2014-07-08 08:00,2014-07-30 17:00,2014-07-10 08:00,2014-08-05 17:00,,PT_Normal,,,,,9E4kwK17REmS54DrDhqgew,,,,N,0,0,,,2013-02-16 15:55,2013-02-16 15:56,admin,admin
504453,6359,125460,13662,0,N,N,N,CP_Drtn,TT_Task,DT_FixedDUR2,TK_NotStart,DUKHCONP1AZ7ARFF3345,Fixing of Suspension systems,8178,0,0,160,0,1305,1305,160,0,0,0,,,,2014-06-30 08:00,2014-07-22 17:00,,2014-06-30 08:00,2014-07-22 17:00,2014-06-30 08:00,2014-07-22 17:00,2014-06-30 08:00,2014-07-22 17:00,2014-06-30 08:00,2014-07-22 17:00,,PT_Normal,,,,,6uh2i1hnSPSLenjQWTZnJQ,,,,Y,0,0,,,2013-02-16 15:55,2013-02-16 15:56,admin,admin
504454,6359,125460,13662,0,N,N,N,CP_Drtn,TT_Task,DT_FixedDUR2,TK_NotStart,DUKHCONP1AZ7ARFF3360,Gypsum board false ceiling,8178,0,0,200,0,1305,1305,200,0,0,0,,,,2014-07-07 08:00,2014-08-07 17:00,,2014-07-07 08:00,2014-08-07 17:00,2014-07-07 08:00,2014-08-07 17:00,2014-07-07 08:00,2014-08-07 17:00,2014-07-07 08:00,2014-08-07 17:00,,PT_Normal,,,,,coJMaNpyQjKGJo0GvpFisA,,,,Y,0,0,,,2013-02-16 15:55,2013-02-16 15:56,admin,admin
504455,6359,125460,13662,0,N,N,N,CP_Drtn,TT_Task,DT_FixedDUR2,TK_NotStart,DUKHCONP1AZ7ARFF3365,Wooden door,8178,0,0,120,0,308,308,120,0,0,0,,,,2014-07-22 08:00,2014-08-11 17:00,,2014-07-22 08:00,2014-08-11 17:00,2014-07-22 08:00,2014-08-11 17:00,2014-07-22 08:00,2014-08-11 17:00,2014-07-22 08:00,2014-08-11 17:00,,PT_Normal,,,,,UI52/wp9QkCgWBXje79rWg,,,,Y,0,0,,,2013-02-16 15:55,2013-02-16 15:56,admin,admin
504456,6359,125460,13662,0,N,N,N,CP_Drtn,TT_Task,DT_FixedDUR2,TK_NotStart,DUKHCONP1AZ7ARFF3370,Aluminum Door,8178,0,0,160,0,220,220,160,0,0,0,,,,2014-07-22 08:00,2014-08-17 17:00,,2014-07-22 08:00,2014-08-17 17:00,2014-07-22 08:00,2014-08-17 17:00,2014-07-22 08:00,2014-08-17 17:00,2014-07-22 08:00,2014-08-17 17:00,,PT_Normal,,,,,aggVDvgaS56wC6T/DVsHAw,,,,Y,0,0,,,2013-02-16 15:55,2013-02-16 15:56,admin,admin
504457,6359,125460,13662,0,N,N,N,CP_Drtn,TT_Task,DT_FixedDUR2,TK_NotStart,DUKHCONP1AZ7ARFF3380,Aluminum windows,8178,32,32,160,0,162.25,162.25,160,0,0,0,,,,2014-08-06 08:00,2014-08-28 17:00,,2014-07-29 08:00,2014-08-24 17:00,2014-07-29 08:00,2014-08-24 17:00,2014-07-29 08:00,2014-08-24 17:00,2014-08-06 08:00,2014-08-28 17:00,,PT_Normal,,,,,ZCFwbkDSQYKkSC8I+c2dDQ,,,,N,0,0,,,2013-02-16 15:55,2013-02-16 15:56,admin,admin
504458,6359,125460,13662,0,N,N,N,CP_Drtn,TT_Task,DT_FixedDUR2,TK_NotStart,DUKHCONP1AZ7ARFF3375,Carpentry & Joinery Works,8178,0,0,200,0,1100,1100,200,0,0,0,,,,2014-07-28 08:00,2014-08-28 17:00,,2014-07-28 08:00,2014-08-28 17:00,2014-07-28 08:00,2014-08-28 17:00,2014-07-28 08:00,2014-08-28 17:00,2014-07-28 08:00,2014-08-28 17:00,,PT_Normal,,,,,HEUah5A5Q1OkxFmF5QU3BQ,,,,Y,0,0,,,2013-02-16 15:55,2013-02-16 15:56,admin,admin
504459,6359,125460,13662,0,N,N,N,CP_Drtn,TT_Task,DT_FixedDUR2,TK_NotStart,DUKHCONP1AZ7ARFF3390,Installation of Granite Counter Top,8171,8,8,160,0,88,88,160,0,0,0,,,,2014-08-13 08:00,2014-09-04 17:00,,2014-08-12 08:00,2014-09-03 17:00,2014-08-12 08:00,2014-09-03 17:00,2014-08-12 08:00,2014-09-03 17:00,2014-08-13 08:00,2014-09-04 17:00,,PT_Normal,,,,,PJ9knusWTF2U5XZNPScDKw,,,,N,0,0,,,2013-02-16 15:55,2013-02-16 15:56,admin,admin
504460,6359,125460,13662,0,N,N,N,CP_Drtn,TT_Task,DT_FixedDUR2,TK_NotStart,DUKHCONP1AZ7ARFF3385,Handrail &  Balustrade,8178,0,0,160,0,787.5,787.5,160,0,0,0,,,,2014-08-12 08:00,2014-09-03 17:00,,2014-08-12 08:00,2014-09-03 17:00,2014-08-12 08:00,2014-09-03 17:00,2014-08-12 08:00,2014-09-03 17:00,2014-08-12 08:00,2014-09-03 17:00,,PT_Normal,,,,,KIZecZFCTcajG5SlxVgHSA,,,,Y,0,0,,,2013-02-16 15:55,2013-02-16 15:56,admin,admin
504461,6359,125460,13662,0,N,N,N,CP_Drtn,TT_Task,DT_FixedDUR2,TK_NotStart,DUKHCONP1AZ7ARFF3395,Final Painting,8178,0,0,200,0,4742.75,4742.75,200,0,0,0,,,,2014-08-18 08:00,2014-09-15 17:00,,2014-08-18 08:00,2014-09-15 17:00,2014-08-18 08:00,2014-09-15 17:00,2014-08-18 08:00,2014-09-15 17:00,2014-08-18 08:00,2014-09-15 17:00,,PT_Normal,,,,,WYaqUXSQTAWVjFkNdA6wGw,,,,Y,0,0,,,2013-02-16 15:55,2013-02-16 15:56,admin,admin
504462,6359,125460,13662,0,N,N,N,CP_Drtn,TT_Task,DT_FixedDUR2,TK_NotStart,DUKHCONP1AZ7ARFF3300,Block work,8168,0,0,200,0,6387.5,6387.5,200,0,0,0,,,,2014-04-20 08:00,2014-05-18 17:00,,2014-04-20 08:00,2014-05-18 17:00,2014-04-20 08:00,2014-05-18 17:00,2014-04-20 08:00,2014-05-18 17:00,2014-04-20 08:00,2014-05-18 17:00,,PT_Normal,,,,,+1CayyNkTR6KkQNDemQz/w,,,,Y,0,0,,,2013-02-16 15:55,2013-02-16 15:56,admin,admin
504463,6359,125460,13662,0,N,N,N,CP_Drtn,TT_Task,DT_FixedDUR2,TK_NotStart,DUKHCONP1AZ7ARFF3305,Plastering work,8169,0,0,200,0,8899,8899,200,0,0,0,,,,2014-05-14 08:00,2014-06-11 17:00,,2014-05-14 08:00,2014-06-11 17:00,2014-05-14 08:00,2014-06-11 17:00,2014-05-14 08:00,2014-06-11 17:00,2014-05-14 08:00,2014-06-11 17:00,,PT_Normal,,,,,OWNKdi8MT5iYE9fRZXBWyQ,,,,Y,0,0,,,2013-02-16 15:55,2013-02-16 15:56,admin,admin
504464,6359,125461,13662,0,N,N,N,CP_Drtn,TT_Task,DT_FixedDUR2,TK_NotStart,DUKHCONP1AZ7ARGF3000,Block work,8168,144,0,200,0,9737.5,9737.5,200,0,0,0,,,,2014-03-30 08:00,2014-04-27 17:00,,2014-03-09 08:00,2014-04-06 17:00,2014-03-09 08:00,2014-04-06 17:00,2014-03-09 08:00,2014-04-06 17:00,2014-03-30 08:00,2014-04-27 17:00,,PT_Normal,,,,,ft8aEp5USQqNLF9sfrZ7KQ,,,,N,0,0,,,2013-02-16 15:55,2013-02-16 15:56,admin,admin
504465,6359,125461,13662,0,N,N,N,CP_Drtn,TT_Task,DT_FixedDUR2,TK_NotStart,DUKHCONP1AZ7ARGF3005,Plastering work,8169,144,0,200,0,13637.5,13637.5,200,0,0,0,,,,2014-04-21 08:00,2014-05-19 17:00,,2014-03-31 08:00,2014-04-28 17:00,2014-03-31 08:00,2014-04-28 17:00,2014-03-31 08:00,2014-04-28 17:00,2014-04-21 08:00,2014-05-19 17:00,,PT_Normal,,,,,/ZYny5pIQe+BjPgyluZ2Qw,,,,N,0,0,,,2013-02-16 15:55,2013-02-16 15:56,admin,admin
504466,6359,125461,13662,0,N,N,N,CP_Drtn,TT_Task,DT_FixedDUR2,TK_NotStart,DUKHCONP1AZ7ARGF3010,Flooring screed,8164,208,64,168,0,1580.25,1580.25,168,0,0,0,,,,2014-05-08 08:00,2014-06-01 17:00,,2014-04-08 08:00,2014-05-01 17:00,2014-04-08 08:00,2014-05-01 17:00,2014-04-08 08:00,2014-05-01 17:00,2014-05-08 08:00,2014-06-01 17:00,,PT_Normal,,,,,QZo1c3dsSRCoFhjDE5bOiw,,,,N,0,0,,,2013-02-16 15:55,2013-02-16 15:56,admin,admin
504467,6359,125461,13662,0,N,N,N,CP_Drtn,TT_Task,DT_FixedDUR2,TK_NotStart,DUKHCONP1AZ7ARGF3015,Wet area waterproofing & Protection Screed,8178,144,0,120,0,247.5,247.5,120,0,0,0,,,,2014-05-08 08:00,2014-05-25 17:00,,2014-04-17 08:00,2014-05-04 17:00,2014-04-17 08:00,2014-05-04 17:00,2014-04-17 08:00,2014-05-04 17:00,2014-05-08 08:00,2014-05-25 17:00,,PT_Normal,,,,,oOcE/YEtTUyfuDKo3RAFvg,,,,N,0,0,,,2013-02-16 15:55,2013-02-16 15:56,admin,admin
504468,6359,125461,13662,0,N,N,N,CP_Drtn,TT_Task,DT_FixedDUR2,TK_NotStart,DUKHCONP1AZ7ARGF3030,Paint First coat,8178,256,0,200,0,5425.75,5425.75,200,0,0,0,,,,2014-05-24 08:00,2014-06-21 17:00,,2014-04-16 08:00,2014-05-14 17:00,2014-04-16 08:00,2014-05-14 17:00,2014-04-16 08:00,2014-05-14 17:00,2014-05-24 08:00,2014-06-21 17:00,,PT_Normal,,,,,RomZZGSdST23krpq1kmYeg,,,,N,0,0,,,2013-02-16 15:55,2013-02-16 15:56,admin,admin
504469,6359,125461,13662,0,N,N,N,CP_Drtn,TT_Task,DT_FixedDUR2,TK_NotStart,DUKHCONP1AZ7ARGF3020,Ceramic Wall Tiling,8170,144,0,200,0,4428.5,4428.5,200,0,0,0,,,,2014-05-14 08:00,2014-06-11 17:00,,2014-04-23 08:00,2014-05-21 17:00,2014-04-23 08:00,2014-05-21 17:00,2014-04-23 08:00,2014-05-21 17:00,2014-05-14 08:00,2014-06-11 17:00,,PT_Normal,,,,,ozvS4IJVR9C8e40l7OZ57A,,,,N,0,0,,,2013-02-16 15:55,2013-02-16 15:56,admin,admin
504470,6359,125461,13662,0,N,N,N,CP_Drtn,TT_Task,DT_FixedDUR2,TK_NotStart,DUKHCONP1AZ7ARGF3025,Porcelain Tile flooring,8170,144,0,200,0,1743.75,1743.75,200,0,0,0,,,,2014-05-20 08:00,2014-06-17 17:00,,2014-04-29 08:00,2014-05-27 17:00,2014-04-29 08:00,2014-05-27 17:00,2014-04-29 08:00,2014-05-27 17:00,2014-05-20 08:00,2014-06-17 17:00,,PT_Normal,,,,,PoZGXMQVTXKuuWAhORG2FQ,,,,N,0,0,,,2013-02-16 15:55,2013-02-16 15:56,admin,admin
504471,6359,125461,13662,0,N,N,N,CP_Drtn,TT_Task,DT_FixedDUR2,TK_NotStart,DUKHCONP1AZ7ARGF3040,Cobble Tile flooring,8170,168,0,120,0,741,741,120,0,0,0,,,,2014-06-19 08:00,2014-07-06 17:00,,2014-05-26 08:00,2014-06-11 17:00,2014-05-26 08:00,2014-06-11 17:00,2014-05-26 08:00,2014-06-11 17:00,2014-06-19 08:00,2014-07-06 17:00,,PT_Normal,,,,,AvnJtCq0QoyY5avBcXoRBA,,,,N,0,0,,,2013-02-16 15:55,2013-02-16 15:56,admin,admin
504472,6359,125461,13662,0,N,N,N,CP_Drtn,TT_Task,DT_FixedDUR2,TK_NotStart,DUKHCONP1AZ7ARGF3035,Slate Tile Flooring & Skirting,8170,184,16,120,0,761.5,761.5,120,0,0,0,,,,2014-06-15 08:00,2014-07-01 17:00,,2014-05-19 08:00,2014-06-04 17:00,2014-05-19 08:00,2014-06-04 17:00,2014-05-19 08:00,2014-06-04 17:00,2014-06-15 08:00,2014-07-01 17:00,,PT_Normal,,,,,ZzZ2nKctQVerrN/8ObQe8A,,,,N,0,0,,,2013-02-16 15:55,2013-02-16 15:56,admin,admin
504473,6359,125461,13662,0,N,N,N,CP_Drtn,TT_Task,DT_FixedDUR2,TK_NotStart,DUKHCONP1AZ7ARGF3050,Granite - Stair case flooring & Skirting,8171,168,0,160,0,875,875,160,0,0,0,,,,2014-06-28 08:00,2014-07-20 17:00,,2014-06-03 08:00,2014-06-25 17:00,2014-06-03 08:00,2014-06-25 17:00,2014-06-03 08:00,2014-06-25 17:00,2014-06-28 08:00,2014-07-20 17:00,,PT_Normal,,,,,KxinKKupRIamH9RpWqVseA,,,,N,0,0,,,2013-02-16 15:55,2013-02-16 15:56,admin,admin
504474,6359,125461,13662,0,N,N,N,CP_Drtn,TT_Task,DT_FixedDUR2,TK_NotStart,DUKHCONP1AZ7ARGF3045,Fixing of Suspension systems,8178,144,0,160,0,1455.05,1455.05,160,0,0,0,,,,2014-06-07 08:00,2014-06-29 17:00,,2014-05-17 08:00,2014-06-08 17:00,2014-05-17 08:00,2014-06-08 17:00,2014-05-17 08:00,2014-06-08 17:00,2014-06-07 08:00,2014-06-29 17:00,,PT_Normal,,,,,84O3h6EkQOeroMFs6UV08A,,,,N,0,0,,,2013-02-16 15:55,2013-02-23 09:03,admin,admin
504475,6359,125461,13662,0,N,N,N,CP_Drtn,TT_Task,DT_FixedDUR2,TK_NotStart,DUKHCONP1AZ7ARGF3055,Aluminum tile false ceiling,8178,168,24,200,0,150,150,200,0,0,0,,,,2014-06-18 08:00,2014-07-16 17:00,,2014-05-25 08:00,2014-06-22 17:00,2014-05-25 08:00,2014-06-22 17:00,2014-05-25 08:00,2014-06-22 17:00,2014-06-18 08:00,2014-07-16 17:00,,PT_Normal,,,,,NHj2Olc/Tg2fihAOuj1tgQ,,,,N,0,0,,,2013-02-16 15:55,2013-02-16 15:56,admin,admin
504476,6359,125461,13662,0,N,N,N,CP_Drtn,TT_Task,DT_FixedDUR2,TK_NotStart,DUKHCONP1AZ7ARGF3060,Gypsum board false ceiling,8178,144,0,200,0,1335.15,1335.15,200,0,0,0,,,,2014-06-18 08:00,2014-07-16 17:00,,2014-05-28 08:00,2014-06-25 17:00,2014-05-28 08:00,2014-06-25 17:00,2014-05-28 08:00,2014-06-25 17:00,2014-06-18 08:00,2014-07-16 17:00,,PT_Normal,,,,,j1Ykc1uMQuWBsxU/Laoq6w,,,,N,0,0,,,2013-02-16 15:55,2013-02-16 15:56,admin,admin
504477,6359,125461,13662,0,N,N,N,CP_Drtn,TT_Task,DT_FixedDUR2,TK_NotStart,DUKHCONP1AZ7ARGF3065,Wooden door & PVC Door,8178,168,0,120,0,308,308,120,0,0,0,,,,2014-07-12 08:00,2014-07-28 17:00,,2014-06-17 08:00,2014-07-03 17:00,2014-06-17 08:00,2014-07-03 17:00,2014-06-17 08:00,2014-07-03 17:00,2014-07-12 08:00,2014-07-28 17:00,,PT_Normal,,,,,mzslrVSFSWiGVTv6FyRmbQ,,,,N,0,0,,,2013-02-16 15:55,2013-02-16 15:56,admin,admin
504478,6359,125461,13662,0,N,N,N,CP_Drtn,TT_Task,DT_FixedDUR2,TK_NotStart,DUKHCONP1AZ7ARGF3070,Aluminum doors,8178,168,0,120,0,176,176,120,0,0,0,,,,2014-07-17 08:00,2014-08-06 17:00,,2014-06-23 08:00,2014-07-09 17:00,2014-06-23 08:00,2014-07-09 17:00,2014-06-23 08:00,2014-07-09 17:00,2014-07-17 08:00,2014-08-06 17:00,,PT_Normal,,,,,N+yjZTDLQCeRD4UlBp5GiA,,,,N,0,0,,,2013-02-16 15:55,2013-02-16 15:56,admin,admin
504479,6359,125461,13662,0,N,N,N,CP_Drtn,TT_Task,DT_FixedDUR2,TK_NotStart,DUKHCONP1AZ7ARGF3080,Aluminum windows,8178,248,40,160,0,162.25,162.25,160,0,0,0,,,,2014-08-09 08:00,2014-08-31 17:00,,2014-06-30 08:00,2014-07-22 17:00,2014-06-30 08:00,2014-07-22 17:00,2014-06-30 08:00,2014-07-22 17:00,2014-08-09 08:00,2014-08-31 17:00,,PT_Normal,,,,,AhE37puWRFC4tAKHabhlHg,,,,N,0,0,,,2013-02-16 15:55,2013-02-16 15:56,admin,admin
504480,6359,125461,13662,0,N,N,N,CP_Drtn,TT_Task,DT_FixedDUR2,TK_NotStart,DUKHCONP1AZ7ARGF3075,Carpentry & Joinery Works,8178,168,0,160,0,572,572,160,0,0,0,,,,2014-07-23 08:00,2014-08-18 17:00,,2014-06-29 08:00,2014-07-21 17:00,2014-06-29 08:00,2014-07-21 17:00,2014-06-29 08:00,2014-07-21 17:00,2014-07-23 08:00,2014-08-18 17:00,,PT_Normal,,,,,TVFRhc2nR5WSfspiFTPjvA,,,,N,0,0,,,2013-02-16 15:55,2013-02-16 15:56,admin,admin
504481,6359,125461,13662,0,N,N,N,CP_Drtn,TT_Task,DT_FixedDUR2,TK_NotStart,DUKHCONP1AZ7ARGF3090,Installation of Granite Counter Top,8171,168,0,120,0,176,176,120,0,0,0,,,,2014-08-09 08:00,2014-08-25 17:00,,2014-07-12 08:00,2014-07-28 17:00,2014-07-12 08:00,2014-07-28 17:00,2014-07-12 08:00,2014-07-28 17:00,2014-08-09 08:00,2014-08-25 17:00,,PT_Normal,,,,,CLecDlbuSc+jVUn1USdryg,,,,N,0,0,,,2013-02-16 15:55,2013-02-16 15:56,admin,admin
504482,6359,125461,13662,0,N,N,N,CP_Drtn,TT_Task,DT_FixedDUR2,TK_NotStart,DUKHCONP1AZ7ARGF3085,S.S.Balustrade,8178,208,40,160,0,262.5,262.5,160,0,0,0,,,,2014-08-10 08:00,2014-09-01 17:00,,2014-07-07 08:00,2014-07-29 17:00,2014-07-07 08:00,2014-07-29 17:00,2014-07-07 08:00,2014-07-29 17:00,2014-08-10 08:00,2014-09-01 17:00,,PT_Normal,,,,,82dASGhaSc2fCX0xRyJiig,,,,N,0,0,,,2013-02-16 15:55,2013-02-16 15:56,admin,admin
504483,6359,125461,13662,0,N,N,N,CP_Drtn,TT_Task,DT_FixedDUR2,TK_NotStart,DUKHCONP1AZ7ARGF3095,Final Painting,8178,168,0,200,0,5425.75,5425.75,200,0,0,0,,,,2014-08-18 08:00,2014-09-15 17:00,,2014-07-21 08:00,2014-08-21 17:00,2014-07-21 08:00,2014-08-21 17:00,2014-07-21 08:00,2014-08-21 17:00,2014-08-18 08:00,2014-09-15 17:00,,PT_Normal,,,,,rFi/oqLmQ8ihIqvifj065g,,,,N,0,0,,,2013-02-16 15:55,2013-02-16 15:56,admin,admin
504484,6359,125464,13662,0,N,N,N,CP_Drtn,TT_Task,DT_FixedDUR2,TK_NotStart,DUKHCONP1AZ7PLFF4330,Installation of Drainage pipes & testing,8178,176,56,144,0,177.6,177.6,144,0,0,0,,,,2014-06-02 08:00,2014-06-22 17:00,,2014-05-07 08:00,2014-05-27 17:00,2014-05-07 08:00,2014-05-27 17:00,2014-05-07 08:00,2014-05-27 17:00,2014-06-02 08:00,2014-06-22 17:00,,PT_Normal,,,,,/QArbT4LSu6G6NFJgnM1Jw,,,,N,0,0,,,2013-02-16 15:55,2013-02-16 15:56,admin,admin
504485,6359,125464,13662,0,N,N,N,CP_Drtn,TT_Task,DT_FixedDUR2,TK_NotStart,DUKHCONP1AZ7PLFF4335,Sanitary Fittings & Accessories,8178,40,0,160,0,67.2,67.2,160,0,0,0,,,,2014-07-28 08:00,2014-08-23 17:00,,2014-07-22 08:00,2014-08-17 17:00,2014-07-22 08:00,2014-08-17 17:00,2014-07-22 08:00,2014-08-17 17:00,2014-07-28 08:00,2014-08-23 17:00,,PT_Normal,,,,,d/vSbUX4QhCuf1Jf0RrNwA,,,,N,0,0,,,2013-02-16 15:55,2013-02-16 15:56,admin,admin
504486,6359,125464,13662,0,N,N,N,CP_Drtn,TT_Task,DT_FixedDUR2,TK_NotStart,DUKHCONP1AZ7PLFF4340,Installation of Water Heater,8178,40,32,120,0,67.2,67.2,120,0,0,0,,,,2014-08-12 08:00,2014-08-28 17:00,,2014-08-06 08:00,2014-08-23 17:00,2014-08-06 08:00,2014-08-23 17:00,2014-08-06 08:00,2014-08-23 17:00,2014-08-12 08:00,2014-08-28 17:00,,PT_Normal,,,,,byoChGt7Q1OjzG/4T0MjHQ,,,,N,0,0,,,2013-02-16 15:55,2013-02-16 15:56,admin,admin
504487,6359,125464,13662,0,N,N,N,CP_Drtn,TT_Task,DT_FixedDUR2,TK_NotStart,DUKHCONP1AZ7PLFF4325,Installation of Plumbing pipes & testing,8178,0,0,144,0,441.6,441.6,144,0,0,0,,,,2014-05-07 08:00,2014-05-27 17:00,,2014-05-07 08:00,2014-05-27 17:00,2014-05-07 08:00,2014-05-27 17:00,2014-05-07 08:00,2014-05-27 17:00,2014-05-07 08:00,2014-05-27 17:00,,PT_Normal,,,,,8J/Y6QUmQW2oVOoIe12Dpg,,,,Y,0,0,,,2013-02-16 15:55,2013-02-16 15:56,admin,admin
504488,6359,125465,13662,0,N,N,N,CP_Drtn,TT_Task,DT_FixedDUR2,TK_NotStart,DUKHCONP1AZ7PLRF4345,Installation of Plumbing pipes & fittings,8178,448,240,120,0,110.4,110.4,120,0,0,0,,,,2014-07-30 08:00,2014-08-19 17:00,,2014-05-26 08:00,2014-06-11 17:00,2014-05-26 08:00,2014-06-11 17:00,2014-05-26 08:00,2014-06-11 17:00,2014-07-30 08:00,2014-08-19 17:00,,PT_Normal,,,,,MDLzBoqmTiao7Z6r5IxUkw,,,,N,0,0,,,2013-02-16 15:55,2013-02-16 15:56,admin,admin
504489,6359,125465,13662,0,N,N,N,CP_Drtn,TT_Task,DT_FixedDUR2,TK_NotStart,DUKHCONP1AZ7PLRF4350,Installation of Rain water Pipes,8178,208,80,120,0,67.2,67.2,120,0,0,0,,,,2014-08-12 08:00,2014-08-28 17:00,,2014-07-09 08:00,2014-07-26 17:00,2014-07-09 08:00,2014-07-26 17:00,2014-07-09 08:00,2014-07-26 17:00,2014-08-12 08:00,2014-08-28 17:00,,PT_Normal,,,,,HjDt+6iNS+aXN+1pN8qHnw,,,,N,0,0,,,2013-02-16 15:55,2013-02-16 15:56,admin,admin
504490,6359,125465,13662,0,N,N,N,CP_Drtn,TT_Task,DT_FixedDUR2,TK_NotStart,DUKHCONP1AZ7PLRF4355,Roof  Water Tank Installation & Connections,8178,8,0,200,0,336,336,200,0,0,0,,,,2014-08-18 08:00,2014-09-15 17:00,,2014-08-17 08:00,2014-09-14 17:00,2014-08-17 08:00,2014-09-14 17:00,2014-08-17 08:00,2014-09-14 17:00,2014-08-18 08:00,2014-09-15 17:00,,PT_Normal,,,,,nRPaXxtWQe+/dPjhraVP2g,,,,N,0,0,,,2013-02-16 15:55,2013-02-16 15:56,admin,admin
504491,6359,125466,13662,0,N,N,N,CP_Drtn,TT_Task,DT_FixedDUR2,TK_NotStart,DUKHCONP1AZ7PLGF4315,Sanitary Fittings & Accessories,8178,360,0,160,0,134.4,134.4,160,0,0,0,,,,2014-08-18 08:00,2014-09-09 17:00,,2014-06-23 08:00,2014-07-15 17:00,2014-06-23 08:00,2014-07-15 17:00,2014-06-23 08:00,2014-07-15 17:00,2014-08-18 08:00,2014-09-09 17:00,,PT_Normal,,,,,AO5/udcLQbiQ5a1SVE0Cuw,,,,N,0,0,,,2013-02-16 15:55,2013-02-16 15:56,admin,admin
504492,6359,125466,13662,0,N,N,N,CP_Drtn,TT_Task,DT_FixedDUR2,TK_NotStart,DUKHCONP1AZ7PLGF4320,Installation of Water Heater,8178,360,80,120,0,134.4,134.4,120,0,0,0,,,,2014-08-30 08:00,2014-09-15 17:00,,2014-07-05 08:00,2014-07-21 17:00,2014-07-05 08:00,2014-07-21 17:00,2014-07-05 08:00,2014-07-21 17:00,2014-08-30 08:00,2014-09-15 17:00,,PT_Normal,,,,,o9IIr/aXRaWS0ZiKDTs9PQ,,,,N,0,0,,,2013-02-16 15:55,2013-02-16 15:56,admin,admin
504493,6359,125466,13662,0,N,N,N,CP_Drtn,TT_Task,DT_FixedDUR2,TK_NotStart,DUKHCONP1AZ7PLUG4300,Drainage / Storm Pipes in Grade Slab,8178,0,0,128,0,67.2,67.2,128,0,0,0,,,,2013-12-01 08:00,2013-12-19 17:00,,2013-12-01 08:00,2013-12-19 17:00,2013-12-01 08:00,2013-12-19 17:00,2013-12-01 08:00,2013-12-19 17:00,2013-12-01 08:00,2013-12-19 17:00,,PT_Normal,,,,,+OfAoBYJQNSPbaY3uOYl3A,,,,Y,0,0,,,2013-02-16 15:55,2013-02-16 15:56,admin,admin
504494,6359,125466,13662,0,N,N,N,CP_Drtn,TT_Task,DT_FixedDUR2,TK_NotStart,DUKHCONP1AZ7PLGF4305,Installation of Plumbing pipes & testing,8178,144,0,144,0,441.6,441.6,144,0,0,0,,,,2014-04-15 08:00,2014-05-05 17:00,,2014-03-25 08:00,2014-04-14 17:00,2014-03-25 08:00,2014-04-14 17:00,2014-03-25 08:00,2014-04-14 17:00,2014-04-15 08:00,2014-05-05 17:00,,PT_Normal,,,,,gbIPEN3JTg++3w4AHdHLPg,,,,N,0,0,,,2013-02-16 15:55,2013-02-16 15:56,admin,admin
504495,6359,125466,13662,0,N,N,N,CP_Drtn,TT_Task,DT_FixedDUR2,TK_NotStart,DUKHCONP1AZ7PLGF4310,Installation of Drainage pipes &testing,8178,168,104,144,0,177.6,177.6,144,0,0,0,,,,2014-04-19 08:00,2014-05-08 17:00,,2014-03-25 08:00,2014-04-14 17:00,2014-03-25 08:00,2014-04-14 17:00,2014-03-25 08:00,2014-04-14 17:00,2014-04-19 08:00,2014-05-08 17:00,,PT_Normal,,,,,b7rmQeqIRqiekphmXHWdBw,,,,N,0,0,,,2013-02-16 15:55,2013-02-16 15:56,admin,admin
504496,6359,125468,13662,0,N,N,N,CP_Drtn,TT_Task,DT_FixedDUR2,TK_NotStart,DUKHCONP1AZ7ELRF4070,Installation of Isolator,8178,8,0,144,0,412.8,412.8,144,0,0,0,,,,2014-08-14 08:00,2014-09-03 17:00,,2014-08-13 08:00,2014-09-02 17:00,2014-08-13 08:00,2014-09-02 17:00,2014-08-13 08:00,2014-09-02 17:00,2014-08-14 08:00,2014-09-03 17:00,,PT_Normal,,,,,zBBuJaQSS/a+FbFEJePcaA,,,,N,0,0,,,2013-02-16 15:55,2013-02-16 15:56,admin,admin
504497,6359,125468,13662,0,N,N,N,CP_Drtn,TT_Task,DT_FixedDUR2,TK_NotStart,DUKHCONP1AZ7ELRF4075,Installation of TV Dish Antenna,8178,8,8,184,0,732.8,732.8,184,0,0,0,,,,2014-08-20 08:00,2014-09-15 17:00,,2014-08-19 08:00,2014-09-14 17:00,2014-08-19 08:00,2014-09-14 17:00,2014-08-19 08:00,2014-09-14 17:00,2014-08-20 08:00,2014-09-15 17:00,,PT_Normal,,,,,fQHzVNJQToSOucvxYJfXLg,,,,N,0,0,,,2013-02-16 15:55,2013-02-23 09:03,admin,admin
504498,6359,125469,13662,0,N,N,N,CP_Drtn,TT_Task,DT_FixedDUR2,TK_NotStart,DUKHCONP1AZ7ELFF4035,Fixing of wall conduits & switch socket boxes,8178,88,0,200,0,1222.4,1222.4,200,0,0,0,,,,2014-05-08 08:00,2014-06-05 17:00,,2014-04-26 08:00,2014-05-24 17:00,2014-04-26 08:00,2014-05-24 17:00,2014-04-26 08:00,2014-05-24 17:00,2014-05-08 08:00,2014-06-05 17:00,,PT_Normal,,,,,K/jyP5p9TfeUyk3reqD73Q,,,,N,0,0,,,2013-02-16 15:55,2013-02-16 15:56,admin,admin
504499,6359,125469,13662,0,N,N,N,CP_Drtn,TT_Task,DT_FixedDUR2,TK_NotStart,DUKHCONP1AZ7ELFF4040,Cable tray & trunking installation,8178,232,16,160,0,1318.4,1318.4,160,0,0,0,,,,2014-06-10 08:00,2014-07-02 17:00,,2014-05-07 08:00,2014-05-29 17:00,2014-05-07 08:00,2014-05-29 17:00,2014-05-07 08:00,2014-05-29 17:00,2014-06-10 08:00,2014-07-02 17:00,,PT_Normal,,,,,hXI6dwrlSQKoSsEAgkTnIQ,,,,N,0,0,,,2013-02-16 15:55,2013-02-16 15:56,admin,admin
504500,6359,125469,13662,0,N,N,N,CP_Drtn,TT_Task,DT_FixedDUR2,TK_NotStart,DUKHCONP1AZ7ELFF4045,Installation of wiring & Main Cabling,8178,216,0,200,0,296,296,200,0,0,0,,,,2014-06-18 08:00,2014-07-16 17:00,,2014-05-18 08:00,2014-06-15 17:00,2014-05-18 08:00,2014-06-15 17:00,2014-05-18 08:00,2014-06-15 17:00,2014-06-18 08:00,2014-07-16 17:00,,PT_Normal,,,,,Egdfq2MzRS6gO8rdOda/TA,,,,N,0,0,,,2013-02-16 15:55,2013-02-16 15:56,admin,admin
504501,6359,125469,13662,0,N,N,N,CP_Drtn,TT_Task,DT_FixedDUR2,TK_NotStart,DUKHCONP1AZ7ELFF4060,"Installation  of DBS,MCCB Accessories.",8178,24,16,160,0,227.2,227.2,160,0,0,0,,,,2014-07-22 08:00,2014-08-17 17:00,,2014-07-19 08:00,2014-08-13 17:00,2014-07-19 08:00,2014-08-13 17:00,2014-07-19 08:00,2014-08-13 17:00,2014-07-22 08:00,2014-08-17 17:00,,PT_Normal,,,,,Td/SXTpdTOeZ+swyOxjGAw,,,,N,0,0,,,2013-02-16 15:55,2013-02-16 15:56,admin,admin
504502,6359,125469,13662,0,N,N,N,CP_Drtn,TT_Task,DT_FixedDUR2,TK_NotStart,DUKHCONP1AZ7ELFF4065,Installation of Lighting fixtures & Accessories,8178,8,0,200,0,1651.2,1651.2,200,0,0,0,,,,2014-07-28 08:00,2014-08-28 17:00,,2014-07-27 08:00,2014-08-27 17:00,2014-07-27 08:00,2014-08-27 17:00,2014-07-27 08:00,2014-08-27 17:00,2014-07-28 08:00,2014-08-28 17:00,,PT_Normal,,,,,MStqPkkoT9y5Ph8eyHP2jw,,,,N,0,0,,,2013-02-16 15:55,2013-02-16 15:56,admin,admin
504503,6359,125469,13662,0,N,N,N,CP_Drtn,TT_Task,DT_FixedDUR2,TK_NotStart,DUKHCONP1AZ7ELFF4055,Install. of CAMS & Fire Fighting Accessories,8178,8,0,200,0,1008,1008,200,0,0,0,,,,2014-07-16 08:00,2014-08-17 17:00,,2014-07-15 08:00,2014-08-16 17:00,2014-07-15 08:00,2014-08-16 17:00,2014-07-15 08:00,2014-08-16 17:00,2014-07-16 08:00,2014-08-17 17:00,,PT_Normal,,,,,V2T3lgEdSEWeMlVgsUEAhA,,,,N,0,0,,,2013-02-16 15:55,2013-02-16 15:56,admin,admin
504504,6359,125469,13662,0,N,N,N,CP_Drtn,TT_Task,DT_FixedDUR2,TK_NotStart,DUKHCONP1AZ7ELFF4050,Installation of Telephone System,8178,64,56,200,0,451.2,451.2,200,0,0,0,,,,2014-07-26 08:00,2014-08-26 17:00,,2014-07-16 08:00,2014-08-17 17:00,2014-07-16 08:00,2014-08-17 17:00,2014-07-16 08:00,2014-08-17 17:00,2014-07-26 08:00,2014-08-26 17:00,,PT_Normal,,,,,bto4A2IPTgm1jXw/n6/LQw,,,,N,0,0,,,2013-02-16 15:55,2013-02-16 15:56,admin,admin
504505,6359,125470,13662,0,N,N,N,CP_Drtn,TT_Task,DT_FixedDUR2,TK_NotStart,DUKHCONP1AZ7ELGF4000,Fixing of wall conduits & switch socket boxes,8178,216,0,200,0,1222.4,1222.4,200,0,0,0,,,,2014-04-15 08:00,2014-05-13 17:00,,2014-03-15 08:00,2014-04-12 17:00,2014-03-15 08:00,2014-04-12 17:00,2014-03-15 08:00,2014-04-12 17:00,2014-04-15 08:00,2014-05-13 17:00,,PT_Normal,,,,,XtRgscVzSOSY0L1SNA1qIw,,,,N,0,0,,,2013-02-16 15:55,2013-02-16 15:56,admin,admin
504506,6359,125470,13662,0,N,N,N,CP_Drtn,TT_Task,DT_FixedDUR2,TK_NotStart,DUKHCONP1AZ7ELGF4005,Cable tray & trunking installation,8178,360,0,160,0,1318.4,1318.4,160,0,0,0,,,,2014-05-18 08:00,2014-06-09 17:00,,2014-03-26 08:00,2014-04-17 17:00,2014-03-26 08:00,2014-04-17 17:00,2014-03-26 08:00,2014-04-17 17:00,2014-05-18 08:00,2014-06-09 17:00,,PT_Normal,,,,,ZNn3fQ9qQdubUbkx+Cdllw,,,,N,0,0,,,2013-02-16 15:55,2013-02-16 15:56,admin,admin
504507,6359,125470,13662,0,N,N,N,CP_Drtn,TT_Task,DT_FixedDUR2,TK_NotStart,DUKHCONP1AZ7ELGF4010,Installation of wiring & Main Cabling,8178,360,216,200,0,296,296,200,0,0,0,,,,2014-05-26 08:00,2014-06-23 17:00,,2014-04-03 08:00,2014-05-01 17:00,2014-04-03 08:00,2014-05-01 17:00,2014-04-03 08:00,2014-05-01 17:00,2014-05-26 08:00,2014-06-23 17:00,,PT_Normal,,,,,EaCT7YpgRxGYaqIQGo3lmw,,,,N,0,0,,,2013-02-16 15:55,2013-02-16 15:56,admin,admin
504508,6359,125470,13662,0,N,N,N,CP_Drtn,TT_Task,DT_FixedDUR2,TK_NotStart,DUKHCONP1AZ7ELGF4020,"Installation  of DBS,MCCB Accessories.",8178,144,0,160,0,227.2,227.2,160,0,0,0,,,,2014-07-02 08:00,2014-07-24 17:00,,2014-06-11 08:00,2014-07-03 17:00,2014-06-11 08:00,2014-07-03 17:00,2014-06-11 08:00,2014-07-03 17:00,2014-07-02 08:00,2014-07-24 17:00,,PT_Normal,,,,,g42ptd4xSGCa8t1ife+pEg,,,,N,0,0,,,2013-02-16 15:55,2013-02-16 15:56,admin,admin
504509,6359,125470,13662,0,N,N,N,CP_Drtn,TT_Task,DT_FixedDUR2,TK_NotStart,DUKHCONP1AZ7ELGF4025,Installation of Lighting fixtures & Accessories,8178,200,0,200,0,1651.2,1651.2,200,0,0,0,,,,2014-07-22 08:00,2014-08-23 17:00,,2014-06-23 08:00,2014-07-21 17:00,2014-06-23 08:00,2014-07-21 17:00,2014-06-23 08:00,2014-07-21 17:00,2014-07-22 08:00,2014-08-23 17:00,,PT_Normal,,,,,Ulr9bst4Rfiq1TyKaU6O6w,,,,N,0,0,,,2013-02-16 15:55,2013-02-16 15:56,admin,admin
504510,6359,125470,13662,0,N,N,N,CP_Drtn,TT_Task,DT_FixedDUR2,TK_NotStart,DUKHCONP1AZ7ELGF4015,Install. of CAMS & Fire Fighting Accessories,8178,240,0,200,0,1075.2,1075.2,200,0,0,0,,,,2014-07-10 08:00,2014-08-11 17:00,,2014-06-05 08:00,2014-07-03 17:00,2014-06-05 08:00,2014-07-03 17:00,2014-06-05 08:00,2014-07-03 17:00,2014-07-10 08:00,2014-08-11 17:00,,PT_Normal,,,,,NC17emfaQ4WoFoeK+HmghA,,,,N,0,0,,,2013-02-16 15:55,2013-02-16 15:56,admin,admin
504511,6359,125470,13662,0,N,N,N,CP_Drtn,TT_Task,DT_FixedDUR2,TK_NotStart,DUKHCONP1AZ7ELGF4030,Installation of Telephone System,8178,144,40,160,0,520,520,160,0,0,0,,,,2014-07-14 08:00,2014-08-09 17:00,,2014-06-23 08:00,2014-07-15 17:00,2014-06-23 08:00,2014-07-15 17:00,2014-06-23 08:00,2014-07-15 17:00,2014-07-14 08:00,2014-08-09 17:00,,PT_Normal,,,,,XAMopIC4S6eQhBPyaMV/eQ,,,,N,0,0,,,2013-02-16 15:55,2013-02-16 15:56,admin,admin
504512,6359,125472,13662,0,N,N,N,CP_Drtn,TT_Task,DT_FixedDUR2,TK_NotStart,DUKHCONP1AZ7ACFF4615,Installation AC Pipes,8178,216,40,160,0,977.6,977.6,160,0,0,0,,,,2014-06-29 08:00,2014-07-21 17:00,,2014-05-28 08:00,2014-06-19 17:00,2014-05-28 08:00,2014-06-19 17:00,2014-05-28 08:00,2014-06-19 17:00,2014-06-29 08:00,2014-07-21 17:00,,PT_Normal,,,,,781qziYbTyWbFZGRjlqOjQ,,,,N,0,0,,,2013-02-16 15:55,2013-02-16 15:56,admin,admin
504513,6359,125472,13662,0,N,N,N,CP_Drtn,TT_Task,DT_FixedDUR2,TK_NotStart,DUKHCONP1AZ7ACFF4620,Fixing of Ventilation Equipments,8178,16,0,200,0,113.6,113.6,200,0,0,0,,,,2014-07-17 08:00,2014-08-18 17:00,,2014-07-15 08:00,2014-08-16 17:00,2014-07-15 08:00,2014-08-16 17:00,2014-07-15 08:00,2014-08-16 17:00,2014-07-17 08:00,2014-08-18 17:00,,PT_Normal,,,,,dOGYT+juRJ6wD7UUZuJlkw,,,,N,0,0,,,2013-02-16 15:55,2013-02-16 15:56,admin,admin
504514,6359,125472,13662,0,N,N,N,CP_Drtn,TT_Task,DT_FixedDUR2,TK_NotStart,DUKHCONP1AZ7ACFF4625,Fixing of Split AC,8178,16,0,160,0,296,296,160,0,0,0,,,,2014-08-11 08:00,2014-09-02 17:00,,2014-08-09 08:00,2014-08-31 17:00,2014-08-09 08:00,2014-08-31 17:00,2014-08-09 08:00,2014-08-31 17:00,2014-08-11 08:00,2014-09-02 17:00,,PT_Normal,,,,,+53ZBZ8ATMePDPksYxR/Fw,,,,N,0,0,,,2013-02-16 15:55,2013-02-16 15:56,admin,admin
504515,6359,125473,13662,0,N,N,N,CP_Drtn,TT_Task,DT_FixedDUR2,TK_NotStart,DUKHCONP1AZ7ACRF4630,Installation of Refrigerant Pipes,8178,272,0,200,0,409.6,409.6,200,0,0,0,,,,2014-08-12 08:00,2014-09-09 17:00,,2014-06-30 08:00,2014-07-28 17:00,2014-06-30 08:00,2014-07-28 17:00,2014-06-30 08:00,2014-07-28 17:00,2014-08-12 08:00,2014-09-09 17:00,,PT_Normal,,,,,Kds4YoyjQpWsZy/3DlTVUw,,,,N,0,0,,,2013-02-16 15:55,2013-02-16 15:56,admin,admin
504516,6359,125473,13662,0,N,N,N,CP_Drtn,TT_Task,DT_FixedDUR2,TK_NotStart,DUKHCONP1AZ7ACRF4635,Installation of Condensing Unit,8178,24,0,200,0,568,568,200,0,0,0,,,,2014-08-18 08:00,2014-09-15 17:00,,2014-08-14 08:00,2014-09-11 17:00,2014-08-14 08:00,2014-09-11 17:00,2014-08-14 08:00,2014-09-11 17:00,2014-08-18 08:00,2014-09-15 17:00,,PT_Normal,,,,,YBIv/RCRQKWARNpixNpHgw,,,,N,0,0,,,2013-02-16 15:55,2013-02-16 15:56,admin,admin
504517,6359,125474,13662,0,N,N,N,CP_Drtn,TT_Task,DT_FixedDUR2,TK_NotStart,DUKHCONP1AZ7ACGF4600,Installation AC Pipes,8178,392,40,160,0,977.6,977.6,160,0,0,0,,,,2014-06-10 08:00,2014-07-02 17:00,,2014-04-14 08:00,2014-05-06 17:00,2014-04-14 08:00,2014-05-06 17:00,2014-04-14 08:00,2014-05-06 17:00,2014-06-10 08:00,2014-07-02 17:00,,PT_Normal,,,,,pTqkpC/cTiW0/apytbGC3Q,,,,N,0,0,,,2013-02-16 15:55,2013-02-16 15:56,admin,admin
504518,6359,125474,13662,0,N,N,N,CP_Drtn,TT_Task,DT_FixedDUR2,TK_NotStart,DUKHCONP1AZ7ACGF4605,Fixing of Ventilation Equipments,8178,256,0,200,0,182.4,182.4,200,0,0,0,,,,2014-07-13 08:00,2014-08-13 17:00,,2014-06-05 08:00,2014-07-03 17:00,2014-06-05 08:00,2014-07-03 17:00,2014-06-05 08:00,2014-07-03 17:00,2014-07-13 08:00,2014-08-13 17:00,,PT_Normal,,,,,qwpYO5WkSymuNHYnAa4ykw,,,,N,0,0,,,2013-02-16 15:55,2013-02-16 15:56,admin,admin
504519,6359,125474,13662,0,N,N,N,CP_Drtn,TT_Task,DT_FixedDUR2,TK_NotStart,DUKHCONP1AZ7ACGF4610,Fixing of Split AC,8178,256,40,160,0,296,296,160,0,0,0,,,,2014-08-06 08:00,2014-08-28 17:00,,2014-06-26 08:00,2014-07-19 17:00,2014-06-26 08:00,2014-07-19 17:00,2014-06-26 08:00,2014-07-19 17:00,2014-08-06 08:00,2014-08-28 17:00,,PT_Normal,,,,,lB/Zf+0LRWuE1L2PZFGE7A,,,,N,0,0,,,2013-02-16 15:55,2013-02-16 15:56,admin,admin
504520,6359,125477,13662,0,N,N,N,CP_Drtn,TT_Task,DT_FixedDUR2,TK_NotStart,DUKHCONP1AMKMSEX5020,Construction Entrance Ramp,8164,128,0,56,0,86,86,56,0,0,0,,,,2013-12-28 08:00,2014-01-04 17:00,,2013-12-08 08:00,2013-12-15 17:00,2013-12-08 08:00,2013-12-15 17:00,2013-12-08 08:00,2013-12-15 17:00,2013-12-28 08:00,2014-01-04 17:00,,PT_Normal,,,,,+FQnSh8jT5CqEACXpAnBqA,,,,N,0,0,,,2013-02-16 15:55,2013-02-16 15:56,admin,admin
504521,6359,125477,13662,0,N,N,N,CP_Drtn,TT_Task,DT_FixedDUR2,TK_NotStart,DUKHCONP1AMKMSEX5025,SS.Handrails and Balustrades,8178,144,0,40,0,14,14,40,0,0,0,,,,2014-01-07 08:00,2014-01-12 17:00,,2013-12-16 08:00,2013-12-22 17:00,2013-12-16 08:00,2013-12-22 17:00,2013-12-16 08:00,2013-12-22 17:00,2014-01-07 08:00,2014-01-12 17:00,,PT_Normal,,,,,P7L2hbqkQp6EGdVVhQGL2A,,,,N,0,0,,,2013-02-16 15:55,2013-02-16 15:56,admin,admin
504522,6359,125477,13662,0,N,N,N,CP_Drtn,TT_Task,DT_FixedDUR2,TK_NotStart,DUKHCONP1AMKMSEX5015,Construction of grease Trap,8178,72,0,56,0,14,14,56,0,0,0,,,,2013-12-22 08:00,2013-12-29 17:00,,2013-12-10 08:00,2013-12-17 17:00,2013-12-10 08:00,2013-12-17 17:00,2013-12-10 08:00,2013-12-17 17:00,2013-12-22 08:00,2013-12-29 17:00,,PT_Normal,,,,,onJbIQKtS5yYC68UD5xciA,,,,N,0,0,,,2013-02-16 15:55,2013-02-16 15:56,admin,admin
504523,6359,125477,13662,0,N,N,N,CP_Drtn,TT_Task,DT_FixedDUR2,TK_NotStart,DUKHCONP1AMKMSEX5000,Construction of Manholes,8172,72,0,56,0,66,66,56,0,0,0,,,,2013-12-04 08:00,2013-12-11 17:00,,2013-11-24 08:00,2013-12-01 17:00,2013-11-24 08:00,2013-12-01 17:00,2013-11-24 08:00,2013-12-01 17:00,2013-12-04 08:00,2013-12-11 17:00,,PT_Normal,,,,,0Oos3dGIS0Gm40gUD2+9SQ,,,,N,0,0,,,2013-02-16 15:55,2013-02-16 15:56,admin,admin
504524,6359,125477,13662,0,N,N,N,CP_Drtn,TT_Task,DT_FixedDUR2,TK_NotStart,DUKHCONP1AMKMSEX5005,"Construction  of Soak pit, Chambers",8172,72,0,56,0,22,22,56,0,0,0,,,,2013-12-12 08:00,2013-12-21 17:00,,2013-12-02 08:00,2013-12-09 17:00,2013-12-02 08:00,2013-12-09 17:00,2013-12-02 08:00,2013-12-09 17:00,2013-12-12 08:00,2013-12-21 17:00,,PT_Normal,,,,,iyIUY1TKQ/G3zXjHdOkgsQ,,,,N,0,0,,,2013-02-16 15:55,2013-02-16 15:56,admin,admin
504525,6359,125478,13662,0,N,N,N,CP_Drtn,TT_Task,DT_FixedDUR2,TK_NotStart,DUKHCONP1AMKWEEX5030,Excavation,8177,72,0,32,0,14,14,32,8,0,8,,,,2013-12-30 08:00,2014-01-02 17:00,,2013-12-19 08:00,2013-12-23 17:00,2013-12-19 08:00,2013-12-23 17:00,2013-12-19 08:00,2013-12-23 17:00,2013-12-30 08:00,2014-01-02 17:00,,PT_Normal,,,,,qvAWBaklSDSUUg8DTQxjTg,,,,N,0,0,,,2013-02-16 15:55,2013-02-16 15:56,admin,admin
504526,6359,125478,13662,0,N,N,N,CP_Drtn,TT_Task,DT_FixedDUR2,TK_NotStart,DUKHCONP1AMKWEEX5035,Construction of Raft,8165,72,0,56,0,112,112,56,0,0,0,,,,2014-01-04 08:00,2014-01-11 17:00,,2013-12-24 08:00,2013-12-31 17:00,2013-12-24 08:00,2013-12-31 17:00,2013-12-24 08:00,2013-12-31 17:00,2014-01-04 08:00,2014-01-11 17:00,,PT_Normal,,,,,9rIstxRGQvy0BClEUyaEHA,,,,N,0,0,,,2013-02-16 15:55,2013-02-16 15:56,admin,admin
504527,6359,125478,13662,0,N,N,N,CP_Drtn,TT_Task,DT_FixedDUR2,TK_NotStart,DUKHCONP1AMKWEEX5040,Block works & Plastering,8168,72,0,56,0,64,64,56,0,0,0,,,,2014-01-12 08:00,2014-01-19 17:00,,2014-01-01 08:00,2014-01-08 17:00,2014-01-01 08:00,2014-01-08 17:00,2014-01-01 08:00,2014-01-08 17:00,2014-01-12 08:00,2014-01-19 17:00,,PT_Normal,,,,,LsjpqSPmR2OjIco8wg9dIg,,,,N,0,0,,,2013-02-16 15:55,2013-02-16 15:56,admin,admin
504528,6359,125478,13662,0,N,N,N,CP_Drtn,TT_Task,DT_FixedDUR2,TK_NotStart,DUKHCONP1AMKWEEX5045,Flooring & Painting,8178,72,0,56,0,36,36,56,0,0,0,,,,2014-01-20 08:00,2014-01-27 17:00,,2014-01-09 08:00,2014-01-16 17:00,2014-01-09 08:00,2014-01-16 17:00,2014-01-09 08:00,2014-01-16 17:00,2014-01-20 08:00,2014-01-27 17:00,,PT_Normal,,,,,JMMGP/boSiefaVEQD8Vn+g,,,,N,0,0,,,2013-02-16 15:55,2013-02-16 15:56,admin,admin
504529,6359,125478,13662,0,N,N,N,CP_Drtn,TT_Task,DT_FixedDUR2,TK_NotStart,DUKHCONP1AMKWEEX5050,Installation of Steel Gate,8178,72,0,40,0,14,14,40,0,0,0,,,,2014-01-28 08:00,2014-02-02 17:00,,2014-01-18 08:00,2014-01-22 17:00,2014-01-18 08:00,2014-01-22 17:00,2014-01-18 08:00,2014-01-22 17:00,2014-01-28 08:00,2014-02-02 17:00,,PT_Normal,,,,,9Yy158YUT36DxV77mxHKoA,,,,N,0,0,,,2013-02-16 15:55,2013-02-16 15:56,admin,admin
504530,6359,125478,13662,0,N,N,N,CP_Drtn,TT_Task,DT_FixedDUR2,TK_NotStart,DUKHCONP1AMKWEEX5060,Structural steel &  SS Shed cover installation,8178,72,0,56,0,42,42,56,0,0,0,,,,2014-02-03 08:00,2014-02-10 17:00,,2014-01-23 08:00,2014-01-30 17:00,2014-01-23 08:00,2014-01-30 17:00,2014-01-23 08:00,2014-01-30 17:00,2014-02-03 08:00,2014-02-10 17:00,,PT_Normal,,,,,fv3GHAunROaQNggmZ3oLPw,,,,N,0,0,,,2013-02-16 15:55,2013-02-16 15:56,admin,admin
504531,6359,125478,13662,0,N,N,N,CP_Drtn,TT_Task,DT_FixedDUR2,TK_NotStart,DUKHCONP1AMKWEEX5065,"Install. of Water Tank,Chiller,Pump & Meter",8178,72,0,56,0,34,34,56,0,0,0,,,,2014-02-12 08:00,2014-02-19 17:00,,2014-02-01 08:00,2014-02-08 17:00,2014-02-01 08:00,2014-02-08 17:00,2014-02-01 08:00,2014-02-08 17:00,2014-02-12 08:00,2014-02-19 17:00,,PT_Normal,,,,,znEpHbZET2yDx0sdWwV7Gw,,,,N,0,0,,,2013-02-16 15:55,2013-02-16 15:56,admin,admin
504532,6359,125479,13662,0,N,N,N,CP_Drtn,TT_Task,DT_FixedDUR2,TK_NotStart,DUKHCONP1AMKSLEX5105,Laying of Grass/ green area,8178,168,0,56,0,350,350,56,0,0,0,,,,2014-02-03 08:00,2014-02-10 17:00,,2014-01-09 08:00,2014-01-16 17:00,2014-01-09 08:00,2014-01-16 17:00,2014-01-09 08:00,2014-01-16 17:00,2014-02-03 08:00,2014-02-10 17:00,,PT_Normal,,,,,C28+US7lSpu5yGj3IAlC6A,,,,N,0,0,,,2013-02-16 15:55,2013-02-16 15:56,admin,admin
504533,6359,125479,13662,0,N,N,N,CP_Drtn,TT_Task,DT_FixedDUR2,TK_NotStart,DUKHCONP1AMKSLEX5110,Laying of Palm tree,8178,168,40,56,0,28,28,56,0,0,0,,,,2014-02-12 08:00,2014-02-19 17:00,,2014-01-18 08:00,2014-01-25 17:00,2014-01-18 08:00,2014-01-25 17:00,2014-01-18 08:00,2014-01-25 17:00,2014-02-12 08:00,2014-02-19 17:00,,PT_Normal,,,,,V9cSCtiCQ4Kz5D2oByX5iA,,,,N,0,0,,,2013-02-16 15:55,2013-02-16 15:56,admin,admin
504534,6359,125480,13662,0,N,N,N,CP_Drtn,TT_Task,DT_FixedDUR2,TK_NotStart,DUKHCONP1AMKHDEX5090,kerb works,8173,144,0,40,0,50,50,40,0,0,0,,,,2014-01-13 08:00,2014-01-18 17:00,,2013-12-23 08:00,2013-12-28 17:00,2013-12-23 08:00,2013-12-28 17:00,2013-12-23 08:00,2013-12-28 17:00,2014-01-13 08:00,2014-01-18 17:00,,PT_Normal,,,,,8XY6nw9rR/6XLaf931ghlg,,,,N,0,0,,,2013-02-16 15:55,2013-02-16 15:56,admin,admin
504535,6359,125480,13662,0,N,N,N,CP_Drtn,TT_Task,DT_FixedDUR2,TK_NotStart,DUKHCONP1AMKHDEX5095,Cobble Stone Works,8170,168,0,40,0,28,28,40,0,0,0,,,,2014-01-22 08:00,2014-01-27 17:00,,2013-12-29 08:00,2014-01-02 17:00,2013-12-29 08:00,2014-01-02 17:00,2013-12-29 08:00,2014-01-02 17:00,2014-01-22 08:00,2014-01-27 17:00,,PT_Normal,,,,,f2cHt3+ZRwqm8iv8A5ofTw,,,,N,0,0,,,2013-02-16 15:55,2013-02-16 15:56,admin,admin
504536,6359,125480,13662,0,N,N,N,CP_Drtn,TT_Task,DT_FixedDUR2,TK_NotStart,DUKHCONP1AMKHDEX5100,Interlock works,8174,168,0,40,0,36,36,40,0,0,0,,,,2014-01-28 08:00,2014-02-02 17:00,,2014-01-04 08:00,2014-01-08 17:00,2014-01-04 08:00,2014-01-08 17:00,2014-01-04 08:00,2014-01-08 17:00,2014-01-28 08:00,2014-02-02 17:00,,PT_Normal,,,,,rK/fHPG9T1OAA+TZRAFjjg,,,,N,0,0,,,2013-02-16 15:55,2013-02-16 15:56,admin,admin
504537,6359,125483,13662,0,N,N,N,CP_Drtn,TT_Task,DT_FixedDUR2,TK_NotStart,DUKHCONP1AMKAREL3665,External Plastering,8169,128,0,80,0,1784.75,1784.75,80,0,0,0,,,,2013-12-07 08:00,2013-12-17 17:00,,2013-11-18 08:00,2013-11-28 17:00,2013-11-18 08:00,2013-11-28 17:00,2013-11-18 08:00,2013-11-28 17:00,2013-12-07 08:00,2013-12-17 17:00,,PT_Normal,,,,,0mST/9CzQ9efFJBAh26spg,,,,N,0,0,,,2013-02-16 15:55,2013-02-16 15:56,admin,admin
504538,6359,125483,13662,0,N,N,N,CP_Drtn,TT_Task,DT_FixedDUR2,TK_NotStart,DUKHCONP1AMKAREL3670,External stone cladding works,8170,128,0,56,0,123.75,123.75,56,0,0,0,,,,2013-12-19 08:00,2013-12-26 17:00,,2013-11-30 08:00,2013-12-07 17:00,2013-11-30 08:00,2013-12-07 17:00,2013-11-30 08:00,2013-12-07 17:00,2013-12-19 08:00,2013-12-26 17:00,,PT_Normal,,,,,EQZaGybYSvKNgBwuINA+rQ,,,,N,0,0,,,2013-02-16 15:55,2013-02-16 15:56,admin,admin
504539,6359,125483,13662,0,N,N,N,CP_Drtn,TT_Task,DT_FixedDUR2,TK_NotStart,DUKHCONP1AMKAREL3680,External Painting,8178,480,88,56,0,476,476,56,0,0,0,,,,2014-02-18 08:00,2014-02-25 17:00,,2013-12-08 08:00,2013-12-15 17:00,2013-12-08 08:00,2013-12-15 17:00,2013-12-08 08:00,2013-12-15 17:00,2014-02-18 08:00,2014-02-25 17:00,,PT_Normal,,,,,xX0UoP4zS2GBVnhtM0/2PQ,,,,N,0,0,,,2013-02-16 15:55,2013-02-16 15:56,admin,admin
504540,6359,125484,13662,0,N,N,N,CP_Drtn,TT_Task,DT_FixedDUR2,TK_NotStart,DUKHCONP1AMKARRF3650,Install. of Gal. Frame & Aluminum Slat Screen,8178,440,0,40,0,131.25,131.25,40,0,0,0,,,,2014-01-22 08:00,2014-01-27 17:00,,2013-11-18 08:00,2013-11-23 17:00,2013-11-18 08:00,2013-11-23 17:00,2013-11-18 08:00,2013-11-23 17:00,2014-01-22 08:00,2014-01-27 17:00,,PT_Normal,,,,,z+UBtUvySuOlCF01ai1t1w,,,,N,0,0,,,2013-02-16 15:55,2013-02-16 15:56,admin,admin
504541,6359,125484,13662,0,N,N,N,CP_Drtn,TT_Task,DT_FixedDUR2,TK_NotStart,DUKHCONP1AMKARRF3660,Installation of Access Ladder,8178,584,376,48,0,22,22,48,0,0,0,,,,2014-02-25 08:00,2014-03-03 17:00,,2013-11-30 08:00,2013-12-05 17:00,2013-11-30 08:00,2013-12-05 17:00,2013-11-30 08:00,2013-12-05 17:00,2014-02-25 08:00,2014-03-03 17:00,,PT_Normal,,,,,yZOU5qqVQfW8BXDc/Rlnag,,,,N,0,0,,,2013-02-16 15:55,2013-02-16 15:56,admin,admin
504542,6359,125484,13662,0,N,N,N,CP_Drtn,TT_Task,DT_FixedDUR2,TK_NotStart,DUKHCONP1AMKARRF3630,Leveling Screed for Waterproofing,8164,72,0,16,0,100,100,16,0,0,0,,,,2013-11-14 08:00,2013-11-16 17:00,,2013-11-04 08:00,2013-11-05 17:00,2013-11-04 08:00,2013-11-05 17:00,2013-11-04 08:00,2013-11-05 17:00,2013-11-14 08:00,2013-11-16 17:00,,PT_Normal,,,,,/u0iTJE3TvKkXaeJttvzZw,,,,N,0,0,,,2013-02-16 15:55,2013-02-16 15:56,admin,admin
504543,6359,125484,13662,0,N,N,N,CP_Drtn,TT_Task,DT_FixedDUR2,TK_NotStart,DUKHCONP1AMKARRF3635,Laying of Waterproofing Membrane,8178,72,0,32,0,143,143,32,0,0,0,,,,2013-11-17 08:00,2013-11-20 17:00,,2013-11-06 08:00,2013-11-10 17:00,2013-11-06 08:00,2013-11-10 17:00,2013-11-06 08:00,2013-11-10 17:00,2013-11-17 08:00,2013-11-20 17:00,,PT_Normal,,,,,x6OrzkXqT+OqE+mp7p5CZA,,,,N,0,0,,,2013-02-16 15:55,2013-02-16 15:56,admin,admin
504544,6359,125484,13662,0,N,N,N,CP_Drtn,TT_Task,DT_FixedDUR2,TK_NotStart,DUKHCONP1AMKARRF3640,Installation of Insulation & Protection,8178,72,0,32,0,176,176,32,0,0,0,,,,2013-11-21 08:00,2013-11-25 17:00,,2013-11-11 08:00,2013-11-14 17:00,2013-11-11 08:00,2013-11-14 17:00,2013-11-11 08:00,2013-11-14 17:00,2013-11-21 08:00,2013-11-25 17:00,,PT_Normal,,,,,Q6Hm4SdNQ8CV53N0mnpwfg,,,,N,0,0,,,2013-02-16 15:55,2013-02-16 15:56,admin,admin
504545,6359,125484,13662,0,N,N,N,CP_Drtn,TT_Task,DT_FixedDUR2,TK_NotStart,DUKHCONP1AMKARRF3645,Lime Stone Chips & Paving slab Installation,8170,72,0,16,0,87,87,16,0,0,0,,,,2013-11-26 08:00,2013-11-27 17:00,,2013-11-16 08:00,2013-11-17 17:00,2013-11-16 08:00,2013-11-17 17:00,2013-11-16 08:00,2013-11-17 17:00,2013-11-26 08:00,2013-11-27 17:00,,PT_Normal,,,,,oKNo3ZqyQq2M8KGAcGUO6w,,,,N,0,0,,,2013-02-16 15:55,2013-02-16 15:56,admin,admin
504546,6359,125484,13662,0,N,N,N,CP_Drtn,TT_Task,DT_FixedDUR2,TK_NotStart,DUKHCONP1AMKARRF3655,Installation of Pumps Protection cabinets,8178,440,0,40,0,77,77,40,0,0,0,,,,2014-01-28 08:00,2014-02-02 17:00,,2013-11-24 08:00,2013-11-28 17:00,2013-11-24 08:00,2013-11-28 17:00,2013-11-24 08:00,2013-11-28 17:00,2014-01-28 08:00,2014-02-02 17:00,,PT_Normal,,,,,kl3YhVJ6SNK88A4k38cOdg,,,,N,0,0,,,2013-02-16 15:55,2013-02-16 15:56,admin,admin
504547,6359,125486,13662,0,N,N,N,CP_Drtn,TT_Task,DT_FixedDUR2,TK_NotStart,DUKHCONP1AMKARGF3060,Gypsum board false ceiling,8178,360,0,56,0,163.13,163.13,56,0,0,0,,,,2013-12-15 08:00,2013-12-23 17:00,,2013-10-23 08:00,2013-10-30 17:00,2013-10-23 08:00,2013-10-30 17:00,2013-10-23 08:00,2013-10-30 17:00,2013-12-15 08:00,2013-12-23 17:00,,PT_Normal,,,,,IxSEDTZuTlqsFfhpylFvmA,,,,N,0,0,,,2013-02-16 15:55,2013-02-16 15:56,admin,admin
504548,6359,125486,13662,0,N,N,N,CP_Drtn,TT_Task,DT_FixedDUR2,TK_NotStart,DUKHCONP1AMKARGF3065,Wooden door & PVC Door,8178,440,0,40,0,38.5,38.5,40,0,0,0,,,,2014-01-05 08:00,2014-01-09 17:00,,2013-10-31 08:00,2013-11-05 17:00,2013-10-31 08:00,2013-11-05 17:00,2013-10-31 08:00,2013-11-05 17:00,2014-01-05 08:00,2014-01-09 17:00,,PT_Normal,,,,,/iYPhz2hSQKZeDNupCL4Rw,,,,N,0,0,,,2013-02-16 15:55,2013-02-16 15:56,admin,admin
504549,6359,125486,13662,0,N,N,N,CP_Drtn,TT_Task,DT_FixedDUR2,TK_NotStart,DUKHCONP1AMKARGF3070,Aluminum doors,8178,440,0,40,0,22,22,40,0,0,0,,,,2014-01-11 08:00,2014-01-15 17:00,,2013-11-06 08:00,2013-11-11 17:00,2013-11-06 08:00,2013-11-11 17:00,2013-11-06 08:00,2013-11-11 17:00,2014-01-11 08:00,2014-01-15 17:00,,PT_Normal,,,,,CsmtroWfQ6WmgM2p0r7zsA,,,,N,0,0,,,2013-02-16 15:55,2013-02-16 15:56,admin,admin
504550,6359,125486,13662,0,N,N,N,CP_Drtn,TT_Task,DT_FixedDUR2,TK_NotStart,DUKHCONP1AMKARGF3080,Aluminum windows,8178,568,96,40,0,19.25,19.25,40,0,0,0,,,,2014-02-04 08:00,2014-02-09 17:00,,2013-11-12 08:00,2013-11-17 17:00,2013-11-12 08:00,2013-11-17 17:00,2013-11-12 08:00,2013-11-17 17:00,2014-02-04 08:00,2014-02-09 17:00,,PT_Normal,,,,,Wf1vibCvSqedQERDqbZKhg,,,,N,0,0,,,2013-02-16 15:55,2013-02-16 15:56,admin,admin
504551,6359,125486,13662,0,N,N,N,CP_Drtn,TT_Task,DT_FixedDUR2,TK_NotStart,DUKHCONP1AMKARGF3075,Carpentry & Joinery Works,8178,440,0,80,0,71.5,71.5,80,0,0,0,,,,2014-01-16 08:00,2014-01-27 17:00,,2013-11-12 08:00,2013-11-23 17:00,2013-11-12 08:00,2013-11-23 17:00,2013-11-12 08:00,2013-11-23 17:00,2014-01-16 08:00,2014-01-27 17:00,,PT_Normal,,,,,3bawH5vAS+m4MrRF3W4OaA,,,,N,0,0,,,2013-02-16 15:55,2013-02-16 15:56,admin,admin
504552,6359,125486,13662,0,N,N,N,CP_Drtn,TT_Task,DT_FixedDUR2,TK_NotStart,DUKHCONP1AMKARGF3090,Installation of Granite Counter Top,8171,472,0,56,0,22,22,56,0,0,0,,,,2014-02-02 08:00,2014-02-09 17:00,,2013-11-24 08:00,2013-12-01 17:00,2013-11-24 08:00,2013-12-01 17:00,2013-11-24 08:00,2013-12-01 17:00,2014-02-02 08:00,2014-02-09 17:00,,PT_Normal,,,,,RZAjdS+gRXS6rIkZ/V41GA,,,,N,0,0,,,2013-02-16 15:55,2013-02-16 15:56,admin,admin
504553,6359,125486,13662,0,N,N,N,CP_Drtn,TT_Task,DT_FixedDUR2,TK_NotStart,DUKHCONP1AMKARGF3085,S.S.Handrails & Balustrade,8178,480,0,56,0,34.75,34.75,56,0,0,0,,,,2014-02-03 08:00,2014-02-10 17:00,,2013-11-24 08:00,2013-12-01 17:00,2013-11-24 08:00,2013-12-01 17:00,2013-11-24 08:00,2013-12-01 17:00,2014-02-03 08:00,2014-02-10 17:00,,PT_Normal,,,,,77GI2ZC+QW6XJ2wO+eru2Q,,,,N,0,0,,,2013-02-16 15:55,2013-02-16 15:56,admin,admin
504554,6359,125486,13662,0,N,N,N,CP_Drtn,TT_Task,DT_FixedDUR2,TK_NotStart,DUKHCONP1AMKARGF3095,Final Painting,8178,480,312,56,0,679.25,679.25,56,0,0,0,,,,2014-02-12 08:00,2014-02-19 17:00,,2013-12-02 08:00,2013-12-09 17:00,2013-12-02 08:00,2013-12-09 17:00,2013-12-02 08:00,2013-12-09 17:00,2014-02-12 08:00,2014-02-19 17:00,,PT_Normal,,,,,plnl8YU0T7aCY5xEfzeumA,,,,N,0,0,,,2013-02-16 15:55,2013-02-16 15:56,admin,admin
504555,6359,125486,13662,0,N,N,N,CP_Drtn,TT_Task,DT_FixedDUR2,TK_NotStart,DUKHCONP1AMKARGF3035,Slate Tile Flooring & Skirting,8170,368,184,40,0,95.5,95.5,40,0,0,0,,,,2013-12-14 08:00,2013-12-19 17:00,,2013-10-21 08:00,2013-10-26 17:00,2013-10-21 08:00,2013-10-26 17:00,2013-10-21 08:00,2013-10-26 17:00,2013-12-14 08:00,2013-12-19 17:00,,PT_Normal,,,,,fkXty1mNQL26HKZkLnRtYg,,,,N,0,0,,,2013-02-16 15:55,2013-02-16 15:56,admin,admin
504556,6359,125486,13662,0,N,N,N,CP_Drtn,TT_Task,DT_FixedDUR2,TK_NotStart,DUKHCONP1AMKARGF3000,Block work,8168,144,0,48,0,1218.75,1218.75,48,0,0,0,,,,2013-09-24 08:00,2013-09-30 17:00,,2013-09-03 08:00,2013-09-09 17:00,2013-09-03 08:00,2013-09-09 17:00,2013-09-03 08:00,2013-09-09 17:00,2013-09-24 08:00,2013-09-30 17:00,,PT_Normal,,,,,3eteeumYQEa/GvbMkT+IMQ,,,,N,0,0,,,2013-02-16 15:55,2013-02-16 15:56,admin,admin
504557,6359,125486,13662,0,N,N,N,CP_Drtn,TT_Task,DT_FixedDUR2,TK_NotStart,DUKHCONP1AMKARGF3005,Plastering work,8169,200,0,56,0,1706.25,1706.25,56,0,0,0,,,,2013-10-15 08:00,2013-10-24 17:00,,2013-09-16 08:00,2013-09-23 17:00,2013-09-16 08:00,2013-09-23 17:00,2013-09-16 08:00,2013-09-23 17:00,2013-10-15 08:00,2013-10-24 17:00,,PT_Normal,,,,,LbW43manQpKavcLv1KsPfw,,,,N,0,0,,,2013-02-16 15:55,2013-02-16 15:56,admin,admin
504558,6359,125486,13662,0,N,N,N,CP_Drtn,TT_Task,DT_FixedDUR2,TK_NotStart,DUKHCONP1AMKARGF3010,Flooring screed,8164,272,0,56,0,198,198,56,0,0,0,,,,2013-10-31 08:00,2013-11-07 17:00,,2013-09-19 08:00,2013-09-26 17:00,2013-09-19 08:00,2013-09-26 17:00,2013-09-19 08:00,2013-09-26 17:00,2013-10-31 08:00,2013-11-07 17:00,,PT_Normal,,,,,VtsvpOHSRPyoVSuZizXOwg,,,,N,0,0,,,2013-02-16 15:55,2013-02-16 15:56,admin,admin
504559,6359,125486,13662,0,N,N,N,CP_Drtn,TT_Task,DT_FixedDUR2,TK_NotStart,DUKHCONP1AMKARGF3015,Wet area waterproofing & Protection Screed,8178,272,0,40,0,32,32,40,0,0,0,,,,2013-11-04 08:00,2013-11-09 17:00,,2013-09-23 08:00,2013-09-28 17:00,2013-09-23 08:00,2013-09-28 17:00,2013-09-23 08:00,2013-09-28 17:00,2013-11-04 08:00,2013-11-09 17:00,,PT_Normal,,,,,ASjkITy4RxWP27izk37nSA,,,,N,0,0,,,2013-02-16 15:55,2013-02-16 15:56,admin,admin
504560,6359,125486,13662,0,N,N,N,CP_Drtn,TT_Task,DT_FixedDUR2,TK_NotStart,DUKHCONP1AMKARGF3030,Paint First coat,8178,328,32,40,0,679.25,679.25,40,0,0,0,,,,2013-11-21 08:00,2013-11-26 17:00,,2013-10-02 08:00,2013-10-07 17:00,2013-10-02 08:00,2013-10-07 17:00,2013-10-02 08:00,2013-10-07 17:00,2013-11-21 08:00,2013-11-26 17:00,,PT_Normal,,,,,Ll60+wGrQZef/LZltZnJRQ,,,,N,0,0,,,2013-02-16 15:55,2013-02-16 15:56,admin,admin
504561,6359,125486,13662,0,N,N,N,CP_Drtn,TT_Task,DT_FixedDUR2,TK_NotStart,DUKHCONP1AMKARGF3020,Ceramic Wall Tiling,8170,272,0,48,0,553.5,553.5,48,0,0,0,,,,2013-11-10 08:00,2013-11-16 17:00,,2013-09-29 08:00,2013-10-05 17:00,2013-09-29 08:00,2013-10-05 17:00,2013-09-29 08:00,2013-10-05 17:00,2013-11-10 08:00,2013-11-16 17:00,,PT_Normal,,,,,SEjuaZG7Tom02t+LYRWxrA,,,,N,0,0,,,2013-02-16 15:55,2013-02-16 15:56,admin,admin
504562,6359,125486,13662,0,N,N,N,CP_Drtn,TT_Task,DT_FixedDUR2,TK_NotStart,DUKHCONP1AMKARGF3025,Porcelain Tile flooring,8170,272,0,48,0,218.75,218.75,48,0,0,0,,,,2013-11-17 08:00,2013-11-23 17:00,,2013-10-06 08:00,2013-10-12 17:00,2013-10-06 08:00,2013-10-12 17:00,2013-10-06 08:00,2013-10-12 17:00,2013-11-17 08:00,2013-11-23 17:00,,PT_Normal,,,,,IbgQzSSzS3+oJ/6UOxfNdA,,,,N,0,0,,,2013-02-16 15:55,2013-02-16 15:56,admin,admin
504563,6359,125486,13662,0,N,N,N,CP_Drtn,TT_Task,DT_FixedDUR2,TK_NotStart,DUKHCONP1AMKARGF3040,Cobble Tile flooring,8170,368,0,40,0,93.75,93.75,40,0,0,0,,,,2013-12-08 08:00,2013-12-12 17:00,,2013-10-13 08:00,2013-10-20 17:00,2013-10-13 08:00,2013-10-20 17:00,2013-10-13 08:00,2013-10-20 17:00,2013-12-08 08:00,2013-12-12 17:00,,PT_Normal,,,,,8S94KK9uRHuyGV5bGKjSLA,,,,N,0,0,,,2013-02-16 15:55,2013-02-16 15:56,admin,admin
504564,6359,125486,13662,0,N,N,N,CP_Drtn,TT_Task,DT_FixedDUR2,TK_NotStart,DUKHCONP1AMKARGF3050,Granite - Stair case flooring & Skirting,8171,440,16,56,0,106.25,106.25,56,0,0,0,,,,2013-12-25 08:00,2014-01-01 17:00,,2013-10-21 08:00,2013-10-28 17:00,2013-10-21 08:00,2013-10-28 17:00,2013-10-21 08:00,2013-10-28 17:00,2013-12-25 08:00,2014-01-01 17:00,,PT_Normal,,,,,Yo8rlcObTHOIPw8hb+zX2Q,,,,N,0,0,,,2013-02-16 15:55,2013-02-16 15:56,admin,admin
504565,6359,125486,13662,0,N,N,N,CP_Drtn,TT_Task,DT_FixedDUR2,TK_NotStart,DUKHCONP1AMKARGF3045,Fixing of Suspension systems,8178,336,0,56,0,181.88,181.88,56,0,0,0,,,,2013-12-03 08:00,2013-12-10 17:00,,2013-10-13 08:00,2013-10-22 17:00,2013-10-13 08:00,2013-10-22 17:00,2013-10-13 08:00,2013-10-22 17:00,2013-12-03 08:00,2013-12-10 17:00,,PT_Normal,,,,,N99pMvdJQDaVsDa7gmNPkQ,,,,N,0,0,,,2013-02-16 15:55,2013-02-16 15:56,admin,admin
504566,6359,125486,13662,0,N,N,N,CP_Drtn,TT_Task,DT_FixedDUR2,TK_NotStart,DUKHCONP1AMKARGF3055,Aluminum tile false ceiling,8178,360,0,56,0,18.75,18.75,56,0,0,0,,,,2013-12-15 08:00,2013-12-23 17:00,,2013-10-23 08:00,2013-10-30 17:00,2013-10-23 08:00,2013-10-30 17:00,2013-10-23 08:00,2013-10-30 17:00,2013-12-15 08:00,2013-12-23 17:00,,PT_Normal,,,,,deWWwT4GSZq5Eq5F6adhCA,,,,N,0,0,,,2013-02-16 15:55,2013-02-16 15:56,admin,admin
504567,6359,125487,13662,0,N,N,N,CP_Drtn,TT_Task,DT_FixedDUR2,TK_NotStart,DUKHCONP1AMKARRF3600,Block work,8168,288,0,48,0,87.5,87.5,48,0,0,0,,,,2013-11-04 08:00,2013-11-10 17:00,,2013-09-21 08:00,2013-09-26 17:00,2013-09-21 08:00,2013-09-26 17:00,2013-09-21 08:00,2013-09-26 17:00,2013-11-04 08:00,2013-11-10 17:00,,PT_Normal,,,,,dpNK4EX7TtSNJyhMS6o5gg,,,,N,0,0,,,2013-02-16 15:55,2013-02-16 15:56,admin,admin
504568,6359,125487,13662,0,N,N,N,CP_Drtn,TT_Task,DT_FixedDUR2,TK_NotStart,DUKHCONP1AMKARRF3605,Plastering work,8169,288,0,48,0,224,224,48,0,0,0,,,,2013-11-07 08:00,2013-11-13 17:00,,2013-09-24 08:00,2013-09-30 17:00,2013-09-24 08:00,2013-09-30 17:00,2013-09-24 08:00,2013-09-30 17:00,2013-11-07 08:00,2013-11-13 17:00,,PT_Normal,,,,,41ex1LQmSEKn+paiFWfe7Q,,,,N,0,0,,,2013-02-16 15:55,2013-02-16 15:56,admin,admin
504569,6359,125487,13662,0,N,N,N,CP_Drtn,TT_Task,DT_FixedDUR2,TK_NotStart,DUKHCONP1AMKARRF3610,Flooring screed,8164,736,376,48,0,16.5,16.5,48,0,0,0,,,,2014-01-20 08:00,2014-01-26 17:00,,2013-10-01 08:00,2013-10-07 17:00,2013-10-01 08:00,2013-10-07 17:00,2013-10-01 08:00,2013-10-07 17:00,2014-01-20 08:00,2014-01-26 17:00,,PT_Normal,,,,,C2/bY3e5St6uSOM/07osjw,,,,N,0,0,,,2013-02-16 15:55,2013-02-16 15:56,admin,admin
504570,6359,125487,13662,0,N,N,N,CP_Drtn,TT_Task,DT_FixedDUR2,TK_NotStart,DUKHCONP1AMKARRF3695,Painting -Storage area,8178,728,0,48,0,212,212,48,0,0,0,,,,2014-01-27 08:00,2014-02-02 17:00,,2013-10-09 08:00,2013-10-15 17:00,2013-10-09 08:00,2013-10-15 17:00,2013-10-09 08:00,2013-10-15 17:00,2014-01-27 08:00,2014-02-02 17:00,,PT_Normal,,,,,ak6JFbseTP+LZoMZY44Knw,,,,N,0,0,,,2013-02-16 15:55,2013-02-16 15:56,admin,admin
504571,6359,125487,13662,0,N,N,N,CP_Drtn,TT_Task,DT_FixedDUR2,TK_NotStart,DUKHCONP1AMKARRF3620,Epoxy Painting -Storage area,8178,728,240,48,0,7.25,7.25,48,0,0,0,,,,2014-02-03 08:00,2014-02-09 17:00,,2013-10-16 08:00,2013-10-24 17:00,2013-10-16 08:00,2013-10-24 17:00,2013-10-16 08:00,2013-10-24 17:00,2014-02-03 08:00,2014-02-09 17:00,,PT_Normal,,,,,WgW5GjMfS/uJ/OSf6RLzFQ,,,,N,0,0,,,2013-02-16 15:55,2013-02-16 15:56,admin,admin
504572,6359,125488,13662,0,N,N,N,CP_Drtn,TT_Task,DT_FixedDUR2,TK_NotStart,DUKHCONP1AMKARFF3320,Ceramic Wall Tiling,8170,168,0,48,0,475,475,48,0,0,0,,,,2013-12-07 08:00,2013-12-12 17:00,,2013-11-12 08:00,2013-11-18 17:00,2013-11-12 08:00,2013-11-18 17:00,2013-11-12 08:00,2013-11-18 17:00,2013-12-07 08:00,2013-12-12 17:00,,PT_Normal,,,,,D0BSnignTBKJX+86EcueGA,,,,N,0,0,,,2013-02-16 15:55,2013-02-16 15:56,admin,admin
504573,6359,125488,13662,0,N,N,N,CP_Drtn,TT_Task,DT_FixedDUR2,TK_NotStart,DUKHCONP1AMKARFF3325,Porcelain Tile flooring,8170,168,0,48,0,218.75,218.75,48,0,0,0,,,,2013-12-14 08:00,2013-12-21 17:00,,2013-11-19 08:00,2013-11-25 17:00,2013-11-19 08:00,2013-11-25 17:00,2013-11-19 08:00,2013-11-25 17:00,2013-12-14 08:00,2013-12-21 17:00,,PT_Normal,,,,,YVyd3h0LR+yF60bAMVN8aA,,,,N,0,0,,,2013-02-16 15:55,2013-02-16 15:56,admin,admin
504574,6359,125488,13662,0,N,N,N,CP_Drtn,TT_Task,DT_FixedDUR2,TK_NotStart,DUKHCONP1AMKARFF3335,Slate Tile Flooring & Skirting,8170,312,248,40,0,33,33,40,0,0,0,,,,2014-01-12 08:00,2014-01-16 17:00,,2013-11-26 08:00,2013-12-01 17:00,2013-11-26 08:00,2013-12-01 17:00,2013-11-26 08:00,2013-12-01 17:00,2014-01-12 08:00,2014-01-16 17:00,,PT_Normal,,,,,4a0yvu63QG2bV6AEJSomhg,,,,N,0,0,,,2013-02-16 15:55,2013-02-16 15:56,admin,admin
504575,6359,125488,13662,0,N,N,N,CP_Drtn,TT_Task,DT_FixedDUR2,TK_NotStart,DUKHCONP1AMKARFF3350,Granite - Stair case flooring & Skirting,8171,232,56,56,0,112.5,112.5,56,0,0,0,,,,2013-12-31 08:00,2014-01-07 17:00,,2013-11-26 08:00,2013-12-03 17:00,2013-11-26 08:00,2013-12-03 17:00,2013-11-26 08:00,2013-12-03 17:00,2013-12-31 08:00,2014-01-07 17:00,,PT_Normal,,,,,wF7+AvMAQ1udz8xEPi9/ug,,,,N,0,0,,,2013-02-16 15:55,2013-02-16 15:56,admin,admin
504576,6359,125488,13662,0,N,N,N,CP_Drtn,TT_Task,DT_FixedDUR2,TK_NotStart,DUKHCONP1AMKARFF3345,Fixing of Suspension systems,8178,176,0,56,0,163.13,163.13,56,0,0,0,,,,2013-12-23 08:00,2013-12-30 17:00,,2013-11-26 08:00,2013-12-03 17:00,2013-11-26 08:00,2013-12-03 17:00,2013-11-26 08:00,2013-12-03 17:00,2013-12-23 08:00,2013-12-30 17:00,,PT_Normal,,,,,xw7IfXVLQLGbCjv9PugEMg,,,,N,0,0,,,2013-02-16 15:55,2013-02-16 15:56,admin,admin
504577,6359,125488,13662,0,N,N,N,CP_Drtn,TT_Task,DT_FixedDUR2,TK_NotStart,DUKHCONP1AMKARFF3360,Gypsum board false ceiling,8178,176,0,56,0,163.13,163.13,56,0,0,0,,,,2013-12-31 08:00,2014-01-07 17:00,,2013-12-04 08:00,2013-12-11 17:00,2013-12-04 08:00,2013-12-11 17:00,2013-12-04 08:00,2013-12-11 17:00,2013-12-31 08:00,2014-01-07 17:00,,PT_Normal,,,,,S/vzVKbiQnaHdy0ULtl0BA,,,,N,0,0,,,2013-02-16 15:55,2013-02-16 15:56,admin,admin
504578,6359,125488,13662,0,N,N,N,CP_Drtn,TT_Task,DT_FixedDUR2,TK_NotStart,DUKHCONP1AMKARFF3365,Wooden door,8178,176,0,40,0,38.5,38.5,40,0,0,0,,,,2014-01-08 08:00,2014-01-13 17:00,,2013-12-12 08:00,2013-12-17 17:00,2013-12-12 08:00,2013-12-17 17:00,2013-12-12 08:00,2013-12-17 17:00,2014-01-08 08:00,2014-01-13 17:00,,PT_Normal,,,,,017tmGqISGKylyzhK63fFw,,,,N,0,0,,,2013-02-16 15:55,2013-02-16 15:56,admin,admin
504579,6359,125488,13662,0,N,N,N,CP_Drtn,TT_Task,DT_FixedDUR2,TK_NotStart,DUKHCONP1AMKARFF3370,Aluminum doors,8178,176,0,40,0,27.5,27.5,40,0,0,0,,,,2014-01-14 08:00,2014-01-19 17:00,,2013-12-19 08:00,2013-12-24 17:00,2013-12-19 08:00,2013-12-24 17:00,2013-12-19 08:00,2013-12-24 17:00,2014-01-14 08:00,2014-01-19 17:00,,PT_Normal,,,,,KXkQICW2TxyVY+PKwwMu3g,,,,N,0,0,,,2013-02-16 15:55,2013-02-16 15:56,admin,admin
504580,6359,125488,13662,0,N,N,N,CP_Drtn,TT_Task,DT_FixedDUR2,TK_NotStart,DUKHCONP1AMKARFF3380,Aluminum windows,8178,264,96,40,0,22,22,40,0,0,0,,,,2014-02-02 08:00,2014-02-06 17:00,,2013-12-25 08:00,2013-12-30 17:00,2013-12-25 08:00,2013-12-30 17:00,2013-12-25 08:00,2013-12-30 17:00,2014-02-02 08:00,2014-02-06 17:00,,PT_Normal,,,,,SmqgrDj0TyeYJ+C2vpUzaw,,,,N,0,0,,,2013-02-16 15:55,2013-02-16 15:56,admin,admin
504581,6359,125488,13662,0,N,N,N,CP_Drtn,TT_Task,DT_FixedDUR2,TK_NotStart,DUKHCONP1AMKARFF3375,Carpentry & Joinery Works,8178,176,0,80,0,137.5,137.5,80,0,0,0,,,,2014-01-20 08:00,2014-01-30 17:00,,2013-12-25 08:00,2014-01-05 17:00,2013-12-25 08:00,2014-01-05 17:00,2013-12-25 08:00,2014-01-05 17:00,2014-01-20 08:00,2014-01-30 17:00,,PT_Normal,,,,,AZhErGRKSSWwaAZ+0UeJow,,,,N,0,0,,,2013-02-16 15:55,2013-02-16 15:56,admin,admin
504582,6359,125488,13662,0,N,N,N,CP_Drtn,TT_Task,DT_FixedDUR2,TK_NotStart,DUKHCONP1AMKARFF3390,Installation of Granite Counter Top,8171,192,0,56,0,11,11,56,0,0,0,,,,2014-02-03 08:00,2014-02-10 17:00,,2014-01-06 08:00,2014-01-13 17:00,2014-01-06 08:00,2014-01-13 17:00,2014-01-06 08:00,2014-01-13 17:00,2014-02-03 08:00,2014-02-10 17:00,,PT_Normal,,,,,ORi5pS/ySpi3m9VbUgIlZw,,,,N,0,0,,,2013-02-16 15:55,2013-02-16 15:56,admin,admin
504583,6359,125488,13662,0,N,N,N,CP_Drtn,TT_Task,DT_FixedDUR2,TK_NotStart,DUKHCONP1AMKARFF3385,S.S.Handrails & Balustrade,8178,192,0,56,0,100,100,56,0,0,0,,,,2014-02-03 08:00,2014-02-10 17:00,,2014-01-06 08:00,2014-01-13 17:00,2014-01-06 08:00,2014-01-13 17:00,2014-01-06 08:00,2014-01-13 17:00,2014-02-03 08:00,2014-02-10 17:00,,PT_Normal,,,,,TTHOhYtEReaVNUJyL6EsHA,,,,N,0,0,,,2013-02-16 15:55,2013-02-16 15:56,admin,admin
504584,6359,125488,13662,0,N,N,N,CP_Drtn,TT_Task,DT_FixedDUR2,TK_NotStart,DUKHCONP1AMKARFF3395,Final Painting,8178,192,192,56,0,594,594,56,0,0,0,,,,2014-02-12 08:00,2014-02-19 17:00,,2014-01-14 08:00,2014-01-21 17:00,2014-01-14 08:00,2014-01-21 17:00,2014-01-14 08:00,2014-01-21 17:00,2014-02-12 08:00,2014-02-19 17:00,,PT_Normal,,,,,h60Ukw5iRzumCglVrOL9rw,,,,N,0,0,,,2013-02-16 15:55,2013-02-16 15:56,admin,admin
504585,6359,125488,13662,0,N,N,N,CP_Drtn,TT_Task,DT_FixedDUR2,TK_NotStart,DUKHCONP1AMKARFF3300,Block work,8168,0,0,48,0,800,800,48,0,0,0,,,,2013-10-15 08:00,2013-10-23 17:00,,2013-10-15 08:00,2013-10-23 17:00,2013-10-15 08:00,2013-10-23 17:00,2013-10-15 08:00,2013-10-23 17:00,2013-10-15 08:00,2013-10-23 17:00,,PT_Normal,,,,,iT3zmVC8TCOQDRJxthVVMw,,,,Y,0,0,,,2013-02-16 15:55,2013-02-16 15:56,admin,admin
504586,6359,125488,13662,0,N,N,N,CP_Drtn,TT_Task,DT_FixedDUR2,TK_NotStart,DUKHCONP1AMKARFF3305,Plastering work,8169,64,0,56,0,1112.5,1112.5,56,0,0,0,,,,2013-11-09 08:00,2013-11-16 17:00,,2013-10-30 08:00,2013-11-06 17:00,2013-10-30 08:00,2013-11-06 17:00,2013-10-30 08:00,2013-11-06 17:00,2013-11-09 08:00,2013-11-16 17:00,,PT_Normal,,,,,zTa3PF+wT1iMQExiIA7bOA,,,,N,0,0,,,2013-02-16 15:55,2013-02-16 15:56,admin,admin
504587,6359,125488,13662,0,N,N,N,CP_Drtn,TT_Task,DT_FixedDUR2,TK_NotStart,DUKHCONP1AMKARFF3310,Flooring screed,8164,168,0,56,0,153,153,56,0,0,0,,,,2013-11-27 08:00,2013-12-04 17:00,,2013-11-03 08:00,2013-11-10 17:00,2013-11-03 08:00,2013-11-10 17:00,2013-11-03 08:00,2013-11-10 17:00,2013-11-27 08:00,2013-12-04 17:00,,PT_Normal,,,,,uIwyD5XYS6yu7XRTFN9sHA,,,,N,0,0,,,2013-02-16 15:55,2013-02-16 15:56,admin,admin
504588,6359,125488,13662,0,N,N,N,CP_Drtn,TT_Task,DT_FixedDUR2,TK_NotStart,DUKHCONP1AMKARFF3315,Wet area waterproofing & Protection Screed,8178,168,0,40,0,153,153,40,0,0,0,,,,2013-12-01 08:00,2013-12-05 17:00,,2013-11-06 08:00,2013-11-11 17:00,2013-11-06 08:00,2013-11-11 17:00,2013-11-06 08:00,2013-11-11 17:00,2013-12-01 08:00,2013-12-05 17:00,,PT_Normal,,,,,Ru+MmWyQTA+DbdZwgrdv5g,,,,N,0,0,,,2013-02-16 15:55,2013-02-16 15:56,admin,admin
504589,6359,125488,13662,0,N,N,N,CP_Drtn,TT_Task,DT_FixedDUR2,TK_NotStart,DUKHCONP1AMKARFF3330,Paint First coat,8178,192,32,40,0,594,594,40,0,0,0,,,,2013-12-14 08:00,2013-12-19 17:00,,2013-11-16 08:00,2013-11-20 17:00,2013-11-16 08:00,2013-11-20 17:00,2013-11-16 08:00,2013-11-20 17:00,2013-12-14 08:00,2013-12-19 17:00,,PT_Normal,,,,,xgX7nUGGRHaaaOjXOx2JEw,,,,N,0,0,,,2013-02-16 15:55,2013-02-16 15:56,admin,admin
504590,6359,125491,13662,0,N,N,N,CP_Drtn,TT_Task,DT_FixedDUR2,TK_NotStart,DUKHCONP1AMKPLGF4320,Installation of Water Heater,8178,632,272,40,0,16.8,16.8,40,0,0,0,,,,2014-02-26 08:00,2014-03-03 17:00,,2013-11-24 08:00,2013-11-28 17:00,2013-11-24 08:00,2013-11-28 17:00,2013-11-24 08:00,2013-11-28 17:00,2014-02-26 08:00,2014-03-03 17:00,,PT_Normal,,,,,Ey2MwlAaQj64duiAVpMsRw,,,,N,0,0,,,2013-02-16 15:55,2013-02-16 15:56,admin,admin
504591,6359,125491,13662,0,N,N,N,CP_Drtn,TT_Task,DT_FixedDUR2,TK_NotStart,DUKHCONP1AMKPLGF4305,Installation of Plumbing pipes & testing,8178,216,0,40,0,55.2,55.2,40,0,0,0,,,,2013-10-12 08:00,2013-10-16 17:00,,2013-09-10 08:00,2013-09-15 17:00,2013-09-10 08:00,2013-09-15 17:00,2013-09-10 08:00,2013-09-15 17:00,2013-10-12 08:00,2013-10-16 17:00,,PT_Normal,,,,,FGvkiDBwTJyK22+6vApSsw,,,,N,0,0,,,2013-02-16 15:55,2013-02-16 15:56,admin,admin
504592,6359,125491,13662,0,N,N,N,CP_Drtn,TT_Task,DT_FixedDUR2,TK_NotStart,DUKHCONP1AMKPLGF4310,Installation of Drainage pipes &testing,8178,360,72,40,0,27.6,27.6,40,0,0,0,,,,2013-11-04 08:00,2013-11-09 17:00,,2013-09-10 08:00,2013-09-15 17:00,2013-09-10 08:00,2013-09-15 17:00,2013-09-10 08:00,2013-09-15 17:00,2013-11-04 08:00,2013-11-09 17:00,,PT_Normal,,,,,iZaD52GaQRWUyjWPOvwmOw,,,,N,0,0,,,2013-02-16 15:55,2013-02-16 15:56,admin,admin
504593,6359,125491,13662,0,N,N,N,CP_Drtn,TT_Task,DT_FixedDUR2,TK_NotStart,DUKHCONP1AMKPLGF4315,Sanitary Fittings & Accessories,8178,384,0,56,0,16.8,16.8,56,0,0,0,,,,2014-01-12 08:00,2014-01-19 17:00,,2013-11-16 08:00,2013-11-23 17:00,2013-11-16 08:00,2013-11-23 17:00,2013-11-16 08:00,2013-11-23 17:00,2014-01-12 08:00,2014-01-19 17:00,,PT_Normal,,,,,A0iOdkCESHGLazdDpgA5Uw,,,,N,0,0,,,2013-02-16 15:55,2013-02-16 15:56,admin,admin
504594,6359,125492,13662,0,N,N,N,CP_Drtn,TT_Task,DT_FixedDUR2,TK_NotStart,DUKHCONP1AMKPLFF4325,Installation of Plumbing pipes & testing,8178,72,0,40,0,55.2,55.2,40,0,0,0,,,,2013-11-04 08:00,2013-11-09 17:00,,2013-10-24 08:00,2013-10-29 17:00,2013-10-24 08:00,2013-10-29 17:00,2013-10-24 08:00,2013-10-29 17:00,2013-11-04 08:00,2013-11-09 17:00,,PT_Normal,,,,,3+UTr9WLSxGVk86V6bdpLg,,,,N,0,0,,,2013-02-16 15:55,2013-02-16 15:56,admin,admin
504595,6359,125492,13662,0,N,N,N,CP_Drtn,TT_Task,DT_FixedDUR2,TK_NotStart,DUKHCONP1AMKPLFF4330,Installation of Drainage pipes & testing,8178,240,72,40,0,27.6,27.6,40,0,0,0,,,,2013-11-28 08:00,2013-12-03 17:00,,2013-10-24 08:00,2013-10-29 17:00,2013-10-24 08:00,2013-10-29 17:00,2013-10-24 08:00,2013-10-29 17:00,2013-11-28 08:00,2013-12-03 17:00,,PT_Normal,,,,,WZUfpjWITf27JtoVtjY5yg,,,,N,0,0,,,2013-02-16 15:55,2013-02-16 15:56,admin,admin
504596,6359,125492,13662,0,N,N,N,CP_Drtn,TT_Task,DT_FixedDUR2,TK_NotStart,DUKHCONP1AMKPLFF4335,Sanitary Fittings & Accessories,8178,216,0,56,0,16.8,16.8,56,0,0,0,,,,2014-01-20 08:00,2014-01-27 17:00,,2013-12-19 08:00,2013-12-26 17:00,2013-12-19 08:00,2013-12-26 17:00,2013-12-19 08:00,2013-12-26 17:00,2014-01-20 08:00,2014-01-27 17:00,,PT_Normal,,,,,AGiC3EtlTKeJhzIUTZiUsw,,,,N,0,0,,,2013-02-16 15:55,2013-02-16 15:56,admin,admin
504597,6359,125492,13662,0,N,N,N,CP_Drtn,TT_Task,DT_FixedDUR2,TK_NotStart,DUKHCONP1AMKPLFF4340,Installation of Water Heater,8178,216,0,40,0,16.8,16.8,40,0,0,0,,,,2014-01-28 08:00,2014-02-02 17:00,,2013-12-28 08:00,2014-01-01 17:00,2013-12-28 08:00,2014-01-01 17:00,2013-12-28 08:00,2014-01-01 17:00,2014-01-28 08:00,2014-02-02 17:00,,PT_Normal,,,,,Ras0eh5KQUaWnzfn/5pFNA,,,,N,0,0,,,2013-02-16 15:55,2013-02-16 15:56,admin,admin
504598,6359,125493,13662,0,N,N,N,CP_Drtn,TT_Task,DT_FixedDUR2,TK_NotStart,DUKHCONP1AMKPLRF4345,Installation of Plumbing pipes & fittings,8178,72,0,40,0,16.8,16.8,40,0,0,0,,,,2013-11-28 08:00,2013-12-03 17:00,,2013-11-18 08:00,2013-11-23 17:00,2013-11-18 08:00,2013-11-23 17:00,2013-11-18 08:00,2013-11-23 17:00,2013-11-28 08:00,2013-12-03 17:00,,PT_Normal,,,,,UGF5yl8aTeqTf3XbHFVVIQ,,,,N,0,0,,,2013-02-16 15:55,2013-02-16 15:56,admin,admin
504599,6359,125493,13662,0,N,N,N,CP_Drtn,TT_Task,DT_FixedDUR2,TK_NotStart,DUKHCONP1AMKPLRF4350,Installation of Rain water Pipes,8178,440,224,40,0,16.8,16.8,40,0,0,0,,,,2014-01-28 08:00,2014-02-02 17:00,,2013-11-24 08:00,2013-11-28 17:00,2013-11-24 08:00,2013-11-28 17:00,2013-11-24 08:00,2013-11-28 17:00,2014-01-28 08:00,2014-02-02 17:00,,PT_Normal,,,,,P8rAVSpyTPSHZt/710ze1g,,,,N,0,0,,,2013-02-16 15:55,2013-02-16 15:56,admin,admin
504600,6359,125493,13662,0,N,N,N,CP_Drtn,TT_Task,DT_FixedDUR2,TK_NotStart,DUKHCONP1AMKPLRF4355,Roof  Water Tank Installation & Connections,8178,216,144,56,0,50.4,50.4,56,0,0,0,,,,2014-02-03 08:00,2014-02-10 17:00,,2014-01-02 08:00,2014-01-09 17:00,2014-01-02 08:00,2014-01-09 17:00,2014-01-02 08:00,2014-01-09 17:00,2014-02-03 08:00,2014-02-10 17:00,,PT_Normal,,,,,zXBwaMRyREWx+GU8JgEC1A,,,,N,0,0,,,2013-02-16 15:55,2013-02-16 15:56,admin,admin
504601,6359,125495,13662,0,N,N,N,CP_Drtn,TT_Task,DT_FixedDUR2,TK_NotStart,DUKHCONP1AMKACFF4615,Installation AC Pipes,8178,320,32,40,0,130.8,130.8,40,0,0,0,,,,2013-12-25 08:00,2013-12-30 17:00,,2013-11-07 08:00,2013-11-12 17:00,2013-11-07 08:00,2013-11-12 17:00,2013-11-07 08:00,2013-11-12 17:00,2013-12-25 08:00,2013-12-30 17:00,,PT_Normal,,,,,xM47RUv9T2abr81lgz5fzQ,,,,N,0,0,,,2013-02-16 15:55,2013-02-16 15:56,admin,admin
504602,6359,125495,13662,0,N,N,N,CP_Drtn,TT_Task,DT_FixedDUR2,TK_NotStart,DUKHCONP1AMKACFF4620,Fixing of Ventilation Equipments,8178,232,0,40,0,17.2,17.2,40,0,0,0,,,,2014-01-16 08:00,2014-01-21 17:00,,2013-12-12 08:00,2013-12-17 17:00,2013-12-12 08:00,2013-12-17 17:00,2013-12-12 08:00,2013-12-17 17:00,2014-01-16 08:00,2014-01-21 17:00,,PT_Normal,,,,,i7YS5gAdT4u8sJvgKif6tQ,,,,N,0,0,,,2013-02-16 15:55,2013-02-23 09:03,admin,admin
504603,6359,125495,13662,0,N,N,N,CP_Drtn,TT_Task,DT_FixedDUR2,TK_NotStart,DUKHCONP1AMKACFF4625,Fixing of Split AC,8178,336,0,40,0,45.6,45.6,40,0,0,0,,,,2014-02-06 08:00,2014-02-12 17:00,,2013-12-19 08:00,2013-12-24 17:00,2013-12-19 08:00,2013-12-24 17:00,2013-12-19 08:00,2013-12-24 17:00,2014-02-06 08:00,2014-02-12 17:00,,PT_Normal,,,,,NnKcEfjIQd+9mb7NrFCahA,,,,N,0,0,,,2013-02-16 15:55,2013-02-16 15:56,admin,admin
504604,6359,125496,13662,0,N,N,N,CP_Drtn,TT_Task,DT_FixedDUR2,TK_NotStart,DUKHCONP1AMKACGF4600,Installation AC Pipes,8178,504,112,40,0,130.8,130.8,40,0,0,0,,,,2013-12-09 08:00,2013-12-14 17:00,,2013-09-24 08:00,2013-09-29 17:00,2013-09-24 08:00,2013-09-29 17:00,2013-09-24 08:00,2013-09-29 17:00,2013-12-09 08:00,2013-12-14 17:00,,PT_Normal,,,,,/dBKSjvXSrafA4oJSF8yjw,,,,N,0,0,,,2013-02-16 15:55,2013-02-16 15:56,admin,admin
504605,6359,125496,13662,0,N,N,N,CP_Drtn,TT_Task,DT_FixedDUR2,TK_NotStart,DUKHCONP1AMKACGF4605,Fixing of Ventilation Equipments,8178,480,0,40,0,28.4,28.4,40,0,0,0,,,,2014-01-11 08:00,2014-01-15 17:00,,2013-10-31 08:00,2013-11-05 17:00,2013-10-31 08:00,2013-11-05 17:00,2013-10-31 08:00,2013-11-05 17:00,2014-01-11 08:00,2014-01-15 17:00,,PT_Normal,,,,,I+K9nMX8T125i++ObdeQdw,,,,N,0,0,,,2013-02-16 15:55,2013-02-16 15:56,admin,admin
504606,6359,125496,13662,0,N,N,N,CP_Drtn,TT_Task,DT_FixedDUR2,TK_NotStart,DUKHCONP1AMKACGF4610,Fixing of Split AC,8178,584,248,40,0,45.6,45.6,40,0,0,0,,,,2014-02-01 08:00,2014-02-05 17:00,,2013-11-06 08:00,2013-11-11 17:00,2013-11-06 08:00,2013-11-11 17:00,2013-11-06 08:00,2013-11-11 17:00,2014-02-01 08:00,2014-02-05 17:00,,PT_Normal,,,,,tbSEcRz4SyOdg7yer8CjFw,,,,N,0,0,,,2013-02-16 15:55,2013-02-16 15:56,admin,admin
504607,6359,125497,13662,0,N,N,N,CP_Drtn,TT_Task,DT_FixedDUR2,TK_NotStart,DUKHCONP1AMKACRF4630,Installation of Refrigerant Pipes,8178,552,208,40,0,56.8,56.8,40,0,0,0,,,,2014-02-08 08:00,2014-02-13 17:00,,2013-11-18 08:00,2013-11-23 17:00,2013-11-18 08:00,2013-11-23 17:00,2013-11-18 08:00,2013-11-23 17:00,2014-02-08 08:00,2014-02-13 17:00,,PT_Normal,,,,,eY6M7iheS6CcuoyGu9I6dQ,,,,N,0,0,,,2013-02-16 15:55,2013-02-16 15:56,admin,admin
504608,6359,125497,13662,0,N,N,N,CP_Drtn,TT_Task,DT_FixedDUR2,TK_NotStart,DUKHCONP1AMKACRF4635,Installation of Condensing Unit,8178,344,312,40,0,74,74,40,0,0,0,,,,2014-02-15 08:00,2014-02-19 17:00,,2013-12-25 08:00,2013-12-30 17:00,2013-12-25 08:00,2013-12-30 17:00,2013-12-25 08:00,2013-12-30 17:00,2014-02-15 08:00,2014-02-19 17:00,,PT_Normal,,,,,FAYywaBvS9mRcQOPVDsdcg,,,,N,0,0,,,2013-02-16 15:55,2013-02-16 15:56,admin,admin
504609,6359,125499,13662,0,N,N,N,CP_Drtn,TT_Task,DT_FixedDUR2,TK_NotStart,DUKHCONP1AMKELFF4035,Fixing of wall conduits & switch socket boxes,8178,64,0,40,0,158.4,158.4,40,0,0,0,,,,2013-11-03 08:00,2013-11-07 17:00,,2013-10-24 08:00,2013-10-29 17:00,2013-10-24 08:00,2013-10-29 17:00,2013-10-24 08:00,2013-10-29 17:00,2013-11-03 08:00,2013-11-07 17:00,,PT_Normal,,,,,wv14AyW5TjiuD+fjgjlRxQ,,,,N,0,0,,,2013-02-16 15:55,2013-02-16 15:56,admin,admin
504610,6359,125499,13662,0,N,N,N,CP_Drtn,TT_Task,DT_FixedDUR2,TK_NotStart,DUKHCONP1AMKELFF4040,Cable tray & trunking installation,8178,208,0,40,0,170.4,170.4,40,0,0,0,,,,2013-12-08 08:00,2013-12-12 17:00,,2013-11-07 08:00,2013-11-12 17:00,2013-11-07 08:00,2013-11-12 17:00,2013-11-07 08:00,2013-11-12 17:00,2013-12-08 08:00,2013-12-12 17:00,,PT_Normal,,,,,weCLgi1pQGikFaYDp6/gAw,,,,N,0,0,,,2013-02-16 15:55,2013-02-16 15:56,admin,admin
504611,6359,125499,13662,0,N,N,N,CP_Drtn,TT_Task,DT_FixedDUR2,TK_NotStart,DUKHCONP1AMKELFF4045,Installation of wiring & Main Cabling,8178,224,16,40,0,45.6,45.6,40,0,0,0,,,,2013-12-16 08:00,2013-12-22 17:00,,2013-11-13 08:00,2013-11-18 17:00,2013-11-13 08:00,2013-11-18 17:00,2013-11-13 08:00,2013-11-18 17:00,2013-12-16 08:00,2013-12-22 17:00,,PT_Normal,,,,,DXR75hqeRlyuICad2bqiQQ,,,,N,0,0,,,2013-02-16 15:55,2013-02-16 15:56,admin,admin
504612,6359,125499,13662,0,N,N,N,CP_Drtn,TT_Task,DT_FixedDUR2,TK_NotStart,DUKHCONP1AMKELFF4060,"Installation  of DBS,MCCB Accessories.",8178,248,0,40,0,28.4,28.4,40,0,0,0,,,,2014-01-19 08:00,2014-01-23 17:00,,2013-12-12 08:00,2013-12-17 17:00,2013-12-12 08:00,2013-12-17 17:00,2013-12-12 08:00,2013-12-17 17:00,2014-01-19 08:00,2014-01-23 17:00,,PT_Normal,,,,,gESe88FSSamOE+/5Th2Hvw,,,,N,0,0,,,2013-02-16 15:55,2013-02-16 15:56,admin,admin
504613,6359,125499,13662,0,N,N,N,CP_Drtn,TT_Task,DT_FixedDUR2,TK_NotStart,DUKHCONP1AMKELFF4065,Installation of Lighting fixtures & Accessories,8178,264,0,40,0,206.4,206.4,40,0,0,0,,,,2014-01-27 08:00,2014-02-01 17:00,,2013-12-19 08:00,2013-12-24 17:00,2013-12-19 08:00,2013-12-24 17:00,2013-12-19 08:00,2013-12-24 17:00,2014-01-27 08:00,2014-02-01 17:00,,PT_Normal,,,,,TcGK9FRySzeXRlvvlTua7g,,,,N,0,0,,,2013-02-16 15:55,2013-02-16 15:56,admin,admin
504614,6359,125499,13662,0,N,N,N,CP_Drtn,TT_Task,DT_FixedDUR2,TK_NotStart,DUKHCONP1AMKELFF4055,Install. of CAMS & Fire Fighting Accessories,8178,208,192,56,0,134.4,134.4,56,0,0,0,,,,2014-01-13 08:00,2014-01-20 17:00,,2013-12-12 08:00,2013-12-21 17:00,2013-12-12 08:00,2013-12-21 17:00,2013-12-12 08:00,2013-12-21 17:00,2014-01-13 08:00,2014-01-20 17:00,,PT_Normal,,,,,ejnIPXbeTHu4Jm+81Ft+rA,,,,N,0,0,,,2013-02-16 15:55,2013-02-16 15:56,admin,admin
504615,6359,125499,13662,0,N,N,N,CP_Drtn,TT_Task,DT_FixedDUR2,TK_NotStart,DUKHCONP1AMKELFF4050,Installation of Telephone System,8178,248,0,40,0,62,62,40,0,0,0,,,,2014-01-25 08:00,2014-01-29 17:00,,2013-12-19 08:00,2013-12-24 17:00,2013-12-19 08:00,2013-12-24 17:00,2013-12-19 08:00,2013-12-24 17:00,2014-01-25 08:00,2014-01-29 17:00,,PT_Normal,,,,,U344Is1JSGCYXTNAXt0vuQ,,,,N,0,0,,,2013-02-16 15:55,2013-02-16 15:56,admin,admin
504616,6359,125500,13662,0,N,N,N,CP_Drtn,TT_Task,DT_FixedDUR2,TK_NotStart,DUKHCONP1AMKELGF4000,Fixing of wall conduits & switch socket boxes,8178,200,0,40,0,158.4,158.4,40,0,0,0,,,,2013-10-09 08:00,2013-10-14 17:00,,2013-09-10 08:00,2013-09-15 17:00,2013-09-10 08:00,2013-09-15 17:00,2013-09-10 08:00,2013-09-15 17:00,2013-10-09 08:00,2013-10-14 17:00,,PT_Normal,,,,,4ohYQ0CISyu807SaljfpFg,,,,N,0,0,,,2013-02-16 15:55,2013-02-16 15:56,admin,admin
504617,6359,125500,13662,0,N,N,N,CP_Drtn,TT_Task,DT_FixedDUR2,TK_NotStart,DUKHCONP1AMKELGF4005,Cable tray & trunking installation,8178,344,0,40,0,170.4,170.4,40,0,0,0,,,,2013-11-16 08:00,2013-11-20 17:00,,2013-09-24 08:00,2013-09-29 17:00,2013-09-24 08:00,2013-09-29 17:00,2013-09-24 08:00,2013-09-29 17:00,2013-11-16 08:00,2013-11-20 17:00,,PT_Normal,,,,,Il27HdSaRaG3lm0NQqXQRQ,,,,N,0,0,,,2013-02-16 15:55,2013-02-16 15:56,admin,admin
504618,6359,125500,13662,0,N,N,N,CP_Drtn,TT_Task,DT_FixedDUR2,TK_NotStart,DUKHCONP1AMKELGF4010,Installation of wiring & Main Cabling,8178,360,16,40,0,45.6,45.6,40,0,0,0,,,,2013-11-24 08:00,2013-11-28 17:00,,2013-09-30 08:00,2013-10-05 17:00,2013-09-30 08:00,2013-10-05 17:00,2013-09-30 08:00,2013-10-05 17:00,2013-11-24 08:00,2013-11-28 17:00,,PT_Normal,,,,,gKA7LKWvS6WxP9gtPKOA+w,,,,N,0,0,,,2013-02-16 15:55,2013-02-16 15:56,admin,admin
504619,6359,125500,13662,0,N,N,N,CP_Drtn,TT_Task,DT_FixedDUR2,TK_NotStart,DUKHCONP1AMKELGF4020,"Installation  of DBS,MCCB Accessories.",8178,416,0,40,0,28.4,28.4,40,0,0,0,,,,2014-01-01 08:00,2014-01-06 17:00,,2013-10-31 08:00,2013-11-05 17:00,2013-10-31 08:00,2013-11-05 17:00,2013-10-31 08:00,2013-11-05 17:00,2014-01-01 08:00,2014-01-06 17:00,,PT_Normal,,,,,sbpGpoinRn2eNnowX35uJQ,,,,N,0,0,,,2013-02-16 15:55,2013-02-16 15:56,admin,admin
504620,6359,125500,13662,0,N,N,N,CP_Drtn,TT_Task,DT_FixedDUR2,TK_NotStart,DUKHCONP1AMKELGF4025,Installation of Lighting fixtures & Accessories,8178,512,248,40,0,206.4,206.4,40,0,0,0,,,,2014-01-21 08:00,2014-01-26 17:00,,2013-11-06 08:00,2013-11-11 17:00,2013-11-06 08:00,2013-11-11 17:00,2013-11-06 08:00,2013-11-11 17:00,2014-01-21 08:00,2014-01-26 17:00,,PT_Normal,,,,,lXzOvx8SQ8OO2mjzk2Ofgw,,,,N,0,0,,,2013-02-16 15:55,2013-02-16 15:56,admin,admin
504621,6359,125500,13662,0,N,N,N,CP_Drtn,TT_Task,DT_FixedDUR2,TK_NotStart,DUKHCONP1AMKELGF4015,Install. of CAMS & Fire Fighting Accessories,8178,432,208,56,0,134.4,134.4,56,0,0,0,,,,2014-01-05 08:00,2014-01-12 17:00,,2013-11-02 08:00,2013-11-09 17:00,2013-11-02 08:00,2013-11-09 17:00,2013-11-02 08:00,2013-11-09 17:00,2014-01-05 08:00,2014-01-12 17:00,,PT_Normal,,,,,jsIandXWQTSht7wcoaPlCg,,,,N,0,0,,,2013-02-16 15:55,2013-02-16 15:56,admin,admin
504622,6359,125500,13662,0,N,N,N,CP_Drtn,TT_Task,DT_FixedDUR2,TK_NotStart,DUKHCONP1AMKELGF4030,Installation of Telephone System,8178,456,248,40,0,68,68,40,0,0,0,,,,2014-01-13 08:00,2014-01-18 17:00,,2013-11-06 08:00,2013-11-11 17:00,2013-11-06 08:00,2013-11-11 17:00,2013-11-06 08:00,2013-11-11 17:00,2014-01-13 08:00,2014-01-18 17:00,,PT_Normal,,,,,KqhtFLs7QtupKpcPwCAiFw,,,,N,0,0,,,2013-02-16 15:55,2013-02-16 15:56,admin,admin
504623,6359,125501,13662,0,N,N,N,CP_Drtn,TT_Task,DT_FixedDUR2,TK_NotStart,DUKHCONP1AMKELRF4070,Installation of Isolator,8178,304,0,40,0,51.6,51.6,40,0,0,0,,,,2014-02-08 08:00,2014-02-13 17:00,,2013-12-25 08:00,2013-12-30 17:00,2013-12-25 08:00,2013-12-30 17:00,2013-12-25 08:00,2013-12-30 17:00,2014-02-08 08:00,2014-02-13 17:00,,PT_Normal,,,,,X0RUHrihSYCR9MF3PNyQiA,,,,N,0,0,,,2013-02-16 15:55,2013-02-16 15:56,admin,admin
504624,6359,125501,13662,0,N,N,N,CP_Drtn,TT_Task,DT_FixedDUR2,TK_NotStart,DUKHCONP1AMKELRF4075,Installation of TV Dish Antenna,8178,304,296,56,0,97.2,97.2,56,0,0,0,,,,2014-02-15 08:00,2014-02-22 17:00,,2013-12-31 08:00,2014-01-07 17:00,2013-12-31 08:00,2014-01-07 17:00,2013-12-31 08:00,2014-01-07 17:00,2014-02-15 08:00,2014-02-22 17:00,,PT_Normal,,,,,582WTAg8R0uZP3bjxtmRRw,,,,N,0,0,,,2013-02-16 15:55,2013-02-16 15:56,admin,admin
504625,6359,125505,13662,0,N,N,N,CP_Drtn,TT_Task,DT_FixedDUR2,TK_NotStart,DUKHCONP1AZ1ARFF3300,Block work,8168,0,0,200,0,5591,5591,200,0,0,0,,,,2013-10-24 08:00,2013-11-21 17:00,,2013-10-24 08:00,2013-11-21 17:00,2013-10-24 08:00,2013-11-21 17:00,2013-10-24 08:00,2013-11-21 17:00,2013-10-24 08:00,2013-11-21 17:00,,PT_Normal,,,,,/4rk1cUcRxu3UkQBMdO70A,,,,Y,0,0,,,2013-02-16 15:55,2013-02-16 15:56,admin,admin
504626,6359,125505,13662,0,N,N,N,CP_Drtn,TT_Task,DT_FixedDUR2,TK_NotStart,DUKHCONP1AZ1ARFF3305,Plastering work,8169,0,0,200,0,7786.5,7786.5,200,0,0,0,,,,2013-11-17 08:00,2013-12-15 17:00,,2013-11-17 08:00,2013-12-15 17:00,2013-11-17 08:00,2013-12-15 17:00,2013-11-17 08:00,2013-12-15 17:00,2013-11-17 08:00,2013-12-15 17:00,,PT_Normal,,,,,5Q1l/wvdQgKN6taLyad7pw,,,,Y,0,0,,,2013-02-16 15:55,2013-02-16 15:56,admin,admin
504627,6359,125505,13662,0,N,N,N,CP_Drtn,TT_Task,DT_FixedDUR2,TK_NotStart,DUKHCONP1AZ1ARFF3310,Flooring screed,8164,96,96,168,0,1064.25,1064.25,168,0,0,0,,,,2013-12-09 08:00,2014-01-02 17:00,,2013-11-25 08:00,2013-12-19 17:00,2013-11-25 08:00,2013-12-19 17:00,2013-11-25 08:00,2013-12-19 17:00,2013-12-09 08:00,2014-01-02 17:00,,PT_Normal,,,,,IyIZyUeRSSaTR0Jo9OXzVQ,,,,N,0,0,,,2013-02-16 15:55,2013-02-16 15:56,admin,admin
504628,6359,125505,13662,0,N,N,N,CP_Drtn,TT_Task,DT_FixedDUR2,TK_NotStart,DUKHCONP1AZ1ARFF3315,Wet area waterproofing,8178,0,0,120,0,1063.25,1063.25,120,0,0,0,,,,2013-12-07 08:00,2013-12-24 17:00,,2013-12-07 08:00,2013-12-24 17:00,2013-12-07 08:00,2013-12-24 17:00,2013-12-07 08:00,2013-12-24 17:00,2013-12-07 08:00,2013-12-24 17:00,,PT_Normal,,,,,5OqEmVXkRiO4VgRzCT+TNA,,,,Y,0,0,,,2013-02-16 15:55,2013-02-16 15:56,admin,admin
504629,6359,125505,13662,0,N,N,N,CP_Drtn,TT_Task,DT_FixedDUR2,TK_NotStart,DUKHCONP1AZ1ARFF3330,Paint First coat,8178,112,112,200,0,4149.75,4149.75,200,0,0,0,,,,2013-12-21 08:00,2014-01-18 17:00,,2013-12-03 08:00,2014-01-01 17:00,2013-12-03 08:00,2014-01-01 17:00,2013-12-03 08:00,2014-01-01 17:00,2013-12-21 08:00,2014-01-18 17:00,,PT_Normal,,,,,ZmZGNjX4SDquK+L1vIvJ5A,,,,N,0,0,,,2013-02-16 15:55,2013-02-16 15:56,admin,admin
504630,6359,125505,13662,0,N,N,N,CP_Drtn,TT_Task,DT_FixedDUR2,TK_NotStart,DUKHCONP1AZ1ARFF3320,Ceramic Wall Tiling,8170,0,0,200,0,1659.75,1659.75,200,0,0,0,,,,2013-12-14 08:00,2014-01-12 17:00,,2013-12-14 08:00,2014-01-12 17:00,2013-12-14 08:00,2014-01-12 17:00,2013-12-14 08:00,2014-01-12 17:00,2013-12-14 08:00,2014-01-12 17:00,,PT_Normal,,,,,njjYck0BRdCkr1JROn71wA,,,,Y,0,0,,,2013-02-16 15:55,2013-02-16 15:56,admin,admin
504631,6359,125505,13662,0,N,N,N,CP_Drtn,TT_Task,DT_FixedDUR2,TK_NotStart,DUKHCONP1AZ1ARFF3325,Porcelain Tile flooring,8170,0,0,200,0,1525,1525,200,0,0,0,,,,2013-12-22 08:00,2014-01-19 17:00,,2013-12-22 08:00,2014-01-19 17:00,2013-12-22 08:00,2014-01-19 17:00,2013-12-22 08:00,2014-01-19 17:00,2013-12-22 08:00,2014-01-19 17:00,,PT_Normal,,,,,Dc9RK7vOS0mph4gCMeprRg,,,,Y,0,0,,,2013-02-16 15:55,2013-02-16 15:56,admin,admin
504632,6359,125505,13662,0,N,N,N,CP_Drtn,TT_Task,DT_FixedDUR2,TK_NotStart,DUKHCONP1AZ1ARFF3335,Slate Tile Flooring & Skirting,8170,64,64,120,0,228.5,228.5,120,0,0,0,,,,2014-01-18 08:00,2014-02-03 17:00,,2014-01-08 08:00,2014-01-25 17:00,2014-01-08 08:00,2014-01-25 17:00,2014-01-08 08:00,2014-01-25 17:00,2014-01-18 08:00,2014-02-03 17:00,,PT_Normal,,,,,jnp+Q9R4T1+tv1SljVJl7Q,,,,N,0,0,,,2013-02-16 15:55,2013-02-16 15:56,admin,admin
504633,6359,125505,13662,0,N,N,N,CP_Drtn,TT_Task,DT_FixedDUR2,TK_NotStart,DUKHCONP1AZ1ARFF3350,Granite - Stair case flooring & Skirting,8171,16,16,160,0,768.75,768.75,160,0,0,0,,,,2014-01-14 08:00,2014-02-05 17:00,,2014-01-12 08:00,2014-02-03 17:00,2014-01-12 08:00,2014-02-03 17:00,2014-01-12 08:00,2014-02-03 17:00,2014-01-14 08:00,2014-02-05 17:00,,PT_Normal,,,,,G4jAopC1R+6LOr1kIvCCCg,,,,N,0,0,,,2013-02-16 15:55,2013-02-16 15:56,admin,admin
504634,6359,125505,13662,0,N,N,N,CP_Drtn,TT_Task,DT_FixedDUR2,TK_NotStart,DUKHCONP1AZ1ARFF3345,Fixing of Suspension systems,8178,0,0,160,0,1142.23,1142.23,160,0,0,0,,,,2014-01-04 08:00,2014-01-26 17:00,,2014-01-04 08:00,2014-01-26 17:00,2014-01-04 08:00,2014-01-26 17:00,2014-01-04 08:00,2014-01-26 17:00,2014-01-04 08:00,2014-01-26 17:00,,PT_Normal,,,,,3ts9Kn/bR0y1L0ZfPfzGLQ,,,,Y,0,0,,,2013-02-16 15:55,2013-02-16 15:56,admin,admin
504635,6359,125505,13662,0,N,N,N,CP_Drtn,TT_Task,DT_FixedDUR2,TK_NotStart,DUKHCONP1AZ1ARFF3360,Gypsum board false ceiling,8178,0,0,200,0,1142,1142,200,0,0,0,,,,2014-01-11 08:00,2014-02-08 17:00,,2014-01-11 08:00,2014-02-08 17:00,2014-01-11 08:00,2014-02-08 17:00,2014-01-11 08:00,2014-02-08 17:00,2014-01-11 08:00,2014-02-08 17:00,,PT_Normal,,,,,t7z0VWV5QSyTfZGHIRAmUQ,,,,Y,0,0,,,2013-02-16 15:55,2013-02-16 15:56,admin,admin
504636,6359,125505,13662,0,N,N,N,CP_Drtn,TT_Task,DT_FixedDUR2,TK_NotStart,DUKHCONP1AZ1ARFF3365,Wooden door,8178,0,0,120,0,269.5,269.5,120,0,0,0,,,,2014-01-26 08:00,2014-02-12 17:00,,2014-01-26 08:00,2014-02-12 17:00,2014-01-26 08:00,2014-02-12 17:00,2014-01-26 08:00,2014-02-12 17:00,2014-01-26 08:00,2014-02-12 17:00,,PT_Normal,,,,,jibozNweTDeFxtwEv3ROvQ,,,,Y,0,0,,,2013-02-16 15:55,2013-02-16 15:56,admin,admin
504637,6359,125505,13662,0,N,N,N,CP_Drtn,TT_Task,DT_FixedDUR2,TK_NotStart,DUKHCONP1AZ1ARFF3370,Aluminum Door,8178,0,0,160,0,192.5,192.5,160,0,0,0,,,,2014-01-26 08:00,2014-02-18 17:00,,2014-01-26 08:00,2014-02-18 17:00,2014-01-26 08:00,2014-02-18 17:00,2014-01-26 08:00,2014-02-18 17:00,2014-01-26 08:00,2014-02-18 17:00,,PT_Normal,,,,,h2iKIAKATc6dZ+wMu+uvhg,,,,Y,0,0,,,2013-02-16 15:55,2013-02-16 15:56,admin,admin
504638,6359,125505,13662,0,N,N,N,CP_Drtn,TT_Task,DT_FixedDUR2,TK_NotStart,DUKHCONP1AZ1ARFF3380,Aluminum windows,8178,40,40,160,0,143,143,160,0,0,0,,,,2014-02-08 08:00,2014-03-03 17:00,,2014-02-02 08:00,2014-02-25 17:00,2014-02-02 08:00,2014-02-25 17:00,2014-02-02 08:00,2014-02-25 17:00,2014-02-08 08:00,2014-03-03 17:00,,PT_Normal,,,,,3WZsIxsJQRibZ55DHIlUwA,,,,N,0,0,,,2013-02-16 15:55,2013-02-16 15:56,admin,admin
504639,6359,125505,13662,0,N,N,N,CP_Drtn,TT_Task,DT_FixedDUR2,TK_NotStart,DUKHCONP1AZ1ARFF3375,Carpentry & Joinery Works,8178,0,0,200,0,962.5,962.5,200,0,0,0,,,,2014-02-01 08:00,2014-03-02 17:00,,2014-02-01 08:00,2014-03-02 17:00,2014-02-01 08:00,2014-03-02 17:00,2014-02-01 08:00,2014-03-02 17:00,2014-02-01 08:00,2014-03-02 17:00,,PT_Normal,,,,,gYzm1pdvSHiDFasvSkWlEw,,,,Y,0,0,,,2013-02-16 15:55,2013-02-16 15:56,admin,admin
504640,6359,125505,13662,0,N,N,N,CP_Drtn,TT_Task,DT_FixedDUR2,TK_NotStart,DUKHCONP1AZ1ARFF3390,Installation of Granite Counter Top,8171,8,8,160,0,77,77,160,0,0,0,,,,2014-02-16 08:00,2014-03-10 17:00,,2014-02-15 08:00,2014-03-09 17:00,2014-02-15 08:00,2014-03-09 17:00,2014-02-15 08:00,2014-03-09 17:00,2014-02-16 08:00,2014-03-10 17:00,,PT_Normal,,,,,K0OHBorYSMit3A0u/THuOw,,,,N,0,0,,,2013-02-16 15:55,2013-02-16 15:56,admin,admin
504641,6359,125505,13662,0,N,N,N,CP_Drtn,TT_Task,DT_FixedDUR2,TK_NotStart,DUKHCONP1AZ1ARFF3385,Handrail &  S.S.Balustrade,8178,0,0,160,0,691,691,160,0,0,0,,,,2014-02-15 08:00,2014-03-09 17:00,,2014-02-15 08:00,2014-03-09 17:00,2014-02-15 08:00,2014-03-09 17:00,2014-02-15 08:00,2014-03-09 17:00,2014-02-15 08:00,2014-03-09 17:00,,PT_Normal,,,,,xQE01IexRrStWFYj8aPYyA,,,,Y,0,0,,,2013-02-16 15:55,2013-02-16 15:56,admin,admin
504642,6359,125505,13662,0,N,N,N,CP_Drtn,TT_Task,DT_FixedDUR2,TK_NotStart,DUKHCONP1AZ1ARFF3395,Final Painting,8178,0,0,200,0,4149.75,4149.75,200,0,0,0,,,,2014-02-20 08:00,2014-03-20 17:00,,2014-02-20 08:00,2014-03-20 17:00,2014-02-20 08:00,2014-03-20 17:00,2014-02-20 08:00,2014-03-20 17:00,2014-02-20 08:00,2014-03-20 17:00,,PT_Normal,,,,,DFAdwBa/QVOfeWoVPPHrzQ,,,,Y,0,0,,,2013-02-16 15:55,2013-02-16 15:56,admin,admin
504643,6359,125506,13662,0,N,N,N,CP_Drtn,TT_Task,DT_FixedDUR2,TK_NotStart,DUKHCONP1AZ1ARRF3600,Block work,8168,168,0,160,0,612.5,612.5,160,0,0,0,,,,2013-12-07 08:00,2013-12-30 17:00,,2013-11-12 08:00,2013-12-04 17:00,2013-11-12 08:00,2013-12-04 17:00,2013-11-12 08:00,2013-12-04 17:00,2013-12-07 08:00,2013-12-30 17:00,,PT_Normal,,,,,RMs3CaO3RPSu1XVfjHdxJQ,,,,N,0,0,,,2013-02-16 15:55,2013-02-16 15:56,admin,admin
504644,6359,125506,13662,0,N,N,N,CP_Drtn,TT_Task,DT_FixedDUR2,TK_NotStart,DUKHCONP1AZ1ARRF3605,Plastering work,8169,168,0,160,0,1561.5,1561.5,160,0,0,0,,,,2013-12-15 08:00,2014-01-07 17:00,,2013-11-20 08:00,2013-12-12 17:00,2013-11-20 08:00,2013-12-12 17:00,2013-11-20 08:00,2013-12-12 17:00,2013-12-15 08:00,2014-01-07 17:00,,PT_Normal,,,,,SM6p343rTBKi7vYUjC6k5g,,,,N,0,0,,,2013-02-16 15:55,2013-02-16 15:56,admin,admin
504645,6359,125506,13662,0,N,N,N,CP_Drtn,TT_Task,DT_FixedDUR2,TK_NotStart,DUKHCONP1AZ1ARRF3610,Flooring screed,8164,360,0,120,0,120,120,120,0,0,0,,,,2014-01-27 08:00,2014-02-13 17:00,,2013-12-04 08:00,2013-12-22 17:00,2013-12-04 08:00,2013-12-22 17:00,2013-12-04 08:00,2013-12-22 17:00,2014-01-27 08:00,2014-02-13 17:00,,PT_Normal,,,,,L4pt2Nx8Qhe36GzPRyGYfQ,,,,N,0,0,,,2013-02-16 15:55,2013-02-16 15:56,admin,admin
504646,6359,125506,13662,0,N,N,N,CP_Drtn,TT_Task,DT_FixedDUR2,TK_NotStart,DUKHCONP1AZ1ARRF3695,Painting -Storage area,8178,360,0,160,0,1442,1442,160,0,0,0,,,,2014-02-04 08:00,2014-02-27 17:00,,2013-12-12 08:00,2014-01-05 17:00,2013-12-12 08:00,2014-01-05 17:00,2013-12-12 08:00,2014-01-05 17:00,2014-02-04 08:00,2014-02-27 17:00,,PT_Normal,,,,,twlhfNaxQ4O5f9NpSs/wdQ,,,,N,0,0,,,2013-02-16 15:55,2013-02-16 15:56,admin,admin
504647,6359,125506,13662,0,N,N,N,CP_Drtn,TT_Task,DT_FixedDUR2,TK_NotStart,DUKHCONP1AZ1ARRF3620,Epoxy Painting -Storage area,8178,360,360,120,0,41.25,41.25,120,0,0,0,,,,2014-02-23 08:00,2014-03-11 17:00,,2013-12-31 08:00,2014-01-16 17:00,2013-12-31 08:00,2014-01-16 17:00,2013-12-31 08:00,2014-01-16 17:00,2014-02-23 08:00,2014-03-11 17:00,,PT_Normal,,,,,+jXmV+IfTm+2i+HFt1xM7A,,,,N,0,0,,,2013-02-16 15:55,2013-02-16 15:56,admin,admin
504648,6359,125507,13662,0,N,N,N,CP_Drtn,TT_Task,DT_FixedDUR2,TK_NotStart,DUKHCONP1AZ1ARGF3000,Block work,8168,144,0,200,0,8522.25,8522.25,200,0,0,0,,,,2013-10-01 08:00,2013-10-31 17:00,,2013-09-10 08:00,2013-10-08 17:00,2013-09-10 08:00,2013-10-08 17:00,2013-09-10 08:00,2013-10-08 17:00,2013-10-01 08:00,2013-10-31 17:00,,PT_Normal,,,,,s8SyqUB2TwOSP5p+45Ifyg,,,,N,0,0,,,2013-02-16 15:55,2013-02-16 15:56,admin,admin
504649,6359,125507,13662,0,N,N,N,CP_Drtn,TT_Task,DT_FixedDUR2,TK_NotStart,DUKHCONP1AZ1ARGF3005,Plastering work,8169,144,0,200,0,11933,11933,200,0,0,0,,,,2013-10-26 08:00,2013-11-23 17:00,,2013-10-02 08:00,2013-11-02 17:00,2013-10-02 08:00,2013-11-02 17:00,2013-10-02 08:00,2013-11-02 17:00,2013-10-26 08:00,2013-11-23 17:00,,PT_Normal,,,,,hQLpymOaSK+2R3VlwDR6sg,,,,N,0,0,,,2013-02-16 15:55,2013-02-16 15:56,admin,admin
504650,6359,125507,13662,0,N,N,N,CP_Drtn,TT_Task,DT_FixedDUR2,TK_NotStart,DUKHCONP1AZ1ARGF3010,Flooring screed,8164,208,64,168,0,1382.25,1382.25,168,0,0,0,,,,2013-11-12 08:00,2013-12-05 17:00,,2013-10-10 08:00,2013-11-05 17:00,2013-10-10 08:00,2013-11-05 17:00,2013-10-10 08:00,2013-11-05 17:00,2013-11-12 08:00,2013-12-05 17:00,,PT_Normal,,,,,+YDIKyCITgmtY19WEF/obA,,,,N,0,0,,,2013-02-16 15:55,2013-02-16 15:56,admin,admin
504651,6359,125507,13662,0,N,N,N,CP_Drtn,TT_Task,DT_FixedDUR2,TK_NotStart,DUKHCONP1AZ1ARGF3015,Wet area waterproofing & Protection Screed,8178,144,0,120,0,216.25,216.25,120,0,0,0,,,,2013-11-12 08:00,2013-11-28 17:00,,2013-10-22 08:00,2013-11-07 17:00,2013-10-22 08:00,2013-11-07 17:00,2013-10-22 08:00,2013-11-07 17:00,2013-11-12 08:00,2013-11-28 17:00,,PT_Normal,,,,,JSl0Tb5KTZC2i8dCU+dp2A,,,,N,0,0,,,2013-02-16 15:55,2013-02-16 15:56,admin,admin
504652,6359,125507,13662,0,N,N,N,CP_Drtn,TT_Task,DT_FixedDUR2,TK_NotStart,DUKHCONP1AZ1ARGF3030,Paint First coat,8178,256,0,200,0,4752,4752,200,0,0,0,,,,2013-11-27 08:00,2013-12-26 17:00,,2013-10-21 08:00,2013-11-18 17:00,2013-10-21 08:00,2013-11-18 17:00,2013-10-21 08:00,2013-11-18 17:00,2013-11-27 08:00,2013-12-26 17:00,,PT_Normal,,,,,rV/CKiWsTIe6dOso7TmFvg,,,,N,0,0,,,2013-02-16 15:55,2013-02-16 15:56,admin,admin
504653,6359,125507,13662,0,N,N,N,CP_Drtn,TT_Task,DT_FixedDUR2,TK_NotStart,DUKHCONP1AZ1ARGF3020,Ceramic Wall Tiling,8170,144,0,200,0,3875,3875,200,0,0,0,,,,2013-11-18 08:00,2013-12-16 17:00,,2013-10-28 08:00,2013-11-25 17:00,2013-10-28 08:00,2013-11-25 17:00,2013-10-28 08:00,2013-11-25 17:00,2013-11-18 08:00,2013-12-16 17:00,,PT_Normal,,,,,6sAbHTh8S8i8FgU/6BIQVw,,,,N,0,0,,,2013-02-16 15:55,2013-02-16 15:56,admin,admin
504654,6359,125507,13662,0,N,N,N,CP_Drtn,TT_Task,DT_FixedDUR2,TK_NotStart,DUKHCONP1AZ1ARGF3025,Porcelain Tile flooring,8170,144,0,200,0,1525,1525,200,0,0,0,,,,2013-11-24 08:00,2013-12-23 17:00,,2013-11-03 08:00,2013-12-01 17:00,2013-11-03 08:00,2013-12-01 17:00,2013-11-03 08:00,2013-12-01 17:00,2013-11-24 08:00,2013-12-23 17:00,,PT_Normal,,,,,z1p6+lTbSre3eMTNa5oEfA,,,,N,0,0,,,2013-02-16 15:55,2013-02-16 15:56,admin,admin
504655,6359,125507,13662,0,N,N,N,CP_Drtn,TT_Task,DT_FixedDUR2,TK_NotStart,DUKHCONP1AZ1ARGF3040,Cobble Tile flooring,8170,168,0,120,0,649,649,120,0,0,0,,,,2013-12-25 08:00,2014-01-11 17:00,,2013-11-30 08:00,2013-12-16 17:00,2013-11-30 08:00,2013-12-16 17:00,2013-11-30 08:00,2013-12-16 17:00,2013-12-25 08:00,2014-01-11 17:00,,PT_Normal,,,,,sbfQahpHQlqlQN5NshscYw,,,,N,0,0,,,2013-02-16 15:55,2013-02-16 15:56,admin,admin
504656,6359,125507,13662,0,N,N,N,CP_Drtn,TT_Task,DT_FixedDUR2,TK_NotStart,DUKHCONP1AZ1ARGF3035,Slate Tile Flooring & Skirting,8170,184,16,120,0,666,666,120,0,0,0,,,,2013-12-21 08:00,2014-01-06 17:00,,2013-11-23 08:00,2013-12-09 17:00,2013-11-23 08:00,2013-12-09 17:00,2013-11-23 08:00,2013-12-09 17:00,2013-12-21 08:00,2014-01-06 17:00,,PT_Normal,,,,,w22Md4deT6aAeEbJKi2cjg,,,,N,0,0,,,2013-02-16 15:55,2013-02-16 15:56,admin,admin
504657,6359,125507,13662,0,N,N,N,CP_Drtn,TT_Task,DT_FixedDUR2,TK_NotStart,DUKHCONP1AZ1ARGF3050,Granite - Stair case flooring & Skirting,8171,168,0,160,0,762.5,762.5,160,0,0,0,,,,2014-01-02 08:00,2014-01-25 17:00,,2013-12-08 08:00,2013-12-31 17:00,2013-12-08 08:00,2013-12-31 17:00,2013-12-08 08:00,2013-12-31 17:00,2014-01-02 08:00,2014-01-25 17:00,,PT_Normal,,,,,2YfNDd00QM2eKPKfseyuuw,,,,N,0,0,,,2013-02-16 15:55,2013-02-16 15:56,admin,admin
504658,6359,125507,13662,0,N,N,N,CP_Drtn,TT_Task,DT_FixedDUR2,TK_NotStart,DUKHCONP1AZ1ARGF3045,Fixing of Suspension systems,8178,144,0,160,0,1273.48,1273.48,160,0,0,0,,,,2013-12-11 08:00,2014-01-04 17:00,,2013-11-20 08:00,2013-12-12 17:00,2013-11-20 08:00,2013-12-12 17:00,2013-11-20 08:00,2013-12-12 17:00,2013-12-11 08:00,2014-01-04 17:00,,PT_Normal,,,,,SZjMsea0TOiguE9j7g+UfQ,,,,N,0,0,,,2013-02-16 15:55,2013-02-16 15:56,admin,admin
504659,6359,125507,13662,0,N,N,N,CP_Drtn,TT_Task,DT_FixedDUR2,TK_NotStart,DUKHCONP1AZ1ARGF3055,Aluminum tile false ceiling,8178,168,24,200,0,131.25,131.25,200,0,0,0,,,,2013-12-24 08:00,2014-01-21 17:00,,2013-11-28 08:00,2013-12-28 17:00,2013-11-28 08:00,2013-12-28 17:00,2013-11-28 08:00,2013-12-28 17:00,2013-12-24 08:00,2014-01-21 17:00,,PT_Normal,,,,,qtmQheobQCaYzp0xufvN1g,,,,N,0,0,,,2013-02-16 15:55,2013-02-16 15:56,admin,admin
504660,6359,125507,13662,0,N,N,N,CP_Drtn,TT_Task,DT_FixedDUR2,TK_NotStart,DUKHCONP1AZ1ARGF3060,Gypsum board false ceiling,8178,144,0,200,0,1168.75,1168.75,200,0,0,0,,,,2013-12-24 08:00,2014-01-21 17:00,,2013-12-02 08:00,2013-12-31 17:00,2013-12-02 08:00,2013-12-31 17:00,2013-12-02 08:00,2013-12-31 17:00,2013-12-24 08:00,2014-01-21 17:00,,PT_Normal,,,,,ILxXkSawSciIQUa0S3uMeg,,,,N,0,0,,,2013-02-16 15:55,2013-02-16 15:56,admin,admin
504661,6359,125507,13662,0,N,N,N,CP_Drtn,TT_Task,DT_FixedDUR2,TK_NotStart,DUKHCONP1AZ1ARGF3065,Wooden door & PVC Door,8178,168,0,120,0,269.5,269.5,120,0,0,0,,,,2014-01-16 08:00,2014-02-02 17:00,,2013-12-23 08:00,2014-01-08 17:00,2013-12-23 08:00,2014-01-08 17:00,2013-12-23 08:00,2014-01-08 17:00,2014-01-16 08:00,2014-02-02 17:00,,PT_Normal,,,,,Alir+HHZQW68EinmvbDa2g,,,,N,0,0,,,2013-02-16 15:55,2013-02-16 15:56,admin,admin
504662,6359,125507,13662,0,N,N,N,CP_Drtn,TT_Task,DT_FixedDUR2,TK_NotStart,DUKHCONP1AZ1ARGF3070,Aluminum doors,8178,168,0,120,0,154,154,120,0,0,0,,,,2014-01-22 08:00,2014-02-08 17:00,,2013-12-29 08:00,2014-01-14 17:00,2013-12-29 08:00,2014-01-14 17:00,2013-12-29 08:00,2014-01-14 17:00,2014-01-22 08:00,2014-02-08 17:00,,PT_Normal,,,,,irLx2+9aT9Czcj2nFyGTEA,,,,N,0,0,,,2013-02-16 15:55,2013-02-16 15:56,admin,admin
504663,6359,125507,13662,0,N,N,N,CP_Drtn,TT_Task,DT_FixedDUR2,TK_NotStart,DUKHCONP1AZ1ARGF3080,Aluminum windows,8178,248,40,160,0,140.25,140.25,160,0,0,0,,,,2014-02-10 08:00,2014-03-05 17:00,,2014-01-05 08:00,2014-01-27 17:00,2014-01-05 08:00,2014-01-27 17:00,2014-01-05 08:00,2014-01-27 17:00,2014-02-10 08:00,2014-03-05 17:00,,PT_Normal,,,,,pyFpDDb1Se+bc5RsyxJI8w,,,,N,0,0,,,2013-02-16 15:55,2013-02-16 15:56,admin,admin
504664,6359,125507,13662,0,N,N,N,CP_Drtn,TT_Task,DT_FixedDUR2,TK_NotStart,DUKHCONP1AZ1ARGF3075,Carpentry & Joinery Works,8178,168,0,160,0,500.5,500.5,160,0,0,0,,,,2014-01-28 08:00,2014-02-20 17:00,,2014-01-04 08:00,2014-01-26 17:00,2014-01-04 08:00,2014-01-26 17:00,2014-01-04 08:00,2014-01-26 17:00,2014-01-28 08:00,2014-02-20 17:00,,PT_Normal,,,,,S4twa4MmR7iJVxxXoVNnfA,,,,N,0,0,,,2013-02-16 15:55,2013-02-16 15:56,admin,admin
504665,6359,125507,13662,0,N,N,N,CP_Drtn,TT_Task,DT_FixedDUR2,TK_NotStart,DUKHCONP1AZ1ARGF3090,Installation of Granite Counter Top,8171,168,0,120,0,154,154,120,0,0,0,,,,2014-02-10 08:00,2014-02-27 17:00,,2014-01-16 08:00,2014-02-02 17:00,2014-01-16 08:00,2014-02-02 17:00,2014-01-16 08:00,2014-02-02 17:00,2014-02-10 08:00,2014-02-27 17:00,,PT_Normal,,,,,g+v8WEy3Ssiy3DtGk65ieQ,,,,N,0,0,,,2013-02-16 15:55,2013-02-16 15:56,admin,admin
504666,6359,125507,13662,0,N,N,N,CP_Drtn,TT_Task,DT_FixedDUR2,TK_NotStart,DUKHCONP1AZ1ARGF3085,S.S.Balustrade,8178,208,40,160,0,231.25,231.25,160,0,0,0,,,,2014-02-12 08:00,2014-03-06 17:00,,2014-01-12 08:00,2014-02-03 17:00,2014-01-12 08:00,2014-02-03 17:00,2014-01-12 08:00,2014-02-03 17:00,2014-02-12 08:00,2014-03-06 17:00,,PT_Normal,,,,,/MqKPNKKSQK2WaFXpLRQcg,,,,N,0,0,,,2013-02-16 15:55,2013-02-16 15:56,admin,admin
504667,6359,125507,13662,0,N,N,N,CP_Drtn,TT_Task,DT_FixedDUR2,TK_NotStart,DUKHCONP1AZ1ARGF3095,Final Painting,8178,168,0,200,0,4752,4752,200,0,0,0,,,,2014-02-20 08:00,2014-03-20 17:00,,2014-01-26 08:00,2014-02-24 17:00,2014-01-26 08:00,2014-02-24 17:00,2014-01-26 08:00,2014-02-24 17:00,2014-02-20 08:00,2014-03-20 17:00,,PT_Normal,,,,,bYtZXk/CQVeCgycm4VExrQ,,,,N,0,0,,,2013-02-16 15:55,2013-02-16 15:56,admin,admin
504668,6359,125509,13662,0,N,N,N,CP_Drtn,TT_Task,DT_FixedDUR2,TK_NotStart,DUKHCONP1AZ1AREL3665,External Plastering,8169,376,0,200,0,12491,12491,200,0,0,0,,,,2014-01-25 08:00,2014-02-23 17:00,,2013-11-30 08:00,2013-12-29 17:00,2013-11-30 08:00,2013-12-29 17:00,2013-11-30 08:00,2013-12-29 17:00,2014-01-25 08:00,2014-02-23 17:00,,PT_Normal,,,,,qonqCkaHTFawGxI0Ie8IwQ,,,,N,0,0,,,2013-02-16 15:55,2013-02-16 15:56,admin,admin
504669,6359,125509,13662,0,N,N,N,CP_Drtn,TT_Task,DT_FixedDUR2,TK_NotStart,DUKHCONP1AZ1AREL3670,External stone cladding works,8170,392,0,160,0,866.25,866.25,160,0,0,0,,,,2014-02-15 08:00,2014-03-09 17:00,,2013-12-17 08:00,2014-01-09 17:00,2013-12-17 08:00,2014-01-09 17:00,2013-12-17 08:00,2014-01-09 17:00,2014-02-15 08:00,2014-03-09 17:00,,PT_Normal,,,,,/HZzhsm2Teyo1xDAnnuyCg,,,,N,0,0,,,2013-02-16 15:55,2013-02-16 15:56,admin,admin
504670,6359,125509,13662,0,N,N,N,CP_Drtn,TT_Task,DT_FixedDUR2,TK_NotStart,DUKHCONP1AZ1AREL3680,External Painting,8178,392,40,160,0,3314,3314,160,0,0,0,,,,2014-02-26 08:00,2014-03-20 17:00,,2013-12-30 08:00,2014-01-21 17:00,2013-12-30 08:00,2014-01-21 17:00,2013-12-30 08:00,2014-01-21 17:00,2014-02-26 08:00,2014-03-20 17:00,,PT_Normal,,,,,1SsS/zMwTdukAm2pk314WA,,,,N,0,0,,,2013-02-16 15:55,2013-02-16 15:56,admin,admin
504671,6359,125510,13662,0,N,N,N,CP_Drtn,TT_Task,DT_FixedDUR2,TK_NotStart,DUKHCONP1AZ1ARRF3630,Leveling Screed for Waterproofing,8164,168,0,200,0,700,700,200,0,0,0,,,,2014-01-08 08:00,2014-02-05 17:00,,2013-12-14 08:00,2014-01-12 17:00,2013-12-14 08:00,2014-01-12 17:00,2013-12-14 08:00,2014-01-12 17:00,2014-01-08 08:00,2014-02-05 17:00,,PT_Normal,,,,,oCQTptSYRKWdZpZLBIIylg,,,,N,0,0,,,2013-02-16 15:55,2013-02-16 15:56,admin,admin
504672,6359,125510,13662,0,N,N,N,CP_Drtn,TT_Task,DT_FixedDUR2,TK_NotStart,DUKHCONP1AZ1ARRF3635,Laying of Waterproofing Membrane,8178,168,0,200,0,997.25,997.25,200,0,0,0,,,,2014-01-12 08:00,2014-02-09 17:00,,2013-12-17 08:00,2014-01-15 17:00,2013-12-17 08:00,2014-01-15 17:00,2013-12-17 08:00,2014-01-15 17:00,2014-01-12 08:00,2014-02-09 17:00,,PT_Normal,,,,,WIRAXGrqRKKc9wex4sfDVQ,,,,N,0,0,,,2013-02-16 15:55,2013-02-16 15:56,admin,admin
504673,6359,125510,13662,0,N,N,N,CP_Drtn,TT_Task,DT_FixedDUR2,TK_NotStart,DUKHCONP1AZ1ARRF3640,Installation of Insulation & Protection,8178,168,0,200,0,1232,1232,200,0,0,0,,,,2014-01-16 08:00,2014-02-15 17:00,,2013-12-23 08:00,2014-01-20 17:00,2013-12-23 08:00,2014-01-20 17:00,2013-12-23 08:00,2014-01-20 17:00,2014-01-16 08:00,2014-02-15 17:00,,PT_Normal,,,,,QMFtPjXySGmVVyPZYRA5vQ,,,,N,0,0,,,2013-02-16 15:55,2013-02-16 15:56,admin,admin
504674,6359,125510,13662,0,N,N,N,CP_Drtn,TT_Task,DT_FixedDUR2,TK_NotStart,DUKHCONP1AZ1ARRF3645,Lime Stone Chips & Paving slab Installation,8170,168,0,200,0,602.25,602.25,200,0,0,0,,,,2014-01-21 08:00,2014-02-19 17:00,,2013-12-28 08:00,2014-01-25 17:00,2013-12-28 08:00,2014-01-25 17:00,2013-12-28 08:00,2014-01-25 17:00,2014-01-21 08:00,2014-02-19 17:00,,PT_Normal,,,,,SBYE8kkQQdmYuAjzrKmxdQ,,,,N,0,0,,,2013-02-16 15:55,2013-02-16 15:56,admin,admin
504675,6359,125510,13662,0,N,N,N,CP_Drtn,TT_Task,DT_FixedDUR2,TK_NotStart,DUKHCONP1AZ1ARRF3655,Installation of Pumps Protection cabinets,8178,168,0,160,0,539,539,160,0,0,0,,,,2014-02-15 08:00,2014-03-09 17:00,,2014-01-20 08:00,2014-02-12 17:00,2014-01-20 08:00,2014-02-12 17:00,2014-01-20 08:00,2014-02-12 17:00,2014-02-15 08:00,2014-03-09 17:00,,PT_Normal,,,,,hC+nH2hzRoK75G60weW/KQ,,,,N,0,0,,,2013-02-16 15:55,2013-02-16 15:56,admin,admin
504676,6359,125510,13662,0,N,N,N,CP_Drtn,TT_Task,DT_FixedDUR2,TK_NotStart,DUKHCONP1AZ1ARRF3650,Install. of Gal. Frame & Aluminum Slat Screen,8178,168,0,200,0,915.25,915.25,200,0,0,0,,,,2014-01-29 08:00,2014-02-27 17:00,,2014-01-05 08:00,2014-02-02 17:00,2014-01-05 08:00,2014-02-02 17:00,2014-01-05 08:00,2014-02-02 17:00,2014-01-29 08:00,2014-02-27 17:00,,PT_Normal,,,,,v+XTmHR4S/qhlvEkr2SO2Q,,,,N,0,0,,,2013-02-16 15:55,2013-02-16 15:56,admin,admin
504677,6359,125510,13662,0,N,N,N,CP_Drtn,TT_Task,DT_FixedDUR2,TK_NotStart,DUKHCONP1AZ1ARRF3660,Installation of Access Ladder,8178,208,208,120,0,154,154,120,0,0,0,,,,2014-03-04 08:00,2014-03-20 17:00,,2014-02-01 08:00,2014-02-18 17:00,2014-02-01 08:00,2014-02-18 17:00,2014-02-01 08:00,2014-02-18 17:00,2014-03-04 08:00,2014-03-20 17:00,,PT_Normal,,,,,vQAGgm3LRoyiDfaFhQ2VBA,,,,N,0,0,,,2013-02-16 15:55,2013-02-16 15:56,admin,admin
504678,6359,125513,13662,0,N,N,N,CP_Drtn,TT_Task,DT_FixedDUR2,TK_NotStart,DUKHCONP1AZ1ACFF4615,Installation AC Pipes,8178,216,48,160,0,864,864,160,0,0,0,,,,2014-01-02 08:00,2014-01-25 17:00,,2013-12-01 08:00,2013-12-24 17:00,2013-12-01 08:00,2013-12-24 17:00,2013-12-01 08:00,2013-12-24 17:00,2014-01-02 08:00,2014-01-25 17:00,,PT_Normal,,,,,J1s4RxY/SJi8kdzUX2CzgA,,,,N,0,0,,,2013-02-16 15:55,2013-02-16 15:56,admin,admin
504679,6359,125513,13662,0,N,N,N,CP_Drtn,TT_Task,DT_FixedDUR2,TK_NotStart,DUKHCONP1AZ1ACFF4620,Fixing of Ventilation Equipments,8178,24,0,200,0,102.4,102.4,200,0,0,0,,,,2014-01-22 08:00,2014-02-20 17:00,,2014-01-19 08:00,2014-02-17 17:00,2014-01-19 08:00,2014-02-17 17:00,2014-01-19 08:00,2014-02-17 17:00,2014-01-22 08:00,2014-02-20 17:00,,PT_Normal,,,,,ASajaRKzSriXFzb5ZT93hA,,,,N,0,0,,,2013-02-16 15:55,2013-02-16 15:56,admin,admin
504680,6359,125513,13662,0,N,N,N,CP_Drtn,TT_Task,DT_FixedDUR2,TK_NotStart,DUKHCONP1AZ1ACFF4625,Fixing of Split AC,8178,24,0,160,0,267.6,267.6,160,0,0,0,,,,2014-02-13 08:00,2014-03-08 17:00,,2014-02-09 08:00,2014-03-04 17:00,2014-02-09 08:00,2014-03-04 17:00,2014-02-09 08:00,2014-03-04 17:00,2014-02-13 08:00,2014-03-08 17:00,,PT_Normal,,,,,B/mHSsqZRq+hnQh2uIomnQ,,,,N,0,0,,,2013-02-16 15:55,2013-02-16 15:56,admin,admin
504681,6359,125514,13662,0,N,N,N,CP_Drtn,TT_Task,DT_FixedDUR2,TK_NotStart,DUKHCONP1AZ1ACGF4600,Installation AC Pipes,8178,392,40,160,0,864,864,160,0,0,0,,,,2013-12-15 08:00,2014-01-07 17:00,,2013-10-16 08:00,2013-11-10 17:00,2013-10-16 08:00,2013-11-10 17:00,2013-10-16 08:00,2013-11-10 17:00,2013-12-15 08:00,2014-01-07 17:00,,PT_Normal,,,,,jD20VL3ES9CXq1PNXHkFKQ,,,,N,0,0,,,2013-02-16 15:55,2013-02-16 15:56,admin,admin
504682,6359,125514,13662,0,N,N,N,CP_Drtn,TT_Task,DT_FixedDUR2,TK_NotStart,DUKHCONP1AZ1ACGF4605,Fixing of Ventilation Equipments,8178,256,0,200,0,165.2,165.2,200,0,0,0,,,,2014-01-18 08:00,2014-02-16 17:00,,2013-12-10 08:00,2014-01-08 17:00,2013-12-10 08:00,2014-01-08 17:00,2013-12-10 08:00,2014-01-08 17:00,2014-01-18 08:00,2014-02-16 17:00,,PT_Normal,,,,,20E6zrJBT+WD9hS/9yS5kw,,,,N,0,0,,,2013-02-16 15:55,2013-02-23 09:03,admin,admin
504683,6359,125514,13662,0,N,N,N,CP_Drtn,TT_Task,DT_FixedDUR2,TK_NotStart,DUKHCONP1AZ1ACGF4610,Fixing of Split AC,8178,256,40,160,0,267.6,267.6,160,0,0,0,,,,2014-02-08 08:00,2014-03-03 17:00,,2014-01-01 08:00,2014-01-23 17:00,2014-01-01 08:00,2014-01-23 17:00,2014-01-01 08:00,2014-01-23 17:00,2014-02-08 08:00,2014-03-03 17:00,,PT_Normal,,,,,JI5iMXEWQhyBdW2zBfUUFg,,,,N,0,0,,,2013-02-16 15:55,2013-02-16 15:56,admin,admin
504684,6359,125515,13662,0,N,N,N,CP_Drtn,TT_Task,DT_FixedDUR2,TK_NotStart,DUKHCONP1AZ1ACRF4630,Installation of Refrigerant Pipes,8178,272,0,200,0,364,364,200,0,0,0,,,,2014-02-15 08:00,2014-03-15 17:00,,2014-01-05 08:00,2014-02-02 17:00,2014-01-05 08:00,2014-02-02 17:00,2014-01-05 08:00,2014-02-02 17:00,2014-02-15 08:00,2014-03-15 17:00,,PT_Normal,,,,,fC5iiThaSv25pw5mQEZMEg,,,,N,0,0,,,2013-02-16 15:55,2013-02-16 15:56,admin,admin
504685,6359,125515,13662,0,N,N,N,CP_Drtn,TT_Task,DT_FixedDUR2,TK_NotStart,DUKHCONP1AZ1ACRF4635,Installation of Condensing Unit,8178,32,8,200,0,500,500,200,0,0,0,,,,2014-02-20 08:00,2014-03-20 17:00,,2014-02-16 08:00,2014-03-16 17:00,2014-02-16 08:00,2014-03-16 17:00,2014-02-16 08:00,2014-03-16 17:00,2014-02-20 08:00,2014-03-20 17:00,,PT_Normal,,,,,UMkzzGySRmi4NiHrSyo0Fw,,,,N,0,0,,,2013-02-16 15:55,2013-02-16 15:56,admin,admin
504686,6359,125517,13662,0,N,N,N,CP_Drtn,TT_Task,DT_FixedDUR2,TK_NotStart,DUKHCONP1AZ1PLFF4325,Installation of Plumbing pipes & testing,8178,0,0,144,0,386.4,386.4,144,0,0,0,,,,2013-11-10 08:00,2013-11-30 17:00,,2013-11-10 08:00,2013-11-30 17:00,2013-11-10 08:00,2013-11-30 17:00,2013-11-10 08:00,2013-11-30 17:00,2013-11-10 08:00,2013-11-30 17:00,,PT_Normal,,,,,0tW5KFFQQC6HkPx8sUaHWw,,,,Y,0,0,,,2013-02-16 15:55,2013-02-16 15:56,admin,admin
504687,6359,125517,13662,0,N,N,N,CP_Drtn,TT_Task,DT_FixedDUR2,TK_NotStart,DUKHCONP1AZ1PLFF4330,Installation of Drainage pipes & testing,8178,176,64,144,0,160.8,160.8,144,0,0,0,,,,2013-12-05 08:00,2013-12-26 17:00,,2013-11-10 08:00,2013-11-30 17:00,2013-11-10 08:00,2013-11-30 17:00,2013-11-10 08:00,2013-11-30 17:00,2013-12-05 08:00,2013-12-26 17:00,,PT_Normal,,,,,bWUlJnMGSdamwBGve9UmuA,,,,N,0,0,,,2013-02-16 15:55,2013-02-16 15:56,admin,admin
504688,6359,125517,13662,0,N,N,N,CP_Drtn,TT_Task,DT_FixedDUR2,TK_NotStart,DUKHCONP1AZ1PLFF4335,Sanitary Fittings & Accessories,8178,8,0,160,0,67.2,67.2,160,0,0,0,,,,2014-02-02 08:00,2014-02-25 17:00,,2014-02-01 08:00,2014-02-24 17:00,2014-02-01 08:00,2014-02-24 17:00,2014-02-01 08:00,2014-02-24 17:00,2014-02-02 08:00,2014-02-25 17:00,,PT_Normal,,,,,eS0W/tXXSnmD30AcFnjQGw,,,,N,0,0,,,2013-02-16 15:55,2013-02-16 15:56,admin,admin
504689,6359,125517,13662,0,N,N,N,CP_Drtn,TT_Task,DT_FixedDUR2,TK_NotStart,DUKHCONP1AZ1PLFF4340,Installation of Water Heater,8178,8,0,120,0,67.2,67.2,120,0,0,0,,,,2014-02-15 08:00,2014-03-03 17:00,,2014-02-13 08:00,2014-03-02 17:00,2014-02-13 08:00,2014-03-02 17:00,2014-02-13 08:00,2014-03-02 17:00,2014-02-15 08:00,2014-03-03 17:00,,PT_Normal,,,,,83AqL6wHTWancoLwBWGVjQ,,,,N,0,0,,,2013-02-16 15:55,2013-02-16 15:56,admin,admin
504690,6359,125518,13662,0,N,N,N,CP_Drtn,TT_Task,DT_FixedDUR2,TK_NotStart,DUKHCONP1AZ1PLRF4345,Installation of Plumbing pipes & fittings,8178,416,208,120,0,99.6,99.6,120,0,0,0,,,,2014-02-04 08:00,2014-02-22 17:00,,2013-12-04 08:00,2013-12-22 17:00,2013-12-04 08:00,2013-12-22 17:00,2013-12-04 08:00,2013-12-22 17:00,2014-02-04 08:00,2014-02-22 17:00,,PT_Normal,,,,,Pgpx8Q4oS9etjirv8N08Iw,,,,N,0,0,,,2013-02-16 15:55,2013-02-16 15:56,admin,admin
504691,6359,125518,13662,0,N,N,N,CP_Drtn,TT_Task,DT_FixedDUR2,TK_NotStart,DUKHCONP1AZ1PLRF4350,Installation of Rain water Pipes,8178,208,80,120,0,67.2,67.2,120,0,0,0,,,,2014-02-15 08:00,2014-03-03 17:00,,2014-01-14 08:00,2014-01-30 17:00,2014-01-14 08:00,2014-01-30 17:00,2014-01-14 08:00,2014-01-30 17:00,2014-02-15 08:00,2014-03-03 17:00,,PT_Normal,,,,,FWLNrgJRQo+mSbZpuMI0Ag,,,,N,0,0,,,2013-02-16 15:55,2013-02-16 15:56,admin,admin
504692,6359,125518,13662,0,N,N,N,CP_Drtn,TT_Task,DT_FixedDUR2,TK_NotStart,DUKHCONP1AZ1PLRF4355,Roof  Water Tank Installation & Connections,8178,8,0,200,0,302.4,302.4,200,0,0,0,,,,2014-02-20 08:00,2014-03-20 17:00,,2014-02-19 08:00,2014-03-19 17:00,2014-02-19 08:00,2014-03-19 17:00,2014-02-19 08:00,2014-03-19 17:00,2014-02-20 08:00,2014-03-20 17:00,,PT_Normal,,,,,HyRvm6hUSSe3P9gVgJNNPg,,,,N,0,0,,,2013-02-16 15:55,2013-02-23 09:03,admin,admin
504693,6359,125519,13662,0,N,N,N,CP_Drtn,TT_Task,DT_FixedDUR2,TK_NotStart,DUKHCONP1AZ1PLUG4300,Drainage / Storm Pipes in Grade Slab,8178,0,0,128,0,67.2,67.2,128,0,0,0,,,,2013-06-03 08:00,2013-06-20 17:00,,2013-06-03 08:00,2013-06-20 17:00,2013-06-03 08:00,2013-06-20 17:00,2013-06-03 08:00,2013-06-20 17:00,2013-06-03 08:00,2013-06-20 17:00,,PT_Normal,,,,,gFd00ODtRluyvvsho/VXaQ,,,,Y,0,0,,,2013-02-16 15:55,2013-02-16 15:56,admin,admin
504694,6359,125519,13662,0,N,N,N,CP_Drtn,TT_Task,DT_FixedDUR2,TK_NotStart,DUKHCONP1AZ1PLGF4305,Installation of Plumbing pipes & testing,8178,144,0,144,0,386.4,386.4,144,0,0,0,,,,2013-10-20 08:00,2013-11-09 17:00,,2013-09-26 08:00,2013-10-16 17:00,2013-09-26 08:00,2013-10-16 17:00,2013-09-26 08:00,2013-10-16 17:00,2013-10-20 08:00,2013-11-09 17:00,,PT_Normal,,,,,tl4teKs1RTWsz7DKZANoXg,,,,N,0,0,,,2013-02-16 15:55,2013-02-16 15:56,admin,admin
504695,6359,125519,13662,0,N,N,N,CP_Drtn,TT_Task,DT_FixedDUR2,TK_NotStart,DUKHCONP1AZ1PLGF4310,Installation of Drainage pipes &testing,8178,312,168,144,0,160.8,160.8,144,0,0,0,,,,2013-11-13 08:00,2013-12-03 17:00,,2013-09-26 08:00,2013-10-16 17:00,2013-09-26 08:00,2013-10-16 17:00,2013-09-26 08:00,2013-10-16 17:00,2013-11-13 08:00,2013-12-03 17:00,,PT_Normal,,,,,9AQ3m6YOSCycsw6r72eRhw,,,,N,0,0,,,2013-02-16 15:55,2013-02-16 15:56,admin,admin
504696,6359,125519,13662,0,N,N,N,CP_Drtn,TT_Task,DT_FixedDUR2,TK_NotStart,DUKHCONP1AZ1PLGF4315,Sanitary Fittings & Accessories,8178,360,0,160,0,117.6,117.6,160,0,0,0,,,,2014-02-20 08:00,2014-03-15 17:00,,2013-12-29 08:00,2014-01-20 17:00,2013-12-29 08:00,2014-01-20 17:00,2013-12-29 08:00,2014-01-20 17:00,2014-02-20 08:00,2014-03-15 17:00,,PT_Normal,,,,,vxR3HPGmRiWiOnWb9PosrA,,,,N,0,0,,,2013-02-16 15:55,2013-02-16 15:56,admin,admin
504697,6359,125519,13662,0,N,N,N,CP_Drtn,TT_Task,DT_FixedDUR2,TK_NotStart,DUKHCONP1AZ1PLGF4320,Installation of Water Heater,8178,360,80,120,0,117.6,117.6,120,0,0,0,,,,2014-03-04 08:00,2014-03-20 17:00,,2014-01-09 08:00,2014-01-26 17:00,2014-01-09 08:00,2014-01-26 17:00,2014-01-09 08:00,2014-01-26 17:00,2014-03-04 08:00,2014-03-20 17:00,,PT_Normal,,,,,5Do/WZY3T8i8SSo62enRYw,,,,N,0,0,,,2013-02-16 15:55,2013-02-16 15:56,admin,admin
504698,6359,125521,13662,0,N,N,N,CP_Drtn,TT_Task,DT_FixedDUR2,TK_NotStart,DUKHCONP1AZ1ELGF4000,Fixing of wall conduits & switch socket boxes,8178,216,16,200,0,1075.2,1075.2,200,0,0,0,,,,2013-10-20 08:00,2013-11-17 17:00,,2013-09-16 08:00,2013-10-14 17:00,2013-09-16 08:00,2013-10-14 17:00,2013-09-16 08:00,2013-10-14 17:00,2013-10-20 08:00,2013-11-17 17:00,,PT_Normal,,,,,UjrFcLLKTY+QGvU0zgSZEQ,,,,N,0,0,,,2013-02-16 15:55,2013-02-16 15:56,admin,admin
504699,6359,125521,13662,0,N,N,N,CP_Drtn,TT_Task,DT_FixedDUR2,TK_NotStart,DUKHCONP1AZ1ELGF4005,Cable tray & trunking installation,8178,344,0,160,0,1159.2,1159.2,160,0,0,0,,,,2013-11-21 08:00,2013-12-14 17:00,,2013-09-30 08:00,2013-10-24 17:00,2013-09-30 08:00,2013-10-24 17:00,2013-09-30 08:00,2013-10-24 17:00,2013-11-21 08:00,2013-12-14 17:00,,PT_Normal,,,,,T4K8jQn/TLq0ySwsjlvmPg,,,,N,0,0,,,2013-02-16 15:55,2013-02-16 15:56,admin,admin
504700,6359,125521,13662,0,N,N,N,CP_Drtn,TT_Task,DT_FixedDUR2,TK_NotStart,DUKHCONP1AZ1ELGF4010,Installation of wiring & Main Cabling,8178,344,200,200,0,267.6,267.6,200,0,0,0,,,,2013-11-30 08:00,2013-12-29 17:00,,2013-10-08 08:00,2013-11-07 17:00,2013-10-08 08:00,2013-11-07 17:00,2013-10-08 08:00,2013-11-07 17:00,2013-11-30 08:00,2013-12-29 17:00,,PT_Normal,,,,,fsWoKT1UTVOhSjK0/nDtrA,,,,N,0,0,,,2013-02-16 15:55,2013-02-16 15:56,admin,admin
504701,6359,125521,13662,0,N,N,N,CP_Drtn,TT_Task,DT_FixedDUR2,TK_NotStart,DUKHCONP1AZ1ELGF4020,"Installation  of DBS,MCCB Accessories.",8178,144,0,160,0,198.8,198.8,160,0,0,0,,,,2014-01-07 08:00,2014-01-29 17:00,,2013-12-16 08:00,2014-01-08 17:00,2013-12-16 08:00,2014-01-08 17:00,2013-12-16 08:00,2014-01-08 17:00,2014-01-07 08:00,2014-01-29 17:00,,PT_Normal,,,,,5ItYebZoQhaVVDNALVhjAw,,,,N,0,0,,,2013-02-16 15:55,2013-02-16 15:56,admin,admin
504702,6359,125521,13662,0,N,N,N,CP_Drtn,TT_Task,DT_FixedDUR2,TK_NotStart,DUKHCONP1AZ1ELGF4025,Installation of Lighting fixtures & Accessories,8178,200,0,200,0,1444.8,1444.8,200,0,0,0,,,,2014-01-27 08:00,2014-02-25 17:00,,2013-12-29 08:00,2014-01-26 17:00,2013-12-29 08:00,2014-01-26 17:00,2013-12-29 08:00,2014-01-26 17:00,2014-01-27 08:00,2014-02-25 17:00,,PT_Normal,,,,,rICt95e7QT+ebLkVI3tBvA,,,,N,0,0,,,2013-02-16 15:55,2013-02-23 09:03,admin,admin
504703,6359,125521,13662,0,N,N,N,CP_Drtn,TT_Task,DT_FixedDUR2,TK_NotStart,DUKHCONP1AZ1ELGF4015,Install. of CAMS & Fire Fighting Accessories,8178,240,0,200,0,940.8,940.8,200,0,0,0,,,,2014-01-15 08:00,2014-02-13 17:00,,2013-12-10 08:00,2014-01-08 17:00,2013-12-10 08:00,2014-01-08 17:00,2013-12-10 08:00,2014-01-08 17:00,2014-01-15 08:00,2014-02-13 17:00,,PT_Normal,,,,,3HH681nST9+bo7SbqrCjMQ,,,,N,0,0,,,2013-02-16 15:55,2013-02-16 15:56,admin,admin
504704,6359,125521,13662,0,N,N,N,CP_Drtn,TT_Task,DT_FixedDUR2,TK_NotStart,DUKHCONP1AZ1ELGF4030,Installation of Telephone System,8178,144,40,160,0,458,458,160,0,0,0,,,,2014-01-19 08:00,2014-02-10 17:00,,2013-12-29 08:00,2014-01-20 17:00,2013-12-29 08:00,2014-01-20 17:00,2013-12-29 08:00,2014-01-20 17:00,2014-01-19 08:00,2014-02-10 17:00,,PT_Normal,,,,,bvFdpAxLQzaEghBvlbn45Q,,,,N,0,0,,,2013-02-16 15:55,2013-02-16 15:56,admin,admin
504705,6359,125522,13662,0,N,N,N,CP_Drtn,TT_Task,DT_FixedDUR2,TK_NotStart,DUKHCONP1AZ1ELRF4070,Installation of Isolator,8178,8,0,144,0,361.2,361.2,144,0,0,0,,,,2014-02-17 08:00,2014-03-09 17:00,,2014-02-16 08:00,2014-03-08 17:00,2014-02-16 08:00,2014-03-08 17:00,2014-02-16 08:00,2014-03-08 17:00,2014-02-17 08:00,2014-03-09 17:00,,PT_Normal,,,,,14CdpvISRl6GOgiv1z2xUA,,,,N,0,0,,,2013-02-16 15:55,2013-02-23 09:03,admin,admin
504706,6359,125522,13662,0,N,N,N,CP_Drtn,TT_Task,DT_FixedDUR2,TK_NotStart,DUKHCONP1AZ1ELRF4075,Installation of TV Dish Antenna,8178,8,8,184,0,646.8,646.8,184,0,0,0,,,,2014-02-23 08:00,2014-03-20 17:00,,2014-02-22 08:00,2014-03-19 17:00,2014-02-22 08:00,2014-03-19 17:00,2014-02-22 08:00,2014-03-19 17:00,2014-02-23 08:00,2014-03-20 17:00,,PT_Normal,,,,,Acua2w6DR2iatEQqPRe0Hw,,,,N,0,0,,,2013-02-16 15:55,2013-02-23 09:03,admin,admin
504707,6359,125523,13662,0,N,N,N,CP_Drtn,TT_Task,DT_FixedDUR2,TK_NotStart,DUKHCONP1AZ1ELFF4035,Fixing of wall conduits & switch socket boxes,8178,80,16,200,0,1075.2,1075.2,200,0,0,0,,,,2013-11-11 08:00,2013-12-09 17:00,,2013-10-30 08:00,2013-11-27 17:00,2013-10-30 08:00,2013-11-27 17:00,2013-10-30 08:00,2013-11-27 17:00,2013-11-11 08:00,2013-12-09 17:00,,PT_Normal,,,,,aV8E5Og3QA+OaKDzeFCbtA,,,,N,0,0,,,2013-02-16 15:55,2013-02-16 15:56,admin,admin
504708,6359,125523,13662,0,N,N,N,CP_Drtn,TT_Task,DT_FixedDUR2,TK_NotStart,DUKHCONP1AZ1ELFF4040,Cable tray & trunking installation,8178,208,0,160,0,1159.2,1159.2,160,0,0,0,,,,2013-12-14 08:00,2014-01-06 17:00,,2013-11-13 08:00,2013-12-05 17:00,2013-11-13 08:00,2013-12-05 17:00,2013-11-13 08:00,2013-12-05 17:00,2013-12-14 08:00,2014-01-06 17:00,,PT_Normal,,,,,ZaXCwWBETVyQk+eQZhjCZA,,,,N,0,0,,,2013-02-16 15:55,2013-02-16 15:56,admin,admin
504709,6359,125523,13662,0,N,N,N,CP_Drtn,TT_Task,DT_FixedDUR2,TK_NotStart,DUKHCONP1AZ1ELFF4060,"Installation  of DBS,MCCB Accessories.",8178,8,0,160,0,198.8,198.8,160,0,0,0,,,,2014-01-27 08:00,2014-02-19 17:00,,2014-01-26 08:00,2014-02-18 17:00,2014-01-26 08:00,2014-02-18 17:00,2014-01-26 08:00,2014-02-18 17:00,2014-01-27 08:00,2014-02-19 17:00,,PT_Normal,,,,,UatJHqx4RUaN3og7y9g3yA,,,,N,0,0,,,2013-02-16 15:55,2013-02-16 15:56,admin,admin
504710,6359,125523,13662,0,N,N,N,CP_Drtn,TT_Task,DT_FixedDUR2,TK_NotStart,DUKHCONP1AZ1ELFF4065,Installation of Lighting fixtures & Accessories,8178,8,0,200,0,1444.8,1444.8,200,0,0,0,,,,2014-02-02 08:00,2014-03-03 17:00,,2014-02-01 08:00,2014-03-02 17:00,2014-02-01 08:00,2014-03-02 17:00,2014-02-01 08:00,2014-03-02 17:00,2014-02-02 08:00,2014-03-03 17:00,,PT_Normal,,,,,AvpVwuSkS6+KatcAq6FTmw,,,,N,0,0,,,2013-02-16 15:55,2013-02-23 09:03,admin,admin
504711,6359,125523,13662,0,N,N,N,CP_Drtn,TT_Task,DT_FixedDUR2,TK_NotStart,DUKHCONP1AZ1ELFF4055,Install. of CAMS & Fire Fighting Accessories,8178,16,8,200,0,890.4,890.4,200,0,0,0,,,,2014-01-21 08:00,2014-02-19 17:00,,2014-01-19 08:00,2014-02-17 17:00,2014-01-19 08:00,2014-02-17 17:00,2014-01-19 08:00,2014-02-17 17:00,2014-01-21 08:00,2014-02-19 17:00,,PT_Normal,,,,,u/dACz+/RXCPs23KqDzDBw,,,,N,0,0,,,2013-02-16 15:55,2013-02-16 15:56,admin,admin
504712,6359,125523,13662,0,N,N,N,CP_Drtn,TT_Task,DT_FixedDUR2,TK_NotStart,DUKHCONP1AZ1ELFF4050,Installation of Telephone System,8178,96,88,200,0,400.4,400.4,200,0,0,0,,,,2014-01-30 08:00,2014-03-01 17:00,,2014-01-16 08:00,2014-02-15 17:00,2014-01-16 08:00,2014-02-15 17:00,2014-01-16 08:00,2014-02-15 17:00,2014-01-30 08:00,2014-03-01 17:00,,PT_Normal,,,,,S58bmkeGTQmQUno1jUNgtg,,,,N,0,0,,,2013-02-16 15:55,2013-02-16 15:56,admin,admin
504713,6359,125523,13662,0,N,N,N,CP_Drtn,TT_Task,DT_FixedDUR2,TK_NotStart,DUKHCONP1AZ1ELFF4045,Installation of wiring & Main Cabling,8178,208,0,200,0,267.6,267.6,200,0,0,0,,,,2013-12-23 08:00,2014-01-20 17:00,,2013-11-21 08:00,2013-12-21 17:00,2013-11-21 08:00,2013-12-21 17:00,2013-11-21 08:00,2013-12-21 17:00,2013-12-23 08:00,2014-01-20 17:00,,PT_Normal,,,,,JUa5TWhgSnGPIGr2D996Ow,,,,N,0,0,,,2013-02-16 15:55,2013-02-16 15:56,admin,admin
504714,6359,125526,13662,0,N,N,N,CP_Drtn,TT_Task,DT_FixedDUR2,TK_NotStart,DUKHCONP1AZ1STGF2000,Column-Rebar & Formwork,8165,0,0,200,0,4046,4046,200,0,0,0,,,,2013-06-29 08:00,2013-07-27 17:00,,2013-06-29 08:00,2013-07-27 17:00,2013-06-29 08:00,2013-07-27 17:00,2013-06-29 08:00,2013-07-27 17:00,2013-06-29 08:00,2013-07-27 17:00,,PT_Normal,,,,,xoOcbqq3QBehoyYfi9iGcw,,,,Y,0,0,,,2013-02-16 15:55,2013-02-16 15:56,admin,admin
504715,6359,125526,13662,0,N,N,N,CP_Drtn,TT_Task,DT_FixedDUR2,TK_NotStart,DUKHCONP1AZ1STGF2005,Column-Concrete,8167,0,0,192,0,255.5,255.5,192,0,0,0,,,,2013-07-07 08:00,2013-08-03 17:00,,2013-07-07 08:00,2013-08-03 17:00,2013-07-07 08:00,2013-08-03 17:00,2013-07-07 08:00,2013-08-03 17:00,2013-07-07 08:00,2013-08-03 17:00,,PT_Normal,,,,,4bYuaR89SPu0ChRZr33cHA,,,,Y,0,0,,,2013-02-16 15:55,2013-02-16 15:56,admin,admin
504716,6359,125526,13662,0,N,N,N,CP_Drtn,TT_Task,DT_FixedDUR2,TK_NotStart,DUKHCONP1AZ1STGF2010,"Beam, Stairs ,Slab-Rebar & Formwork",8165,0,0,200,0,17116.75,17116.75,200,0,0,0,,,,2013-07-22 08:00,2013-08-22 17:00,,2013-07-22 08:00,2013-08-22 17:00,2013-07-22 08:00,2013-08-22 17:00,2013-07-22 08:00,2013-08-22 17:00,2013-07-22 08:00,2013-08-22 17:00,,PT_Normal,,,,,xGBWgHUYRJqYUlBq2p4qNw,,,,Y,0,0,,,2013-02-16 15:55,2013-02-16 15:56,admin,admin
504717,6359,125526,13662,0,N,N,N,CP_Drtn,TT_Task,DT_FixedDUR2,TK_NotStart,DUKHCONP1AZ1STGF2015,"Beam, Stairs ,Slab-Concrete",8167,0,0,120,0,1295,1295,120,0,0,0,,,,2013-08-06 08:00,2013-08-26 17:00,,2013-08-06 08:00,2013-08-26 17:00,2013-08-06 08:00,2013-08-26 17:00,2013-08-06 08:00,2013-08-26 17:00,2013-08-06 08:00,2013-08-26 17:00,,PT_Normal,,,,,Kwajoa9aRjyARq9N5SWyOw,,,,Y,0,0,,,2013-02-16 15:55,2013-02-16 15:56,admin,admin
504718,6359,125527,13662,0,N,N,N,CP_Drtn,TT_Task,DT_FixedDUR2,TK_NotStart,DUKHCONP1AZ1STRF2040,Column-Rebar & Formwork,8165,72,0,144,0,1205.75,1205.75,144,0,0,0,,,,2013-10-05 08:00,2013-10-27 17:00,,2013-09-24 08:00,2013-10-14 17:00,2013-09-24 08:00,2013-10-14 17:00,2013-09-24 08:00,2013-10-14 17:00,2013-10-05 08:00,2013-10-27 17:00,,PT_Normal,,,,,cy1OhnSwSgmpLFtshDfyfw,,,,N,0,0,,,2013-02-16 15:55,2013-02-16 15:56,admin,admin
504719,6359,125527,13662,0,N,N,N,CP_Drtn,TT_Task,DT_FixedDUR2,TK_NotStart,DUKHCONP1AZ1STRF2045,Column-Concrete,8167,72,0,136,0,52.5,52.5,136,0,0,0,,,,2013-10-09 08:00,2013-10-30 17:00,,2013-09-29 08:00,2013-10-20 17:00,2013-09-29 08:00,2013-10-20 17:00,2013-09-29 08:00,2013-10-20 17:00,2013-10-09 08:00,2013-10-30 17:00,,PT_Normal,,,,,IstUCqxlTcyPT5741W2aKg,,,,N,0,0,,,2013-02-16 15:55,2013-02-16 15:56,admin,admin
504720,6359,125527,13662,0,N,N,N,CP_Drtn,TT_Task,DT_FixedDUR2,TK_NotStart,DUKHCONP1AZ1STRF2050,Slab-Rebar & Formwork - Head Room,8165,72,0,160,0,2735.25,2735.25,160,0,0,0,,,,2013-10-13 08:00,2013-11-06 17:00,,2013-10-02 08:00,2013-10-27 17:00,2013-10-02 08:00,2013-10-27 17:00,2013-10-02 08:00,2013-10-27 17:00,2013-10-13 08:00,2013-11-06 17:00,,PT_Normal,,,,,6NXFHS8/TBSQQOzY5pJu6g,,,,N,0,0,,,2013-02-16 15:55,2013-02-16 15:56,admin,admin
504721,6359,125527,13662,0,N,N,N,CP_Drtn,TT_Task,DT_FixedDUR2,TK_NotStart,DUKHCONP1AZ1STRF2055,Slab-Concrete-Head room,8167,72,0,80,0,252,252,80,0,0,0,,,,2013-10-29 08:00,2013-11-09 17:00,,2013-10-16 08:00,2013-10-29 17:00,2013-10-16 08:00,2013-10-29 17:00,2013-10-16 08:00,2013-10-29 17:00,2013-10-29 08:00,2013-11-09 17:00,,PT_Normal,,,,,FaXkfzZAS1qjOY291Q3aMw,,,,N,0,0,,,2013-02-16 15:55,2013-02-16 15:56,admin,admin
504722,6359,125527,13662,0,N,N,N,CP_Drtn,TT_Task,DT_FixedDUR2,TK_NotStart,DUKHCONP1AZ1STRF2060,Construction of Parapets,8168,72,0,200,0,2200,2200,200,0,0,0,,,,2013-10-31 08:00,2013-11-28 17:00,,2013-10-21 08:00,2013-11-18 17:00,2013-10-21 08:00,2013-11-18 17:00,2013-10-21 08:00,2013-11-18 17:00,2013-10-31 08:00,2013-11-28 17:00,,PT_Normal,,,,,AQak22aVTd6GF78W9xXp9A,,,,N,0,0,,,2013-02-16 15:55,2013-02-16 15:56,admin,admin
504723,6359,125527,13662,0,N,N,N,CP_Drtn,TT_Task,DT_FixedDUR2,TK_NotStart,DUKHCONP1AZ1STRF2065,Construction of up stands/Plinth,8165,72,0,200,0,554.75,554.75,200,0,0,0,,,,2013-11-06 08:00,2013-12-04 17:00,,2013-10-27 08:00,2013-11-24 17:00,2013-10-27 08:00,2013-11-24 17:00,2013-10-27 08:00,2013-11-24 17:00,2013-11-06 08:00,2013-12-04 17:00,,PT_Normal,,,,,ZuPDaSJ8T42IbY/ZoXBsYg,,,,N,0,0,,,2013-02-16 15:55,2013-02-16 15:56,admin,admin
504724,6359,125528,13662,0,N,N,N,CP_Drtn,TT_Task,DT_FixedDUR2,TK_NotStart,DUKHCONP1AZ1STFF2020,Column-Rebar & Formwork,8165,0,0,200,0,3580.5,3580.5,200,0,0,0,,,,2013-08-08 08:00,2013-09-09 17:00,,2013-08-08 08:00,2013-09-09 17:00,2013-08-08 08:00,2013-09-09 17:00,2013-08-08 08:00,2013-09-09 17:00,2013-08-08 08:00,2013-09-09 17:00,,PT_Normal,,,,,x/ICCsBzTsG5qjjEbXnTDQ,,,,Y,0,0,,,2013-02-16 15:55,2013-02-16 15:56,admin,admin
504725,6359,125528,13662,0,N,N,N,CP_Drtn,TT_Task,DT_FixedDUR2,TK_NotStart,DUKHCONP1AZ1STFF2025,Column-Concrete,8167,0,0,192,0,224,224,192,0,0,0,,,,2013-08-21 08:00,2013-09-17 17:00,,2013-08-21 08:00,2013-09-17 17:00,2013-08-21 08:00,2013-09-17 17:00,2013-08-21 08:00,2013-09-17 17:00,2013-08-21 08:00,2013-09-17 17:00,,PT_Normal,,,,,PGGttB/3SEminum+PpkFVA,,,,Y,0,0,,,2013-02-16 15:55,2013-02-16 15:56,admin,admin
504726,6359,125528,13662,0,N,N,N,CP_Drtn,TT_Task,DT_FixedDUR2,TK_NotStart,DUKHCONP1AZ1STFF2030,"Beam, Stairs ,Slab-Rebar & Formwork",8165,0,0,200,0,16119.25,16119.25,200,0,0,0,,,,2013-09-05 08:00,2013-10-03 17:00,,2013-09-05 08:00,2013-10-03 17:00,2013-09-05 08:00,2013-10-03 17:00,2013-09-05 08:00,2013-10-03 17:00,2013-09-05 08:00,2013-10-03 17:00,,PT_Normal,,,,,vVHNz2oURoe+qIUoXTv2IQ,,,,Y,0,0,,,2013-02-16 15:55,2013-02-16 15:56,admin,admin
504727,6359,125528,13662,0,N,N,N,CP_Drtn,TT_Task,DT_FixedDUR2,TK_NotStart,DUKHCONP1AZ1STFF2035,"Beam, Stairs ,Slab-Concrete",8167,0,0,120,0,1141,1141,120,0,0,0,,,,2013-09-21 08:00,2013-10-07 17:00,,2013-09-21 08:00,2013-10-07 17:00,2013-09-21 08:00,2013-10-07 17:00,2013-09-21 08:00,2013-10-07 17:00,2013-09-21 08:00,2013-10-07 17:00,,PT_Normal,,,,,ojfwdBfwRRSq1wZdgM7brg,,,,Y,0,0,,,2013-02-16 15:55,2013-02-16 15:56,admin,admin
504728,6359,125530,13662,0,N,N,N,CP_Drtn,TT_Task,DT_FixedDUR2,TK_NotStart,DUKHCONP1AZ1STUG1000,Footing Excavation,8177,0,0,200,0,1114,1114,200,524,0,524,,,,2013-02-14 08:00,2013-03-14 17:00,,2013-02-14 08:00,2013-03-14 17:00,2013-02-14 08:00,2013-03-14 17:00,2013-02-14 08:00,2013-03-14 17:00,2013-02-14 08:00,2013-03-14 17:00,,PT_Normal,,,,,0PdlGWOaR++FNjfK8KMlvA,,,,Y,0,0,,,2013-02-16 15:55,2013-02-16 15:56,admin,admin
504729,6359,125530,13662,0,N,N,N,CP_Drtn,TT_Task,DT_FixedDUR2,TK_NotStart,DUKHCONP1AZ1STUG1005,Footing Antitermite,8178,0,0,184,0,1584,1584,184,0,0,0,,,,2013-02-26 08:00,2013-03-24 17:00,,2013-02-26 08:00,2013-03-24 17:00,2013-02-26 08:00,2013-03-24 17:00,2013-02-26 08:00,2013-03-24 17:00,2013-02-26 08:00,2013-03-24 17:00,,PT_Normal,,,,,FVPT7lCWTGGFmYST8on6Yw,,,,Y,0,0,,,2013-02-16 15:55,2013-02-16 15:56,admin,admin
504730,6359,125530,13662,0,N,N,N,CP_Drtn,TT_Task,DT_FixedDUR2,TK_NotStart,DUKHCONP1AZ1STUG1010,Footing Blinding,8163,0,0,184,0,794.5,794.5,184,0,0,0,,,,2013-03-02 08:00,2013-03-27 17:00,,2013-03-02 08:00,2013-03-27 17:00,2013-03-02 08:00,2013-03-27 17:00,2013-03-02 08:00,2013-03-27 17:00,2013-03-02 08:00,2013-03-27 17:00,,PT_Normal,,,,,zHrycdArRWOpEeMHqd9xBw,,,,Y,0,0,,,2013-02-16 15:55,2013-02-16 15:56,admin,admin
504731,6359,125530,13662,0,N,N,N,CP_Drtn,TT_Task,DT_FixedDUR2,TK_NotStart,DUKHCONP1AZ1STUG1015,Footing Waterproofing & Screed,8164,0,0,200,0,574.75,574.75,200,0,0,0,,,,2013-03-07 08:00,2013-04-04 17:00,,2013-03-07 08:00,2013-04-04 17:00,2013-03-07 08:00,2013-04-04 17:00,2013-03-07 08:00,2013-04-04 17:00,2013-03-07 08:00,2013-04-04 17:00,,PT_Normal,,,,,OFxaBZSxSAa6lKqV8X8bsw,,,,Y,0,0,,,2013-02-16 15:55,2013-02-16 15:56,admin,admin
504732,6359,125530,13662,0,N,N,N,CP_Drtn,TT_Task,DT_FixedDUR2,TK_NotStart,DUKHCONP1AZ1STUG1020,Construction of foundations,8165,0,0,160,0,7778.75,7778.75,160,0,0,0,,,,2013-03-23 08:00,2013-04-14 17:00,,2013-03-23 08:00,2013-04-14 17:00,2013-03-23 08:00,2013-04-14 17:00,2013-03-23 08:00,2013-04-14 17:00,2013-03-23 08:00,2013-04-14 17:00,,PT_Normal,,,,,TKLmua6yT/eI/kq+1Os2IQ,,,,Y,0,0,,,2013-02-16 15:55,2013-02-16 15:56,admin,admin
504733,6359,125530,13662,0,N,N,N,CP_Drtn,TT_Task,DT_FixedDUR2,TK_NotStart,DUKHCONP1AZ1STUG1025,Construction of neck of columns,8165,0,0,200,0,1606.5,1606.5,200,0,0,0,,,,2013-04-01 08:00,2013-04-29 17:00,,2013-04-01 08:00,2013-04-29 17:00,2013-04-01 08:00,2013-04-29 17:00,2013-04-01 08:00,2013-04-29 17:00,2013-04-01 08:00,2013-04-29 17:00,,PT_Normal,,,,,qgE37Y+4QV6lUjOhyezMSw,,,,Y,0,0,,,2013-02-16 15:55,2013-02-16 15:56,admin,admin
504734,6359,125530,13662,0,N,N,N,CP_Drtn,TT_Task,DT_FixedDUR2,TK_NotStart,DUKHCONP1AZ1STUG1030,Waterproofing Footing & Neck Column,8178,0,0,200,0,516,516,200,0,0,0,,,,2013-04-10 08:00,2013-05-08 17:00,,2013-04-10 08:00,2013-05-08 17:00,2013-04-10 08:00,2013-05-08 17:00,2013-04-10 08:00,2013-05-08 17:00,2013-04-10 08:00,2013-05-08 17:00,,PT_Normal,,,,,dUgTN0MASTW6gYbaKTw0cQ,,,,Y,0,0,,,2013-02-16 15:55,2013-02-16 15:56,admin,admin
504735,6359,125530,13662,0,N,N,N,CP_Drtn,TT_Task,DT_FixedDUR2,TK_NotStart,DUKHCONP1AZ1STUG1035,Backfilling Upto Grade Beam Bottom,8177,0,0,200,0,1041,1041,200,825,0,825,,,,2013-04-24 08:00,2013-05-22 17:00,,2013-04-24 08:00,2013-05-22 17:00,2013-04-24 08:00,2013-05-22 17:00,2013-04-24 08:00,2013-05-22 17:00,2013-04-24 08:00,2013-05-22 17:00,,PT_Normal,,,,,m+o+6kH/Tn+nUIM4E7qWrw,,,,Y,0,0,,,2013-02-16 15:55,2013-02-16 15:56,admin,admin
504736,6359,125530,13662,0,N,N,N,CP_Drtn,TT_Task,DT_FixedDUR2,TK_NotStart,DUKHCONP1AZ1STUG1040,Construction of Grade Beams,8163,0,0,208,0,7568.75,7568.75,208,0,0,0,,,,2013-05-11 08:00,2013-06-09 17:00,,2013-05-11 08:00,2013-06-09 17:00,2013-05-11 08:00,2013-06-09 17:00,2013-05-11 08:00,2013-06-09 17:00,2013-05-11 08:00,2013-06-09 17:00,,PT_Normal,,,,,aGLlkalgT3SjZkYucnfyyA,,,,Y,0,0,,,2013-02-16 15:55,2013-02-16 15:56,admin,admin
504737,6359,125530,13662,0,N,N,N,CP_Drtn,TT_Task,DT_FixedDUR2,TK_NotStart,DUKHCONP1AZ1STUG1045,Construction of slab on grade,8163,0,0,200,0,4422,4422,200,0,0,0,,,,2013-06-12 08:00,2013-07-10 17:00,,2013-06-12 08:00,2013-07-10 17:00,2013-06-12 08:00,2013-07-10 17:00,2013-06-12 08:00,2013-07-10 17:00,2013-06-12 08:00,2013-07-10 17:00,,PT_Normal,,,,,mLvj0VZoSa2jPqHqsQu/Jg,,,,Y,0,0,,,2013-02-16 15:55,2013-02-16 15:56,admin,admin
504738,6359,125532,13662,0,N,N,N,CP_Drtn,TT_Task,DT_FixedDUR2,TK_NotStart,DUKHCONP1AZ1HDEX5090,kerb works,8173,128,0,160,0,308,308,160,0,0,0,,,,2014-01-19 08:00,2014-02-10 17:00,,2013-12-31 08:00,2014-01-22 17:00,2013-12-31 08:00,2014-01-22 17:00,2013-12-31 08:00,2014-01-22 17:00,2014-01-19 08:00,2014-02-10 17:00,,PT_Normal,,,,,qa71Lo6KQOKgT8kJyNh5IQ,,,,N,0,0,,,2013-02-16 15:55,2013-02-16 15:56,admin,admin
504739,6359,125532,13662,0,N,N,N,CP_Drtn,TT_Task,DT_FixedDUR2,TK_NotStart,DUKHCONP1AZ1HDEX5095,Cobble Stone Works,8170,128,0,160,0,178,178,160,0,0,0,,,,2014-01-30 08:00,2014-02-23 17:00,,2014-01-12 08:00,2014-02-03 17:00,2014-01-12 08:00,2014-02-03 17:00,2014-01-12 08:00,2014-02-03 17:00,2014-01-30 08:00,2014-02-23 17:00,,PT_Normal,,,,,U7xvXi6aQ46wL1DLfzeJSA,,,,N,0,0,,,2013-02-16 15:55,2013-02-16 15:56,admin,admin
504740,6359,125532,13662,0,N,N,N,CP_Drtn,TT_Task,DT_FixedDUR2,TK_NotStart,DUKHCONP1AZ1HDEX5100,Interlock works,8174,128,0,160,0,210,210,160,0,0,0,,,,2014-02-06 08:00,2014-03-02 17:00,,2014-01-19 08:00,2014-02-10 17:00,2014-01-19 08:00,2014-02-10 17:00,2014-01-19 08:00,2014-02-10 17:00,2014-02-06 08:00,2014-03-02 17:00,,PT_Normal,,,,,d0WUS5fuTc2QBxSCY4jAOQ,,,,N,0,0,,,2013-02-16 15:55,2013-02-16 15:56,admin,admin
504741,6359,125533,13662,0,N,N,N,CP_Drtn,TT_Task,DT_FixedDUR2,TK_NotStart,DUKHCONP1AZ1MSEX5025,SS.Handrails and Balustrades,8178,176,88,160,0,56,56,160,0,0,0,,,,2014-02-01 08:00,2014-02-24 17:00,,2014-01-06 08:00,2014-01-28 17:00,2014-01-06 08:00,2014-01-28 17:00,2014-01-06 08:00,2014-01-28 17:00,2014-02-01 08:00,2014-02-24 17:00,,PT_Normal,,,,,kV8VJRuVQ7Cenkog++M/Og,,,,N,0,0,,,2013-02-16 15:55,2013-02-16 15:56,admin,admin
504742,6359,125533,13662,0,N,N,N,CP_Drtn,TT_Task,DT_FixedDUR2,TK_NotStart,DUKHCONP1AZ1MSEX5015,Construction of grease Trap,8178,264,192,160,0,56,56,160,0,0,0,,,,2014-02-15 08:00,2014-03-09 17:00,,2014-01-06 08:00,2014-01-28 17:00,2014-01-06 08:00,2014-01-28 17:00,2014-01-06 08:00,2014-01-28 17:00,2014-02-15 08:00,2014-03-09 17:00,,PT_Normal,,,,,6dpmr3g8TLS9zJ+qzELIvg,,,,N,0,0,,,2013-02-16 15:55,2013-02-16 15:56,admin,admin
504743,6359,125533,13662,0,N,N,N,CP_Drtn,TT_Task,DT_FixedDUR2,TK_NotStart,DUKHCONP1AZ1MSEX5000,Construction of Manholes,8172,104,0,200,0,462,462,200,0,0,0,,,,2013-12-17 08:00,2014-01-15 17:00,,2013-12-02 08:00,2013-12-31 17:00,2013-12-02 08:00,2013-12-31 17:00,2013-12-02 08:00,2013-12-31 17:00,2013-12-17 08:00,2014-01-15 17:00,,PT_Normal,,,,,8FAKGNMKRA2POYR9lcE/MQ,,,,N,0,0,,,2013-02-16 15:55,2013-02-16 15:56,admin,admin
504744,6359,125533,13662,0,N,N,N,CP_Drtn,TT_Task,DT_FixedDUR2,TK_NotStart,DUKHCONP1AZ1MSEX5005,"Construction  of Soak pit, Chambers",8172,104,0,200,0,154,154,200,0,0,0,,,,2014-01-01 08:00,2014-01-29 17:00,,2013-12-16 08:00,2014-01-14 17:00,2013-12-16 08:00,2014-01-14 17:00,2013-12-16 08:00,2014-01-14 17:00,2014-01-01 08:00,2014-01-29 17:00,,PT_Normal,,,,,fBVGet5lRGW2ofxAv1YBOg,,,,N,0,0,,,2013-02-16 15:55,2013-02-16 15:56,admin,admin
504745,6359,125533,13662,0,N,N,N,CP_Drtn,TT_Task,DT_FixedDUR2,TK_NotStart,DUKHCONP1AZ1MSEX5010,Telephone cable laying,8177,104,8,200,0,500,500,200,0,0,0,,,,2014-01-30 08:00,2014-03-01 17:00,,2014-01-15 08:00,2014-02-13 17:00,2014-01-15 08:00,2014-02-13 17:00,2014-01-15 08:00,2014-02-13 17:00,2014-01-30 08:00,2014-03-01 17:00,,PT_Normal,,,,,nwrsj6ZXRPWn7mnp5OvyQQ,,,,N,0,0,,,2013-02-16 15:55,2013-02-16 15:56,admin,admin
504746,6359,125533,13662,0,N,N,N,CP_Drtn,TT_Task,DT_FixedDUR2,TK_NotStart,DUKHCONP1AZ1MSEX5335,Aluminum Roll-up Shutter with 2m Wall,8178,824,0,200,0,400,400,200,0,0,0,,,,2014-07-05 08:00,2014-08-05 17:00,,2014-03-06 08:00,2014-04-03 17:00,2014-03-06 08:00,2014-04-03 17:00,2014-03-06 08:00,2014-04-03 17:00,2014-07-05 08:00,2014-08-05 17:00,,PT_Normal,,,,,1hyC2d9uQ664aXTT41FYmg,,,,N,0,0,,,2013-02-16 15:55,2013-02-16 16:44,admin,admin
504747,6359,125533,13662,0,N,N,N,CP_Drtn,TT_Task,DT_FixedDUR2,TK_NotStart,DUKHCONP1AZ1MSEX5020,Construction Entrance Ramp,8164,128,0,200,0,578,578,200,0,0,0,,,,2014-01-05 08:00,2014-02-02 17:00,,2013-12-16 08:00,2014-01-14 17:00,2013-12-16 08:00,2014-01-14 17:00,2013-12-16 08:00,2014-01-14 17:00,2014-01-05 08:00,2014-02-02 17:00,,PT_Normal,,,,,2yphswiESCW0O/FaKWH5rg,,,,N,0,0,,,2013-02-16 15:55,2013-02-16 15:56,admin,admin
504748,6359,125534,13662,0,N,N,N,CP_Drtn,TT_Task,DT_FixedDUR2,TK_NotStart,DUKHCONP1AZ1SLEX5105,Laying of Grass/ green area,8178,128,0,200,0,2408,2408,200,0,0,0,,,,2014-02-13 08:00,2014-03-13 17:00,,2014-01-25 08:00,2014-02-23 17:00,2014-01-25 08:00,2014-02-23 17:00,2014-01-25 08:00,2014-02-23 17:00,2014-02-13 08:00,2014-03-13 17:00,,PT_Normal,,,,,p1kXAWZoSeeWA66u9PEqcw,,,,N,0,0,,,2013-02-16 15:55,2013-02-16 15:56,admin,admin
504749,6359,125534,13662,0,N,N,N,CP_Drtn,TT_Task,DT_FixedDUR2,TK_NotStart,DUKHCONP1AZ1SLEX5110,Laying of Palm tree,8178,128,128,200,0,154,154,200,0,0,0,,,,2014-02-20 08:00,2014-03-20 17:00,,2014-02-01 08:00,2014-03-02 17:00,2014-02-01 08:00,2014-03-02 17:00,2014-02-01 08:00,2014-03-02 17:00,2014-02-20 08:00,2014-03-20 17:00,,PT_Normal,,,,,eTobxUZ/ROC4fecQW/vD9w,,,,N,0,0,,,2013-02-16 15:55,2013-02-16 15:56,admin,admin
504750,6359,125535,13662,0,N,N,N,CP_Drtn,TT_Task,DT_FixedDUR2,TK_NotStart,DUKHCONP1AZ1WEEX5030,Excavation,8177,104,0,160,0,64,64,160,40,0,40,,,,2014-01-08 08:00,2014-01-30 17:00,,2013-12-24 08:00,2014-01-15 17:00,2013-12-24 08:00,2014-01-15 17:00,2013-12-24 08:00,2014-01-15 17:00,2014-01-08 08:00,2014-01-30 17:00,,PT_Normal,,,,,sulrMOH6TL+ULcgxaTe09g,,,,N,0,0,,,2013-02-16 15:55,2013-02-16 15:56,admin,admin
504751,6359,125535,13662,0,N,N,N,CP_Drtn,TT_Task,DT_FixedDUR2,TK_NotStart,DUKHCONP1AZ1WEEX5035,Construction of Raft,8165,88,0,200,0,742,742,200,0,0,0,,,,2014-01-14 08:00,2014-02-12 17:00,,2014-01-01 08:00,2014-01-29 17:00,2014-01-01 08:00,2014-01-29 17:00,2014-01-01 08:00,2014-01-29 17:00,2014-01-14 08:00,2014-02-12 17:00,,PT_Normal,,,,,hidqALO7Re6u+erRKDZ03w,,,,N,0,0,,,2013-02-16 15:55,2013-02-16 15:56,admin,admin
504752,6359,125535,13662,0,N,N,N,CP_Drtn,TT_Task,DT_FixedDUR2,TK_NotStart,DUKHCONP1AZ1WEEX5040,Block works & Plastering,8168,88,0,200,0,448,448,200,0,0,0,,,,2014-01-23 08:00,2014-02-22 17:00,,2014-01-11 08:00,2014-02-08 17:00,2014-01-11 08:00,2014-02-08 17:00,2014-01-11 08:00,2014-02-08 17:00,2014-01-23 08:00,2014-02-22 17:00,,PT_Normal,,,,,VwtCqPdSRECPyDrEnqTfmQ,,,,N,0,0,,,2013-02-16 15:55,2013-02-16 15:56,admin,admin
504753,6359,125535,13662,0,N,N,N,CP_Drtn,TT_Task,DT_FixedDUR2,TK_NotStart,DUKHCONP1AZ1WEEX5045,Flooring & Painting,8178,88,0,200,0,210,210,200,0,0,0,,,,2014-01-30 08:00,2014-03-01 17:00,,2014-01-18 08:00,2014-02-16 17:00,2014-01-18 08:00,2014-02-16 17:00,2014-01-18 08:00,2014-02-16 17:00,2014-01-30 08:00,2014-03-01 17:00,,PT_Normal,,,,,wGeanKiESgWpJ/e8RfQu4g,,,,N,0,0,,,2013-02-16 15:55,2013-02-16 15:56,admin,admin
504754,6359,125535,13662,0,N,N,N,CP_Drtn,TT_Task,DT_FixedDUR2,TK_NotStart,DUKHCONP1AZ1WEEX5050,Installation of Steel Gate,8178,88,8,160,0,56,56,160,0,0,0,,,,2014-02-13 08:00,2014-03-08 17:00,,2014-01-30 08:00,2014-02-23 17:00,2014-01-30 08:00,2014-02-23 17:00,2014-01-30 08:00,2014-02-23 17:00,2014-02-13 08:00,2014-03-08 17:00,,PT_Normal,,,,,hvrVFP71Tia0FKgj2FgCCA,,,,N,0,0,,,2013-02-16 15:55,2013-02-16 15:56,admin,admin
504755,6359,125535,13662,0,N,N,N,CP_Drtn,TT_Task,DT_FixedDUR2,TK_NotStart,DUKHCONP1AZ1WEEX5060,Structural steel &  SS Shed cover installation,8178,80,0,200,0,294,294,200,0,0,0,,,,2014-02-13 08:00,2014-03-13 17:00,,2014-02-01 08:00,2014-03-02 17:00,2014-02-01 08:00,2014-03-02 17:00,2014-02-01 08:00,2014-03-02 17:00,2014-02-13 08:00,2014-03-13 17:00,,PT_Normal,,,,,5hnO9nFXRj6oPuTTvDW1dA,,,,N,0,0,,,2013-02-16 15:55,2013-02-16 15:56,admin,admin
504756,6359,125535,13662,0,N,N,N,CP_Drtn,TT_Task,DT_FixedDUR2,TK_NotStart,DUKHCONP1AZ1WEEX5065,"Install. of Water Tank,Chiller,Pump & Meter",8178,72,0,200,0,186.4,186.4,200,0,0,0,,,,2014-02-20 08:00,2014-03-20 17:00,,2014-02-09 08:00,2014-03-10 17:00,2014-02-09 08:00,2014-03-10 17:00,2014-02-09 08:00,2014-03-10 17:00,2014-02-20 08:00,2014-03-20 17:00,,PT_Normal,,,,,1hV7c7pGQe+Hx6p36rPNtg,,,,N,0,0,,,2013-02-16 15:55,2013-02-23 09:03,admin,admin
504757,6359,125536,13662,0,N,N,N,CP_Drtn,TT_Task,DT_FixedDUR2,TK_NotStart,DUKHCONP1AZ1PLTC8005,Pre-Commissioning & Testing of Plumbing Works,8177,0,0,200,0,3000,3000,200,0,0,0,,,,2014-03-22 08:00,2014-04-19 17:00,,2014-03-22 08:00,2014-04-19 17:00,2014-03-22 08:00,2014-04-19 17:00,2014-03-22 08:00,2014-04-19 17:00,2014-03-22 08:00,2014-04-19 17:00,,PT_Normal,,,,,BHNnG86/T5y+Be912ZXndg,,,,Y,0,0,,,2013-02-16 15:55,2013-02-16 15:56,admin,admin
504758,6359,125536,13662,0,N,N,N,CP_Drtn,TT_Task,DT_FixedDUR2,TK_NotStart,DUKHCONP1AZ1ACTC8000,Pre-Commissioning & Testing of AC Works,8177,0,0,200,0,1500,1500,200,0,0,0,,,,2014-03-22 08:00,2014-04-19 17:00,,2014-03-22 08:00,2014-04-19 17:00,2014-03-22 08:00,2014-04-19 17:00,2014-03-22 08:00,2014-04-19 17:00,2014-03-22 08:00,2014-04-19 17:00,,PT_Normal,,,,,oc9w1Uj/RZiAAqfpsLuzVQ,,,,Y,0,0,,,2013-02-16 15:55,2013-02-16 15:56,admin,admin
504759,6359,125536,13662,0,N,N,N,CP_Drtn,TT_Task,DT_FixedDUR2,TK_NotStart,DUKHCONP1AZ1ELTC8010,Pre-Commissioning & Testing of Electrical Works,8177,0,0,200,0,3000,3000,200,0,0,0,,,,2014-03-22 08:00,2014-04-19 17:00,,2014-03-22 08:00,2014-04-19 17:00,2014-03-22 08:00,2014-04-19 17:00,2014-03-22 08:00,2014-04-19 17:00,2014-03-22 08:00,2014-04-19 17:00,,PT_Normal,,,,,/UbbgNRWT2Wmr4/ut7AKgg,,,,Y,0,0,,,2013-02-16 15:55,2013-02-16 15:56,admin,admin
504760,6359,125538,13662,0,N,N,N,CP_Drtn,TT_Task,DT_FixedDUR2,TK_NotStart,DUKHCONP1AZ4ELTC8010,Pre-Commissioning & Testing of Electrical Works,8178,0,0,200,0,3000,3000,200,0,0,0,,,,2014-06-17 08:00,2014-07-15 17:00,,2014-06-17 08:00,2014-07-15 17:00,2014-06-17 08:00,2014-07-15 17:00,2014-06-17 08:00,2014-07-15 17:00,2014-06-17 08:00,2014-07-15 17:00,,PT_Normal,,,,,HvosgCaQT7as277S3jPgKQ,,,,Y,0,0,,,2013-02-16 15:55,2013-02-16 15:56,admin,admin
504761,6359,125538,13662,0,N,N,N,CP_Drtn,TT_Task,DT_FixedDUR2,TK_NotStart,DUKHCONP1AZ4PLTC8005,Pre-Commissioning & Testing of Plumbing Works,8178,0,0,200,0,3000,3000,200,0,0,0,,,,2014-06-17 08:00,2014-07-15 17:00,,2014-06-17 08:00,2014-07-15 17:00,2014-06-17 08:00,2014-07-15 17:00,2014-06-17 08:00,2014-07-15 17:00,2014-06-17 08:00,2014-07-15 17:00,,PT_Normal,,,,,oZfyFDPnSV2UJ3AYvakA0A,,,,Y,0,0,,,2013-02-16 15:55,2013-02-16 15:56,admin,admin
504762,6359,125538,13662,0,N,N,N,CP_Drtn,TT_Task,DT_FixedDUR2,TK_NotStart,DUKHCONP1AZ4ACTC8000,Pre-Commissioning & Testing of AC Works,8178,0,0,200,0,1500,1500,200,0,0,0,,,,2014-06-17 08:00,2014-07-15 17:00,,2014-06-17 08:00,2014-07-15 17:00,2014-06-17 08:00,2014-07-15 17:00,2014-06-17 08:00,2014-07-15 17:00,2014-06-17 08:00,2014-07-15 17:00,,PT_Normal,,,,,yvsvEeKwRnCDrsAHcSVkyw,,,,Y,0,0,,,2013-02-16 15:55,2013-02-16 15:56,admin,admin
504763,6359,125540,13662,0,N,N,N,CP_Drtn,TT_Task,DT_FixedDUR2,TK_NotStart,DUKHCONP1AZ4SLEX5105,Laying of Grass/ green area,8178,128,0,200,0,2744,2744,200,0,0,0,,,,2014-05-12 08:00,2014-06-09 17:00,,2014-04-23 08:00,2014-05-21 17:00,2014-04-23 08:00,2014-05-21 17:00,2014-04-23 08:00,2014-05-21 17:00,2014-05-12 08:00,2014-06-09 17:00,,PT_Normal,,,,,ceJ3bxhnTiOBGYyfT8gyzw,,,,N,0,0,,,2013-02-16 15:55,2013-02-16 15:56,admin,admin
504764,6359,125540,13662,0,N,N,N,CP_Drtn,TT_Task,DT_FixedDUR2,TK_NotStart,DUKHCONP1AZ4SLEX5110,Laying of Palm tree,8178,128,128,200,0,168,168,200,0,0,0,,,,2014-05-19 08:00,2014-06-16 17:00,,2014-04-30 08:00,2014-05-28 17:00,2014-04-30 08:00,2014-05-28 17:00,2014-04-30 08:00,2014-05-28 17:00,2014-05-19 08:00,2014-06-16 17:00,,PT_Normal,,,,,Tw/2+3+ZTE+3ayauxQZlGg,,,,N,0,0,,,2013-02-16 15:55,2013-02-16 15:56,admin,admin
504765,6359,125541,13662,0,N,N,N,CP_Drtn,TT_Task,DT_FixedDUR2,TK_NotStart,DUKHCONP1AZ4MSEX5335,Aluminum Roll-up Shutter with 2m Wall,8178,760,24,200,0,400,400,200,0,0,0,,,,2014-09-13 08:00,2014-10-13 17:00,,2014-05-21 08:00,2014-06-18 17:00,2014-05-21 08:00,2014-06-18 17:00,2014-05-21 08:00,2014-06-18 17:00,2014-09-13 08:00,2014-10-13 17:00,,PT_Normal,,,,,wTsTPbs+TMewyPORuI5iGw,,,,N,0,0,,,2013-02-16 15:55,2013-02-16 16:44,admin,admin
504766,6359,125541,13662,0,N,N,N,CP_Drtn,TT_Task,DT_FixedDUR2,TK_NotStart,DUKHCONP1AZ4MSEX5020,Construction Entrance Ramp,8164,128,0,200,0,656,656,200,0,0,0,,,,2014-04-03 08:00,2014-05-01 17:00,,2014-03-16 08:00,2014-04-13 17:00,2014-03-16 08:00,2014-04-13 17:00,2014-03-16 08:00,2014-04-13 17:00,2014-04-03 08:00,2014-05-01 17:00,,PT_Normal,,,,,nmUvLVbFRxq9GJFOjEeVMw,,,,N,0,0,,,2013-02-16 15:55,2013-02-16 15:56,admin,admin
504767,6359,125541,13662,0,N,N,N,CP_Drtn,TT_Task,DT_FixedDUR2,TK_NotStart,DUKHCONP1AZ4MSEX5025,SS.Handrails and Balustrades,8178,152,0,160,0,56,56,160,0,0,0,,,,2014-04-24 08:00,2014-05-17 17:00,,2014-04-02 08:00,2014-04-24 17:00,2014-04-02 08:00,2014-04-24 17:00,2014-04-02 08:00,2014-04-24 17:00,2014-04-24 08:00,2014-05-17 17:00,,PT_Normal,,,,,H9TA4N0qTpaTkZzOqTFIHA,,,,N,0,0,,,2013-02-16 15:55,2013-02-16 15:56,admin,admin
504768,6359,125541,13662,0,N,N,N,CP_Drtn,TT_Task,DT_FixedDUR2,TK_NotStart,DUKHCONP1AZ4MSEX5015,Construction of grease Trap,8178,64,0,160,0,56,56,160,0,0,0,,,,2014-03-08 08:00,2014-03-30 17:00,,2014-02-26 08:00,2014-03-20 17:00,2014-02-26 08:00,2014-03-20 17:00,2014-02-26 08:00,2014-03-20 17:00,2014-03-08 08:00,2014-03-30 17:00,,PT_Normal,,,,,OS8okHxjRoyJ3sgPMIxM3g,,,,N,0,0,,,2013-02-16 15:55,2013-02-16 15:56,admin,admin
504769,6359,125541,13662,0,N,N,N,CP_Drtn,TT_Task,DT_FixedDUR2,TK_NotStart,DUKHCONP1AZ4MSEX5000,Construction of Manholes,8172,64,0,200,0,528,528,200,0,0,0,,,,2014-02-01 08:00,2014-03-02 17:00,,2014-01-22 08:00,2014-02-20 17:00,2014-01-22 08:00,2014-02-20 17:00,2014-01-22 08:00,2014-02-20 17:00,2014-02-01 08:00,2014-03-02 17:00,,PT_Normal,,,,,TE25ctYKTt6NOczGX/BprQ,,,,N,0,0,,,2013-02-16 15:55,2013-02-16 15:56,admin,admin
504770,6359,125541,13662,0,N,N,N,CP_Drtn,TT_Task,DT_FixedDUR2,TK_NotStart,DUKHCONP1AZ4MSEX5005,"Construction  of Soak pit, Chambers",8172,64,0,200,0,176,176,200,0,0,0,,,,2014-02-16 08:00,2014-03-16 17:00,,2014-02-05 08:00,2014-03-06 17:00,2014-02-05 08:00,2014-03-06 17:00,2014-02-05 08:00,2014-03-06 17:00,2014-02-16 08:00,2014-03-16 17:00,,PT_Normal,,,,,1UUYcsKHRb+09XMvC64zQA,,,,N,0,0,,,2013-02-16 15:55,2013-02-16 15:56,admin,admin
504771,6359,125541,13662,0,N,N,N,CP_Drtn,TT_Task,DT_FixedDUR2,TK_NotStart,DUKHCONP1AZ4MSEX5010,Telephone cable laying,8177,64,0,200,0,500,500,200,0,0,0,,,,2014-03-31 08:00,2014-04-28 17:00,,2014-03-22 08:00,2014-04-19 17:00,2014-03-22 08:00,2014-04-19 17:00,2014-03-22 08:00,2014-04-19 17:00,2014-03-31 08:00,2014-04-28 17:00,,PT_Normal,,,,,S67YtHjMStim7FBKg2lTkg,,,,N,0,0,,,2013-02-16 15:55,2013-02-16 15:56,admin,admin
504772,6359,125542,13662,0,N,N,N,CP_Drtn,TT_Task,DT_FixedDUR2,TK_NotStart,DUKHCONP1AZ4WEEX5030,Excavation,8177,184,0,160,0,64,64,160,40,0,40,,,,2014-04-01 08:00,2014-04-23 17:00,,2014-03-05 08:00,2014-03-27 17:00,2014-03-05 08:00,2014-03-27 17:00,2014-03-05 08:00,2014-03-27 17:00,2014-04-01 08:00,2014-04-23 17:00,,PT_Normal,,,,,PcwBzFCeQN2QNFdAScnf+w,,,,N,0,0,,,2013-02-16 15:55,2013-02-16 15:56,admin,admin
504773,6359,125542,13662,0,N,N,N,CP_Drtn,TT_Task,DT_FixedDUR2,TK_NotStart,DUKHCONP1AZ4WEEX5035,Construction of Raft,8165,184,0,200,0,840,840,200,0,0,0,,,,2014-04-07 08:00,2014-05-05 17:00,,2014-03-11 08:00,2014-04-08 17:00,2014-03-11 08:00,2014-04-08 17:00,2014-03-11 08:00,2014-04-08 17:00,2014-04-07 08:00,2014-05-05 17:00,,PT_Normal,,,,,KE7InL30SJu7a3xq/VkFWg,,,,N,0,0,,,2013-02-16 15:55,2013-02-16 15:56,admin,admin
504774,6359,125542,13662,0,N,N,N,CP_Drtn,TT_Task,DT_FixedDUR2,TK_NotStart,DUKHCONP1AZ4WEEX5040,Block works & Plastering,8168,184,0,200,0,512,512,200,0,0,0,,,,2014-04-16 08:00,2014-05-14 17:00,,2014-03-20 08:00,2014-04-17 17:00,2014-03-20 08:00,2014-04-17 17:00,2014-03-20 08:00,2014-04-17 17:00,2014-04-16 08:00,2014-05-14 17:00,,PT_Normal,,,,,FUm56mv8SayFMxC3UMQdbw,,,,N,0,0,,,2013-02-16 15:55,2013-02-16 15:56,admin,admin
504775,6359,125542,13662,0,N,N,N,CP_Drtn,TT_Task,DT_FixedDUR2,TK_NotStart,DUKHCONP1AZ4WEEX5045,Flooring & Painting,8178,184,32,200,0,232,232,200,0,0,0,,,,2014-04-23 08:00,2014-05-21 17:00,,2014-03-27 08:00,2014-04-24 17:00,2014-03-27 08:00,2014-04-24 17:00,2014-03-27 08:00,2014-04-24 17:00,2014-04-23 08:00,2014-05-21 17:00,,PT_Normal,,,,,wUZNQVA3RQGTiRAONZZpNw,,,,N,0,0,,,2013-02-16 15:55,2013-02-16 15:56,admin,admin
504776,6359,125542,13662,0,N,N,N,CP_Drtn,TT_Task,DT_FixedDUR2,TK_NotStart,DUKHCONP1AZ4WEEX5050,Installation of Steel Gate,8178,152,72,160,0,56,56,160,0,0,0,,,,2014-05-06 08:00,2014-05-28 17:00,,2014-04-14 08:00,2014-05-06 17:00,2014-04-14 08:00,2014-05-06 17:00,2014-04-14 08:00,2014-05-06 17:00,2014-05-06 08:00,2014-05-28 17:00,,PT_Normal,,,,,rsnqdwkmRMebp8pc/3oy+Q,,,,N,0,0,,,2013-02-16 15:55,2013-02-16 15:56,admin,admin
504777,6359,125542,13662,0,N,N,N,CP_Drtn,TT_Task,DT_FixedDUR2,TK_NotStart,DUKHCONP1AZ4WEEX5060,Structural steel &  SS Shed cover installation,8178,80,0,200,0,336,336,200,0,0,0,,,,2014-05-12 08:00,2014-06-09 17:00,,2014-04-30 08:00,2014-05-28 17:00,2014-04-30 08:00,2014-05-28 17:00,2014-04-30 08:00,2014-05-28 17:00,2014-05-12 08:00,2014-06-09 17:00,,PT_Normal,,,,,xRjG2MrhSYSXlVQ8eN2VZA,,,,N,0,0,,,2013-02-16 15:55,2013-02-16 15:56,admin,admin
504778,6359,125542,13662,0,N,N,N,CP_Drtn,TT_Task,DT_FixedDUR2,TK_NotStart,DUKHCONP1AZ4WEEX5065,"Install. of Water Tank,Chiller,Pump & Meter",8178,72,0,200,0,203.2,203.2,200,0,0,0,,,,2014-05-19 08:00,2014-06-16 17:00,,2014-05-08 08:00,2014-06-05 17:00,2014-05-08 08:00,2014-06-05 17:00,2014-05-08 08:00,2014-06-05 17:00,2014-05-19 08:00,2014-06-16 17:00,,PT_Normal,,,,,TsulcQYFTDOkteDN0akdcA,,,,N,0,0,,,2013-02-16 15:55,2013-02-16 15:56,admin,admin
504779,6359,125543,13662,0,N,N,N,CP_Drtn,TT_Task,DT_FixedDUR2,TK_NotStart,DUKHCONP1AZ4HDEX5090,kerb works,8173,128,0,160,0,344,344,160,0,0,0,,,,2014-04-17 08:00,2014-05-10 17:00,,2014-03-30 08:00,2014-04-21 17:00,2014-03-30 08:00,2014-04-21 17:00,2014-03-30 08:00,2014-04-21 17:00,2014-04-17 08:00,2014-05-10 17:00,,PT_Normal,,,,,2dxD9vPRS22XSYbBKR1ETQ,,,,N,0,0,,,2013-02-16 15:55,2013-02-16 15:56,admin,admin
504780,6359,125543,13662,0,N,N,N,CP_Drtn,TT_Task,DT_FixedDUR2,TK_NotStart,DUKHCONP1AZ4HDEX5095,Cobble Stone Works,8170,128,0,160,0,200,200,160,0,0,0,,,,2014-04-29 08:00,2014-05-21 17:00,,2014-04-10 08:00,2014-05-03 17:00,2014-04-10 08:00,2014-05-03 17:00,2014-04-10 08:00,2014-05-03 17:00,2014-04-29 08:00,2014-05-21 17:00,,PT_Normal,,,,,Q79wyYp7RzGTGHn8ZYsuOw,,,,N,0,0,,,2013-02-16 15:55,2013-02-16 15:56,admin,admin
504781,6359,125543,13662,0,N,N,N,CP_Drtn,TT_Task,DT_FixedDUR2,TK_NotStart,DUKHCONP1AZ4HDEX5100,Interlock works,8174,128,0,160,0,232,232,160,0,0,0,,,,2014-05-06 08:00,2014-05-28 17:00,,2014-04-17 08:00,2014-05-10 17:00,2014-04-17 08:00,2014-05-10 17:00,2014-04-17 08:00,2014-05-10 17:00,2014-05-06 08:00,2014-05-28 17:00,,PT_Normal,,,,,hRKB2q13S9mBl5F9RgBmRA,,,,N,0,0,,,2013-02-16 15:55,2013-02-16 15:56,admin,admin
504782,6359,125546,13662,0,N,N,N,CP_Drtn,TT_Task,DT_FixedDUR2,TK_NotStart,DUKHCONP1AZ4ACGF4600,Installation AC Pipes,8178,392,40,160,0,977.6,977.6,160,0,0,0,,,,2014-03-15 08:00,2014-04-06 17:00,,2014-01-15 08:00,2014-02-06 17:00,2014-01-15 08:00,2014-02-06 17:00,2014-01-15 08:00,2014-02-06 17:00,2014-03-15 08:00,2014-04-06 17:00,,PT_Normal,,,,,VluWQi0pQOuvenxbSmSOfQ,,,,N,0,0,,,2013-02-16 15:55,2013-02-16 15:56,admin,admin
504783,6359,125546,13662,0,N,N,N,CP_Drtn,TT_Task,DT_FixedDUR2,TK_NotStart,DUKHCONP1AZ4ACGF4605,Fixing of Ventilation Equipments,8178,256,0,200,0,182.4,182.4,200,0,0,0,,,,2014-04-16 08:00,2014-05-14 17:00,,2014-03-10 08:00,2014-04-07 17:00,2014-03-10 08:00,2014-04-07 17:00,2014-03-10 08:00,2014-04-07 17:00,2014-04-16 08:00,2014-05-14 17:00,,PT_Normal,,,,,zfigNSquSTicD7VpIcPTUw,,,,N,0,0,,,2013-02-16 15:55,2013-02-16 15:56,admin,admin
504784,6359,125546,13662,0,N,N,N,CP_Drtn,TT_Task,DT_FixedDUR2,TK_NotStart,DUKHCONP1AZ4ACGF4610,Fixing of Split AC,8178,256,40,160,0,296,296,160,0,0,0,,,,2014-05-07 08:00,2014-05-29 17:00,,2014-03-31 08:00,2014-04-22 17:00,2014-03-31 08:00,2014-04-22 17:00,2014-03-31 08:00,2014-04-22 17:00,2014-05-07 08:00,2014-05-29 17:00,,PT_Normal,,,,,QtKx8rqBSRq+52M4UzNisA,,,,N,0,0,,,2013-02-16 15:55,2013-02-16 15:56,admin,admin
504785,6359,125547,13662,0,N,N,N,CP_Drtn,TT_Task,DT_FixedDUR2,TK_NotStart,DUKHCONP1AZ4ACRF4630,Installation of Refrigerant Pipes,8178,272,0,200,0,409.6,409.6,200,0,0,0,,,,2014-05-13 08:00,2014-06-10 17:00,,2014-04-03 08:00,2014-05-01 17:00,2014-04-03 08:00,2014-05-01 17:00,2014-04-03 08:00,2014-05-01 17:00,2014-05-13 08:00,2014-06-10 17:00,,PT_Normal,,,,,0LOqOm7LT+qLLccs0iWo1g,,,,N,0,0,,,2013-02-16 15:55,2013-02-16 15:56,admin,admin
504786,6359,125547,13662,0,N,N,N,CP_Drtn,TT_Task,DT_FixedDUR2,TK_NotStart,DUKHCONP1AZ4ACRF4635,Installation of Condensing Unit,8178,24,0,200,0,568,568,200,0,0,0,,,,2014-05-19 08:00,2014-06-16 17:00,,2014-05-15 08:00,2014-06-12 17:00,2014-05-15 08:00,2014-06-12 17:00,2014-05-15 08:00,2014-06-12 17:00,2014-05-19 08:00,2014-06-16 17:00,,PT_Normal,,,,,Li8U3ynSRqKmuMe/AsbTPQ,,,,N,0,0,,,2013-02-16 15:55,2013-02-16 15:56,admin,admin
504787,6359,125548,13662,0,N,N,N,CP_Drtn,TT_Task,DT_FixedDUR2,TK_NotStart,DUKHCONP1AZ4ACFF4615,Installation AC Pipes,8178,216,40,160,0,977.6,977.6,160,0,0,0,,,,2014-04-02 08:00,2014-04-24 17:00,,2014-03-02 08:00,2014-03-24 17:00,2014-03-02 08:00,2014-03-24 17:00,2014-03-02 08:00,2014-03-24 17:00,2014-04-02 08:00,2014-04-24 17:00,,PT_Normal,,,,,jDS+/bqfRe+62p5bUYuujg,,,,N,0,0,,,2013-02-16 15:55,2013-02-16 15:56,admin,admin
504788,6359,125548,13662,0,N,N,N,CP_Drtn,TT_Task,DT_FixedDUR2,TK_NotStart,DUKHCONP1AZ4ACFF4620,Fixing of Ventilation Equipments,8178,16,0,200,0,113.6,113.6,200,0,0,0,,,,2014-04-21 08:00,2014-05-19 17:00,,2014-04-19 08:00,2014-05-17 17:00,2014-04-19 08:00,2014-05-17 17:00,2014-04-19 08:00,2014-05-17 17:00,2014-04-21 08:00,2014-05-19 17:00,,PT_Normal,,,,,218cXu4VSbmYRYVQLG2zTg,,,,N,0,0,,,2013-02-16 15:55,2013-02-16 15:56,admin,admin
504789,6359,125548,13662,0,N,N,N,CP_Drtn,TT_Task,DT_FixedDUR2,TK_NotStart,DUKHCONP1AZ4ACFF4625,Fixing of Split AC,8178,16,0,160,0,296,296,160,0,0,0,,,,2014-05-12 08:00,2014-06-03 17:00,,2014-05-10 08:00,2014-06-01 17:00,2014-05-10 08:00,2014-06-01 17:00,2014-05-10 08:00,2014-06-01 17:00,2014-05-12 08:00,2014-06-03 17:00,,PT_Normal,,,,,Zd/Po/uEQRWSGu9p0UVCHw,,,,N,0,0,,,2013-02-16 15:55,2013-02-16 15:56,admin,admin
504790,6359,125550,13662,0,N,N,N,CP_Drtn,TT_Task,DT_FixedDUR2,TK_NotStart,DUKHCONP1AZ4PLGF4305,Installation of Plumbing pipes & testing,8178,144,0,144,0,441.6,441.6,144,0,0,0,,,,2014-01-16 08:00,2014-02-05 17:00,,2013-12-26 08:00,2014-01-15 17:00,2013-12-26 08:00,2014-01-15 17:00,2013-12-26 08:00,2014-01-15 17:00,2014-01-16 08:00,2014-02-05 17:00,,PT_Normal,,,,,OSlXr2eDSFOmY15iMcm4/w,,,,N,0,0,,,2013-02-16 15:55,2013-02-16 15:56,admin,admin
504791,6359,125550,13662,0,N,N,N,CP_Drtn,TT_Task,DT_FixedDUR2,TK_NotStart,DUKHCONP1AZ4PLGF4310,Installation of Drainage pipes &testing,8178,168,104,144,0,177.6,177.6,144,0,0,0,,,,2014-01-20 08:00,2014-02-09 17:00,,2013-12-26 08:00,2014-01-15 17:00,2013-12-26 08:00,2014-01-15 17:00,2013-12-26 08:00,2014-01-15 17:00,2014-01-20 08:00,2014-02-09 17:00,,PT_Normal,,,,,gHaOr+A/SNuUodA8c8hdhQ,,,,N,0,0,,,2013-02-16 15:55,2013-02-16 15:56,admin,admin
504792,6359,125550,13662,0,N,N,N,CP_Drtn,TT_Task,DT_FixedDUR2,TK_NotStart,DUKHCONP1AZ4PLGF4315,Sanitary Fittings & Accessories,8178,360,0,160,0,134.4,134.4,160,0,0,0,,,,2014-05-19 08:00,2014-06-10 17:00,,2014-03-27 08:00,2014-04-19 17:00,2014-03-27 08:00,2014-04-19 17:00,2014-03-27 08:00,2014-04-19 17:00,2014-05-19 08:00,2014-06-10 17:00,,PT_Normal,,,,,kf9mIWxMScuwxjY8+Zc24A,,,,N,0,0,,,2013-02-16 15:55,2013-02-16 15:56,admin,admin
504793,6359,125550,13662,0,N,N,N,CP_Drtn,TT_Task,DT_FixedDUR2,TK_NotStart,DUKHCONP1AZ4PLGF4320,Installation of Water Heater,8178,360,80,120,0,134.4,134.4,120,0,0,0,,,,2014-05-31 08:00,2014-06-16 17:00,,2014-04-08 08:00,2014-04-24 17:00,2014-04-08 08:00,2014-04-24 17:00,2014-04-08 08:00,2014-04-24 17:00,2014-05-31 08:00,2014-06-16 17:00,,PT_Normal,,,,,X4wI8I9VSyeyQMDINkKTPA,,,,N,0,0,,,2013-02-16 15:55,2013-02-16 15:56,admin,admin
504794,6359,125550,13662,0,N,N,N,CP_Drtn,TT_Task,DT_FixedDUR2,TK_NotStart,DUKHCONP1AZ4PLUG4300,Drainage / Storm Pipes in Grade Slab,8178,0,0,128,0,67.2,67.2,128,0,0,0,,,,2013-09-02 08:00,2013-09-19 17:00,,2013-09-02 08:00,2013-09-19 17:00,2013-09-02 08:00,2013-09-19 17:00,2013-09-02 08:00,2013-09-19 17:00,2013-09-02 08:00,2013-09-19 17:00,,PT_Normal,,,,,KGocslmqT0OPXFNxzOt88w,,,,Y,0,0,,,2013-02-16 15:55,2013-02-16 15:56,admin,admin
504795,6359,125551,13662,0,N,N,N,CP_Drtn,TT_Task,DT_FixedDUR2,TK_NotStart,DUKHCONP1AZ4PLFF4325,Installation of Plumbing pipes & testing,8178,8,0,144,0,441.6,441.6,144,0,0,0,,,,2014-02-08 08:00,2014-03-01 17:00,,2014-02-06 08:00,2014-02-27 17:00,2014-02-06 08:00,2014-02-27 17:00,2014-02-06 08:00,2014-02-27 17:00,2014-02-08 08:00,2014-03-01 17:00,,PT_Normal,,,,,WlWs8rxHQpmYZ52pa2lCMQ,,,,N,0,0,,,2013-02-16 15:55,2013-02-16 15:56,admin,admin
504796,6359,125551,13662,0,N,N,N,CP_Drtn,TT_Task,DT_FixedDUR2,TK_NotStart,DUKHCONP1AZ4PLFF4330,Installation of Drainage pipes & testing,8178,184,64,144,0,177.6,177.6,144,0,0,0,,,,2014-03-06 08:00,2014-03-26 17:00,,2014-02-06 08:00,2014-02-27 17:00,2014-02-06 08:00,2014-02-27 17:00,2014-02-06 08:00,2014-02-27 17:00,2014-03-06 08:00,2014-03-26 17:00,,PT_Normal,,,,,xdT1Vr/7TWW+ca4ILrnpVA,,,,N,0,0,,,2013-02-16 15:55,2013-02-16 15:56,admin,admin
504797,6359,125551,13662,0,N,N,N,CP_Drtn,TT_Task,DT_FixedDUR2,TK_NotStart,DUKHCONP1AZ4PLFF4335,Sanitary Fittings & Accessories,8178,40,0,160,0,67.2,67.2,160,0,0,0,,,,2014-05-01 08:00,2014-05-24 17:00,,2014-04-26 08:00,2014-05-18 17:00,2014-04-26 08:00,2014-05-18 17:00,2014-04-26 08:00,2014-05-18 17:00,2014-05-01 08:00,2014-05-24 17:00,,PT_Normal,,,,,WJCrq9p0QUSgLHUcsiAu4g,,,,N,0,0,,,2013-02-16 15:55,2013-02-16 15:56,admin,admin
504798,6359,125551,13662,0,N,N,N,CP_Drtn,TT_Task,DT_FixedDUR2,TK_NotStart,DUKHCONP1AZ4PLFF4340,Installation of Water Heater,8178,40,32,120,0,67.2,67.2,120,0,0,0,,,,2014-05-13 08:00,2014-05-29 17:00,,2014-05-07 08:00,2014-05-24 17:00,2014-05-07 08:00,2014-05-24 17:00,2014-05-07 08:00,2014-05-24 17:00,2014-05-13 08:00,2014-05-29 17:00,,PT_Normal,,,,,xl+dxHBTS6KpwxuOQDvMfw,,,,N,0,0,,,2013-02-16 15:55,2013-02-16 15:56,admin,admin
504799,6359,125552,13662,0,N,N,N,CP_Drtn,TT_Task,DT_FixedDUR2,TK_NotStart,DUKHCONP1AZ4PLRF4345,Installation of Plumbing pipes & fittings,8178,448,240,120,0,110.4,110.4,120,0,0,0,,,,2014-05-04 08:00,2014-05-20 17:00,,2014-02-27 08:00,2014-03-16 17:00,2014-02-27 08:00,2014-03-16 17:00,2014-02-27 08:00,2014-03-16 17:00,2014-05-04 08:00,2014-05-20 17:00,,PT_Normal,,,,,ePnVWfK1TBSyiHpxU2xi0A,,,,N,0,0,,,2013-02-16 15:55,2013-02-16 15:56,admin,admin
504800,6359,125552,13662,0,N,N,N,CP_Drtn,TT_Task,DT_FixedDUR2,TK_NotStart,DUKHCONP1AZ4PLRF4350,Installation of Rain water Pipes,8178,208,80,120,0,67.2,67.2,120,0,0,0,,,,2014-05-13 08:00,2014-05-29 17:00,,2014-04-13 08:00,2014-04-29 17:00,2014-04-13 08:00,2014-04-29 17:00,2014-04-13 08:00,2014-04-29 17:00,2014-05-13 08:00,2014-05-29 17:00,,PT_Normal,,,,,4CDpcuPNSM6uoB+8vmEyLA,,,,N,0,0,,,2013-02-16 15:55,2013-02-16 15:56,admin,admin
504801,6359,125552,13662,0,N,N,N,CP_Drtn,TT_Task,DT_FixedDUR2,TK_NotStart,DUKHCONP1AZ4PLRF4355,Roof  Water Tank Installation & Connections,8178,8,0,200,0,336,336,200,0,0,0,,,,2014-05-19 08:00,2014-06-16 17:00,,2014-05-18 08:00,2014-06-15 17:00,2014-05-18 08:00,2014-06-15 17:00,2014-05-18 08:00,2014-06-15 17:00,2014-05-19 08:00,2014-06-16 17:00,,PT_Normal,,,,,c39vlzuERxiG2SW8U3xHEg,,,,N,0,0,,,2013-02-16 15:55,2013-02-16 15:56,admin,admin
504802,6359,125554,13662,0,N,N,N,CP_Drtn,TT_Task,DT_FixedDUR2,TK_NotStart,DUKHCONP1AZ4ELGF4000,Fixing of wall conduits & switch socket boxes,8178,216,0,200,0,1222.4,1222.4,200,0,0,0,,,,2014-01-16 08:00,2014-02-15 17:00,,2013-12-15 08:00,2014-01-13 17:00,2013-12-15 08:00,2014-01-13 17:00,2013-12-15 08:00,2014-01-13 17:00,2014-01-16 08:00,2014-02-15 17:00,,PT_Normal,,,,,NNTsSi0GR7OXjmw5suYaoQ,,,,N,0,0,,,2013-02-16 15:55,2013-02-16 15:56,admin,admin
504803,6359,125554,13662,0,N,N,N,CP_Drtn,TT_Task,DT_FixedDUR2,TK_NotStart,DUKHCONP1AZ4ELGF4005,Cable tray & trunking installation,8178,360,0,160,0,1318.4,1318.4,160,0,0,0,,,,2014-02-19 08:00,2014-03-13 17:00,,2013-12-28 08:00,2014-01-19 17:00,2013-12-28 08:00,2014-01-19 17:00,2013-12-28 08:00,2014-01-19 17:00,2014-02-19 08:00,2014-03-13 17:00,,PT_Normal,,,,,ctstqlxqT4OjYelSH3mtrg,,,,N,0,0,,,2013-02-16 15:55,2013-02-16 15:56,admin,admin
504804,6359,125554,13662,0,N,N,N,CP_Drtn,TT_Task,DT_FixedDUR2,TK_NotStart,DUKHCONP1AZ4ELGF4010,Installation of wiring & Main Cabling,8178,360,216,200,0,296,296,200,0,0,0,,,,2014-02-27 08:00,2014-03-27 17:00,,2014-01-05 08:00,2014-02-02 17:00,2014-01-05 08:00,2014-02-02 17:00,2014-01-05 08:00,2014-02-02 17:00,2014-02-27 08:00,2014-03-27 17:00,,PT_Normal,,,,,XXyBWcA2Stq58/Y+GXm7+w,,,,N,0,0,,,2013-02-16 15:55,2013-02-16 15:56,admin,admin
504805,6359,125554,13662,0,N,N,N,CP_Drtn,TT_Task,DT_FixedDUR2,TK_NotStart,DUKHCONP1AZ4ELGF4020,"Installation  of DBS,MCCB Accessories.",8178,144,0,160,0,227.2,227.2,160,0,0,0,,,,2014-04-06 08:00,2014-04-28 17:00,,2014-03-16 08:00,2014-04-07 17:00,2014-03-16 08:00,2014-04-07 17:00,2014-03-16 08:00,2014-04-07 17:00,2014-04-06 08:00,2014-04-28 17:00,,PT_Normal,,,,,cDKZvsUzQ/K/I8szQRNFcg,,,,N,0,0,,,2013-02-16 15:55,2013-02-16 15:56,admin,admin
504806,6359,125554,13662,0,N,N,N,CP_Drtn,TT_Task,DT_FixedDUR2,TK_NotStart,DUKHCONP1AZ4ELGF4025,Installation of Lighting fixtures & Accessories,8178,200,0,200,0,1651.2,1651.2,200,0,0,0,,,,2014-04-26 08:00,2014-05-24 17:00,,2014-03-27 08:00,2014-04-24 17:00,2014-03-27 08:00,2014-04-24 17:00,2014-03-27 08:00,2014-04-24 17:00,2014-04-26 08:00,2014-05-24 17:00,,PT_Normal,,,,,sxO27q4MSgOfTEN5rtqZeQ,,,,N,0,0,,,2013-02-16 15:55,2013-02-16 15:56,admin,admin
504807,6359,125554,13662,0,N,N,N,CP_Drtn,TT_Task,DT_FixedDUR2,TK_NotStart,DUKHCONP1AZ4ELGF4015,Install. of CAMS & Fire Fighting Accessories,8178,240,0,200,0,1075.2,1075.2,200,0,0,0,,,,2014-04-14 08:00,2014-05-12 17:00,,2014-03-10 08:00,2014-04-07 17:00,2014-03-10 08:00,2014-04-07 17:00,2014-03-10 08:00,2014-04-07 17:00,2014-04-14 08:00,2014-05-12 17:00,,PT_Normal,,,,,LbbTxpfeSVCBAsfx1HLrjQ,,,,N,0,0,,,2013-02-16 15:55,2013-02-16 15:56,admin,admin
504808,6359,125554,13662,0,N,N,N,CP_Drtn,TT_Task,DT_FixedDUR2,TK_NotStart,DUKHCONP1AZ4ELGF4030,Installation of Telephone System,8178,144,40,160,0,520,520,160,0,0,0,,,,2014-04-17 08:00,2014-05-10 17:00,,2014-03-27 08:00,2014-04-19 17:00,2014-03-27 08:00,2014-04-19 17:00,2014-03-27 08:00,2014-04-19 17:00,2014-04-17 08:00,2014-05-10 17:00,,PT_Normal,,,,,X3wyIPoTTOa6JXdkHu49mQ,,,,N,0,0,,,2013-02-16 15:55,2013-02-16 15:56,admin,admin
504809,6359,125555,13662,0,N,N,N,CP_Drtn,TT_Task,DT_FixedDUR2,TK_NotStart,DUKHCONP1AZ4ELFF4035,Fixing of wall conduits & switch socket boxes,8178,88,0,200,0,1222.4,1222.4,200,0,0,0,,,,2014-02-09 08:00,2014-03-10 17:00,,2014-01-27 08:00,2014-02-25 17:00,2014-01-27 08:00,2014-02-25 17:00,2014-01-27 08:00,2014-02-25 17:00,2014-02-09 08:00,2014-03-10 17:00,,PT_Normal,,,,,sg1pDadWRXyzfM3Qv/y2rQ,,,,N,0,0,,,2013-02-16 15:55,2013-02-16 15:56,admin,admin
504810,6359,125555,13662,0,N,N,N,CP_Drtn,TT_Task,DT_FixedDUR2,TK_NotStart,DUKHCONP1AZ4ELFF4040,Cable tray & trunking installation,8178,232,16,160,0,1318.4,1318.4,160,0,0,0,,,,2014-03-15 08:00,2014-04-06 17:00,,2014-02-08 08:00,2014-03-03 17:00,2014-02-08 08:00,2014-03-03 17:00,2014-02-08 08:00,2014-03-03 17:00,2014-03-15 08:00,2014-04-06 17:00,,PT_Normal,,,,,F56MGRPQQAyDJQV/MpKFfw,,,,N,0,0,,,2013-02-16 15:55,2013-02-16 15:56,admin,admin
504811,6359,125555,13662,0,N,N,N,CP_Drtn,TT_Task,DT_FixedDUR2,TK_NotStart,DUKHCONP1AZ4ELFF4045,Installation of wiring & Main Cabling,8178,216,0,200,0,296,296,200,0,0,0,,,,2014-03-23 08:00,2014-04-20 17:00,,2014-02-19 08:00,2014-03-19 17:00,2014-02-19 08:00,2014-03-19 17:00,2014-02-19 08:00,2014-03-19 17:00,2014-03-23 08:00,2014-04-20 17:00,,PT_Normal,,,,,1hXkHWdzTQGbyI/fj2bcCw,,,,N,0,0,,,2013-02-16 15:55,2013-02-16 15:56,admin,admin
504812,6359,125555,13662,0,N,N,N,CP_Drtn,TT_Task,DT_FixedDUR2,TK_NotStart,DUKHCONP1AZ4ELFF4060,"Installation  of DBS,MCCB Accessories.",8178,24,16,160,0,227.2,227.2,160,0,0,0,,,,2014-04-26 08:00,2014-05-18 17:00,,2014-04-22 08:00,2014-05-14 17:00,2014-04-22 08:00,2014-05-14 17:00,2014-04-22 08:00,2014-05-14 17:00,2014-04-26 08:00,2014-05-18 17:00,,PT_Normal,,,,,/Yy4bX6OQ4OxOg9E8mD1GA,,,,N,0,0,,,2013-02-16 15:55,2013-02-16 15:56,admin,admin
504813,6359,125555,13662,0,N,N,N,CP_Drtn,TT_Task,DT_FixedDUR2,TK_NotStart,DUKHCONP1AZ4ELFF4065,Installation of Lighting fixtures & Accessories,8178,8,0,200,0,1651.2,1651.2,200,0,0,0,,,,2014-05-01 08:00,2014-05-29 17:00,,2014-04-30 08:00,2014-05-28 17:00,2014-04-30 08:00,2014-05-28 17:00,2014-04-30 08:00,2014-05-28 17:00,2014-05-01 08:00,2014-05-29 17:00,,PT_Normal,,,,,j8r11BXwQTeNjr6Pyv9Gyw,,,,N,0,0,,,2013-02-16 15:55,2013-02-16 15:56,admin,admin
504814,6359,125555,13662,0,N,N,N,CP_Drtn,TT_Task,DT_FixedDUR2,TK_NotStart,DUKHCONP1AZ4ELFF4055,Install. of CAMS & Fire Fighting Accessories,8178,8,0,200,0,1008,1008,200,0,0,0,,,,2014-04-20 08:00,2014-05-18 17:00,,2014-04-19 08:00,2014-05-17 17:00,2014-04-19 08:00,2014-05-17 17:00,2014-04-19 08:00,2014-05-17 17:00,2014-04-20 08:00,2014-05-18 17:00,,PT_Normal,,,,,687DQyKkQJWbw8qJmkcAYg,,,,N,0,0,,,2013-02-16 15:55,2013-02-16 15:56,admin,admin
504815,6359,125555,13662,0,N,N,N,CP_Drtn,TT_Task,DT_FixedDUR2,TK_NotStart,DUKHCONP1AZ4ELFF4050,Installation of Telephone System,8178,64,56,200,0,451.2,451.2,200,0,0,0,,,,2014-04-29 08:00,2014-05-27 17:00,,2014-04-20 08:00,2014-05-18 17:00,2014-04-20 08:00,2014-05-18 17:00,2014-04-20 08:00,2014-05-18 17:00,2014-04-29 08:00,2014-05-27 17:00,,PT_Normal,,,,,9UeQfnUrS7680oqcRcuhug,,,,N,0,0,,,2013-02-16 15:55,2013-02-16 15:56,admin,admin
504816,6359,125556,13662,0,N,N,N,CP_Drtn,TT_Task,DT_FixedDUR2,TK_NotStart,DUKHCONP1AZ4ELRF4070,Installation of Isolator,8178,8,0,144,0,412.8,412.8,144,0,0,0,,,,2014-05-15 08:00,2014-06-04 17:00,,2014-05-14 08:00,2014-06-03 17:00,2014-05-14 08:00,2014-06-03 17:00,2014-05-14 08:00,2014-06-03 17:00,2014-05-15 08:00,2014-06-04 17:00,,PT_Normal,,,,,1qNgoX1hTcWVw3Olvcqwmw,,,,N,0,0,,,2013-02-16 15:55,2013-02-16 15:56,admin,admin
504817,6359,125556,13662,0,N,N,N,CP_Drtn,TT_Task,DT_FixedDUR2,TK_NotStart,DUKHCONP1AZ4ELRF4075,Installation of TV Dish Antenna,8178,8,8,184,0,732.8,732.8,184,0,0,0,,,,2014-05-21 08:00,2014-06-16 17:00,,2014-05-20 08:00,2014-06-15 17:00,2014-05-20 08:00,2014-06-15 17:00,2014-05-20 08:00,2014-06-15 17:00,2014-05-21 08:00,2014-06-16 17:00,,PT_Normal,,,,,IQhkovilRkC3+X2gzyFfhw,,,,N,0,0,,,2013-02-16 15:55,2013-02-23 09:03,admin,admin
504818,6359,125559,13662,0,N,N,N,CP_Drtn,TT_Task,DT_FixedDUR2,TK_NotStart,DUKHCONP1AZ4STRF2040,Column-Rebar & Formwork,8165,64,0,144,0,1205.75,1205.75,144,0,0,0,,,,2014-01-04 08:00,2014-01-23 17:00,,2013-12-25 08:00,2014-01-14 17:00,2013-12-25 08:00,2014-01-14 17:00,2013-12-25 08:00,2014-01-14 17:00,2014-01-04 08:00,2014-01-23 17:00,,PT_Normal,,,,,LluXCma1TzyaL2WW7SDKyw,,,,N,0,0,,,2013-02-16 15:55,2013-02-16 15:56,admin,admin
504819,6359,125559,13662,0,N,N,N,CP_Drtn,TT_Task,DT_FixedDUR2,TK_NotStart,DUKHCONP1AZ4STRF2045,Column-Concrete,8167,64,0,136,0,52.5,52.5,136,0,0,0,,,,2014-01-07 08:00,2014-01-26 17:00,,2013-12-29 08:00,2014-01-16 17:00,2013-12-29 08:00,2014-01-16 17:00,2013-12-29 08:00,2014-01-16 17:00,2014-01-07 08:00,2014-01-26 17:00,,PT_Normal,,,,,ItxahXiIRk2mPnCqUM0N9Q,,,,N,0,0,,,2013-02-16 15:55,2013-02-16 15:56,admin,admin
504820,6359,125559,13662,0,N,N,N,CP_Drtn,TT_Task,DT_FixedDUR2,TK_NotStart,DUKHCONP1AZ4STRF2050,Slab-Rebar & Formwork - Head Room,8165,64,0,160,0,2735.25,2735.25,160,0,0,0,,,,2014-01-09 08:00,2014-02-01 17:00,,2013-12-31 08:00,2014-01-22 17:00,2013-12-31 08:00,2014-01-22 17:00,2013-12-31 08:00,2014-01-22 17:00,2014-01-09 08:00,2014-02-01 17:00,,PT_Normal,,,,,7VMwB7IZRJekHLXB0QiAmQ,,,,N,0,0,,,2013-02-16 15:55,2013-02-16 15:56,admin,admin
504821,6359,125559,13662,0,N,N,N,CP_Drtn,TT_Task,DT_FixedDUR2,TK_NotStart,DUKHCONP1AZ4STRF2055,Slab-Concrete-Head room,8167,64,0,104,0,252,252,104,0,0,0,,,,2014-01-20 08:00,2014-02-03 17:00,,2014-01-11 08:00,2014-01-25 17:00,2014-01-11 08:00,2014-01-25 17:00,2014-01-11 08:00,2014-01-25 17:00,2014-01-20 08:00,2014-02-03 17:00,,PT_Normal,,,,,0CQNBM5DRFiz3iO6P7JZRA,,,,N,0,0,,,2013-02-16 15:55,2013-02-16 15:56,admin,admin
504822,6359,125559,13662,0,N,N,N,CP_Drtn,TT_Task,DT_FixedDUR2,TK_NotStart,DUKHCONP1AZ4STRF2060,Construction of Parapets,8168,448,32,200,0,2200,2200,200,0,0,0,,,,2014-03-20 08:00,2014-04-17 17:00,,2014-01-13 08:00,2014-02-10 17:00,2014-01-13 08:00,2014-02-10 17:00,2014-01-13 08:00,2014-02-10 17:00,2014-03-20 08:00,2014-04-17 17:00,,PT_Normal,,,,,FJl2WbbtRh2/qfx3G8NFtg,,,,N,0,0,,,2013-02-16 15:55,2013-02-16 15:56,admin,admin
504823,6359,125559,13662,0,N,N,N,CP_Drtn,TT_Task,DT_FixedDUR2,TK_NotStart,DUKHCONP1AZ4STRF2065,Construction of up stands/Plinth,8165,416,0,200,0,554.75,554.75,200,0,0,0,,,,2014-03-26 08:00,2014-04-23 17:00,,2014-01-23 08:00,2014-02-22 17:00,2014-01-23 08:00,2014-02-22 17:00,2014-01-23 08:00,2014-02-22 17:00,2014-03-26 08:00,2014-04-23 17:00,,PT_Normal,,,,,Y4U1LNHXQu+NTJZar0jM/A,,,,N,0,0,,,2013-02-16 15:55,2013-02-16 15:56,admin,admin
504824,6359,125560,13662,0,N,N,N,CP_Drtn,TT_Task,DT_FixedDUR2,TK_NotStart,DUKHCONP1AZ4STFF2020,Column-Rebar & Formwork,8165,16,0,200,0,3580.5,3580.5,200,0,0,0,,,,2013-11-13 08:00,2013-12-11 17:00,,2013-11-11 08:00,2013-12-09 17:00,2013-11-11 08:00,2013-12-09 17:00,2013-11-11 08:00,2013-12-09 17:00,2013-11-13 08:00,2013-12-11 17:00,,PT_Normal,,,,,U5TUfHzzSx6pANAp3O3msQ,,,,N,0,0,,,2013-02-16 15:55,2013-02-16 15:56,admin,admin
504825,6359,125560,13662,0,N,N,N,CP_Drtn,TT_Task,DT_FixedDUR2,TK_NotStart,DUKHCONP1AZ4STFF2025,Column-Concrete,8167,32,0,192,0,224,224,192,0,0,0,,,,2013-11-25 08:00,2013-12-23 17:00,,2013-11-20 08:00,2013-12-17 17:00,2013-11-20 08:00,2013-12-17 17:00,2013-11-20 08:00,2013-12-17 17:00,2013-11-25 08:00,2013-12-23 17:00,,PT_Normal,,,,,9z1P5zPGRkikuHaSYX7UJg,,,,N,0,0,,,2013-02-16 15:55,2013-02-16 15:56,admin,admin
504826,6359,125560,13662,0,N,N,N,CP_Drtn,TT_Task,DT_FixedDUR2,TK_NotStart,DUKHCONP1AZ4STFF2030,"Beam, Stairs ,Slab-Rebar & Formwork",8165,32,0,200,0,16119.25,16119.25,200,0,0,0,,,,2013-12-10 08:00,2014-01-08 17:00,,2013-12-05 08:00,2014-01-04 17:00,2013-12-05 08:00,2014-01-04 17:00,2013-12-05 08:00,2014-01-04 17:00,2013-12-10 08:00,2014-01-08 17:00,,PT_Normal,,,,,qoLsGjDBQFGb2fKmDSaDsA,,,,N,0,0,,,2013-02-16 15:55,2013-02-16 15:56,admin,admin
504827,6359,125560,13662,0,N,N,N,CP_Drtn,TT_Task,DT_FixedDUR2,TK_NotStart,DUKHCONP1AZ4STFF2035,"Beam, Stairs ,Slab-Concrete",8167,32,0,112,0,1141,1141,112,0,0,0,,,,2013-12-28 08:00,2014-01-12 17:00,,2013-12-23 08:00,2014-01-07 17:00,2013-12-23 08:00,2014-01-07 17:00,2013-12-23 08:00,2014-01-07 17:00,2013-12-28 08:00,2014-01-12 17:00,,PT_Normal,,,,,ZxtggsVRSTiHcJuqm7EN7g,,,,N,0,0,,,2013-02-16 15:55,2013-02-16 15:56,admin,admin
504828,6359,125561,13662,0,N,N,N,CP_Drtn,TT_Task,DT_FixedDUR2,TK_NotStart,DUKHCONP1AZ4STGF2000,Column-Rebar & Formwork,8165,0,0,200,0,4046,4046,200,0,0,0,,,,2013-09-28 08:00,2013-10-28 17:00,,2013-09-28 08:00,2013-10-28 17:00,2013-09-28 08:00,2013-10-28 17:00,2013-09-28 08:00,2013-10-28 17:00,2013-09-28 08:00,2013-10-28 17:00,,PT_Normal,,,,,5fyW9rW5QoGoJg+TwQqYrg,,,,Y,0,0,,,2013-02-16 15:55,2013-02-16 15:56,admin,admin
504829,6359,125561,13662,0,N,N,N,CP_Drtn,TT_Task,DT_FixedDUR2,TK_NotStart,DUKHCONP1AZ4STGF2005,Column-Concrete,8167,16,0,192,0,255.5,255.5,192,0,0,0,,,,2013-10-08 08:00,2013-11-06 17:00,,2013-10-06 08:00,2013-11-04 17:00,2013-10-06 08:00,2013-11-04 17:00,2013-10-06 08:00,2013-11-04 17:00,2013-10-08 08:00,2013-11-06 17:00,,PT_Normal,,,,,jEqac4hCTUe0oKPcIeeVCQ,,,,N,0,0,,,2013-02-16 15:55,2013-02-16 15:56,admin,admin
504830,6359,125561,13662,0,N,N,N,CP_Drtn,TT_Task,DT_FixedDUR2,TK_NotStart,DUKHCONP1AZ4STGF2010,"Beam, Stairs ,Slab-Rebar & Formwork",8165,16,0,200,0,16829.75,16829.75,200,0,0,0,,,,2013-10-26 08:00,2013-11-23 17:00,,2013-10-23 08:00,2013-11-20 17:00,2013-10-23 08:00,2013-11-20 17:00,2013-10-23 08:00,2013-11-20 17:00,2013-10-26 08:00,2013-11-23 17:00,,PT_Normal,,,,,XhiRwuBaTk64pfrh9r8l+w,,,,N,0,0,,,2013-02-16 15:55,2013-02-16 15:56,admin,admin
504831,6359,125561,13662,0,N,N,N,CP_Drtn,TT_Task,DT_FixedDUR2,TK_NotStart,DUKHCONP1AZ4STGF2015,"Beam, Stairs ,Slab-Concrete",8167,16,0,112,0,1295,1295,112,0,0,0,,,,2013-11-11 08:00,2013-11-26 17:00,,2013-11-09 08:00,2013-11-24 17:00,2013-11-09 08:00,2013-11-24 17:00,2013-11-09 08:00,2013-11-24 17:00,2013-11-11 08:00,2013-11-26 17:00,,PT_Normal,,,,,k1LoNUwSRKSYfpLS2192lA,,,,N,0,0,,,2013-02-16 15:55,2013-02-16 15:56,admin,admin
504832,6359,125563,13662,0,N,N,N,CP_Drtn,TT_Task,DT_FixedDUR2,TK_NotStart,DUKHCONP1AZ4STUG1000,Footing Excavation,8177,0,0,200,0,1114,1114,200,524,0,524,,,,2013-05-13 08:00,2013-06-10 17:00,,2013-05-13 08:00,2013-06-10 17:00,2013-05-13 08:00,2013-06-10 17:00,2013-05-13 08:00,2013-06-10 17:00,2013-05-13 08:00,2013-06-10 17:00,,PT_Normal,,,,,RHe1Qh3cQKG5FtJPGtIaoQ,,,,Y,0,0,,,2013-02-16 15:55,2013-02-16 15:56,admin,admin
504833,6359,125563,13662,0,N,N,N,CP_Drtn,TT_Task,DT_FixedDUR2,TK_NotStart,DUKHCONP1AZ4STUG1005,Footing Antitermite,8178,0,0,184,0,1584,1584,184,0,0,0,,,,2013-05-25 08:00,2013-06-19 17:00,,2013-05-25 08:00,2013-06-19 17:00,2013-05-25 08:00,2013-06-19 17:00,2013-05-25 08:00,2013-06-19 17:00,2013-05-25 08:00,2013-06-19 17:00,,PT_Normal,,,,,+Cn9xW5vSKeVgb0RNtV1WA,,,,Y,0,0,,,2013-02-16 15:55,2013-02-16 15:56,admin,admin
504834,6359,125563,13662,0,N,N,N,CP_Drtn,TT_Task,DT_FixedDUR2,TK_NotStart,DUKHCONP1AZ4STUG1010,Footing Blinding,8163,0,0,184,0,794.5,794.5,184,0,0,0,,,,2013-05-28 08:00,2013-06-23 17:00,,2013-05-28 08:00,2013-06-23 17:00,2013-05-28 08:00,2013-06-23 17:00,2013-05-28 08:00,2013-06-23 17:00,2013-05-28 08:00,2013-06-23 17:00,,PT_Normal,,,,,+AGgtO6bSTWzx7fJiMigDA,,,,Y,0,0,,,2013-02-16 15:55,2013-02-16 15:56,admin,admin
504835,6359,125563,13662,0,N,N,N,CP_Drtn,TT_Task,DT_FixedDUR2,TK_NotStart,DUKHCONP1AZ4STUG1015,Footing Waterproofing & Screed,8164,0,0,200,0,574.75,574.75,200,0,0,0,,,,2013-06-03 08:00,2013-07-01 17:00,,2013-06-03 08:00,2013-07-01 17:00,2013-06-03 08:00,2013-07-01 17:00,2013-06-03 08:00,2013-07-01 17:00,2013-06-03 08:00,2013-07-01 17:00,,PT_Normal,,,,,TuJKZPj2TwKHi2UQzZKKPg,,,,Y,0,0,,,2013-02-16 15:55,2013-02-16 15:56,admin,admin
504836,6359,125563,13662,0,N,N,N,CP_Drtn,TT_Task,DT_FixedDUR2,TK_NotStart,DUKHCONP1AZ4STUG1020,Construction of foundations,8165,0,0,160,0,7778.75,7778.75,160,0,0,0,,,,2013-06-18 08:00,2013-07-10 17:00,,2013-06-18 08:00,2013-07-10 17:00,2013-06-18 08:00,2013-07-10 17:00,2013-06-18 08:00,2013-07-10 17:00,2013-06-18 08:00,2013-07-10 17:00,,PT_Normal,,,,,dBriWKmtTg6LcbyE3lRRJg,,,,Y,0,0,,,2013-02-16 15:55,2013-02-16 15:56,admin,admin
504837,6359,125563,13662,0,N,N,N,CP_Drtn,TT_Task,DT_FixedDUR2,TK_NotStart,DUKHCONP1AZ4STUG1025,Construction of neck of columns,8165,0,0,200,0,1606.5,1606.5,200,0,0,0,,,,2013-06-27 08:00,2013-07-25 17:00,,2013-06-27 08:00,2013-07-25 17:00,2013-06-27 08:00,2013-07-25 17:00,2013-06-27 08:00,2013-07-25 17:00,2013-06-27 08:00,2013-07-25 17:00,,PT_Normal,,,,,mEMYwCnqSFOGwGQXX1xCCw,,,,Y,0,0,,,2013-02-16 15:55,2013-02-16 15:56,admin,admin
504838,6359,125563,13662,0,N,N,N,CP_Drtn,TT_Task,DT_FixedDUR2,TK_NotStart,DUKHCONP1AZ4STUG1030,Waterproofing Footing & Neck Column,8178,0,0,200,0,516,516,200,0,0,0,,,,2013-07-07 08:00,2013-08-04 17:00,,2013-07-07 08:00,2013-08-04 17:00,2013-07-07 08:00,2013-08-04 17:00,2013-07-07 08:00,2013-08-04 17:00,2013-07-07 08:00,2013-08-04 17:00,,PT_Normal,,,,,VNXI00AvTMqbE0X1UVi6vw,,,,Y,0,0,,,2013-02-16 15:55,2013-02-16 15:56,admin,admin
504839,6359,125563,13662,0,N,N,N,CP_Drtn,TT_Task,DT_FixedDUR2,TK_NotStart,DUKHCONP1AZ4STUG1035,Backfilling Upto Grade Beam Bottom,8177,0,0,200,0,1041,1041,200,825,0,825,,,,2013-07-21 08:00,2013-08-21 17:00,,2013-07-21 08:00,2013-08-21 17:00,2013-07-21 08:00,2013-08-21 17:00,2013-07-21 08:00,2013-08-21 17:00,2013-07-21 08:00,2013-08-21 17:00,,PT_Normal,,,,,FGaC07YFQLCMDmXMZliZ3A,,,,Y,0,0,,,2013-02-16 15:55,2013-02-16 15:56,admin,admin
504840,6359,125563,13662,0,N,N,N,CP_Drtn,TT_Task,DT_FixedDUR2,TK_NotStart,DUKHCONP1AZ4STUG1040,Construction of Grade Beams,8163,0,0,200,0,7568.75,7568.75,200,0,0,0,,,,2013-08-06 08:00,2013-09-07 17:00,,2013-08-06 08:00,2013-09-07 17:00,2013-08-06 08:00,2013-09-07 17:00,2013-08-06 08:00,2013-09-07 17:00,2013-08-06 08:00,2013-09-07 17:00,,PT_Normal,,,,,q/yFOvYNQFeLyihBKQgRSg,,,,Y,0,0,,,2013-02-16 15:55,2013-02-16 15:56,admin,admin
504841,6359,125563,13662,0,N,N,N,CP_Drtn,TT_Task,DT_FixedDUR2,TK_NotStart,DUKHCONP1AZ4STUG1045,Construction of slab on grade,8163,0,0,200,0,4422,4422,200,0,0,0,,,,2013-09-11 08:00,2013-10-09 17:00,,2013-09-11 08:00,2013-10-09 17:00,2013-09-11 08:00,2013-10-09 17:00,2013-09-11 08:00,2013-10-09 17:00,2013-09-11 08:00,2013-10-09 17:00,,PT_Normal,,,,,ZyYp8cSiRZeKb8nePajKYw,,,,Y,0,0,,,2013-02-16 15:55,2013-02-16 15:56,admin,admin
504842,6359,125566,13662,0,N,N,N,CP_Drtn,TT_Task,DT_FixedDUR2,TK_NotStart,DUKHCONP1AZ4AREL3665,External Plastering,8169,376,0,200,0,14275,14275,200,0,0,0,,,,2014-04-23 08:00,2014-05-21 17:00,,2014-02-27 08:00,2014-03-27 17:00,2014-02-27 08:00,2014-03-27 17:00,2014-02-27 08:00,2014-03-27 17:00,2014-04-23 08:00,2014-05-21 17:00,,PT_Normal,,,,,n+J4fUV5Rwub9ThuofsIzA,,,,N,0,0,,,2013-02-16 15:55,2013-02-16 15:56,admin,admin
504843,6359,125566,13662,0,N,N,N,CP_Drtn,TT_Task,DT_FixedDUR2,TK_NotStart,DUKHCONP1AZ4AREL3670,External stone cladding works,8170,392,0,160,0,990,990,160,0,0,0,,,,2014-05-13 08:00,2014-06-04 17:00,,2014-03-17 08:00,2014-04-08 17:00,2014-03-17 08:00,2014-04-08 17:00,2014-03-17 08:00,2014-04-08 17:00,2014-05-13 08:00,2014-06-04 17:00,,PT_Normal,,,,,O7Ont6FXT9Oggth5jIgo5g,,,,N,0,0,,,2013-02-16 15:55,2013-02-16 15:56,admin,admin
504844,6359,125566,13662,0,N,N,N,CP_Drtn,TT_Task,DT_FixedDUR2,TK_NotStart,DUKHCONP1AZ4AREL3680,External Painting,8178,392,40,160,0,3784,3784,160,0,0,0,,,,2014-05-25 08:00,2014-06-16 17:00,,2014-03-29 08:00,2014-04-20 17:00,2014-03-29 08:00,2014-04-20 17:00,2014-03-29 08:00,2014-04-20 17:00,2014-05-25 08:00,2014-06-16 17:00,,PT_Normal,,,,,LkYp7IYtSgWxspX/1bDGpQ,,,,N,0,0,,,2013-02-16 15:55,2013-02-16 15:56,admin,admin
504845,6359,125567,13662,0,N,N,N,CP_Drtn,TT_Task,DT_FixedDUR2,TK_NotStart,DUKHCONP1AZ4ARRF3630,Leveling Screed for Waterproofing,8164,168,0,200,0,800,800,200,0,0,0,,,,2014-04-07 08:00,2014-05-05 17:00,,2014-03-13 08:00,2014-04-10 17:00,2014-03-13 08:00,2014-04-10 17:00,2014-03-13 08:00,2014-04-10 17:00,2014-04-07 08:00,2014-05-05 17:00,,PT_Normal,,,,,/Gh20dnsSee3f2489svosw,,,,N,0,0,,,2013-02-16 15:55,2013-02-16 15:56,admin,admin
504846,6359,125567,13662,0,N,N,N,CP_Drtn,TT_Task,DT_FixedDUR2,TK_NotStart,DUKHCONP1AZ4ARRF3635,Laying of Waterproofing Membrane,8178,168,0,200,0,1138.5,1138.5,200,0,0,0,,,,2014-04-10 08:00,2014-05-08 17:00,,2014-03-17 08:00,2014-04-14 17:00,2014-03-17 08:00,2014-04-14 17:00,2014-03-17 08:00,2014-04-14 17:00,2014-04-10 08:00,2014-05-08 17:00,,PT_Normal,,,,,RF/8xps4RCydCXjpRzUJPA,,,,N,0,0,,,2013-02-16 15:55,2013-02-16 15:56,admin,admin
504847,6359,125567,13662,0,N,N,N,CP_Drtn,TT_Task,DT_FixedDUR2,TK_NotStart,DUKHCONP1AZ4ARRF3640,Installation of Insulation & Protection,8178,168,0,200,0,1408,1408,200,0,0,0,,,,2014-04-15 08:00,2014-05-13 17:00,,2014-03-22 08:00,2014-04-19 17:00,2014-03-22 08:00,2014-04-19 17:00,2014-03-22 08:00,2014-04-19 17:00,2014-04-15 08:00,2014-05-13 17:00,,PT_Normal,,,,,9uAj15TsQGKlSRJXO5ZlLg,,,,N,0,0,,,2013-02-16 15:55,2013-02-16 15:56,admin,admin
504848,6359,125567,13662,0,N,N,N,CP_Drtn,TT_Task,DT_FixedDUR2,TK_NotStart,DUKHCONP1AZ4ARRF3645,Lime Stone Chips & Paving slab Installation,8170,168,0,200,0,688.25,688.25,200,0,0,0,,,,2014-04-20 08:00,2014-05-18 17:00,,2014-03-26 08:00,2014-04-23 17:00,2014-03-26 08:00,2014-04-23 17:00,2014-03-26 08:00,2014-04-23 17:00,2014-04-20 08:00,2014-05-18 17:00,,PT_Normal,,,,,JiKA3QFOROKQwO1jtQv0zQ,,,,N,0,0,,,2013-02-16 15:55,2013-02-16 15:56,admin,admin
504849,6359,125567,13662,0,N,N,N,CP_Drtn,TT_Task,DT_FixedDUR2,TK_NotStart,DUKHCONP1AZ4ARRF3655,Installation of Pumps Protection cabinets,8178,168,0,160,0,616,616,160,0,0,0,,,,2014-05-13 08:00,2014-06-04 17:00,,2014-04-19 08:00,2014-05-11 17:00,2014-04-19 08:00,2014-05-11 17:00,2014-04-19 08:00,2014-05-11 17:00,2014-05-13 08:00,2014-06-04 17:00,,PT_Normal,,,,,WnWmaE3mRo6fRdzm1BMFXg,,,,N,0,0,,,2013-02-16 15:55,2013-02-16 15:56,admin,admin
504850,6359,125567,13662,0,N,N,N,CP_Drtn,TT_Task,DT_FixedDUR2,TK_NotStart,DUKHCONP1AZ4ARRF3650,Install. of Gal. Frame & Aluminum Slat Screen,8178,168,0,200,0,1046.5,1046.5,200,0,0,0,,,,2014-04-28 08:00,2014-05-26 17:00,,2014-04-03 08:00,2014-05-01 17:00,2014-04-03 08:00,2014-05-01 17:00,2014-04-03 08:00,2014-05-01 17:00,2014-04-28 08:00,2014-05-26 17:00,,PT_Normal,,,,,/Wz1+Y12TYyfxKd26S9FCQ,,,,N,0,0,,,2013-02-16 15:55,2013-02-16 15:56,admin,admin
504851,6359,125567,13662,0,N,N,N,CP_Drtn,TT_Task,DT_FixedDUR2,TK_NotStart,DUKHCONP1AZ4ARRF3660,Installation of Access Ladder,8178,208,208,120,0,176,176,120,0,0,0,,,,2014-05-31 08:00,2014-06-16 17:00,,2014-04-30 08:00,2014-05-17 17:00,2014-04-30 08:00,2014-05-17 17:00,2014-04-30 08:00,2014-05-17 17:00,2014-05-31 08:00,2014-06-16 17:00,,PT_Normal,,,,,esBmLSXCRYCPuXJNkC2MRA,,,,N,0,0,,,2013-02-16 15:55,2013-02-16 15:56,admin,admin
504852,6359,125569,13662,0,N,N,N,CP_Drtn,TT_Task,DT_FixedDUR2,TK_NotStart,DUKHCONP1AZ4ARFF3300,Block work,8168,0,0,200,0,6387.5,6387.5,200,0,0,0,,,,2014-01-21 08:00,2014-02-19 17:00,,2014-01-21 08:00,2014-02-19 17:00,2014-01-21 08:00,2014-02-19 17:00,2014-01-21 08:00,2014-02-19 17:00,2014-01-21 08:00,2014-02-19 17:00,,PT_Normal,,,,,r/v/jYukQPKdUj2/yIGyqw,,,,Y,0,0,,,2013-02-16 15:55,2013-02-16 15:56,admin,admin
504853,6359,125569,13662,0,N,N,N,CP_Drtn,TT_Task,DT_FixedDUR2,TK_NotStart,DUKHCONP1AZ4ARFF3305,Plastering work,8169,0,0,200,0,8899,8899,200,0,0,0,,,,2014-02-16 08:00,2014-03-16 17:00,,2014-02-16 08:00,2014-03-16 17:00,2014-02-16 08:00,2014-03-16 17:00,2014-02-16 08:00,2014-03-16 17:00,2014-02-16 08:00,2014-03-16 17:00,,PT_Normal,,,,,/vc8IlmkRM+jw9PSsjbIDA,,,,Y,0,0,,,2013-02-16 15:55,2013-02-16 15:56,admin,admin
504854,6359,125569,13662,0,N,N,N,CP_Drtn,TT_Task,DT_FixedDUR2,TK_NotStart,DUKHCONP1AZ4ARFF3310,Flooring screed,8164,96,96,168,0,1215.5,1215.5,168,0,0,0,,,,2014-03-10 08:00,2014-04-02 17:00,,2014-02-24 08:00,2014-03-19 17:00,2014-02-24 08:00,2014-03-19 17:00,2014-02-24 08:00,2014-03-19 17:00,2014-03-10 08:00,2014-04-02 17:00,,PT_Normal,,,,,4n4O46hiQzu/+Lwpo47Q6Q,,,,N,0,0,,,2013-02-16 15:55,2013-02-16 15:56,admin,admin
504855,6359,125569,13662,0,N,N,N,CP_Drtn,TT_Task,DT_FixedDUR2,TK_NotStart,DUKHCONP1AZ4ARFF3315,Wet area waterproofing,8178,0,0,120,0,1215.5,1215.5,120,0,0,0,,,,2014-03-08 08:00,2014-03-24 17:00,,2014-03-08 08:00,2014-03-24 17:00,2014-03-08 08:00,2014-03-24 17:00,2014-03-08 08:00,2014-03-24 17:00,2014-03-08 08:00,2014-03-24 17:00,,PT_Normal,,,,,DLaHb22GQAeARZIgF4kKFQ,,,,Y,0,0,,,2013-02-16 15:55,2013-02-16 15:56,admin,admin
504856,6359,125569,13662,0,N,N,N,CP_Drtn,TT_Task,DT_FixedDUR2,TK_NotStart,DUKHCONP1AZ4ARFF3330,Paint First coat,8178,112,112,200,0,4742.75,4742.75,200,0,0,0,,,,2014-03-20 08:00,2014-04-17 17:00,,2014-03-04 08:00,2014-04-01 17:00,2014-03-04 08:00,2014-04-01 17:00,2014-03-04 08:00,2014-04-01 17:00,2014-03-20 08:00,2014-04-17 17:00,,PT_Normal,,,,,U8jwtV61RWWXhcuJfGczcw,,,,N,0,0,,,2013-02-16 15:55,2013-02-16 15:56,admin,admin
504857,6359,125569,13662,0,N,N,N,CP_Drtn,TT_Task,DT_FixedDUR2,TK_NotStart,DUKHCONP1AZ4ARFF3320,Ceramic Wall Tiling,8170,0,0,200,0,1897.25,1897.25,200,0,0,0,,,,2014-03-15 08:00,2014-04-12 17:00,,2014-03-15 08:00,2014-04-12 17:00,2014-03-15 08:00,2014-04-12 17:00,2014-03-15 08:00,2014-04-12 17:00,2014-03-15 08:00,2014-04-12 17:00,,PT_Normal,,,,,/lU18S4MTk2KDZqOz+qi4g,,,,Y,0,0,,,2013-02-16 15:55,2013-02-16 15:56,admin,admin
504858,6359,125569,13662,0,N,N,N,CP_Drtn,TT_Task,DT_FixedDUR2,TK_NotStart,DUKHCONP1AZ4ARFF3325,Porcelain Tile flooring,8170,0,0,200,0,1743.75,1743.75,200,0,0,0,,,,2014-03-22 08:00,2014-04-19 17:00,,2014-03-22 08:00,2014-04-19 17:00,2014-03-22 08:00,2014-04-19 17:00,2014-03-22 08:00,2014-04-19 17:00,2014-03-22 08:00,2014-04-19 17:00,,PT_Normal,,,,,iUGvQawqS0+kCtEE0/FFow,,,,Y,0,0,,,2013-02-16 15:55,2013-02-16 15:56,admin,admin
504859,6359,125569,13662,0,N,N,N,CP_Drtn,TT_Task,DT_FixedDUR2,TK_NotStart,DUKHCONP1AZ4ARFF3335,Slate Tile Flooring & Skirting,8170,64,64,120,0,261.5,261.5,120,0,0,0,,,,2014-04-17 08:00,2014-05-04 17:00,,2014-04-08 08:00,2014-04-24 17:00,2014-04-08 08:00,2014-04-24 17:00,2014-04-08 08:00,2014-04-24 17:00,2014-04-17 08:00,2014-05-04 17:00,,PT_Normal,,,,,Ka+L1hK/Skq9Eyq3Ifgw9g,,,,N,0,0,,,2013-02-16 15:55,2013-02-16 15:56,admin,admin
504860,6359,125569,13662,0,N,N,N,CP_Drtn,TT_Task,DT_FixedDUR2,TK_NotStart,DUKHCONP1AZ4ARFF3350,Granite - Stair case flooring & Skirting,8171,16,16,160,0,875,875,160,0,0,0,,,,2014-04-14 08:00,2014-05-06 17:00,,2014-04-12 08:00,2014-05-04 17:00,2014-04-12 08:00,2014-05-04 17:00,2014-04-12 08:00,2014-05-04 17:00,2014-04-14 08:00,2014-05-06 17:00,,PT_Normal,,,,,Zog7h7trTrWi5L7PxfJCpg,,,,N,0,0,,,2013-02-16 15:55,2013-02-16 15:56,admin,admin
504861,6359,125569,13662,0,N,N,N,CP_Drtn,TT_Task,DT_FixedDUR2,TK_NotStart,DUKHCONP1AZ4ARFF3345,Fixing of Suspension systems,8178,0,0,160,0,1305,1305,160,0,0,0,,,,2014-04-03 08:00,2014-04-26 17:00,,2014-04-03 08:00,2014-04-26 17:00,2014-04-03 08:00,2014-04-26 17:00,2014-04-03 08:00,2014-04-26 17:00,2014-04-03 08:00,2014-04-26 17:00,,PT_Normal,,,,,3s/1LFECRb+dAs12QSsPnA,,,,Y,0,0,,,2013-02-16 15:55,2013-02-16 15:56,admin,admin
504862,6359,125569,13662,0,N,N,N,CP_Drtn,TT_Task,DT_FixedDUR2,TK_NotStart,DUKHCONP1AZ4ARFF3360,Gypsum board false ceiling,8178,0,0,200,0,1305,1305,200,0,0,0,,,,2014-04-10 08:00,2014-05-08 17:00,,2014-04-10 08:00,2014-05-08 17:00,2014-04-10 08:00,2014-05-08 17:00,2014-04-10 08:00,2014-05-08 17:00,2014-04-10 08:00,2014-05-08 17:00,,PT_Normal,,,,,TFkJFTJyTvCdDwsiOX3/Bw,,,,Y,0,0,,,2013-02-16 15:55,2013-02-16 15:56,admin,admin
504863,6359,125569,13662,0,N,N,N,CP_Drtn,TT_Task,DT_FixedDUR2,TK_NotStart,DUKHCONP1AZ4ARFF3365,Wooden door,8178,0,0,120,0,308,308,120,0,0,0,,,,2014-04-26 08:00,2014-05-12 17:00,,2014-04-26 08:00,2014-05-12 17:00,2014-04-26 08:00,2014-05-12 17:00,2014-04-26 08:00,2014-05-12 17:00,2014-04-26 08:00,2014-05-12 17:00,,PT_Normal,,,,,1Zu7pl48TSG1F6ImWUJTbQ,,,,Y,0,0,,,2013-02-16 15:55,2013-02-16 15:56,admin,admin
504864,6359,125569,13662,0,N,N,N,CP_Drtn,TT_Task,DT_FixedDUR2,TK_NotStart,DUKHCONP1AZ4ARFF3370,Aluminum Door,8178,0,0,160,0,220,220,160,0,0,0,,,,2014-04-26 08:00,2014-05-18 17:00,,2014-04-26 08:00,2014-05-18 17:00,2014-04-26 08:00,2014-05-18 17:00,2014-04-26 08:00,2014-05-18 17:00,2014-04-26 08:00,2014-05-18 17:00,,PT_Normal,,,,,F5Frq+0wSzGIZh5Wm4c6AA,,,,Y,0,0,,,2013-02-16 15:55,2013-02-16 15:56,admin,admin
504865,6359,125569,13662,0,N,N,N,CP_Drtn,TT_Task,DT_FixedDUR2,TK_NotStart,DUKHCONP1AZ4ARFF3380,Aluminum windows,8178,32,32,160,0,162.25,162.25,160,0,0,0,,,,2014-05-07 08:00,2014-05-29 17:00,,2014-05-03 08:00,2014-05-25 17:00,2014-05-03 08:00,2014-05-25 17:00,2014-05-03 08:00,2014-05-25 17:00,2014-05-07 08:00,2014-05-29 17:00,,PT_Normal,,,,,0NK96bRmQ3+cbQiqO+HC0w,,,,N,0,0,,,2013-02-16 15:55,2013-02-16 15:56,admin,admin
504866,6359,125569,13662,0,N,N,N,CP_Drtn,TT_Task,DT_FixedDUR2,TK_NotStart,DUKHCONP1AZ4ARFF3375,Carpentry & Joinery Works,8178,0,0,200,0,1100,1100,200,0,0,0,,,,2014-05-01 08:00,2014-05-29 17:00,,2014-05-01 08:00,2014-05-29 17:00,2014-05-01 08:00,2014-05-29 17:00,2014-05-01 08:00,2014-05-29 17:00,2014-05-01 08:00,2014-05-29 17:00,,PT_Normal,,,,,90V9C0oKQQ2pag8jA+hkfg,,,,Y,0,0,,,2013-02-16 15:55,2013-02-16 15:56,admin,admin
504867,6359,125569,13662,0,N,N,N,CP_Drtn,TT_Task,DT_FixedDUR2,TK_NotStart,DUKHCONP1AZ4ARFF3390,Installation of Granite Counter Top,8171,8,8,160,0,88,88,160,0,0,0,,,,2014-05-14 08:00,2014-06-05 17:00,,2014-05-13 08:00,2014-06-04 17:00,2014-05-13 08:00,2014-06-04 17:00,2014-05-13 08:00,2014-06-04 17:00,2014-05-14 08:00,2014-06-05 17:00,,PT_Normal,,,,,04qiTkNaTBq+Zaq73vuPlA,,,,N,0,0,,,2013-02-16 15:55,2013-02-16 15:56,admin,admin
504868,6359,125569,13662,0,N,N,N,CP_Drtn,TT_Task,DT_FixedDUR2,TK_NotStart,DUKHCONP1AZ4ARFF3385,Handrail &  Balustrade,8178,0,0,160,0,787.5,787.5,160,0,0,0,,,,2014-05-13 08:00,2014-06-04 17:00,,2014-05-13 08:00,2014-06-04 17:00,2014-05-13 08:00,2014-06-04 17:00,2014-05-13 08:00,2014-06-04 17:00,2014-05-13 08:00,2014-06-04 17:00,,PT_Normal,,,,,Xu5rvP8bTquG09Ymrk/CFg,,,,Y,0,0,,,2013-02-16 15:55,2013-02-16 15:56,admin,admin
504869,6359,125569,13662,0,N,N,N,CP_Drtn,TT_Task,DT_FixedDUR2,TK_NotStart,DUKHCONP1AZ4ARFF3395,Final Painting,8178,0,0,200,0,4742.75,4742.75,200,0,0,0,,,,2014-05-19 08:00,2014-06-16 17:00,,2014-05-19 08:00,2014-06-16 17:00,2014-05-19 08:00,2014-06-16 17:00,2014-05-19 08:00,2014-06-16 17:00,2014-05-19 08:00,2014-06-16 17:00,,PT_Normal,,,,,WdqPw8oURDK92kKIk1gpaw,,,,Y,0,0,,,2013-02-16 15:55,2013-02-16 15:56,admin,admin
504870,6359,125570,13662,0,N,N,N,CP_Drtn,TT_Task,DT_FixedDUR2,TK_NotStart,DUKHCONP1AZ4ARGF3000,Block work,8168,144,0,200,0,9737.5,9737.5,200,0,0,0,,,,2013-12-31 08:00,2014-01-28 17:00,,2013-12-09 08:00,2014-01-07 17:00,2013-12-09 08:00,2014-01-07 17:00,2013-12-09 08:00,2014-01-07 17:00,2013-12-31 08:00,2014-01-28 17:00,,PT_Normal,,,,,KmV7fDyzSzWPOPoxd6lb6g,,,,N,0,0,,,2013-02-16 15:55,2013-02-16 15:56,admin,admin
504871,6359,125570,13662,0,N,N,N,CP_Drtn,TT_Task,DT_FixedDUR2,TK_NotStart,DUKHCONP1AZ4ARGF3005,Plastering work,8169,144,0,200,0,13637.5,13637.5,200,0,0,0,,,,2014-01-22 08:00,2014-02-20 17:00,,2014-01-01 08:00,2014-01-29 17:00,2014-01-01 08:00,2014-01-29 17:00,2014-01-01 08:00,2014-01-29 17:00,2014-01-22 08:00,2014-02-20 17:00,,PT_Normal,,,,,ZK14TmHkRwOYiG4suoJ48A,,,,N,0,0,,,2013-02-16 15:55,2013-02-16 15:56,admin,admin
504872,6359,125570,13662,0,N,N,N,CP_Drtn,TT_Task,DT_FixedDUR2,TK_NotStart,DUKHCONP1AZ4ARGF3010,Flooring screed,8164,208,64,168,0,1580.25,1580.25,168,0,0,0,,,,2014-02-09 08:00,2014-03-05 17:00,,2014-01-09 08:00,2014-02-02 17:00,2014-01-09 08:00,2014-02-02 17:00,2014-01-09 08:00,2014-02-02 17:00,2014-02-09 08:00,2014-03-05 17:00,,PT_Normal,,,,,8YBwcMq5TBqq1JGlt6IDhA,,,,N,0,0,,,2013-02-16 15:55,2013-02-16 15:56,admin,admin
504873,6359,125570,13662,0,N,N,N,CP_Drtn,TT_Task,DT_FixedDUR2,TK_NotStart,DUKHCONP1AZ4ARGF3015,Wet area waterproofing & Protection Screed,8178,144,0,120,0,247.5,247.5,120,0,0,0,,,,2014-02-09 08:00,2014-02-26 17:00,,2014-01-19 08:00,2014-02-04 17:00,2014-01-19 08:00,2014-02-04 17:00,2014-01-19 08:00,2014-02-04 17:00,2014-02-09 08:00,2014-02-26 17:00,,PT_Normal,,,,,1OwEdq04R2m/IDy2dvFItg,,,,N,0,0,,,2013-02-16 15:55,2013-02-16 15:56,admin,admin
504874,6359,125570,13662,0,N,N,N,CP_Drtn,TT_Task,DT_FixedDUR2,TK_NotStart,DUKHCONP1AZ4ARGF3030,Paint First coat,8178,256,0,200,0,5425.75,5425.75,200,0,0,0,,,,2014-02-25 08:00,2014-03-25 17:00,,2014-01-18 08:00,2014-02-16 17:00,2014-01-18 08:00,2014-02-16 17:00,2014-01-18 08:00,2014-02-16 17:00,2014-02-25 08:00,2014-03-25 17:00,,PT_Normal,,,,,53XiOUzUQsimnHKBXj2Zlg,,,,N,0,0,,,2013-02-16 15:55,2013-02-16 15:56,admin,admin
504875,6359,125570,13662,0,N,N,N,CP_Drtn,TT_Task,DT_FixedDUR2,TK_NotStart,DUKHCONP1AZ4ARGF3020,Ceramic Wall Tiling,8170,144,0,200,0,4428.5,4428.5,200,0,0,0,,,,2014-02-16 08:00,2014-03-16 17:00,,2014-01-25 08:00,2014-02-23 17:00,2014-01-25 08:00,2014-02-23 17:00,2014-01-25 08:00,2014-02-23 17:00,2014-02-16 08:00,2014-03-16 17:00,,PT_Normal,,,,,3nqKtna6RyqEd5KD5zOA+w,,,,N,0,0,,,2013-02-16 15:55,2013-02-16 15:56,admin,admin
504876,6359,125570,13662,0,N,N,N,CP_Drtn,TT_Task,DT_FixedDUR2,TK_NotStart,DUKHCONP1AZ4ARGF3025,Porcelain Tile flooring,8170,144,0,200,0,1743.75,1743.75,200,0,0,0,,,,2014-02-22 08:00,2014-03-22 17:00,,2014-01-30 08:00,2014-03-01 17:00,2014-01-30 08:00,2014-03-01 17:00,2014-01-30 08:00,2014-03-01 17:00,2014-02-22 08:00,2014-03-22 17:00,,PT_Normal,,,,,+FtRyeNZQPqyFNjt7dR6tQ,,,,N,0,0,,,2013-02-16 15:55,2013-02-16 15:56,admin,admin
504877,6359,125570,13662,0,N,N,N,CP_Drtn,TT_Task,DT_FixedDUR2,TK_NotStart,DUKHCONP1AZ4ARGF3040,Cobble Tile flooring,8170,168,0,120,0,741,741,120,0,0,0,,,,2014-03-24 08:00,2014-04-09 17:00,,2014-02-27 08:00,2014-03-16 17:00,2014-02-27 08:00,2014-03-16 17:00,2014-02-27 08:00,2014-03-16 17:00,2014-03-24 08:00,2014-04-09 17:00,,PT_Normal,,,,,CZxVHX9DQ46LTurM+8Kl1Q,,,,N,0,0,,,2013-02-16 15:55,2013-02-16 15:56,admin,admin
504878,6359,125570,13662,0,N,N,N,CP_Drtn,TT_Task,DT_FixedDUR2,TK_NotStart,DUKHCONP1AZ4ARGF3035,Slate Tile Flooring & Skirting,8170,184,16,120,0,761.5,761.5,120,0,0,0,,,,2014-03-19 08:00,2014-04-05 17:00,,2014-02-20 08:00,2014-03-09 17:00,2014-02-20 08:00,2014-03-09 17:00,2014-02-20 08:00,2014-03-09 17:00,2014-03-19 08:00,2014-04-05 17:00,,PT_Normal,,,,,RcT7TAknTJCFu+J7uNsj2w,,,,N,0,0,,,2013-02-16 15:55,2013-02-16 15:56,admin,admin
504879,6359,125570,13662,0,N,N,N,CP_Drtn,TT_Task,DT_FixedDUR2,TK_NotStart,DUKHCONP1AZ4ARGF3050,Granite - Stair case flooring & Skirting,8171,168,0,160,0,875,875,160,0,0,0,,,,2014-04-01 08:00,2014-04-23 17:00,,2014-03-08 08:00,2014-03-30 17:00,2014-03-08 08:00,2014-03-30 17:00,2014-03-08 08:00,2014-03-30 17:00,2014-04-01 08:00,2014-04-23 17:00,,PT_Normal,,,,,VIJnvLvRQAOFIrTgXBXUDA,,,,N,0,0,,,2013-02-16 15:55,2013-02-16 15:56,admin,admin
504880,6359,125570,13662,0,N,N,N,CP_Drtn,TT_Task,DT_FixedDUR2,TK_NotStart,DUKHCONP1AZ4ARGF3045,Fixing of Suspension systems,8178,144,0,160,0,1455.05,1455.05,160,0,0,0,,,,2014-03-11 08:00,2014-04-02 17:00,,2014-02-18 08:00,2014-03-12 17:00,2014-02-18 08:00,2014-03-12 17:00,2014-02-18 08:00,2014-03-12 17:00,2014-03-11 08:00,2014-04-02 17:00,,PT_Normal,,,,,sZZ4HlT0T/a+3jY3MuO7qw,,,,N,0,0,,,2013-02-16 15:55,2013-02-23 09:03,admin,admin
504881,6359,125570,13662,0,N,N,N,CP_Drtn,TT_Task,DT_FixedDUR2,TK_NotStart,DUKHCONP1AZ4ARGF3055,Aluminum tile false ceiling,8178,168,24,200,0,150,150,200,0,0,0,,,,2014-03-23 08:00,2014-04-20 17:00,,2014-02-26 08:00,2014-03-26 17:00,2014-02-26 08:00,2014-03-26 17:00,2014-02-26 08:00,2014-03-26 17:00,2014-03-23 08:00,2014-04-20 17:00,,PT_Normal,,,,,cQcux511RUeH4ePPDaJtdQ,,,,N,0,0,,,2013-02-16 15:55,2013-02-16 15:56,admin,admin
504882,6359,125570,13662,0,N,N,N,CP_Drtn,TT_Task,DT_FixedDUR2,TK_NotStart,DUKHCONP1AZ4ARGF3060,Gypsum board false ceiling,8178,144,0,200,0,1335.15,1335.15,200,0,0,0,,,,2014-03-23 08:00,2014-04-20 17:00,,2014-03-02 08:00,2014-03-30 17:00,2014-03-02 08:00,2014-03-30 17:00,2014-03-02 08:00,2014-03-30 17:00,2014-03-23 08:00,2014-04-20 17:00,,PT_Normal,,,,,ZYBzMBNDRhWSPrh8puu6Pw,,,,N,0,0,,,2013-02-16 15:55,2013-02-16 15:56,admin,admin
504883,6359,125570,13662,0,N,N,N,CP_Drtn,TT_Task,DT_FixedDUR2,TK_NotStart,DUKHCONP1AZ4ARGF3065,Wooden door & PVC Door,8178,168,0,120,0,308,308,120,0,0,0,,,,2014-04-15 08:00,2014-05-01 17:00,,2014-03-22 08:00,2014-04-07 17:00,2014-03-22 08:00,2014-04-07 17:00,2014-03-22 08:00,2014-04-07 17:00,2014-04-15 08:00,2014-05-01 17:00,,PT_Normal,,,,,VoQZoQDrSNOk7nOhb1AcaA,,,,N,0,0,,,2013-02-16 15:55,2013-02-16 15:56,admin,admin
504884,6359,125570,13662,0,N,N,N,CP_Drtn,TT_Task,DT_FixedDUR2,TK_NotStart,DUKHCONP1AZ4ARGF3070,Aluminum doors,8178,168,0,120,0,176,176,120,0,0,0,,,,2014-04-21 08:00,2014-05-07 17:00,,2014-03-27 08:00,2014-04-13 17:00,2014-03-27 08:00,2014-04-13 17:00,2014-03-27 08:00,2014-04-13 17:00,2014-04-21 08:00,2014-05-07 17:00,,PT_Normal,,,,,8CWft2q/QpmuEwuF3ufeyQ,,,,N,0,0,,,2013-02-16 15:55,2013-02-16 15:56,admin,admin
504885,6359,125570,13662,0,N,N,N,CP_Drtn,TT_Task,DT_FixedDUR2,TK_NotStart,DUKHCONP1AZ4ARGF3080,Aluminum windows,8178,248,40,160,0,162.25,162.25,160,0,0,0,,,,2014-05-10 08:00,2014-06-01 17:00,,2014-04-03 08:00,2014-04-26 17:00,2014-04-03 08:00,2014-04-26 17:00,2014-04-03 08:00,2014-04-26 17:00,2014-05-10 08:00,2014-06-01 17:00,,PT_Normal,,,,,uD4EligxRjKp5UxGcsFM3A,,,,N,0,0,,,2013-02-16 15:55,2013-02-16 15:56,admin,admin
504886,6359,125570,13662,0,N,N,N,CP_Drtn,TT_Task,DT_FixedDUR2,TK_NotStart,DUKHCONP1AZ4ARGF3075,Carpentry & Joinery Works,8178,168,0,160,0,572,572,160,0,0,0,,,,2014-04-27 08:00,2014-05-19 17:00,,2014-04-02 08:00,2014-04-24 17:00,2014-04-02 08:00,2014-04-24 17:00,2014-04-02 08:00,2014-04-24 17:00,2014-04-27 08:00,2014-05-19 17:00,,PT_Normal,,,,,F+MYiG2qSwqlFUnoLaKAEw,,,,N,0,0,,,2013-02-16 15:55,2013-02-16 15:56,admin,admin
504887,6359,125570,13662,0,N,N,N,CP_Drtn,TT_Task,DT_FixedDUR2,TK_NotStart,DUKHCONP1AZ4ARGF3090,Installation of Granite Counter Top,8171,168,0,120,0,176,176,120,0,0,0,,,,2014-05-10 08:00,2014-05-26 17:00,,2014-04-15 08:00,2014-05-01 17:00,2014-04-15 08:00,2014-05-01 17:00,2014-04-15 08:00,2014-05-01 17:00,2014-05-10 08:00,2014-05-26 17:00,,PT_Normal,,,,,fM4F9JwESa6CnoGzF8nppQ,,,,N,0,0,,,2013-02-16 15:55,2013-02-16 15:56,admin,admin
504888,6359,125570,13662,0,N,N,N,CP_Drtn,TT_Task,DT_FixedDUR2,TK_NotStart,DUKHCONP1AZ4ARGF3085,S.S.Balustrade,8178,208,40,160,0,262.5,262.5,160,0,0,0,,,,2014-05-11 08:00,2014-06-02 17:00,,2014-04-10 08:00,2014-05-03 17:00,2014-04-10 08:00,2014-05-03 17:00,2014-04-10 08:00,2014-05-03 17:00,2014-05-11 08:00,2014-06-02 17:00,,PT_Normal,,,,,dRAnKdgHRbuzUUjrkqf+Fg,,,,N,0,0,,,2013-02-16 15:55,2013-02-16 15:56,admin,admin
504889,6359,125570,13662,0,N,N,N,CP_Drtn,TT_Task,DT_FixedDUR2,TK_NotStart,DUKHCONP1AZ4ARGF3095,Final Painting,8178,168,0,200,0,5425.75,5425.75,200,0,0,0,,,,2014-05-19 08:00,2014-06-16 17:00,,2014-04-24 08:00,2014-05-22 17:00,2014-04-24 08:00,2014-05-22 17:00,2014-04-24 08:00,2014-05-22 17:00,2014-05-19 08:00,2014-06-16 17:00,,PT_Normal,,,,,lFICMluwTWWtqqnxZX0vNQ,,,,N,0,0,,,2013-02-16 15:55,2013-02-16 15:56,admin,admin
504890,6359,125571,13662,0,N,N,N,CP_Drtn,TT_Task,DT_FixedDUR2,TK_NotStart,DUKHCONP1AZ4ARRF3600,Block work,8168,416,0,160,0,700,700,160,0,0,0,,,,2014-04-07 08:00,2014-04-29 17:00,,2014-02-04 08:00,2014-02-27 17:00,2014-02-04 08:00,2014-02-27 17:00,2014-02-04 08:00,2014-02-27 17:00,2014-04-07 08:00,2014-04-29 17:00,,PT_Normal,,,,,9w1yOHhUSH2dGkCWayPjtw,,,,N,0,0,,,2013-02-16 15:55,2013-02-16 15:56,admin,admin
504891,6359,125571,13662,0,N,N,N,CP_Drtn,TT_Task,DT_FixedDUR2,TK_NotStart,DUKHCONP1AZ4ARRF3605,Plastering work,8169,416,0,160,0,1786.5,1786.5,160,0,0,0,,,,2014-04-15 08:00,2014-05-07 17:00,,2014-02-13 08:00,2014-03-08 17:00,2014-02-13 08:00,2014-03-08 17:00,2014-02-13 08:00,2014-03-08 17:00,2014-04-15 08:00,2014-05-07 17:00,,PT_Normal,,,,,JUM5uufKQo+7tjEBVHom8Q,,,,N,0,0,,,2013-02-16 15:55,2013-02-16 15:56,admin,admin
504892,6359,125571,13662,0,N,N,N,CP_Drtn,TT_Task,DT_FixedDUR2,TK_NotStart,DUKHCONP1AZ4ARRF3610,Flooring screed,8164,456,0,120,0,136.5,136.5,120,0,0,0,,,,2014-05-05 08:00,2014-05-21 17:00,,2014-02-27 08:00,2014-03-16 17:00,2014-02-27 08:00,2014-03-16 17:00,2014-02-27 08:00,2014-03-16 17:00,2014-05-05 08:00,2014-05-21 17:00,,PT_Normal,,,,,YkJ8651NRQy9BF7WUKCb1Q,,,,N,0,0,,,2013-02-16 15:55,2013-02-16 15:56,admin,admin
504893,6359,125571,13662,0,N,N,N,CP_Drtn,TT_Task,DT_FixedDUR2,TK_NotStart,DUKHCONP1AZ4ARRF3695,Painting -Storage area,8178,456,0,160,0,1640,1640,160,0,0,0,,,,2014-05-13 08:00,2014-06-04 17:00,,2014-03-08 08:00,2014-03-30 17:00,2014-03-08 08:00,2014-03-30 17:00,2014-03-08 08:00,2014-03-30 17:00,2014-05-13 08:00,2014-06-04 17:00,,PT_Normal,,,,,RefP4vVpQyi1lc3Qb9BJKQ,,,,N,0,0,,,2013-02-16 15:55,2013-02-16 15:56,admin,admin
504894,6359,125571,13662,0,N,N,N,CP_Drtn,TT_Task,DT_FixedDUR2,TK_NotStart,DUKHCONP1AZ4ARRF3620,Epoxy Painting -Storage area,8178,456,456,120,0,48.5,48.5,120,0,0,0,,,,2014-05-31 08:00,2014-06-16 17:00,,2014-03-25 08:00,2014-04-10 17:00,2014-03-25 08:00,2014-04-10 17:00,2014-03-25 08:00,2014-04-10 17:00,2014-05-31 08:00,2014-06-16 17:00,,PT_Normal,,,,,FJb4iTEaQryvlRv2gBVCJw,,,,N,0,0,,,2013-02-16 15:55,2013-02-16 15:56,admin,admin
